# PL5001 – Wyspa mocy (SE-01)

Schedule from Primavera P6, 2025-01-13 to 2028-04-24, data date 2026-10-07, A marks actual dates.

## Schedule

| ID | WBS | Activity | Type | Duration | Start | Finish | Predecessors | Complete | Remaining | Planned start | Planned finish | Total float | Free float | Calendar | AC_Wykonawca | AC_Obiekt | AC_Dyscyplina | AC_Faza | AC_Zakres | AC_Opiekun | AC_Obszar | AC_PP_PM | AC_Zespol | AC_Blok | AC_Priorytet | AC_Pakiet | AC_Poziom | Uwagi harmonogramisty | Rewizja dokumentu |
| --- | --- | --- | --- | --- | --- | --- | --- | --- | --- | --- | --- | --- | --- | --- | --- | --- | --- | --- | --- | --- | --- | --- | --- | --- | --- | --- | --- | --- | --- |
|  | WYSPA_KOT£OW | **Wyspa kot³owa** |  |  | 2025-01-13 | 2028-01-24 |  |  |  |  |  |  |  |  |  |  |  |  |  |  |  |  |  |  |  |  |  |  |  |
|  | 10YD43 | **10YD43 – Odgazowywacz** |  |  | 2025-03-10 | 2027-02-09 |  |  |  |  |  |  |  |  |  |  |  |  |  |  |  |  |  |  |  |  |  |  |  |
|  | BUDO | **Budowa** |  |  | 2025-10-27 | 2026-12-18 |  |  |  |  |  |  |  |  |  |  |  |  |  |  |  |  |  |  |  |  |  |  |  |
|  | AKPIA | **AKPiA** |  |  | 2026-10-07 | 2026-11-04 |  |  |  |  |  |  |  |  |  |  |  |  |  |  |  |  |  |  |  |  |  |  |  |
| 10YD43-068 |  | Monta¿ uk³adów AKPiA |  | 24d | 2026-10-07 A | 2026-11-04 | 10YD43-014 SS+5d | 10% | 21.6d | 2026-10-06 | 2026-11-06 | 333.6d | 0d |  | TurboSys | 10YD43 | AKPiA | Budowa | Roboty | Micha³ | Wyspa | PM000 | Zespó³-W | Blok | Krytyczn | Pakiet | L2 |  |  |
|  | ELEKTRYKA | **Elektryka** |  |  | 2026-10-14 | 2026-11-26 |  |  |  |  |  |  |  |  |  |  |  |  |  |  |  |  |  |  |  |  |  |  |  |
| 10YD43-025 |  | Uk³adanie kabli – trasa 02 |  | 20d | 2026-10-14 | 2026-11-10 | 10YD43-014 SS+10d |  |  | 2026-10-13 | 2026-11-09 | 332.6d | 0d | Kalendarz 6-dniowy | TurboSys | 10YD43 | Elektryc | Budowa | Roboty | Micha³ | Wyspa | PM000 | Zespó³-K | Blok | Krytyczn | Pakiet | L2 |  |  |
| 10YD43-037 |  | Uk³adanie kabli – trasa 04 |  | 11d | 2026-10-14 | 2026-10-28 | 10YD43-014 SS+10d |  |  | 2026-10-13 | 2026-10-27 | 387.6d | 0d |  | TurboSys | 10YD43 | Elektryc | Budowa | Roboty | Micha³ | Wyspa | PM000 | Zespó³-K | Blok | Normalny | Pakiet | L2 | Uzgodnione na koordynacji |  |
| 10YD43-061 |  | Uk³adanie kabli – trasa 08 |  | 7d | 2026-10-14 | 2026-10-22 | 10YD43-014 SS+10d |  |  | 2026-10-13 | 2026-10-21 | 345.6d | 0d |  | TurboSys | 10YD43 | Elektryc | Budowa | Roboty | Micha³ | Wyspa | PM000 | Zespó³-W | Blok | Niski | Pakiet | L2 | Uzgodnione na koordynacji |  |
| 10YD43-062 |  | Pod³¹czenia i pomiary – trasa 08 |  | 3d | 2026-10-20 | 2026-10-22 | 10YD43-061 FF |  |  | 2026-10-19 | 2026-10-21 | 345.6d | 0d |  | TurboSys | 10YD43 | Elektryc | Budowa | Roboty | Micha³ | Wyspa | PM000 | Zespó³-K | Blok | Normalny | Pakiet | L2 |  |  |
| 10YD43-038 |  | Pod³¹czenia i pomiary – trasa 04 |  | 6d | 2026-10-21 | 2026-10-28 | 10YD43-037 FF |  |  | 2026-10-20 | 2026-10-27 | 387.6d | 0d |  | TurboSys | 10YD43 | Elektryc | Budowa | Roboty | Micha³ | Wyspa | PM000 | Zespó³-W | Blok | Normalny | Pakiet | L2 |  | Rev A |
| 10YD43-026 |  | Pod³¹czenia i pomiary – trasa 02 |  | 5d | 2026-11-04 | 2026-11-10 | 10YD43-025 FF |  |  | 2026-11-03 | 2026-11-09 | 332.6d | 0d |  | TurboSys | 10YD43 | Elektryc | Budowa | Roboty | Micha³ | Wyspa | PM000 | Zespó³-I | Blok | Normalny | Pakiet | L2 | Czeka na dostawê |  |
| 10YD43-049 |  | Uk³adanie kabli – trasa 06 |  | 15d | 2026-11-06 | 2026-11-26 | 10YD43-014 SS+10d |  |  | 2026-10-13 | 2026-11-02 | 366.6d | 0d |  | TurboSys | 10YD43 | Elektryc | Budowa | Roboty | Micha³ | Wyspa | PM300 | Zespó³-E | Blok | Normalny | Pakiet | L2 |  |  |
| 10YD43-050 |  | Pod³¹czenia i pomiary – trasa 06 |  | 9d | 2026-11-16 | 2026-11-26 | 10YD43-049 FF |  |  | 2026-10-21 | 2026-11-02 | 366.6d | 0d |  | TurboSys | 10YD43 | Elektryc | Budowa | Roboty | Micha³ | Wyspa | PM000 | Zespó³-W | Blok | Normalny | Pakiet | L2 |  |  |
|  | MONTA¯ | **Monta¿** |  |  | 2026-01-08 | 2026-12-08 |  |  |  |  |  |  |  |  |  |  |  |  |  |  |  |  |  |  |  |  |  |  |  |
| 10YD43-013 |  | Monta¿ konstrukcji stalowych |  | 50d | 2026-01-08 A | 2026-03-18 A | 10YD43-012 | 100% |  |  |  |  |  |  | TurboSys | 10YD43 | Mechanic | Budowa | Roboty | Micha³ | Wyspa | PM000 | Zespó³-W | Blok | Normalny | Pakiet | L2 |  |  |
| 10YD43-014 |  | Monta¿ urz¹dzeñ g³ównych |  | 57d | 2026-09-30 A | 2026-12-07 | 10YD43-013, 10YD43-011 | 22% | 44.5d | 2026-09-29 | 2026-12-16 | 305.6d | 0d | Kalendarz 6-dniowy | TurboSys | 10YD43 | Mechanic | Budowa | Roboty | Micha³ | Wyspa | PM000 | Zespó³-W | Blok | Normalny | Pakiet | L2 |  |  |
| 10YD43-069 |  | KM: Zakoñczenie monta¿u – Odgazowywacz | milestone | 0d | 2026-12-08 | 2026-12-08 | 10YD43-060, 10YD43-062, 10YD43-067, 10YD43-068, 10YD43-014 |  |  | 2026-12-17 | 2026-12-17 | 313.1d | 0d |  | TurboSys | 10YD43 | Mechanic | Budowa | Kamieñ | Micha³ | Wyspa | PM000 | Zespó³-W | Blok | Normalny | Pakiet | L2 |  |  |
|  | ROBOTY BUD | **Roboty budowlane** |  |  | 2025-10-27 | 2026-01-12 |  |  |  |  |  |  |  |  |  |  |  |  |  |  |  |  |  |  |  |  |  |  |  |
| 10YD43-012 |  | Fundamenty i roboty ziemne |  | 53d | 2025-10-27 A | 2026-01-12 A | 10YD43-007 FS+8d | 100% |  | 2025-10-27 | 2026-01-07 |  |  |  | TurboSys | 10YD43 | Budowlan | Budowa | Roboty | Micha³ | Wyspa | PM000 | Zespó³-W | Blok | Normalny | Pakiet | L2 | Do weryfikacji z wykonawc¹ |  |
|  | RUROCI¥GI | **Ruroci¹gi** |  |  | 2026-01-07 | 2026-12-18 |  |  |  |  |  |  |  |  |  |  |  |  |  |  |  |  |  |  |  |  |  |  |  |
|  | SEKCJA 01 | **Sekcja 01** |  |  | 2026-01-07 | 2026-12-18 |  |  |  |  |  |  |  |  |  |  |  |  |  |  |  |  |  |  |  |  |  |  |  |
| 10YD43-015 |  | Prefabrykacja ruroci¹gów – Sekcja 01 |  | 3.3d | 2026-01-07 A | 2026-01-14 A | 10YD43-012 | 100% |  | 2026-01-08 | 2026-01-12 |  |  |  | TurboSys | 10YD43 | Ruroci¹g | Budowa | Roboty | Micha³ | Wyspa | PM300 | Zespó³-I | Blok | Normalny | Pakiet | L2 |  |  |
| 10YD43-016 |  | Monta¿ ruroci¹gów – Sekcja 01 |  | 20.3d | 2026-10-13 | 2026-11-09 | 10YD43-015, 10YD43-014 SS+9d |  |  | 2026-10-12 | 2026-11-06 | 318.3d | 0d |  | TurboSys | 10YD43 | Ruroci¹g | Budowa | Roboty | Micha³ | Wyspa | PM000 | Zespó³-K | Blok | Normalny | Pakiet | L2 | Uzgodnione na koordynacji |  |
| 10YD43-017 |  | Próba ciœnieniowa – Sekcja 01 |  | 6d | 2026-11-10 | 2026-11-17 | 10YD43-016 |  |  | 2026-11-09 | 2026-11-16 | 318.3d | 0d |  | TurboSys | 10YD43 | Ruroci¹g | Budowa | Roboty | Micha³ | Wyspa | PM000 | Zespó³-W | Blok | Normalny | Pakiet | L2 |  |  |
| 10YD43-018 |  | Izolacje – Sekcja 01 |  | 7d | 2026-12-08 | 2026-12-16 | 10YD43-017 |  |  | 2026-11-17 | 2026-11-25 | 304.6d | 0d |  | TurboSys | 10YD43 | Ruroci¹g | Budowa | Roboty | Micha³ | Wyspa | PM300 | Zespó³-E | Blok | Normalny | Pakiet | L2 |  |  |
| 10YD43-019 |  | Malowanie i oznakowanie – Sekcja 01 |  | 8d | 2026-12-09 | 2026-12-18 | 10YD43-018 FF+2d |  |  | 2026-11-18 | 2026-11-27 | 304.6d | 0d |  | TurboSys | 10YD43 | Ruroci¹g | Budowa | Roboty | Micha³ | Wyspa | PM000 | Zespó³-W | Blok | Normalny | Pakiet | L2 |  | Rev A |

| ID | WBS | Activity | Duration | Start | Finish | Predecessors | Complete | Remaining | Planned start | Planned finish | Total float | Free float | Calendar | Uwagi harmonogramisty | AC_Wykonawca | AC_Obiekt | AC_Dyscyplina | AC_Faza | AC_Zakres | AC_Opiekun | AC_Obszar | AC_PP_PM | AC_Zespol | AC_Blok | AC_Priorytet | AC_Pakiet | AC_Poziom | Rewizja dokumentu |
| --- | --- | --- | --- | --- | --- | --- | --- | --- | --- | --- | --- | --- | --- | --- | --- | --- | --- | --- | --- | --- | --- | --- | --- | --- | --- | --- | --- | --- |
|  | SEKCJA 02 | **Sekcja 02** |  | 2026-01-20 | 2026-12-08 |  |  |  |  |  |  |  |  |  |  |  |  |  |  |  |  |  |  |  |  |  |  |  |
| 10YD43-020 |  | Prefabrykacja ruroci¹gów – Sekcja 02 | 11.3d | 2026-01-20 A | 2026-02-04 A | 10YD43-012, 10YD43-015 SS+5d | 100% |  | 2026-01-15 | 2026-01-29 |  |  | Kalendarz 6-dniowy | Do weryfikacji z wykonawc¹ | TurboSys | 10YD43 | Ruroci¹g | Budowa | Roboty | Micha³ | Wyspa | PM000 | Zespó³-W | Blok | Normalny | Pakiet | L2 |  |
| 10YD43-021 |  | Monta¿ ruroci¹gów – Sekcja 02 | 24.4d | 2026-10-13 | 2026-11-13 | 10YD43-020, 10YD43-014 SS+9d |  |  | 2026-10-12 | 2026-11-12 | 312.2d | 0d | Kalendarz 6-dniowy | Ryzyko opóŸnienia | TurboSys | 10YD43 | Ruroci¹g | Budowa | Roboty | Micha³ | Wyspa | PM000 | Zespó³-K | Blok | Krytyczn | Pakiet | L2 | Rev A |
| 10YD43-022 |  | Próba ciœnieniowa – Sekcja 02 | 4d | 2026-11-16 | 2026-11-19 | 10YD43-021 |  |  | 2026-11-13 | 2026-11-18 | 312.2d | 0d | Kalendarz 6-dniowy |  | TurboSys | 10YD43 | Ruroci¹g | Budowa | Roboty | Micha³ | Wyspa | PM000 | Zespó³-W | Blok | Normalny | Pakiet | L2 |  |
| 10YD43-023 |  | Izolacje – Sekcja 02 | 11d | 2026-11-20 | 2026-12-04 | 10YD43-022 |  |  | 2026-11-19 | 2026-12-03 | 312.2d | 0d |  |  | TurboSys | 10YD43 | Ruroci¹g | Budowa | Roboty | Micha³ | Wyspa | PM000 | Zespó³-W | Blok | Krytyczn | Pakiet | L2 | Rev C |
| 10YD43-024 |  | Malowanie i oznakowanie – Sekcja 02 | 8d | 2026-11-27 | 2026-12-08 | 10YD43-023 FF+2d |  |  | 2026-11-26 | 2026-12-07 | 312.2d | 0d |  |  | TurboSys | 10YD43 | Ruroci¹g | Budowa | Roboty | Micha³ | Wyspa | PM000 | Zespó³-K | Blok | Normalny | Pakiet | L2 |  |
|  | SEKCJA 03 | **Sekcja 03** |  | 2026-01-22 | 2026-10-26 |  |  |  |  |  |  |  |  |  |  |  |  |  |  |  |  |  |  |  |  |  |  |  |
|  | PODSEKCJA | **Podsekcja 03.A** |  | 2026-01-22 | 2026-10-26 |  |  |  |  |  |  |  |  |  |  |  |  |  |  |  |  |  |  |  |  |  |  |  |
| 10YD43-027 |  | Prefabrykacja ruroci¹gów – Sekcja 03 | 8.8d | 2026-01-22 A | 2026-02-05 A | 10YD43-012, 10YD43-020 SS+5d | 100% |  | 2026-01-22 | 2026-02-02 |  |  |  |  | TurboSys | 10YD43 | Ruroci¹g | Budowa | Roboty | Micha³ | Wyspa | PM000 | Zespó³-K | Blok | Normalny | Pakiet | L2 | Rev A |
| 10YD43-028 |  | Monta¿ ruroci¹gów – Sekcja 03 | 17.2d | 2026-10-07 A | 2026-10-12 | 10YD43-027, 10YD43-014 SS+3d | 76% | 4.1d | 2026-10-02 | 2026-10-26 | 377.4d | 0d | Kalendarz 6-dniowy |  | TurboSys | 10YD43 | Ruroci¹g | Budowa | Roboty | Micha³ | Wyspa | PM100 | Zespó³-I | Blok | Normalny | Pakiet | L2 | Rev A |
| 10YD43-029 |  | Próba ciœnieniowa – Sekcja 03 | 3d | 2026-10-13 | 2026-10-15 | 10YD43-028 |  |  | 2026-10-27 | 2026-10-29 | 390.5d | 0d |  |  | TurboSys | 10YD43 | Ruroci¹g | Budowa | Roboty | Micha³ | Wyspa | PM000 | Zespó³-K | Blok | Normalny | Pakiet | L2 |  |
| 10YD43-030 |  | Izolacje – Sekcja 03 | 4d | 2026-10-16 | 2026-10-21 | 10YD43-029 |  |  | 2026-10-30 | 2026-11-04 | 390.5d | 0d |  | Do weryfikacji z wykonawc¹ | TurboSys | 10YD43 | Ruroci¹g | Budowa | Roboty | Micha³ | Wyspa | PM000 | Zespó³-K | Blok | Wysoki | Pakiet | L2 |  |
| 10YD43-031 |  | Malowanie i oznakowanie – Sekcja 03 | 2d | 2026-10-23 | 2026-10-26 | 10YD43-030 FF+2d |  |  | 2026-11-05 | 2026-11-06 | 389.6d | 0d | Kalendarz 6-dniowy |  | TurboSys | 10YD43 | Ruroci¹g | Budowa | Roboty | Micha³ | Wyspa | PM000 | Zespó³-W | Blok | Niski | Pakiet | L2 | Rev C |
|  | SEKCJA 04 | **Sekcja 04** |  | 2026-02-03 | 2026-11-03 |  |  |  |  |  |  |  |  |  |  |  |  |  |  |  |  |  |  |  |  |  |  |  |
| 10YD43-032 |  | Prefabrykacja ruroci¹gów – Sekcja 04 | 14.6d | 2026-02-03 A | 2026-02-25 A | 10YD43-012, 10YD43-027 SS+5d | 100% |  | 2026-01-29 | 2026-02-17 |  |  |  |  | TurboSys | 10YD43 | Ruroci¹g | Budowa | Roboty | Micha³ | Wyspa | PM000 | Zespó³-K | Blok | Niski | Pakiet | L2 |  |
| 10YD43-033 |  | Monta¿ ruroci¹gów – Sekcja 04 | 12.7d | 2026-10-02 A | 2026-10-20 | 10YD43-032, 10YD43-014 SS+3d | 18% | 10.4d | 2026-10-02 | 2026-10-19 | 383.9d | 0d |  |  | TurboSys | 10YD43 | Ruroci¹g | Budowa | Roboty | Micha³ | Wyspa | PM000 | Zespó³-W | Blok | Normalny | Pakiet | L2 |  |
| 10YD43-034 |  | Próba ciœnieniowa – Sekcja 04 | 5d | 2026-10-21 | 2026-10-27 | 10YD43-033 |  |  | 2026-10-20 | 2026-10-26 | 383.2d | 0d |  |  | TurboSys | 10YD43 | Ruroci¹g | Budowa | Roboty | Micha³ | Wyspa | PM000 | Zespó³-W | Blok | Normalny | Pakiet | L2 |  |
| 10YD43-036 |  | Malowanie i oznakowanie – Sekcja 04 | 6d | 2026-10-27 | 2026-11-03 | 10YD43-035 FF+2d |  |  | 2026-10-26 | 2026-11-02 | 383.2d | 0d |  |  | TurboSys | 10YD43 | Ruroci¹g | Budowa | Roboty | Micha³ | Wyspa | PM000 | Zespó³-K | Blok | Wysoki | Pakiet | L2 |  |
| 10YD43-035 |  | Izolacje – Sekcja 04 | 3d | 2026-10-28 | 2026-10-30 | 10YD43-034 |  |  | 2026-10-27 | 2026-10-29 | 383.2d | 0d |  |  | TurboSys | 10YD43 | Ruroci¹g | Budowa | Roboty | Micha³ | Wyspa | PM000 | Zespó³-W | Blok | Normalny | Pakiet | L2 | Rev A |
|  | SEKCJA 05 | **Sekcja 05** |  | 2026-02-09 | 2026-11-19 |  |  |  |  |  |  |  |  |  |  |  |  |  |  |  |  |  |  |  |  |  |  |  |
| 10YD43-039 |  | Prefabrykacja ruroci¹gów – Sekcja 05 | 10.4d | 2026-02-09 A | 2026-02-23 A | 10YD43-012, 10YD43-032 SS+5d | 100% |  | 2026-02-05 | 2026-02-18 |  |  |  |  | TurboSys | 10YD43 | Ruroci¹g | Budowa | Roboty | Micha³ | Wyspa | PM000 | Zespó³-W | Blok | Niski | Pakiet | L2 |  |
| 10YD43-040 |  | Monta¿ ruroci¹gów – Sekcja 05 | 18.1d | 2026-10-12 | 2026-11-04 | 10YD43-039, 10YD43-014 SS+8d |  |  | 2026-10-09 | 2026-11-03 | 371.5d | 0d | Kalendarz 6-dniowy | Do weryfikacji z wykonawc¹ | TurboSys | 10YD43 | Ruroci¹g | Budowa | Roboty | Micha³ | Wyspa | PM000 | Zespó³-W | Blok | Normalny | Pakiet | L2 | Rev C |
| 10YD43-041 |  | Próba ciœnieniowa – Sekcja 05 | 6d | 2026-11-05 | 2026-11-12 | 10YD43-040 |  |  | 2026-11-04 | 2026-11-11 | 371.5d | 0d |  | Czeka na dostawê | TurboSys | 10YD43 | Ruroci¹g | Budowa | Roboty | Micha³ | Wyspa | PM000 | Zespó³-K | Blok | Niski | Pakiet | L2 |  |
| 10YD43-042 |  | Izolacje – Sekcja 05 | 3d | 2026-11-13 | 2026-11-17 | 10YD43-041 |  |  | 2026-11-12 | 2026-11-16 | 371.5d | 0d |  | Ryzyko opóŸnienia | TurboSys | 10YD43 | Ruroci¹g | Budowa | Roboty | Micha³ | Wyspa | PM000 | Zespó³-W | Blok | Normalny | Pakiet | L2 |  |
| 10YD43-043 |  | Malowanie i oznakowanie – Sekcja 05 | 5d | 2026-11-13 | 2026-11-19 | 10YD43-042 FF+2d |  |  | 2026-11-12 | 2026-11-18 | 371.5d | 0d |  |  | TurboSys | 10YD43 | Ruroci¹g | Budowa | Roboty | Micha³ | Wyspa | PM000 | Zespó³-K | Blok | Normalny | Pakiet | L2 |  |

| ID | WBS | Activity | Duration | Start | Finish | Predecessors | Complete | Remaining | Planned start | Planned finish | Total float | Free float | Calendar | Rewizja dokumentu | AC_Wykonawca | AC_Obiekt | AC_Dyscyplina | AC_Faza | AC_Zakres | AC_Opiekun | AC_Obszar | AC_PP_PM | AC_Zespol | AC_Blok | AC_Priorytet | AC_Pakiet | AC_Poziom | Uwagi harmonogramisty |
| --- | --- | --- | --- | --- | --- | --- | --- | --- | --- | --- | --- | --- | --- | --- | --- | --- | --- | --- | --- | --- | --- | --- | --- | --- | --- | --- | --- | --- |
|  | SEKCJA 06 | **Sekcja 06** |  | 2026-02-13 | 2026-11-30 |  |  |  |  |  |  |  |  |  |  |  |  |  |  |  |  |  |  |  |  |  |  |  |
|  | PODSEKCJA | **Podsekcja 06.A** |  | 2026-02-13 | 2026-11-30 |  |  |  |  |  |  |  |  |  |  |  |  |  |  |  |  |  |  |  |  |  |  |  |
| 10YD43-044 |  | Prefabrykacja ruroci¹gów – Sekcja 06 | 4.9d | 2026-02-13 A | 2026-02-20 A | 10YD43-012, 10YD43-039 SS+5d | 100% |  | 2026-02-12 | 2026-02-17 |  |  |  | Rev B | TurboSys | 10YD43 | Ruroci¹g | Budowa | Roboty | Micha³ | Wyspa | PM000 | Zespó³-K | Blok | Normalny | Pakiet | L2 |  |
| 10YD43-045 |  | Monta¿ ruroci¹gów – Sekcja 06 | 24.3d | 2026-10-09 | 2026-11-11 | 10YD43-044, 10YD43-014 SS+7d |  |  | 2026-10-08 | 2026-11-10 | 364.3d | 0d |  | Rev A | TurboSys | 10YD43 | Ruroci¹g | Budowa | Roboty | Micha³ | Wyspa | PM000 | Zespó³-K | Blok | Wysoki | Pakiet | L2 |  |
| 10YD43-046 |  | Próba ciœnieniowa – Sekcja 06 | 2d | 2026-11-12 | 2026-11-13 | 10YD43-045 |  |  | 2026-11-11 | 2026-11-12 | 364.3d | 0d |  | Rev C | TurboSys | 10YD43 | Ruroci¹g | Budowa | Roboty | Micha³ | Wyspa | PM000 | Zespó³-W | Blok | Normalny | Pakiet | L2 | Czeka na dostawê |
| 10YD43-047 |  | Izolacje – Sekcja 06 | 9d | 2026-11-16 | 2026-11-26 | 10YD43-046 |  |  | 2026-11-13 | 2026-11-25 | 364.3d | 0d |  |  | TurboSys | 10YD43 | Ruroci¹g | Budowa | Roboty | Micha³ | Wyspa | PM000 | Zespó³-W | Blok | Normalny | Pakiet | L2 |  |
| 10YD43-048 |  | Malowanie i oznakowanie – Sekcja 06 | 5d | 2026-11-24 | 2026-11-30 | 10YD43-047 FF+2d |  |  | 2026-11-23 | 2026-11-27 | 364.3d | 0d |  |  | TurboSys | 10YD43 | Ruroci¹g | Budowa | Roboty | Micha³ | Wyspa | PM000 | Zespó³-W | Blok | Normalny | Pakiet | L2 |  |
|  | SEKCJA 07 | **Sekcja 07** |  | 2026-02-23 | 2026-11-11 |  |  |  |  |  |  |  |  |  |  |  |  |  |  |  |  |  |  |  |  |  |  |  |
| 10YD43-051 |  | Prefabrykacja ruroci¹gów – Sekcja 07 | 10d | 2026-02-23 A | 2026-03-06 A | 10YD43-012, 10YD43-044 SS+5d | 100% |  | 2026-02-19 | 2026-03-04 |  |  |  |  | TurboSys | 10YD43 | Ruroci¹g | Budowa | Roboty | Micha³ | Wyspa | PM000 | Zespó³-K | Blok | Normalny | Pakiet | L2 |  |
| 10YD43-052 |  | Monta¿ ruroci¹gów – Sekcja 07 | 22.6d | 2026-10-06 A | 2026-10-21 | 10YD43-051, 10YD43-014 SS+1d | 50% | 11.3d | 2026-09-30 | 2026-10-29 | 367d | 0d |  | Rev C | TurboSys | 10YD43 | Ruroci¹g | Budowa | Roboty | Micha³ | Wyspa | PM000 | Zespó³-W | Blok | Normalny | Pakiet | L2 |  |
| 10YD43-053 |  | Próba ciœnieniowa – Sekcja 07 | 2d | 2026-10-22 | 2026-10-23 | 10YD43-052 |  |  | 2026-10-30 | 2026-11-02 | 377.3d | 0d |  |  | TurboSys | 10YD43 | Ruroci¹g | Budowa | Roboty | Micha³ | Wyspa | PM300 | Zespó³-E | Blok | Normalny | Pakiet | L2 |  |
| 10YD43-054 |  | Izolacje – Sekcja 07 | 11d | 2026-10-26 | 2026-11-09 | 10YD43-053 |  |  | 2026-11-03 | 2026-11-17 | 377.3d | 0d |  |  | TurboSys | 10YD43 | Ruroci¹g | Budowa | Roboty | Micha³ | Wyspa | PM000 | Zespó³-W | Blok | Wysoki | Pakiet | L2 |  |
| 10YD43-055 |  | Malowanie i oznakowanie – Sekcja 07 | 2d | 2026-11-10 | 2026-11-11 | 10YD43-054 FF+2d |  |  | 2026-11-18 | 2026-11-19 | 377.3d | 0d |  | Rev C | TurboSys | 10YD43 | Ruroci¹g | Budowa | Roboty | Micha³ | Wyspa | PM000 | Zespó³-W | Blok | Normalny | Pakiet | L2 | Czeka na dostawê |
|  | SEKCJA 08 | **Sekcja 08** |  | 2026-03-03 | 2026-10-26 |  |  |  |  |  |  |  |  |  |  |  |  |  |  |  |  |  |  |  |  |  |  |  |
| 10YD43-056 |  | Prefabrykacja ruroci¹gów – Sekcja 08 | 13.9d | 2026-03-03 A | 2026-03-24 A | 10YD43-012, 10YD43-051 SS+5d | 100% |  | 2026-02-26 | 2026-03-16 |  |  | Kalendarz 6-dniowy | Rev C | TurboSys | 10YD43 | Ruroci¹g | Budowa | Roboty | Micha³ | Wyspa | PM000 | Zespó³-W | Blok | Normalny | Pakiet | L2 |  |
| 10YD43-057 |  | Monta¿ ruroci¹gów – Sekcja 08 | 6.9d | 2026-10-07 A | 2026-10-07 | 10YD43-056, 10YD43-014 SS+3d | 77% | 1.6d | 2026-10-02 | 2026-10-09 | 337.7d | 0d |  |  | TurboSys | 10YD43 | Ruroci¹g | Budowa | Roboty | Micha³ | Wyspa | PM000 | Zespó³-W | Blok | Normalny | Pakiet | L2 | Uzgodnione na koordynacji |
| 10YD43-058 |  | Próba ciœnieniowa – Sekcja 08 | 4d | 2026-10-08 | 2026-10-13 | 10YD43-057 |  |  | 2026-10-12 | 2026-10-15 | 343d | 0d |  |  | TurboSys | 10YD43 | Ruroci¹g | Budowa | Roboty | Micha³ | Wyspa | PM000 | Zespó³-K | Blok | Normalny | Pakiet | L2 |  |
| 10YD43-059 |  | Izolacje – Sekcja 08 | 7d | 2026-10-14 | 2026-10-22 | 10YD43-058 |  |  | 2026-10-16 | 2026-10-26 | 343d | 0d |  |  | TurboSys | 10YD43 | Ruroci¹g | Budowa | Roboty | Micha³ | Wyspa | PM000 | Zespó³-W | Blok | Normalny | Pakiet | L2 |  |
| 10YD43-060 |  | Malowanie i oznakowanie – Sekcja 08 | 7d | 2026-10-16 | 2026-10-26 | 10YD43-059 FF+2d |  |  | 2026-10-20 | 2026-10-28 | 343d | 0d |  |  | TurboSys | 10YD43 | Ruroci¹g | Budowa | Roboty | Micha³ | Wyspa | PM000 | Zespó³-W | Blok | Normalny | Pakiet | L2 |  |
|  | SEKCJA 09 | **Sekcja 09** |  | 2026-03-10 | 2026-11-19 |  |  |  |  |  |  |  |  |  |  |  |  |  |  |  |  |  |  |  |  |  |  |  |
|  | PODSEKCJA | **Podsekcja 09.A** |  | 2026-03-10 | 2026-11-19 |  |  |  |  |  |  |  |  |  |  |  |  |  |  |  |  |  |  |  |  |  |  |  |
| 10YD43-063 |  | Prefabrykacja ruroci¹gów – Sekcja 09 | 8.2d | 2026-03-10 A | 2026-03-23 A | 10YD43-012, 10YD43-056 SS+5d | 100% |  | 2026-03-05 | 2026-03-16 |  |  |  | Rev B | TurboSys | 10YD43 | Ruroci¹g | Budowa | Roboty | Micha³ | Wyspa | PM000 | Zespó³-W | Blok | Krytyczn | Pakiet | L2 |  |
| 10YD43-064 |  | Monta¿ ruroci¹gów – Sekcja 09 | 13.6d | 2026-10-12 | 2026-10-28 | 10YD43-063, 10YD43-014 SS+8d |  |  | 2026-10-09 | 2026-10-27 | 325d | 0d |  |  | TurboSys | 10YD43 | Ruroci¹g | Budowa | Roboty | Micha³ | Wyspa | PM000 | Zespó³-W | Blok | Normalny | Pakiet | L2 | Bez uwag |
| 10YD43-065 |  | Próba ciœnieniowa – Sekcja 09 | 6d | 2026-10-29 | 2026-11-05 | 10YD43-064 |  |  | 2026-10-28 | 2026-11-04 | 325d | 0d |  |  | TurboSys | 10YD43 | Ruroci¹g | Budowa | Roboty | Micha³ | Wyspa | PM000 | Zespó³-W | Blok | Normalny | Pakiet | L2 |  |
| 10YD43-066 |  | Izolacje – Sekcja 09 | 8d | 2026-11-06 | 2026-11-17 | 10YD43-065 |  |  | 2026-11-05 | 2026-11-16 | 325d | 0d |  |  | TurboSys | 10YD43 | Ruroci¹g | Budowa | Roboty | Micha³ | Wyspa | PM000 | Zespó³-K | Blok | Normalny | Pakiet | L2 |  |
| 10YD43-067 |  | Malowanie i oznakowanie – Sekcja 09 | 2d | 2026-11-18 | 2026-11-19 | 10YD43-066 FF+2d |  |  | 2026-11-17 | 2026-11-18 | 325d | 0d |  | Rev B | TurboSys | 10YD43 | Ruroci¹g | Budowa | Roboty | Micha³ | Wyspa | PM000 | Zespó³-W | Blok | Normalny | Pakiet | L2 | Czeka na dostawê |

| ID | WBS | Activity | Type | Duration | Start | Finish | Predecessors | Complete | Actual finish | Planned start | Planned finish | Total float | Free float | AC_Wykonawca | AC_Obiekt | AC_Dyscyplina | AC_Faza | AC_Zakres | AC_Opiekun | AC_Obszar | AC_PP_PM | AC_Zespol | AC_Blok | AC_Priorytet | AC_Pakiet | AC_Poziom | Rewizja dokumentu | Uwagi harmonogramisty |
| --- | --- | --- | --- | --- | --- | --- | --- | --- | --- | --- | --- | --- | --- | --- | --- | --- | --- | --- | --- | --- | --- | --- | --- | --- | --- | --- | --- | --- |
|  | PROJ | **Projektowanie** |  |  | 2025-03-10 | 2025-08-22 |  |  |  |  |  |  |  |  |  |  |  |  |  |  |  |  |  |  |  |  |  |  |
|  | DOKUMENTAC | **Dokumentacja** |  |  | 2025-03-10 | 2025-08-22 |  |  |  |  |  |  |  |  |  |  |  |  |  |  |  |  |  |  |  |  |  |  |
| 10YD43-001 |  | Projekt wykonawczy – Odgazowywacz |  | 83d | 2025-03-10 A | 2025-07-03 A |  | 100% |  | 2025-03-11 | 2025-07-03 |  |  | TurboSys | 10YD43 | Budowlan | Projekto | Projekt | Micha³ | Wyspa | PM000 | Zespó³-K | Blok | Niski | Pakiet | L2 |  |  |
| 10YD43-002 |  | Uzgodnienie dokumentacji z Inwestorem |  | 26d | 2025-07-09 A | 2025-08-18 A | 10YD43-001 | 100% |  | 2025-07-04 | 2025-08-08 |  |  | TurboSys | 10YD43 | Budowlan | Projekto | Projekt | Micha³ | Wyspa | PM000 | Zespó³-W | Blok | Normalny | Pakiet | L2 | Rev B |  |
| 10YD43-003 |  | Zatwierdzenie dokumentacji do realizacji |  | 9d | 2025-08-12 A | 2025-08-22 A | 10YD43-002 | 100% |  | 2025-08-11 | 2025-08-21 |  |  | TurboSys | 10YD43 | Budowlan | Projekto | Projekt | Micha³ | Wyspa | PM000 | Zespó³-K | Blok | Normalny | Pakiet | L2 | Rev C |  |
| 10YD43-004 |  | KM: Dokumentacja zatwierdzona – Odgazowywacz | milestone | 0d | 2025-08-22 A | 2025-08-22 | 10YD43-003 | 100% | 2025-08-21 |  |  |  |  | TurboSys | 10YD43 | Budowlan | Projekto | Kamieñ | Micha³ | Wyspa | PM100 | Zespó³-I | Blok | Normalny | Pakiet | L1 |  |  |
|  | ROZR | **Rozruch** |  |  | 2026-12-21 | 2027-02-09 |  |  |  |  |  |  |  |  |  |  |  |  |  |  |  |  |  |  |  |  |  |  |
|  | ROZRUCH | **Rozruch** |  |  | 2026-12-21 | 2027-02-09 |  |  |  |  |  |  |  |  |  |  |  |  |  |  |  |  |  |  |  |  |  |  |
| 10YD43-070 |  | Przegl¹d gotowoœci do rozruchu |  | 8d | 2026-12-21 | 2026-12-30 | 10YD43-069, 10YD43-019, 10YD43-024, 10YD43-026 |  |  | 2026-12-17 | 2026-12-28 | 304.6d | 0d | TurboSys | 10YD43 | Rozruch | Rozruch | Rozruch | Micha³ | Wyspa | PM000 | Zespó³-K | Blok | Normalny | Pakiet | L2 |  |  |
| 10YD43-071 |  | Rozruch na zimno |  | 9d | 2026-12-31 | 2027-01-12 | 10YD43-070 |  |  | 2026-12-29 | 2027-01-08 | 304.6d | 0d | TurboSys | 10YD43 | Rozruch | Rozruch | Rozruch | Micha³ | Wyspa | PM000 | Zespó³-K | Blok | Normalny | Pakiet | L2 |  |  |
| 10YD43-072 |  | Rozruch na gor¹co / próby ruchowe |  | 19d | 2027-01-13 | 2027-02-08 | 10YD43-071 |  |  | 2027-01-11 | 2027-02-04 | 304.6d | 0d | TurboSys | 10YD43 | Rozruch | Rozruch | Rozruch | Micha³ | Wyspa | PM000 | Zespó³-K | Blok | Normalny | Pakiet | L2 |  |  |
| 10YD43-073 |  | KM: Odbiór koñcowy – Odgazowywacz | milestone | 0d | 2027-02-09 | 2027-02-09 | 10YD43-072 |  |  | 2027-02-05 | 2027-02-05 | 304.6d | 0d | TurboSys | 10YD43 | Rozruch | Rozruch | Kamieñ | Micha³ | Wyspa | PM000 | Zespó³-K | Blok | Normalny | Pakiet | L1 | Rev A |  |
|  | ZAKU | **Zakupy** |  |  | 2025-04-08 | 2026-09-30 |  |  |  |  |  |  |  |  |  |  |  |  |  |  |  |  |  |  |  |  |  |  |
|  | DOSTAWY | **Dostawy** |  |  | 2025-10-15 | 2026-09-30 |  |  |  |  |  |  |  |  |  |  |  |  |  |  |  |  |  |  |  |  |  |  |
| 10YD43-008 |  | Produkcja u dostawcy |  | 232d | 2025-10-15 A | 2026-09-04 A | 10YD43-007 | 100% |  | 2025-10-15 | 2026-09-03 |  |  | TurboSys | 10YD43 | Mechanic | Zakupy | Dostawa | Micha³ | Wyspa | PM000 | Zespó³-K | Blok | Normalny | Pakiet | L2 | Rev B |  |
| 10YD43-009 |  | Testy FAT |  | 3d | 2026-09-08 A | 2026-09-14 A | 10YD43-008 | 100% |  | 2026-09-04 | 2026-09-08 |  |  | TurboSys | 10YD43 | Mechanic | Zakupy | Dostawa | Micha³ | Wyspa | PM000 | Zespó³-K | Blok | Wysoki | Pakiet | L2 |  | Bez uwag |
| 10YD43-010 |  | Transport i dostawa na plac budowy |  | 14d | 2026-09-09 A | 2026-09-28 A | 10YD43-009 | 100% |  |  |  |  |  | TurboSys | 10YD43 | Mechanic | Zakupy | Dostawa | Micha³ | Wyspa | PM000 | Zespó³-W | Blok | Niski | Pakiet | L2 |  |  |
| 10YD43-011 |  | KM: Dostawa na budowê – Odgazowywacz | milestone | 0d | 2026-09-30 A | 2026-09-30 | 10YD43-010 | 100% | 2026-09-29 | 2026-09-29 | 2026-09-29 |  |  | TurboSys | 10YD43 | Mechanic | Zakupy | Kamieñ | Micha³ | Wyspa | PM000 | Zespó³-W | Blok | Normalny | Pakiet | L1 | Rev B | Do weryfikacji z wykonawc¹ |
|  | ZAMÓWIENIA | **Zamówienia** |  |  | 2025-04-08 | 2025-10-17 |  |  |  |  |  |  |  |  |  |  |  |  |  |  |  |  |  |  |  |  |  |  |
| 10YD43-005 |  | Zapytanie ofertowe |  | 17d | 2025-04-08 A | 2025-05-05 A | 10YD43-001 SS+20d | 100% |  | 2025-04-08 | 2025-04-30 |  |  | TurboSys | 10YD43 | Mechanic | Zakupy | Dostawa | Micha³ | Wyspa | PM000 | Zespó³-W | Blok | Normalny | Pakiet | L2 | Rev C | Ryzyko opóŸnienia |
| 10YD43-006 |  | Analiza i wybór ofert |  | 13d | 2025-05-01 A | 2025-05-22 A | 10YD43-005 | 100% |  | 2025-05-01 | 2025-05-19 |  |  | TurboSys | 10YD43 | Mechanic | Zakupy | Dostawa | Micha³ | Wyspa | PM000 | Zespó³-W | Blok | Normalny | Pakiet | L2 |  |  |
| 10YD43-007 |  | Zawarcie umowy / zamówienie |  | 5d | 2025-10-08 A | 2025-10-17 A | 10YD43-006, 10YD43-004 SS, 12FX78-004 FS+15d, 10BW45-004 FS+13d | 100% |  | 2025-10-08 | 2025-10-14 |  |  | TurboSys | 10YD43 | Mechanic | Zakupy | Dostawa | Micha³ | Wyspa | PM000 | Zespó³-W | Blok | Normalny | Pakiet | L1 |  |  |
|  | 11CP59 | **11CP59 – Pompy wody zasilaj¹cej** |  |  | 2025-03-07 | 2027-08-26 |  |  |  |  |  |  |  |  |  |  |  |  |  |  |  |  |  |  |  |  |  |  |
|  | BUDO | **Budowa** |  |  | 2025-10-23 | 2027-07-16 |  |  |  |  |  |  |  |  |  |  |  |  |  |  |  |  |  |  |  |  |  |  |
|  | AKPIA | **AKPiA** |  |  | 2027-04-21 | 2027-06-14 |  |  |  |  |  |  |  |  |  |  |  |  |  |  |  |  |  |  |  |  |  |  |
| 11CP59-140 |  | Monta¿ uk³adów AKPiA |  | 39d | 2027-04-21 | 2027-06-14 | 11CP59-014 SS+5d |  |  | 2026-12-23 | 2027-02-15 | 184.7d | 0d | Automaty | 11CP59 | AKPiA | Budowa | Roboty | Krzyszto | Wyspa | PM000 | Zespó³-W | Blok | Normalny | Pakiet | L2 |  |  |

| ID | WBS | Activity | Type | Duration | Start | Finish | Predecessors | Complete | Planned start | Planned finish | Total float | Free float | Calendar | AC_Wykonawca | AC_Obiekt | AC_Dyscyplina | AC_Faza | AC_Zakres | AC_Opiekun | AC_Obszar | AC_PP_PM | AC_Zespol | AC_Blok | AC_Priorytet | AC_Pakiet | AC_Poziom | Uwagi harmonogramisty | Rewizja dokumentu |
| --- | --- | --- | --- | --- | --- | --- | --- | --- | --- | --- | --- | --- | --- | --- | --- | --- | --- | --- | --- | --- | --- | --- | --- | --- | --- | --- | --- | --- |
|  | ELEKTRYKA | **Elektryka** |  |  | 2027-04-26 | 2027-07-02 |  |  |  |  |  |  |  |  |  |  |  |  |  |  |  |  |  |  |  |  |  |  |
| 11CP59-038 |  | Pod³¹czenia i pomiary – trasa 04 |  | 10d | 2027-04-26 | 2027-05-07 | 11CP59-037 FF |  | 2026-12-28 | 2027-01-08 | 249.7d | 0d |  | Automaty | 11CP59 | Elektryc | Budowa | Roboty | Krzyszto | Wyspa | PM000 | Zespó³-I | Blok | Krytyczn | Pakiet | L2 |  |  |
| 11CP59-050 |  | Pod³¹czenia i pomiary – trasa 06 |  | 10d | 2027-04-27 | 2027-05-10 | 11CP59-049 FF |  | 2026-12-29 | 2027-01-11 | 248.7d | 0d | Kalendarz 6-dniowy | Automaty | 11CP59 | Elektryc | Budowa | Roboty | Krzyszto | Wyspa | PM000 | Zespó³-K | Blok | Normalny | Pakiet | L2 |  |  |
| 11CP59-025 |  | Uk³adanie kabli – trasa 02 |  | 18d | 2027-04-28 | 2027-05-21 | 11CP59-014 SS+10d |  | 2026-12-30 | 2027-01-22 | 200.7d | 0d |  | Automaty | 11CP59 | Elektryc | Budowa | Roboty | Krzyszto | Wyspa | PM000 | Zespó³-W | Blok | Normalny | Pakiet | L2 | Ryzyko opóŸnienia |  |
| 11CP59-037 |  | Uk³adanie kabli – trasa 04 |  | 8d | 2027-04-28 | 2027-05-07 | 11CP59-014 SS+10d |  | 2026-12-30 | 2027-01-08 | 249.7d | 0d |  | Automaty | 11CP59 | Elektryc | Budowa | Roboty | Krzyszto | Wyspa | PM000 | Zespó³-K | Blok | Normalny | Pakiet | L2 |  |  |
| 11CP59-049 |  | Uk³adanie kabli – trasa 06 |  | 9d | 2027-04-28 | 2027-05-10 | 11CP59-014 SS+10d |  | 2026-12-30 | 2027-01-11 | 248.7d | 0d |  | Automaty | 11CP59 | Elektryc | Budowa | Roboty | Krzyszto | Wyspa | PM000 | Zespó³-E | Blok | Normalny | Pakiet | L2 | Do weryfikacji z wykonawc¹ |  |
| 11CP59-073 |  | Uk³adanie kabli – trasa 10 |  | 12d | 2027-04-28 | 2027-05-13 | 11CP59-014 SS+10d |  | 2026-12-30 | 2027-01-14 | 245.7d | 0d |  | Automaty | 11CP59 | Elektryc | Budowa | Roboty | Krzyszto | Wyspa | PM000 | Zespó³-W | Blok | Normalny | Pakiet | L2 |  | Rev B |
| 11CP59-085 |  | Uk³adanie kabli – trasa 12 |  | 4d | 2027-04-28 | 2027-05-03 | 11CP59-014 SS+10d |  | 2026-12-30 | 2027-01-04 | 253.7d | 0d |  | Automaty | 11CP59 | Elektryc | Budowa | Roboty | Krzyszto | Wyspa | PM000 | Zespó³-W | Blok | Normalny | Pakiet | L2 |  |  |
| 11CP59-086 |  | Pod³¹czenia i pomiary – trasa 12 |  | 4d | 2027-04-28 | 2027-05-03 | 11CP59-085 FF |  | 2026-12-30 | 2027-01-04 | 253.7d | 0d |  | Automaty | 11CP59 | Elektryc | Budowa | Roboty | Krzyszto | Wyspa | PM000 | Zespó³-K | Blok | Normalny | Pakiet | L2 |  |  |
| 11CP59-097 |  | Uk³adanie kabli – trasa 14 |  | 19d | 2027-04-28 | 2027-05-24 | 11CP59-014 SS+10d |  | 2026-12-30 | 2027-01-25 | 238.7d | 0d |  | Automaty | 11CP59 | Elektryc | Budowa | Roboty | Krzyszto | Wyspa | PM000 | Zespó³-W | Blok | Niski | Pakiet | L2 |  | Rev C |
| 11CP59-109 |  | Uk³adanie kabli – trasa 16 |  | 17d | 2027-04-28 | 2027-05-20 | 11CP59-014 SS+10d |  | 2026-12-30 | 2027-01-21 | 240.7d | 0d |  | Automaty | 11CP59 | Elektryc | Budowa | Roboty | Krzyszto | Wyspa | PM000 | Zespó³-W | Blok | Niski | Pakiet | L2 |  |  |
| 11CP59-121 |  | Uk³adanie kabli – trasa 18 |  | 16d | 2027-04-28 | 2027-05-19 | 11CP59-014 SS+10d |  | 2026-12-30 | 2027-01-20 | 241.7d | 0d |  | Automaty | 11CP59 | Elektryc | Budowa | Roboty | Krzyszto | Wyspa | PM000 | Zespó³-K | Blok | Normalny | Pakiet | L2 |  |  |
| 11CP59-133 |  | Uk³adanie kabli – trasa 20 |  | 7d | 2027-04-28 | 2027-05-06 | 11CP59-014 SS+10d |  | 2026-12-30 | 2027-01-07 | 211.7d | 0d |  | Automaty | 11CP59 | Elektryc | Budowa | Roboty | Krzyszto | Wyspa | PM000 | Zespó³-W | Blok | Normalny | Pakiet | L2 |  |  |
| 11CP59-134 |  | Pod³¹czenia i pomiary – trasa 20 |  | 3d | 2027-05-04 | 2027-05-06 | 11CP59-133 FF |  | 2027-01-05 | 2027-01-07 | 211.7d | 0d |  | Automaty | 11CP59 | Elektryc | Budowa | Roboty | Krzyszto | Wyspa | PM000 | Zespó³-W | Blok | Normalny | Pakiet | L2 |  |  |
| 11CP59-074 |  | Pod³¹czenia i pomiary – trasa 10 |  | 6d | 2027-05-06 | 2027-05-13 | 11CP59-073 FF |  | 2027-01-07 | 2027-01-14 | 245.7d | 0d |  | Automaty | 11CP59 | Elektryc | Budowa | Roboty | Krzyszto | Wyspa | PM000 | Zespó³-E | Blok | Krytyczn | Pakiet | L2 |  |  |
| 11CP59-122 |  | Pod³¹czenia i pomiary – trasa 18 |  | 10d | 2027-05-06 | 2027-05-19 | 11CP59-121 FF |  | 2027-01-07 | 2027-01-20 | 241.7d | 0d |  | Automaty | 11CP59 | Elektryc | Budowa | Roboty | Krzyszto | Wyspa | PM100 | Zespó³-I | Blok | Normalny | Pakiet | L2 |  |  |
| 11CP59-026 |  | Pod³¹czenia i pomiary – trasa 02 |  | 10d | 2027-05-10 | 2027-05-21 | 11CP59-025 FF |  | 2027-01-11 | 2027-01-22 | 200.7d | 0d |  | Automaty | 11CP59 | Elektryc | Budowa | Roboty | Krzyszto | Wyspa | PM000 | Zespó³-K | Blok | Normalny | Pakiet | L2 | Bez uwag |  |
| 11CP59-098 |  | Pod³¹czenia i pomiary – trasa 14 |  | 9d | 2027-05-12 | 2027-05-24 | 11CP59-097 FF |  | 2027-01-13 | 2027-01-25 | 238.7d | 0d |  | Automaty | 11CP59 | Elektryc | Budowa | Roboty | Krzyszto | Wyspa | PM000 | Zespó³-W | Blok | Normalny | Pakiet | L2 |  | Rev A |
| 11CP59-110 |  | Pod³¹czenia i pomiary – trasa 16 |  | 6d | 2027-05-13 | 2027-05-20 | 11CP59-109 FF |  | 2027-01-14 | 2027-01-21 | 240.7d | 0d |  | Automaty | 11CP59 | Elektryc | Budowa | Roboty | Krzyszto | Wyspa | PM000 | Zespó³-W | Blok | Normalny | Pakiet | L2 |  |  |
| 11CP59-061 |  | Uk³adanie kabli – trasa 08 |  | 20d | 2027-06-07 | 2027-07-02 | 11CP59-014 SS+10d |  | 2026-12-30 | 2027-01-26 | 210.6d | 0d |  | Automaty | 11CP59 | Elektryc | Budowa | Roboty | Krzyszto | Wyspa | PM000 | Zespó³-E | Blok | Normalny | Pakiet | L2 |  |  |
| 11CP59-062 |  | Pod³¹czenia i pomiary – trasa 08 |  | 8d | 2027-06-23 | 2027-07-02 | 11CP59-061 FF |  | 2027-01-15 | 2027-01-26 | 210.6d | 0d |  | Automaty | 11CP59 | Elektryc | Budowa | Roboty | Krzyszto | Wyspa | PM000 | Zespó³-K | Blok | Niski | Pakiet | L2 |  |  |
|  | MONTA¯ | **Monta¿** |  |  | 2025-12-29 | 2027-07-16 |  |  |  |  |  |  |  |  |  |  |  |  |  |  |  |  |  |  |  |  |  |  |
| 11CP59-013 |  | Monta¿ konstrukcji stalowych |  | 31d | 2025-12-29 A | 2026-02-10 A | 11CP59-012 | 100% | 2025-12-30 | 2026-02-10 |  |  |  | Automaty | 11CP59 | Mechanic | Budowa | Roboty | Krzyszto | Wyspa | PM000 | Zespó³-W | Blok | Normalny | Pakiet | L2 | Do weryfikacji z wykonawc¹ |  |
| 11CP59-014 |  | Monta¿ urz¹dzeñ g³ównych |  | 23d | 2027-04-14 | 2027-05-14 | 11CP59-013, 11CP59-011 |  | 2026-12-16 | 2027-01-15 | 184.7d | 0d |  | Automaty | 11CP59 | Mechanic | Budowa | Roboty | Krzyszto | Wyspa | PM000 | Zespó³-K | Blok | Krytyczn | Pakiet | L2 |  | Rev A |
| 11CP59-141 |  | KM: Zakoñczenie monta¿u – Pompy wody zasilaj¹cej | milestone | 0d | 2027-07-16 | 2027-07-16 | 11CP59-132, 11CP59-134, 11CP59-139, 11CP59-140, 11CP59-014 |  | 2027-02-16 | 2027-02-16 | 162.6d | 0d |  | Automaty | 11CP59 | Mechanic | Budowa | Kamieñ | Krzyszto | Wyspa | PM000 | Zespó³-W | Blok | Krytyczn | Pakiet | L2 | Do weryfikacji z wykonawc¹ |  |

| ID | WBS | Activity | Duration | Start | Finish | Predecessors | Complete | Planned start | Planned finish | Total float | Free float | Calendar | Uwagi harmonogramisty | Rewizja dokumentu | AC_Wykonawca | AC_Obiekt | AC_Dyscyplina | AC_Faza | AC_Zakres | AC_Opiekun | AC_Obszar | AC_PP_PM | AC_Zespol | AC_Blok | AC_Priorytet | AC_Pakiet | AC_Poziom |
| --- | --- | --- | --- | --- | --- | --- | --- | --- | --- | --- | --- | --- | --- | --- | --- | --- | --- | --- | --- | --- | --- | --- | --- | --- | --- | --- | --- |
|  | ROBOTY BUD | **Roboty budowlane** |  | 2025-10-23 | 2026-01-06 |  |  |  |  |  |  |  |  |  |  |  |  |  |  |  |  |  |  |  |  |  |  |
| 11CP59-012 |  | Fundamenty i roboty ziemne | 51d | 2025-10-23 A | 2026-01-06 A | 11CP59-007 | 100% | 2025-10-20 | 2025-12-29 |  |  |  | Uzgodnione na koordynacji | Rev C | Automaty | 11CP59 | Budowlan | Budowa | Roboty | Krzyszto | Wyspa | PM000 | Zespó³-K | Blok | Wysoki | Pakiet | L2 |
|  | RUROCI¥GI | **Ruroci¹gi** |  | 2025-12-30 | 2027-07-15 |  |  |  |  |  |  |  |  |  |  |  |  |  |  |  |  |  |  |  |  |  |  |
|  | SEKCJA 01 | **Sekcja 01** |  | 2025-12-30 | 2027-06-17 |  |  |  |  |  |  |  |  |  |  |  |  |  |  |  |  |  |  |  |  |  |  |
| 11CP59-015 |  | Prefabrykacja ruroci¹gów – Sekcja 01 | 9.7d | 2025-12-30 A | 2026-01-14 A | 11CP59-012 | 100% | 2025-12-30 | 2026-01-09 |  |  |  |  |  | Automaty | 11CP59 | Ruroci¹g | Budowa | Roboty | Krzyszto | Wyspa | PM000 | Zespó³-K | Blok | Normalny | Pakiet | L2 |
| 11CP59-016 |  | Monta¿ ruroci¹gów – Sekcja 01 | 10.8d | 2027-04-22 | 2027-05-06 | 11CP59-015, 11CP59-014 SS+6d |  | 2026-12-24 | 2027-01-06 | 196.9d | 0d |  | Uzgodnione na koordynacji | Rev B | Automaty | 11CP59 | Ruroci¹g | Budowa | Roboty | Krzyszto | Wyspa | PM000 | Zespó³-K | Blok | Niski | Pakiet | L2 |
| 11CP59-017 |  | Próba ciœnieniowa – Sekcja 01 | 5d | 2027-05-28 | 2027-06-03 | 11CP59-016 |  | 2027-01-07 | 2027-01-13 | 182.6d | 0d |  |  | Rev B | Automaty | 11CP59 | Ruroci¹g | Budowa | Roboty | Krzyszto | Wyspa | PM300 | Zespó³-I | Blok | Normalny | Pakiet | L2 |
| 11CP59-018 |  | Izolacje – Sekcja 01 | 8d | 2027-06-04 | 2027-06-15 | 11CP59-017 |  | 2027-01-14 | 2027-01-25 | 182.6d | 0d |  |  |  | Automaty | 11CP59 | Ruroci¹g | Budowa | Roboty | Krzyszto | Wyspa | PM000 | Zespó³-K | Blok | Normalny | Pakiet | L2 |
| 11CP59-019 |  | Malowanie i oznakowanie – Sekcja 01 | 7d | 2027-06-09 | 2027-06-17 | 11CP59-018 FF+2d |  | 2027-01-19 | 2027-01-27 | 182.6d | 0d |  |  |  | Automaty | 11CP59 | Ruroci¹g | Budowa | Roboty | Krzyszto | Wyspa | PM000 | Zespó³-W | Blok | Normalny | Pakiet | L2 |
|  | SEKCJA 02 | **Sekcja 02** |  | 2026-01-09 | 2027-06-08 |  |  |  |  |  |  |  |  |  |  |  |  |  |  |  |  |  |  |  |  |  |  |
| 11CP59-020 |  | Prefabrykacja ruroci¹gów – Sekcja 02 | 5.4d | 2026-01-09 A | 2026-01-15 A | 11CP59-012, 11CP59-015 SS+5d | 100% | 2026-01-06 | 2026-01-12 |  |  |  |  | Rev A | Automaty | 11CP59 | Ruroci¹g | Budowa | Roboty | Krzyszto | Wyspa | PM000 | Zespó³-W | Blok | Normalny | Pakiet | L2 |
| 11CP59-021 |  | Monta¿ ruroci¹gów – Sekcja 02 | 24.8d | 2027-04-21 | 2027-05-25 | 11CP59-020, 11CP59-014 SS+5d |  | 2026-12-23 | 2027-01-25 | 188.9d | 0d |  |  | Rev C | Automaty | 11CP59 | Ruroci¹g | Budowa | Roboty | Krzyszto | Wyspa | PM000 | Zespó³-W | Blok | Normalny | Pakiet | L2 |
| 11CP59-022 |  | Próba ciœnieniowa – Sekcja 02 | 5d | 2027-05-26 | 2027-06-01 | 11CP59-021 |  | 2027-01-26 | 2027-02-01 | 188.9d | 0d |  |  | Rev C | Automaty | 11CP59 | Ruroci¹g | Budowa | Roboty | Krzyszto | Wyspa | PM000 | Zespó³-W | Blok | Normalny | Pakiet | L2 |
| 11CP59-023 |  | Izolacje – Sekcja 02 | 3d | 2027-06-02 | 2027-06-04 | 11CP59-022 |  | 2027-02-02 | 2027-02-04 | 188.9d | 0d |  |  | Rev B | Automaty | 11CP59 | Ruroci¹g | Budowa | Roboty | Krzyszto | Wyspa | PM100 | Zespó³-E | Blok | Normalny | Pakiet | L2 |
| 11CP59-024 |  | Malowanie i oznakowanie – Sekcja 02 | 3d | 2027-06-04 | 2027-06-08 | 11CP59-023 FF+2d |  | 2027-02-04 | 2027-02-08 | 188.9d | 0d |  | Ryzyko opóŸnienia |  | Automaty | 11CP59 | Ruroci¹g | Budowa | Roboty | Krzyszto | Wyspa | PM000 | Zespó³-W | Blok | Normalny | Pakiet | L2 |
|  | SEKCJA 03 | **Sekcja 03** |  | 2026-01-16 | 2027-05-21 |  |  |  |  |  |  |  |  |  |  |  |  |  |  |  |  |  |  |  |  |  |  |
|  | PODSEKCJA | **Podsekcja 03.A** |  | 2026-01-16 | 2027-05-21 |  |  |  |  |  |  |  |  |  |  |  |  |  |  |  |  |  |  |  |  |  |  |
| 11CP59-027 |  | Prefabrykacja ruroci¹gów – Sekcja 03 | 11.7d | 2026-01-16 A | 2026-02-04 A | 11CP59-012, 11CP59-020 SS+5d | 100% | 2026-01-13 | 2026-01-27 |  |  | Kalendarz 6-dniowy |  |  | Automaty | 11CP59 | Ruroci¹g | Budowa | Roboty | Krzyszto | Wyspa | PM000 | Zespó³-W | Blok | Niski | Pakiet | L2 |
| 11CP59-028 |  | Monta¿ ruroci¹gów – Sekcja 03 | 10.1d | 2027-04-22 | 2027-05-06 | 11CP59-027, 11CP59-014 SS+6d |  | 2026-12-24 | 2027-01-06 | 240.6d | 0d |  |  | Rev C | Automaty | 11CP59 | Ruroci¹g | Budowa | Roboty | Krzyszto | Wyspa | PM000 | Zespó³-W | Blok | Normalny | Pakiet | L2 |
| 11CP59-029 |  | Próba ciœnieniowa – Sekcja 03 | 2d | 2027-05-07 | 2027-05-10 | 11CP59-028 |  | 2027-01-07 | 2027-01-08 | 240.6d | 0d |  |  |  | Automaty | 11CP59 | Ruroci¹g | Budowa | Roboty | Krzyszto | Wyspa | PM000 | Zespó³-K | Blok | Normalny | Pakiet | L2 |
| 11CP59-030 |  | Izolacje – Sekcja 03 | 7d | 2027-05-11 | 2027-05-19 | 11CP59-029 |  | 2027-01-11 | 2027-01-19 | 240.6d | 0d |  |  | Rev A | Automaty | 11CP59 | Ruroci¹g | Budowa | Roboty | Krzyszto | Wyspa | PM000 | Zespó³-I | Blok | Normalny | Pakiet | L2 |
| 11CP59-031 |  | Malowanie i oznakowanie – Sekcja 03 | 4d | 2027-05-18 | 2027-05-21 | 11CP59-030 FF+2d |  | 2027-01-18 | 2027-01-21 | 240.6d | 0d |  |  |  | Automaty | 11CP59 | Ruroci¹g | Budowa | Roboty | Krzyszto | Wyspa | PM000 | Zespó³-K | Blok | Wysoki | Pakiet | L2 |
|  | SEKCJA 04 | **Sekcja 04** |  | 2026-01-23 | 2027-06-10 |  |  |  |  |  |  |  |  |  |  |  |  |  |  |  |  |  |  |  |  |  |  |
| 11CP59-032 |  | Prefabrykacja ruroci¹gów – Sekcja 04 | 4.1d | 2026-01-23 A | 2026-01-30 A | 11CP59-012, 11CP59-027 SS+5d | 100% | 2026-01-20 | 2026-01-23 |  |  |  |  |  | Automaty | 11CP59 | Ruroci¹g | Budowa | Roboty | Krzyszto | Wyspa | PM000 | Zespó³-W | Blok | Normalny | Pakiet | L2 |
| 11CP59-033 |  | Monta¿ ruroci¹gów – Sekcja 04 | 22.9d | 2027-04-19 | 2027-05-19 | 11CP59-032, 11CP59-014 SS+3d |  | 2026-12-21 | 2027-01-19 | 225.8d | 0d |  | Bez uwag |  | Automaty | 11CP59 | Ruroci¹g | Budowa | Roboty | Krzyszto | Wyspa | PM000 | Zespó³-K | Blok | Normalny | Pakiet | L2 |
| 11CP59-034 |  | Próba ciœnieniowa – Sekcja 04 | 5d | 2027-05-20 | 2027-05-26 | 11CP59-033 |  | 2027-01-20 | 2027-01-26 | 225.8d | 0d |  |  | Rev C | Automaty | 11CP59 | Ruroci¹g | Budowa | Roboty | Krzyszto | Wyspa | PM000 | Zespó³-W | Blok | Normalny | Pakiet | L2 |
| 11CP59-035 |  | Izolacje – Sekcja 04 | 9d | 2027-05-27 | 2027-06-08 | 11CP59-034 |  | 2027-01-27 | 2027-02-08 | 225.8d | 0d |  |  |  | Automaty | 11CP59 | Ruroci¹g | Budowa | Roboty | Krzyszto | Wyspa | PM000 | Zespó³-W | Blok | Normalny | Pakiet | L2 |
| 11CP59-036 |  | Malowanie i oznakowanie – Sekcja 04 | 8d | 2027-06-01 | 2027-06-10 | 11CP59-035 FF+2d |  | 2027-02-01 | 2027-02-10 | 225.8d | 0d | Kalendarz 6-dniowy |  |  | Automaty | 11CP59 | Ruroci¹g | Budowa | Roboty | Krzyszto | Wyspa | PM000 | Zespó³-K | Blok | Normalny | Pakiet | L2 |

| ID | WBS | Activity | Duration | Start | Finish | Predecessors | Complete | Planned start | Planned finish | Total float | Free float | Calendar | AC_Wykonawca | AC_Obiekt | AC_Dyscyplina | AC_Faza | AC_Zakres | AC_Opiekun | AC_Obszar | AC_PP_PM | AC_Zespol | AC_Blok | AC_Priorytet | AC_Pakiet | AC_Poziom | Rewizja dokumentu | Uwagi harmonogramisty |
| --- | --- | --- | --- | --- | --- | --- | --- | --- | --- | --- | --- | --- | --- | --- | --- | --- | --- | --- | --- | --- | --- | --- | --- | --- | --- | --- | --- |
|  | SEKCJA 05 | **Sekcja 05** |  | 2026-01-26 | 2027-05-19 |  |  |  |  |  |  |  |  |  |  |  |  |  |  |  |  |  |  |  |  |  |  |
| 11CP59-039 |  | Prefabrykacja ruroci¹gów – Sekcja 05 | 12.4d | 2026-01-26 A | 2026-02-12 A | 11CP59-012, 11CP59-032 SS+5d | 100% | 2026-01-27 | 2026-02-11 |  |  |  | Automaty | 11CP59 | Ruroci¹g | Budowa | Roboty | Krzyszto | Wyspa | PM000 | Zespó³-W | Blok | Normalny | Pakiet | L2 |  |  |
| 11CP59-040 |  | Monta¿ ruroci¹gów – Sekcja 05 | 11.8d | 2027-04-19 | 2027-05-04 | 11CP59-039, 11CP59-014 SS+3d |  | 2026-12-21 | 2027-01-04 | 241.9d | 0d |  | Automaty | 11CP59 | Ruroci¹g | Budowa | Roboty | Krzyszto | Wyspa | PM000 | Zespó³-W | Blok | Wysoki | Pakiet | L2 |  |  |
| 11CP59-041 |  | Próba ciœnieniowa – Sekcja 05 | 4d | 2027-05-05 | 2027-05-10 | 11CP59-040 |  | 2027-01-05 | 2027-01-08 | 241.9d | 0d |  | Automaty | 11CP59 | Ruroci¹g | Budowa | Roboty | Krzyszto | Wyspa | PM000 | Zespó³-W | Blok | Wysoki | Pakiet | L2 |  |  |
| 11CP59-042 |  | Izolacje – Sekcja 05 | 5d | 2027-05-11 | 2027-05-17 | 11CP59-041 |  | 2027-01-11 | 2027-01-15 | 241.9d | 0d |  | Automaty | 11CP59 | Ruroci¹g | Budowa | Roboty | Krzyszto | Wyspa | PM000 | Zespó³-W | Blok | Niski | Pakiet | L2 | Rev B |  |
| 11CP59-043 |  | Malowanie i oznakowanie – Sekcja 05 | 4d | 2027-05-14 | 2027-05-19 | 11CP59-042 FF+2d |  | 2027-01-14 | 2027-01-19 | 241.9d | 0d |  | Automaty | 11CP59 | Ruroci¹g | Budowa | Roboty | Krzyszto | Wyspa | PM000 | Zespó³-K | Blok | Normalny | Pakiet | L2 | Rev B |  |
|  | SEKCJA 06 | **Sekcja 06** |  | 2026-02-05 | 2027-05-21 |  |  |  |  |  |  |  |  |  |  |  |  |  |  |  |  |  |  |  |  |  |  |
|  | PODSEKCJA | **Podsekcja 06.A** |  | 2026-02-05 | 2027-05-21 |  |  |  |  |  |  |  |  |  |  |  |  |  |  |  |  |  |  |  |  |  |  |
| 11CP59-044 |  | Prefabrykacja ruroci¹gów – Sekcja 06 | 4d | 2026-02-05 A | 2026-02-13 A | 11CP59-012, 11CP59-039 SS+5d | 100% | 2026-02-03 | 2026-02-06 |  |  |  | Automaty | 11CP59 | Ruroci¹g | Budowa | Roboty | Krzyszto | Wyspa | PM000 | Zespó³-W | Blok | Normalny | Pakiet | L2 |  |  |
| 11CP59-045 |  | Monta¿ ruroci¹gów – Sekcja 06 | 9.4d | 2027-04-16 | 2027-04-29 | 11CP59-044, 11CP59-014 SS+2d |  | 2026-12-18 | 2026-12-30 | 240.3d | 0d |  | Automaty | 11CP59 | Ruroci¹g | Budowa | Roboty | Krzyszto | Wyspa | PM000 | Zespó³-K | Blok | Normalny | Pakiet | L2 |  |  |
| 11CP59-046 |  | Próba ciœnieniowa – Sekcja 06 | 6d | 2027-04-30 | 2027-05-07 | 11CP59-045 |  | 2026-12-31 | 2027-01-07 | 240.3d | 0d |  | Automaty | 11CP59 | Ruroci¹g | Budowa | Roboty | Krzyszto | Wyspa | PM000 | Zespó³-W | Blok | Wysoki | Pakiet | L2 |  |  |
| 11CP59-047 |  | Izolacje – Sekcja 06 | 8d | 2027-05-10 | 2027-05-19 | 11CP59-046 |  | 2027-01-08 | 2027-01-19 | 240.3d | 0d |  | Automaty | 11CP59 | Ruroci¹g | Budowa | Roboty | Krzyszto | Wyspa | PM000 | Zespó³-K | Blok | Normalny | Pakiet | L2 |  |  |
| 11CP59-048 |  | Malowanie i oznakowanie – Sekcja 06 | 5d | 2027-05-17 | 2027-05-21 | 11CP59-047 FF+2d |  | 2027-01-15 | 2027-01-21 | 240.3d | 0d |  | Automaty | 11CP59 | Ruroci¹g | Budowa | Roboty | Krzyszto | Wyspa | PM000 | Zespó³-K | Blok | Normalny | Pakiet | L2 |  | Czeka na dostawê |
|  | SEKCJA 07 | **Sekcja 07** |  | 2026-02-10 | 2027-06-07 |  |  |  |  |  |  |  |  |  |  |  |  |  |  |  |  |  |  |  |  |  |  |
| 11CP59-051 |  | Prefabrykacja ruroci¹gów – Sekcja 07 | 7.2d | 2026-02-10 A | 2026-02-19 A | 11CP59-012, 11CP59-044 SS+5d | 100% | 2026-02-10 | 2026-02-18 |  |  |  | Automaty | 11CP59 | Ruroci¹g | Budowa | Roboty | Krzyszto | Wyspa | PM000 | Zespó³-W | Blok | Normalny | Pakiet | L2 |  |  |
| 11CP59-052 |  | Monta¿ ruroci¹gów – Sekcja 07 | 15d | 2027-04-29 | 2027-05-19 | 11CP59-051, 11CP59-014 SS+4d |  | 2026-12-22 | 2027-01-11 | 229.6d | 0d |  | Automaty | 11CP59 | Ruroci¹g | Budowa | Roboty | Krzyszto | Wyspa | PM300 | Zespó³-E | Blok | Normalny | Pakiet | L2 |  |  |
| 11CP59-053 |  | Próba ciœnieniowa – Sekcja 07 | 6d | 2027-05-20 | 2027-05-27 | 11CP59-052 |  | 2027-01-12 | 2027-01-19 | 229.6d | 0d |  | Automaty | 11CP59 | Ruroci¹g | Budowa | Roboty | Krzyszto | Wyspa | PM000 | Zespó³-W | Blok | Niski | Pakiet | L2 |  | Bez uwag |
| 11CP59-054 |  | Izolacje – Sekcja 07 | 5d | 2027-05-28 | 2027-06-03 | 11CP59-053 |  | 2027-01-20 | 2027-01-26 | 229.6d | 0d |  | Automaty | 11CP59 | Ruroci¹g | Budowa | Roboty | Krzyszto | Wyspa | PM000 | Zespó³-W | Blok | Normalny | Pakiet | L2 | Rev C | Ryzyko opóŸnienia |
| 11CP59-055 |  | Malowanie i oznakowanie – Sekcja 07 | 2d | 2027-06-04 | 2027-06-07 | 11CP59-054 FF+2d |  | 2027-01-27 | 2027-01-28 | 229.6d | 0d | Kalendarz 6-dniowy | Automaty | 11CP59 | Ruroci¹g | Budowa | Roboty | Krzyszto | Wyspa | PM000 | Zespó³-W | Blok | Normalny | Pakiet | L2 | Rev B |  |
|  | SEKCJA 08 | **Sekcja 08** |  | 2026-02-17 | 2027-06-28 |  |  |  |  |  |  |  |  |  |  |  |  |  |  |  |  |  |  |  |  |  |  |
| 11CP59-056 |  | Prefabrykacja ruroci¹gów – Sekcja 08 | 8.4d | 2026-02-17 A | 2026-02-26 A | 11CP59-012, 11CP59-051 SS+5d | 100% |  |  |  |  |  | Automaty | 11CP59 | Ruroci¹g | Budowa | Roboty | Krzyszto | Wyspa | PM000 | Zespó³-K | Blok | Normalny | Pakiet | L2 | Rev A |  |
| 11CP59-057 |  | Monta¿ ruroci¹gów – Sekcja 08 | 22.9d | 2027-04-22 | 2027-05-24 | 11CP59-056, 11CP59-014 SS+6d |  | 2026-12-24 | 2027-01-22 | 220.8d | 0d |  | Automaty | 11CP59 | Ruroci¹g | Budowa | Roboty | Krzyszto | Wyspa | PM000 | Zespó³-W | Blok | Normalny | Pakiet | L2 |  |  |
| 11CP59-058 |  | Próba ciœnieniowa – Sekcja 08 | 5d | 2027-05-25 | 2027-05-31 | 11CP59-057 |  | 2027-01-25 | 2027-01-29 | 220.8d | 0d |  | Automaty | 11CP59 | Ruroci¹g | Budowa | Roboty | Krzyszto | Wyspa | PM000 | Zespó³-W | Blok | Normalny | Pakiet | L2 |  | Czeka na dostawê |
| 11CP59-059 |  | Izolacje – Sekcja 08 | 11d | 2027-06-10 | 2027-06-24 | 11CP59-058 |  | 2027-02-01 | 2027-02-15 | 214.6d | 0d |  | Automaty | 11CP59 | Ruroci¹g | Budowa | Roboty | Krzyszto | Wyspa | PM000 | Zespó³-E | Blok | Wysoki | Pakiet | L2 |  |  |
| 11CP59-060 |  | Malowanie i oznakowanie – Sekcja 08 | 4d | 2027-06-23 | 2027-06-28 | 11CP59-059 FF+2d |  | 2027-02-12 | 2027-02-17 | 214.6d | 0d |  | Automaty | 11CP59 | Ruroci¹g | Budowa | Roboty | Krzyszto | Wyspa | PM300 | Zespó³-E | Blok | Normalny | Pakiet | L2 | Rev B | Czeka na dostawê |

| ID | WBS | Activity | Duration | Start | Finish | Predecessors | Complete | Planned start | Planned finish | Total float | Free float | Calendar | AC_Wykonawca | AC_Obiekt | AC_Dyscyplina | AC_Faza | AC_Zakres | AC_Opiekun | AC_Obszar | AC_PP_PM | AC_Zespol | AC_Blok | AC_Priorytet | AC_Pakiet | AC_Poziom | Uwagi harmonogramisty | Rewizja dokumentu |
| --- | --- | --- | --- | --- | --- | --- | --- | --- | --- | --- | --- | --- | --- | --- | --- | --- | --- | --- | --- | --- | --- | --- | --- | --- | --- | --- | --- |
|  | SEKCJA 09 | **Sekcja 09** |  | 2026-02-23 | 2027-05-26 |  |  |  |  |  |  |  |  |  |  |  |  |  |  |  |  |  |  |  |  |  |  |
|  | PODSEKCJA | **Podsekcja 09.A** |  | 2026-02-23 | 2027-05-26 |  |  |  |  |  |  |  |  |  |  |  |  |  |  |  |  |  |  |  |  |  |  |
| 11CP59-063 |  | Prefabrykacja ruroci¹gów – Sekcja 09 | 8.8d | 2026-02-23 A | 2026-03-06 A | 11CP59-012, 11CP59-056 SS+5d | 100% | 2026-02-24 | 2026-03-05 |  |  | Kalendarz 6-dniowy | Automaty | 11CP59 | Ruroci¹g | Budowa | Roboty | Krzyszto | Wyspa | PM000 | Zespó³-W | Blok | Normalny | Pakiet | L2 |  |  |
| 11CP59-064 |  | Monta¿ ruroci¹gów – Sekcja 09 | 11.5d | 2027-04-23 | 2027-05-10 | 11CP59-063, 11CP59-014 SS+7d |  | 2026-12-25 | 2027-01-08 | 237.2d | 0d |  | Automaty | 11CP59 | Ruroci¹g | Budowa | Roboty | Krzyszto | Wyspa | PM000 | Zespó³-K | Blok | Normalny | Pakiet | L2 | Ryzyko opóŸnienia |  |
| 11CP59-065 |  | Próba ciœnieniowa – Sekcja 09 | 2d | 2027-05-11 | 2027-05-12 | 11CP59-064 |  | 2027-01-11 | 2027-01-12 | 237.2d | 0d |  | Automaty | 11CP59 | Ruroci¹g | Budowa | Roboty | Krzyszto | Wyspa | PM000 | Zespó³-K | Blok | Normalny | Pakiet | L2 |  | Rev B |
| 11CP59-066 |  | Izolacje – Sekcja 09 | 8d | 2027-05-13 | 2027-05-24 | 11CP59-065 |  | 2027-01-13 | 2027-01-22 | 237.2d | 0d |  | Automaty | 11CP59 | Ruroci¹g | Budowa | Roboty | Krzyszto | Wyspa | PM000 | Zespó³-K | Blok | Normalny | Pakiet | L2 |  |  |
| 11CP59-067 |  | Malowanie i oznakowanie – Sekcja 09 | 4d | 2027-05-21 | 2027-05-26 | 11CP59-066 FF+2d |  | 2027-01-21 | 2027-01-26 | 237.2d | 0d |  | Automaty | 11CP59 | Ruroci¹g | Budowa | Roboty | Krzyszto | Wyspa | PM000 | Zespó³-W | Blok | Niski | Pakiet | L2 | Do weryfikacji z wykonawc¹ |  |
|  | SEKCJA 10 | **Sekcja 10** |  | 2026-03-05 | 2027-05-24 |  |  |  |  |  |  |  |  |  |  |  |  |  |  |  |  |  |  |  |  |  |  |
| 11CP59-068 |  | Prefabrykacja ruroci¹gów – Sekcja 10 | 10d | 2026-03-05 A | 2026-03-23 A | 11CP59-012, 11CP59-063 SS+5d | 100% | 2026-03-03 | 2026-03-16 |  |  |  | Automaty | 11CP59 | Ruroci¹g | Budowa | Roboty | Krzyszto | Wyspa | PM000 | Zespó³-W | Blok | Normalny | Pakiet | L2 | Do weryfikacji z wykonawc¹ |  |
| 11CP59-069 |  | Monta¿ ruroci¹gów – Sekcja 10 | 14d | 2027-04-15 | 2027-05-04 | 11CP59-068, 11CP59-014 SS+1d |  | 2026-12-17 | 2027-01-05 | 238.7d | 0d |  | Automaty | 11CP59 | Ruroci¹g | Budowa | Roboty | Krzyszto | Wyspa | PM000 | Zespó³-K | Blok | Niski | Pakiet | L2 |  | Rev A |
| 11CP59-070 |  | Próba ciœnieniowa – Sekcja 10 | 6d | 2027-05-05 | 2027-05-12 | 11CP59-069 |  | 2027-01-06 | 2027-01-13 | 238.7d | 0d |  | Automaty | 11CP59 | Ruroci¹g | Budowa | Roboty | Krzyszto | Wyspa | PM000 | Zespó³-K | Blok | Niski | Pakiet | L2 |  | Rev A |
| 11CP59-071 |  | Izolacje – Sekcja 10 | 6d | 2027-05-13 | 2027-05-20 | 11CP59-070 |  | 2027-01-14 | 2027-01-21 | 238.7d | 0d |  | Automaty | 11CP59 | Ruroci¹g | Budowa | Roboty | Krzyszto | Wyspa | PM000 | Zespó³-K | Blok | Niski | Pakiet | L2 |  | Rev B |
| 11CP59-072 |  | Malowanie i oznakowanie – Sekcja 10 | 6d | 2027-05-17 | 2027-05-24 | 11CP59-071 FF+2d |  | 2027-01-18 | 2027-01-25 | 238.7d | 0d |  | Automaty | 11CP59 | Ruroci¹g | Budowa | Roboty | Krzyszto | Wyspa | PM000 | Zespó³-K | Blok | Normalny | Pakiet | L2 |  | Rev A |
|  | SEKCJA 11 | **Sekcja 11** |  | 2026-03-11 | 2027-06-09 |  |  |  |  |  |  |  |  |  |  |  |  |  |  |  |  |  |  |  |  |  |  |
| 11CP59-075 |  | Prefabrykacja ruroci¹gów – Sekcja 11 | 8.9d | 2026-03-11 A | 2026-03-20 A | 11CP59-012, 11CP59-068 SS+5d | 100% | 2026-03-10 | 2026-03-19 |  |  |  | Automaty | 11CP59 | Ruroci¹g | Budowa | Roboty | Krzyszto | Wyspa | PM000 | Zespó³-W | Blok | Normalny | Pakiet | L2 |  |  |
| 11CP59-076 |  | Monta¿ ruroci¹gów – Sekcja 11 | 11.8d | 2027-04-28 | 2027-05-13 | 11CP59-075, 11CP59-014 SS+10d |  | 2026-12-30 | 2027-01-13 | 226.9d | 0d |  | Automaty | 11CP59 | Ruroci¹g | Budowa | Roboty | Krzyszto | Wyspa | PM000 | Zespó³-W | Blok | Niski | Pakiet | L2 |  |  |
| 11CP59-077 |  | Próba ciœnieniowa – Sekcja 11 | 6d | 2027-05-14 | 2027-05-21 | 11CP59-076 |  | 2027-01-14 | 2027-01-21 | 226.9d | 0d |  | Automaty | 11CP59 | Ruroci¹g | Budowa | Roboty | Krzyszto | Wyspa | PM000 | Zespó³-W | Blok | Normalny | Pakiet | L2 |  | Rev A |
| 11CP59-078 |  | Izolacje – Sekcja 11 | 11d | 2027-05-24 | 2027-06-07 | 11CP59-077 |  | 2027-01-22 | 2027-02-05 | 226.9d | 0d |  | Automaty | 11CP59 | Ruroci¹g | Budowa | Roboty | Krzyszto | Wyspa | PM000 | Zespó³-K | Blok | Normalny | Pakiet | L2 |  | Rev C |
| 11CP59-079 |  | Malowanie i oznakowanie – Sekcja 11 | 4d | 2027-06-04 | 2027-06-09 | 11CP59-078 FF+2d |  | 2027-02-04 | 2027-02-09 | 226.9d | 0d | Kalendarz 6-dniowy | Automaty | 11CP59 | Ruroci¹g | Budowa | Roboty | Krzyszto | Wyspa | PM000 | Zespó³-K | Blok | Normalny | Pakiet | L2 |  |  |
|  | SEKCJA 12 | **Sekcja 12** |  | 2026-03-17 | 2027-05-27 |  |  |  |  |  |  |  |  |  |  |  |  |  |  |  |  |  |  |  |  |  |  |
|  | PODSEKCJA | **Podsekcja 12.A** |  | 2026-03-17 | 2027-05-27 |  |  |  |  |  |  |  |  |  |  |  |  |  |  |  |  |  |  |  |  |  |  |
| 11CP59-080 |  | Prefabrykacja ruroci¹gów – Sekcja 12 | 4.8d | 2026-03-17 A | 2026-03-25 A | 11CP59-012, 11CP59-075 SS+5d | 100% | 2026-03-17 | 2026-03-20 |  |  |  | Automaty | 11CP59 | Ruroci¹g | Budowa | Roboty | Krzyszto | Wyspa | PM000 | Zespó³-K | Blok | Wysoki | Pakiet | L2 |  |  |
| 11CP59-081 |  | Monta¿ ruroci¹gów – Sekcja 12 | 10.7d | 2027-04-21 | 2027-05-05 | 11CP59-080, 11CP59-014 SS+5d |  | 2026-12-23 | 2027-01-05 | 236d | 0d |  | Automaty | 11CP59 | Ruroci¹g | Budowa | Roboty | Krzyszto | Wyspa | PM000 | Zespó³-W | Blok | Normalny | Pakiet | L2 |  | Rev A |
| 11CP59-082 |  | Próba ciœnieniowa – Sekcja 12 | 2d | 2027-05-06 | 2027-05-07 | 11CP59-081 |  | 2027-01-06 | 2027-01-07 | 236d | 0d |  | Automaty | 11CP59 | Ruroci¹g | Budowa | Roboty | Krzyszto | Wyspa | PM000 | Zespó³-K | Blok | Wysoki | Pakiet | L2 |  |  |
| 11CP59-083 |  | Izolacje – Sekcja 12 | 12d | 2027-05-10 | 2027-05-25 | 11CP59-082 |  | 2027-01-08 | 2027-01-25 | 236d | 0d |  | Automaty | 11CP59 | Ruroci¹g | Budowa | Roboty | Krzyszto | Wyspa | PM000 | Zespó³-K | Blok | Normalny | Pakiet | L2 |  |  |
| 11CP59-084 |  | Malowanie i oznakowanie – Sekcja 12 | 4d | 2027-05-24 | 2027-05-27 | 11CP59-083 FF+2d |  | 2027-01-22 | 2027-01-27 | 236d | 0d |  | Automaty | 11CP59 | Ruroci¹g | Budowa | Roboty | Krzyszto | Wyspa | PM000 | Zespó³-W | Blok | Normalny | Pakiet | L2 | Uzgodnione na koordynacji | Rev C |

| ID | WBS | Activity | Duration | Start | Finish | Predecessors | Complete | Planned start | Planned finish | Total float | Free float | Calendar | AC_Wykonawca | AC_Obiekt | AC_Dyscyplina | AC_Faza | AC_Zakres | AC_Opiekun | AC_Obszar | AC_PP_PM | AC_Zespol | AC_Blok | AC_Priorytet | AC_Pakiet | AC_Poziom | Uwagi harmonogramisty | Rewizja dokumentu |
| --- | --- | --- | --- | --- | --- | --- | --- | --- | --- | --- | --- | --- | --- | --- | --- | --- | --- | --- | --- | --- | --- | --- | --- | --- | --- | --- | --- |
|  | SEKCJA 13 | **Sekcja 13** |  | 2026-03-27 | 2027-06-11 |  |  |  |  |  |  |  |  |  |  |  |  |  |  |  |  |  |  |  |  |  |  |
| 11CP59-087 |  | Prefabrykacja ruroci¹gów – Sekcja 13 | 12.7d | 2026-03-27 A | 2026-04-14 A | 11CP59-012, 11CP59-080 SS+5d | 100% | 2026-03-24 | 2026-04-08 |  |  |  | Automaty | 11CP59 | Ruroci¹g | Budowa | Roboty | Krzyszto | Wyspa | PM200 | Zespó³-E | Blok | Normalny | Pakiet | L2 |  |  |
| 11CP59-088 |  | Monta¿ ruroci¹gów – Sekcja 13 | 21.4d | 2027-04-26 | 2027-05-25 | 11CP59-087, 11CP59-014 SS+8d |  | 2026-12-28 | 2027-01-25 | 225.3d | 0d | Kalendarz 6-dniowy | Automaty | 11CP59 | Ruroci¹g | Budowa | Roboty | Krzyszto | Wyspa | PM000 | Zespó³-K | Blok | Wysoki | Pakiet | L2 | Do weryfikacji z wykonawc¹ |  |
| 11CP59-089 |  | Próba ciœnieniowa – Sekcja 13 | 6d | 2027-05-26 | 2027-06-02 | 11CP59-088 |  | 2027-01-26 | 2027-02-02 | 225.3d | 0d |  | Automaty | 11CP59 | Ruroci¹g | Budowa | Roboty | Krzyszto | Wyspa | PM000 | Zespó³-W | Blok | Normalny | Pakiet | L2 |  |  |
| 11CP59-090 |  | Izolacje – Sekcja 13 | 5d | 2027-06-03 | 2027-06-09 | 11CP59-089 |  | 2027-02-03 | 2027-02-09 | 225.3d | 0d |  | Automaty | 11CP59 | Ruroci¹g | Budowa | Roboty | Krzyszto | Wyspa | PM000 | Zespó³-K | Blok | Normalny | Pakiet | L2 |  | Rev B |
| 11CP59-091 |  | Malowanie i oznakowanie – Sekcja 13 | 5d | 2027-06-07 | 2027-06-11 | 11CP59-090 FF+2d |  | 2027-02-05 | 2027-02-11 | 225.3d | 0d |  | Automaty | 11CP59 | Ruroci¹g | Budowa | Roboty | Krzyszto | Wyspa | PM200 | Zespó³-I | Blok | Normalny | Pakiet | L2 |  | Rev C |
|  | SEKCJA 14 | **Sekcja 14** |  | 2026-04-01 | 2027-05-27 |  |  |  |  |  |  |  |  |  |  |  |  |  |  |  |  |  |  |  |  |  |  |
| 11CP59-092 |  | Prefabrykacja ruroci¹gów – Sekcja 14 | 6.6d | 2026-04-01 A | 2026-04-13 A | 11CP59-012, 11CP59-087 SS+5d | 100% | 2026-03-31 | 2026-04-07 |  |  |  | Automaty | 11CP59 | Ruroci¹g | Budowa | Roboty | Krzyszto | Wyspa | PM000 | Zespó³-W | Blok | Normalny | Pakiet | L2 |  |  |
| 11CP59-093 |  | Monta¿ ruroci¹gów – Sekcja 14 | 9.6d | 2027-04-26 | 2027-05-07 | 11CP59-092, 11CP59-014 SS+8d |  | 2026-12-28 | 2027-01-07 | 236.1d | 0d |  | Automaty | 11CP59 | Ruroci¹g | Budowa | Roboty | Krzyszto | Wyspa | PM000 | Zespó³-K | Blok | Normalny | Pakiet | L2 | Bez uwag |  |
| 11CP59-094 |  | Próba ciœnieniowa – Sekcja 14 | 5d | 2027-05-10 | 2027-05-14 | 11CP59-093 |  | 2027-01-08 | 2027-01-14 | 236.1d | 0d |  | Automaty | 11CP59 | Ruroci¹g | Budowa | Roboty | Krzyszto | Wyspa | PM000 | Zespó³-K | Blok | Normalny | Pakiet | L2 |  | Rev B |
| 11CP59-095 |  | Izolacje – Sekcja 14 | 7d | 2027-05-17 | 2027-05-25 | 11CP59-094 |  | 2027-01-15 | 2027-01-25 | 236.1d | 0d |  | Automaty | 11CP59 | Ruroci¹g | Budowa | Roboty | Krzyszto | Wyspa | PM000 | Zespó³-K | Blok | Normalny | Pakiet | L2 |  |  |
| 11CP59-096 |  | Malowanie i oznakowanie – Sekcja 14 | 4d | 2027-05-24 | 2027-05-27 | 11CP59-095 FF+2d |  | 2027-01-22 | 2027-01-27 | 236.1d | 0d |  | Automaty | 11CP59 | Ruroci¹g | Budowa | Roboty | Krzyszto | Wyspa | PM000 | Zespó³-K | Blok | Normalny | Pakiet | L2 |  |  |
|  | SEKCJA 15 | **Sekcja 15** |  | 2026-04-06 | 2027-05-26 |  |  |  |  |  |  |  |  |  |  |  |  |  |  |  |  |  |  |  |  |  |  |
|  | PODSEKCJA | **Podsekcja 15.A** |  | 2026-04-06 | 2027-05-26 |  |  |  |  |  |  |  |  |  |  |  |  |  |  |  |  |  |  |  |  |  |  |
| 11CP59-099 |  | Prefabrykacja ruroci¹gów – Sekcja 15 | 15d | 2026-04-06 A | 2026-04-29 A | 11CP59-012, 11CP59-092 SS+5d | 100% | 2026-04-07 | 2026-04-27 |  |  |  | Automaty | 11CP59 | Ruroci¹g | Budowa | Roboty | Krzyszto | Wyspa | PM000 | Zespó³-W | Blok | Wysoki | Pakiet | L2 |  |  |
| 11CP59-100 |  | Monta¿ ruroci¹gów – Sekcja 15 | 6.4d | 2027-04-27 | 2027-05-05 | 11CP59-099, 11CP59-014 SS+9d |  | 2026-12-29 | 2027-01-05 | 237.3d | 0d |  | Automaty | 11CP59 | Ruroci¹g | Budowa | Roboty | Krzyszto | Wyspa | PM000 | Zespó³-W | Blok | Normalny | Pakiet | L2 |  |  |
| 11CP59-101 |  | Próba ciœnieniowa – Sekcja 15 | 4d | 2027-05-06 | 2027-05-11 | 11CP59-100 |  | 2027-01-06 | 2027-01-11 | 237.3d | 0d |  | Automaty | 11CP59 | Ruroci¹g | Budowa | Roboty | Krzyszto | Wyspa | PM000 | Zespó³-E | Blok | Normalny | Pakiet | L2 | Uzgodnione na koordynacji | Rev A |
| 11CP59-102 |  | Izolacje – Sekcja 15 | 9d | 2027-05-12 | 2027-05-24 | 11CP59-101 |  | 2027-01-12 | 2027-01-22 | 237.3d | 0d |  | Automaty | 11CP59 | Ruroci¹g | Budowa | Roboty | Krzyszto | Wyspa | PM000 | Zespó³-I | Blok | Normalny | Pakiet | L2 | Ryzyko opóŸnienia |  |
| 11CP59-103 |  | Malowanie i oznakowanie – Sekcja 15 | 5d | 2027-05-20 | 2027-05-26 | 11CP59-102 FF+2d |  | 2027-01-20 | 2027-01-26 | 237.3d | 0d |  | Automaty | 11CP59 | Ruroci¹g | Budowa | Roboty | Krzyszto | Wyspa | PM000 | Zespó³-W | Blok | Normalny | Pakiet | L2 | Uzgodnione na koordynacji | Rev A |
|  | SEKCJA 16 | **Sekcja 16** |  | 2026-04-13 | 2027-05-26 |  |  |  |  |  |  |  |  |  |  |  |  |  |  |  |  |  |  |  |  |  |  |
| 11CP59-104 |  | Prefabrykacja ruroci¹gów – Sekcja 16 | 5d | 2026-04-13 A | 2026-04-17 A | 11CP59-012, 11CP59-099 SS+5d | 100% | 2026-04-14 | 2026-04-20 |  |  |  | Automaty | 11CP59 | Ruroci¹g | Budowa | Roboty | Krzyszto | Wyspa | PM000 | Zespó³-K | Blok | Normalny | Pakiet | L2 | Do weryfikacji z wykonawc¹ |  |
| 11CP59-105 |  | Monta¿ ruroci¹gów – Sekcja 16 | 17.9d | 2027-04-15 | 2027-05-10 | 11CP59-104, 11CP59-014 SS+1d |  | 2026-12-17 | 2027-01-08 | 236.8d | 0d |  | Automaty | 11CP59 | Ruroci¹g | Budowa | Roboty | Krzyszto | Wyspa | PM000 | Zespó³-W | Blok | Normalny | Pakiet | L2 |  | Rev C |
| 11CP59-106 |  | Próba ciœnieniowa – Sekcja 16 | 2d | 2027-05-11 | 2027-05-12 | 11CP59-105 |  | 2027-01-11 | 2027-01-12 | 236.8d | 0d |  | Automaty | 11CP59 | Ruroci¹g | Budowa | Roboty | Krzyszto | Wyspa | PM000 | Zespó³-K | Blok | Normalny | Pakiet | L2 |  | Rev A |
| 11CP59-107 |  | Izolacje – Sekcja 16 | 8d | 2027-05-13 | 2027-05-24 | 11CP59-106 |  | 2027-01-13 | 2027-01-22 | 236.8d | 0d | Kalendarz 6-dniowy | Automaty | 11CP59 | Ruroci¹g | Budowa | Roboty | Krzyszto | Wyspa | PM000 | Zespó³-W | Blok | Normalny | Pakiet | L2 | Ryzyko opóŸnienia | Rev C |
| 11CP59-108 |  | Malowanie i oznakowanie – Sekcja 16 | 5d | 2027-05-20 | 2027-05-26 | 11CP59-107 FF+2d |  | 2027-01-20 | 2027-01-26 | 236.8d | 0d |  | Automaty | 11CP59 | Ruroci¹g | Budowa | Roboty | Krzyszto | Wyspa | PM000 | Zespó³-W | Blok | Normalny | Pakiet | L2 |  | Rev C |

| ID | WBS | Activity | Duration | Start | Finish | Predecessors | Complete | Planned start | Planned finish | Total float | Free float | Calendar | AC_Wykonawca | AC_Obiekt | AC_Dyscyplina | AC_Faza | AC_Zakres | AC_Opiekun | AC_Obszar | AC_PP_PM | AC_Zespol | AC_Blok | AC_Priorytet | AC_Pakiet | AC_Poziom | Uwagi harmonogramisty | Rewizja dokumentu |
| --- | --- | --- | --- | --- | --- | --- | --- | --- | --- | --- | --- | --- | --- | --- | --- | --- | --- | --- | --- | --- | --- | --- | --- | --- | --- | --- | --- |
|  | SEKCJA 17 | **Sekcja 17** |  | 2026-04-20 | 2027-06-09 |  |  |  |  |  |  |  |  |  |  |  |  |  |  |  |  |  |  |  |  |  |  |
| 11CP59-111 |  | Prefabrykacja ruroci¹gów – Sekcja 17 | 11.9d | 2026-04-20 A | 2026-05-07 A | 11CP59-012, 11CP59-104 SS+5d | 100% | 2026-04-21 | 2026-05-05 |  |  |  | Automaty | 11CP59 | Ruroci¹g | Budowa | Roboty | Krzyszto | Wyspa | PM000 | Zespó³-I | Blok | Normalny | Pakiet | L2 |  |  |
| 11CP59-112 |  | Monta¿ ruroci¹gów – Sekcja 17 | 16.9d | 2027-04-27 | 2027-05-19 | 11CP59-111, 11CP59-014 SS+9d |  | 2026-12-29 | 2027-01-19 | 226.8d | 0d |  | Automaty | 11CP59 | Ruroci¹g | Budowa | Roboty | Krzyszto | Wyspa | PM000 | Zespó³-K | Blok | Normalny | Pakiet | L2 |  |  |
| 11CP59-113 |  | Próba ciœnieniowa – Sekcja 17 | 4d | 2027-05-20 | 2027-05-25 | 11CP59-112 |  | 2027-01-20 | 2027-01-25 | 226.8d | 0d |  | Automaty | 11CP59 | Ruroci¹g | Budowa | Roboty | Krzyszto | Wyspa | PM000 | Zespó³-W | Blok | Normalny | Pakiet | L2 |  |  |
| 11CP59-114 |  | Izolacje – Sekcja 17 | 9d | 2027-05-26 | 2027-06-07 | 11CP59-113 |  | 2027-01-26 | 2027-02-05 | 226.8d | 0d |  | Automaty | 11CP59 | Ruroci¹g | Budowa | Roboty | Krzyszto | Wyspa | PM000 | Zespó³-W | Blok | Wysoki | Pakiet | L2 | Ryzyko opóŸnienia |  |
| 11CP59-115 |  | Malowanie i oznakowanie – Sekcja 17 | 5d | 2027-06-03 | 2027-06-09 | 11CP59-114 FF+2d |  | 2027-02-03 | 2027-02-09 | 226.8d | 0d |  | Automaty | 11CP59 | Ruroci¹g | Budowa | Roboty | Krzyszto | Wyspa | PM000 | Zespó³-E | Blok | Normalny | Pakiet | L2 |  | Rev B |
|  | SEKCJA 18 | **Sekcja 18** |  | 2026-05-01 | 2027-06-04 |  |  |  |  |  |  |  |  |  |  |  |  |  |  |  |  |  |  |  |  |  |  |
|  | PODSEKCJA | **Podsekcja 18.A** |  | 2026-05-01 | 2027-06-04 |  |  |  |  |  |  |  |  |  |  |  |  |  |  |  |  |  |  |  |  |  |  |
| 11CP59-116 |  | Prefabrykacja ruroci¹gów – Sekcja 18 | 4.3d | 2026-05-01 A | 2026-05-08 A | 11CP59-012, 11CP59-111 SS+5d | 100% | 2026-04-28 | 2026-05-01 |  |  |  | Automaty | 11CP59 | Ruroci¹g | Budowa | Roboty | Krzyszto | Wyspa | PM000 | Zespó³-W | Blok | Normalny | Pakiet | L2 |  | Rev A |
| 11CP59-117 |  | Monta¿ ruroci¹gów – Sekcja 18 | 15.5d | 2027-04-28 | 2027-05-19 | 11CP59-116, 11CP59-014 SS+10d |  | 2026-12-30 | 2027-01-19 | 230.2d | 0d |  | Automaty | 11CP59 | Ruroci¹g | Budowa | Roboty | Krzyszto | Wyspa | PM000 | Zespó³-W | Blok | Wysoki | Pakiet | L2 |  |  |
| 11CP59-118 |  | Próba ciœnieniowa – Sekcja 18 | 2d | 2027-05-20 | 2027-05-21 | 11CP59-117 |  | 2027-01-20 | 2027-01-21 | 230.2d | 0d |  | Automaty | 11CP59 | Ruroci¹g | Budowa | Roboty | Krzyszto | Wyspa | PM000 | Zespó³-W | Blok | Normalny | Pakiet | L2 |  |  |
| 11CP59-119 |  | Izolacje – Sekcja 18 | 8d | 2027-05-24 | 2027-06-02 | 11CP59-118 |  | 2027-01-22 | 2027-02-02 | 230.2d | 0d |  | Automaty | 11CP59 | Ruroci¹g | Budowa | Roboty | Krzyszto | Wyspa | PM000 | Zespó³-W | Blok | Normalny | Pakiet | L2 | Do weryfikacji z wykonawc¹ | Rev A |
| 11CP59-120 |  | Malowanie i oznakowanie – Sekcja 18 | 3d | 2027-06-02 | 2027-06-04 | 11CP59-119 FF+2d |  | 2027-02-02 | 2027-02-04 | 230.2d | 0d |  | Automaty | 11CP59 | Ruroci¹g | Budowa | Roboty | Krzyszto | Wyspa | PM000 | Zespó³-K | Blok | Wysoki | Pakiet | L2 | Czeka na dostawê |  |
|  | SEKCJA 19 | **Sekcja 19** |  | 2026-05-04 | 2027-06-18 |  |  |  |  |  |  |  |  |  |  |  |  |  |  |  |  |  |  |  |  |  |  |
| 11CP59-123 |  | Prefabrykacja ruroci¹gów – Sekcja 19 | 8d | 2026-05-04 A | 2026-05-18 A | 11CP59-012, 11CP59-116 SS+5d | 100% | 2026-05-05 | 2026-05-14 |  |  | Kalendarz 6-dniowy | Automaty | 11CP59 | Ruroci¹g | Budowa | Roboty | Krzyszto | Wyspa | PM000 | Zespó³-I | Blok | Normalny | Pakiet | L2 | Czeka na dostawê |  |
| 11CP59-124 |  | Monta¿ ruroci¹gów – Sekcja 19 | 8.8d | 2027-04-20 | 2027-04-30 | 11CP59-123, 11CP59-014 SS+4d |  | 2026-12-22 | 2026-12-31 | 239.9d | 0d |  | Automaty | 11CP59 | Ruroci¹g | Budowa | Roboty | Krzyszto | Wyspa | PM000 | Zespó³-W | Blok | Normalny | Pakiet | L2 |  |  |
| 11CP59-125 |  | Próba ciœnieniowa – Sekcja 19 | 2d | 2027-05-31 | 2027-06-01 | 11CP59-124 |  | 2027-01-01 | 2027-01-04 | 220.6d | 0d |  | Automaty | 11CP59 | Ruroci¹g | Budowa | Roboty | Krzyszto | Wyspa | PM000 | Zespó³-I | Blok | Normalny | Pakiet | L2 | Ryzyko opóŸnienia |  |
| 11CP59-126 |  | Izolacje – Sekcja 19 | 11d | 2027-06-02 | 2027-06-16 | 11CP59-125 |  | 2027-01-05 | 2027-01-19 | 220.6d | 0d |  | Automaty | 11CP59 | Ruroci¹g | Budowa | Roboty | Krzyszto | Wyspa | PM000 | Zespó³-W | Blok | Wysoki | Pakiet | L2 | Bez uwag | Rev C |
| 11CP59-127 |  | Malowanie i oznakowanie – Sekcja 19 | 8d | 2027-06-09 | 2027-06-18 | 11CP59-126 FF+2d |  | 2027-01-12 | 2027-01-21 | 220.6d | 0d |  | Automaty | 11CP59 | Ruroci¹g | Budowa | Roboty | Krzyszto | Wyspa | PM000 | Zespó³-W | Blok | Normalny | Pakiet | L2 |  | Rev B |
|  | SEKCJA 20 | **Sekcja 20** |  | 2026-05-11 | 2027-05-31 |  |  |  |  |  |  |  |  |  |  |  |  |  |  |  |  |  |  |  |  |  |  |
| 11CP59-128 |  | Prefabrykacja ruroci¹gów – Sekcja 20 | 11.4d | 2026-05-11 A | 2026-05-25 A | 11CP59-012, 11CP59-123 SS+5d | 100% | 2026-05-12 | 2026-05-26 |  |  |  | Automaty | 11CP59 | Ruroci¹g | Budowa | Roboty | Krzyszto | Wyspa | PM000 | Zespó³-K | Blok | Normalny | Pakiet | L2 |  |  |
| 11CP59-129 |  | Monta¿ ruroci¹gów – Sekcja 20 | 19.1d | 2027-04-14 | 2027-05-11 | 11CP59-128, 11CP59-014 SS |  | 2026-12-16 | 2027-01-11 | 195.6d | 0d |  | Automaty | 11CP59 | Ruroci¹g | Budowa | Roboty | Krzyszto | Wyspa | PM000 | Zespó³-W | Blok | Normalny | Pakiet | L2 | Czeka na dostawê |  |
| 11CP59-130 |  | Próba ciœnieniowa – Sekcja 20 | 3d | 2027-05-12 | 2027-05-14 | 11CP59-129 |  | 2027-01-12 | 2027-01-14 | 195.6d | 0d |  | Automaty | 11CP59 | Ruroci¹g | Budowa | Roboty | Krzyszto | Wyspa | PM000 | Zespó³-W | Blok | Normalny | Pakiet | L2 |  | Rev A |
| 11CP59-131 |  | Izolacje – Sekcja 20 | 9d | 2027-05-17 | 2027-05-27 | 11CP59-130 |  | 2027-01-15 | 2027-01-27 | 195.6d | 0d |  | Automaty | 11CP59 | Ruroci¹g | Budowa | Roboty | Krzyszto | Wyspa | PM000 | Zespó³-W | Blok | Normalny | Pakiet | L2 |  |  |
| 11CP59-132 |  | Malowanie i oznakowanie – Sekcja 20 | 8d | 2027-05-20 | 2027-05-31 | 11CP59-131 FF+2d |  | 2027-01-20 | 2027-01-29 | 195.6d | 0d |  | Automaty | 11CP59 | Ruroci¹g | Budowa | Roboty | Krzyszto | Wyspa | PM000 | Zespó³-W | Blok | Wysoki | Pakiet | L2 |  |  |

| ID | WBS | Activity | Type | Duration | Start | Finish | Predecessors | Complete | Remaining | Actual finish | Planned start | Planned finish | Total float | Free float | Calendar | Rewizja dokumentu | AC_Wykonawca | AC_Obiekt | AC_Dyscyplina | AC_Faza | AC_Zakres | AC_Opiekun | AC_Obszar | AC_PP_PM | AC_Zespol | AC_Blok | AC_Priorytet | AC_Pakiet | AC_Poziom | Uwagi harmonogramisty |
| --- | --- | --- | --- | --- | --- | --- | --- | --- | --- | --- | --- | --- | --- | --- | --- | --- | --- | --- | --- | --- | --- | --- | --- | --- | --- | --- | --- | --- | --- | --- |
|  | SEKCJA 21 | **Sekcja 21** |  |  | 2026-05-18 | 2027-07-15 |  |  |  |  |  |  |  |  |  |  |  |  |  |  |  |  |  |  |  |  |  |  |  |  |
|  | PODSEKCJA | **Podsekcja 21.A** |  |  | 2026-05-18 | 2027-07-15 |  |  |  |  |  |  |  |  |  |  |  |  |  |  |  |  |  |  |  |  |  |  |  |  |
| 11CP59-135 |  | Prefabrykacja ruroci¹gów – Sekcja 21 |  | 12.1d | 2026-05-18 A | 2026-06-04 A | 11CP59-012, 11CP59-128 SS+5d | 100% |  |  | 2026-05-19 | 2026-06-03 |  |  | Kalendarz 6-dniowy | Rev B | Automaty | 11CP59 | Ruroci¹g | Budowa | Roboty | Krzyszto | Wyspa | PM000 | Zespó³-K | Blok | Wysoki | Pakiet | L2 |  |
| 11CP59-136 |  | Monta¿ ruroci¹gów – Sekcja 21 |  | 12.8d | 2027-04-15 | 2027-05-03 | 11CP59-135, 11CP59-014 SS+1d |  |  |  | 2026-12-17 | 2027-01-01 | 198.9d | 0d |  |  | Automaty | 11CP59 | Ruroci¹g | Budowa | Roboty | Krzyszto | Wyspa | PM000 | Zespó³-W | Blok | Normalny | Pakiet | L2 |  |
| 11CP59-137 |  | Próba ciœnieniowa – Sekcja 21 |  | 3d | 2027-06-24 | 2027-06-28 | 11CP59-136 |  |  |  | 2027-01-04 | 2027-01-06 | 162.6d | 0d |  |  | Automaty | 11CP59 | Ruroci¹g | Budowa | Roboty | Krzyszto | Wyspa | PM100 | Zespó³-E | Blok | Wysoki | Pakiet | L2 |  |
| 11CP59-138 |  | Izolacje – Sekcja 21 |  | 11d | 2027-06-29 | 2027-07-13 | 11CP59-137 |  |  |  | 2027-01-07 | 2027-01-21 | 162.6d | 0d |  |  | Automaty | 11CP59 | Ruroci¹g | Budowa | Roboty | Krzyszto | Wyspa | PM000 | Zespó³-K | Blok | Normalny | Pakiet | L2 | Czeka na dostawê |
| 11CP59-139 |  | Malowanie i oznakowanie – Sekcja 21 |  | 4d | 2027-07-12 | 2027-07-15 | 11CP59-138 FF+2d |  |  |  | 2027-01-20 | 2027-01-25 | 162.6d | 0d |  |  | Automaty | 11CP59 | Ruroci¹g | Budowa | Roboty | Krzyszto | Wyspa | PM000 | Zespó³-W | Blok | Normalny | Pakiet | L2 |  |
|  | PROJ | **Projektowanie** |  |  | 2025-03-07 | 2025-10-08 |  |  |  |  |  |  |  |  |  |  |  |  |  |  |  |  |  |  |  |  |  |  |  |  |
|  | DOKUMENTAC | **Dokumentacja** |  |  | 2025-03-07 | 2025-10-08 |  |  |  |  |  |  |  |  |  |  |  |  |  |  |  |  |  |  |  |  |  |  |  |  |
| 11CP59-001 |  | Projekt wykonawczy – Pompy wody zasilaj¹cej |  | 114d | 2025-03-07 A | 2025-08-14 A |  | 100% |  |  | 2025-03-05 | 2025-08-11 |  |  |  |  | Automaty | 11CP59 | Budowlan | Projekto | Projekt | Krzyszto | Wyspa | PM000 | Zespó³-K | Blok | Niski | Pakiet | L2 |  |
| 11CP59-002 |  | Uzgodnienie dokumentacji z Inwestorem |  | 28d | 2025-08-13 A | 2025-09-22 A | 11CP59-001 | 100% |  |  | 2025-08-12 | 2025-09-18 |  |  |  |  | Automaty | 11CP59 | Budowlan | Projekto | Projekt | Krzyszto | Wyspa | PM000 | Zespó³-K | Blok | Normalny | Pakiet | L2 | Czeka na dostawê |
| 11CP59-003 |  | Zatwierdzenie dokumentacji do realizacji |  | 12d | 2025-09-23 A | 2025-10-08 A | 11CP59-002 | 100% |  |  | 2025-09-19 | 2025-10-06 |  |  |  |  | Automaty | 11CP59 | Budowlan | Projekto | Projekt | Krzyszto | Wyspa | PM000 | Zespó³-W | Blok | Normalny | Pakiet | L2 |  |
| 11CP59-004 |  | KM: Dokumentacja zatwierdzona – Pompy wody zasilaj¹cej | milestone | 0d | 2025-10-06 A | 2025-10-06 | 11CP59-003 | 100% |  | 2025-10-03 | 2025-10-07 | 2025-10-07 |  |  |  |  | Automaty | 11CP59 | Budowlan | Projekto | Kamieñ | Krzyszto | Wyspa | PM000 | Zespó³-W | Blok | Normalny | Pakiet | L1 |  |
|  | ROZR | **Rozruch** |  |  | 2027-07-16 | 2027-08-26 |  |  |  |  |  |  |  |  |  |  |  |  |  |  |  |  |  |  |  |  |  |  |  |  |
|  | ROZRUCH | **Rozruch** |  |  | 2027-07-16 | 2027-08-26 |  |  |  |  |  |  |  |  |  |  |  |  |  |  |  |  |  |  |  |  |  |  |  |  |
| 11CP59-142 |  | Przegl¹d gotowoœci do rozruchu |  | 5d | 2027-07-16 | 2027-07-22 | 11CP59-141, 11CP59-019, 11CP59-024, 11CP59-026 |  |  |  | 2027-02-16 | 2027-02-22 | 162.6d | 0d |  | Rev B | Automaty | 11CP59 | Rozruch | Rozruch | Rozruch | Krzyszto | Wyspa | PM000 | Zespó³-W | Blok | Normalny | Pakiet | L2 |  |
| 11CP59-143 |  | Rozruch na zimno |  | 9d | 2027-07-23 | 2027-08-04 | 11CP59-142 |  |  |  | 2027-02-23 | 2027-03-05 | 162.6d | 0d | Kalendarz 6-dniowy |  | Automaty | 11CP59 | Rozruch | Rozruch | Rozruch | Krzyszto | Wyspa | PM000 | Zespó³-K | Blok | Krytyczn | Pakiet | L2 |  |
| 11CP59-144 |  | Rozruch na gor¹co / próby ruchowe |  | 15d | 2027-08-05 | 2027-08-25 | 11CP59-143 |  |  |  | 2027-03-08 | 2027-03-26 | 162.6d | 0d |  |  | Automaty | 11CP59 | Rozruch | Rozruch | Rozruch | Krzyszto | Wyspa | PM000 | Zespó³-W | Blok | Normalny | Pakiet | L2 |  |
| 11CP59-145 |  | KM: Odbiór koñcowy – Pompy wody zasilaj¹cej | milestone | 0d | 2027-08-26 | 2027-08-26 | 11CP59-144 |  |  |  | 2027-03-29 | 2027-03-29 | 162.6d | 0d |  |  | Automaty | 11CP59 | Rozruch | Rozruch | Kamieñ | Krzyszto | Wyspa | PM000 | Zespó³-K | Blok | Normalny | Pakiet | L1 |  |
|  | ZAKU | **Zakupy** |  |  | 2025-04-07 | 2027-04-14 |  |  |  |  |  |  |  |  |  |  |  |  |  |  |  |  |  |  |  |  |  |  |  |  |
|  | DOSTAWY | **Dostawy** |  |  | 2025-10-24 | 2027-04-14 |  |  |  |  |  |  |  |  |  |  |  |  |  |  |  |  |  |  |  |  |  |  |  |  |
| 11CP59-008 |  | Produkcja u dostawcy |  | 254d | 2025-10-24 A | 2027-02-04 | 11CP59-007 | 65% | 87.9d |  | 2025-10-20 | 2026-10-08 | 266.6d | 0d |  |  | Automaty | 11CP59 | Mechanic | Zakupy | Dostawa | Krzyszto | Wyspa | PM000 | Zespó³-K | Blok | Normalny | Pakiet | L2 |  |
| 11CP59-009 |  | Testy FAT |  | 8d | 2027-02-05 | 2027-02-16 | 11CP59-008 |  |  |  | 2026-10-09 | 2026-10-20 | 184.7d | 0d | Kalendarz 6-dniowy |  | Automaty | 11CP59 | Mechanic | Zakupy | Dostawa | Krzyszto | Wyspa | PM000 | Zespó³-K | Blok | Niski | Pakiet | L2 |  |
| 11CP59-010 |  | Transport i dostawa na plac budowy |  | 40d | 2027-02-17 | 2027-04-13 | 11CP59-009 |  |  |  | 2026-10-21 | 2026-12-15 | 184.7d | 0d |  |  | Automaty | 11CP59 | Mechanic | Zakupy | Dostawa | Krzyszto | Wyspa | PM000 | Zespó³-W | Blok | Normalny | Pakiet | L2 | Ryzyko opóŸnienia |
| 11CP59-011 |  | KM: Dostawa na budowê – Pompy wody zasilaj¹cej | milestone | 0d | 2027-04-14 | 2027-04-14 | 11CP59-010 |  |  |  | 2026-12-16 | 2026-12-16 | 184.7d | 0d |  | Rev C | Automaty | 11CP59 | Mechanic | Zakupy | Kamieñ | Krzyszto | Wyspa | PM300 | Zespó³-E | Blok | Normalny | Pakiet | L1 |  |

| ID | WBS | Activity | Duration | Start | Finish | Predecessors | Complete | Planned start | Planned finish | Calendar | Uwagi harmonogramisty | AC_Wykonawca | AC_Obiekt | AC_Dyscyplina | AC_Faza | AC_Zakres | AC_Opiekun | AC_Obszar | AC_PP_PM | AC_Zespol | AC_Blok | AC_Priorytet | AC_Pakiet | AC_Poziom | Rewizja dokumentu |
| --- | --- | --- | --- | --- | --- | --- | --- | --- | --- | --- | --- | --- | --- | --- | --- | --- | --- | --- | --- | --- | --- | --- | --- | --- | --- |
|  | ZAMÓWIENIA | **Zamówienia** |  | 2025-04-07 | 2025-10-20 |  |  |  |  |  |  |  |  |  |  |  |  |  |  |  |  |  |  |  |  |
| 11CP59-005 |  | Zapytanie ofertowe | 29d | 2025-04-07 A | 2025-05-15 A | 11CP59-001 SS+20d | 100% | 2025-04-02 | 2025-05-12 |  | Bez uwag | Automaty | 11CP59 | Mechanic | Zakupy | Dostawa | Krzyszto | Wyspa | PM000 | Zespó³-W | Blok | Normalny | Pakiet | L2 |  |
| 11CP59-006 |  | Analiza i wybór ofert | 10d | 2025-05-13 A | 2025-05-29 A | 11CP59-005 | 100% | 2025-05-13 | 2025-05-26 |  |  | Automaty | 11CP59 | Mechanic | Zakupy | Dostawa | Krzyszto | Wyspa | PM000 | Zespó³-E | Blok | Wysoki | Pakiet | L2 |  |
| 11CP59-007 |  | Zawarcie umowy / zamówienie | 9d | 2025-10-07 A | 2025-10-20 A | 11CP59-006, 11CP59-004 SS, 10TM34-004 FS+6d | 100% | 2025-10-07 | 2025-10-17 |  |  | Automaty | 11CP59 | Mechanic | Zakupy | Dostawa | Krzyszto | Wyspa | PM000 | Zespó³-K | Blok | Normalny | Pakiet | L1 |  |
|  | 18CX52 | **18CX52 – Bêben wysokiego ciœnienia** |  | 2025-04-04 | 2026-10-05 |  |  |  |  |  |  |  |  |  |  |  |  |  |  |  |  |  |  |  |  |
|  | BUDO | **Budowa** |  | 2025-09-19 | 2026-08-19 |  |  |  |  |  |  |  |  |  |  |  |  |  |  |  |  |  |  |  |  |
|  | AKPIA | **AKPiA** |  | 2026-06-19 | 2026-07-22 |  |  |  |  |  |  |  |  |  |  |  |  |  |  |  |  |  |  |  |  |
| 18CX52-128 |  | Monta¿ uk³adów AKPiA | 23d | 2026-06-19 A | 2026-07-22 A | 18CX52-014 SS+5d | 100% | 2026-06-18 | 2026-07-20 |  |  | HydroIns | 18CX52 | AKPiA | Budowa | Roboty | Anna | Wyspa | PM000 | Zespó³-K | Wspólne | Normalny | Pakiet | L2 |  |
|  | ELEKTRYKA | **Elektryka** |  | 2026-06-23 | 2026-07-27 |  |  |  |  |  |  |  |  |  |  |  |  |  |  |  |  |  |  |  |  |
| 18CX52-038 |  | Pod³¹czenia i pomiary – trasa 04 | 9d | 2026-06-23 A | 2026-07-07 A | 18CX52-037 FF | 100% | 2026-06-23 | 2026-07-03 |  |  | HydroIns | 18CX52 | Elektryc | Budowa | Roboty | Anna | Wyspa | PM000 | Zespó³-W | Wspólne | Niski | Pakiet | L2 |  |
| 18CX52-037 |  | Uk³adanie kabli – trasa 04 | 7d | 2026-06-24 A | 2026-07-03 A | 18CX52-014 SS+10d | 100% | 2026-06-25 | 2026-07-03 |  |  | HydroIns | 18CX52 | Elektryc | Budowa | Roboty | Anna | Wyspa | PM000 | Zespó³-K | Wspólne | Wysoki | Pakiet | L2 |  |
| 18CX52-049 |  | Uk³adanie kabli – trasa 06 | 18d | 2026-06-25 A | 2026-07-21 A | 18CX52-014 SS+10d | 100% | 2026-06-25 | 2026-07-20 | Kalendarz 6-dniowy |  | HydroIns | 18CX52 | Elektryc | Budowa | Roboty | Anna | Wyspa | PM000 | Zespó³-K | Wspólne | Normalny | Pakiet | L2 |  |
| 18CX52-085 |  | Uk³adanie kabli – trasa 12 | 13d | 2026-06-25 A | 2026-07-16 A | 18CX52-014 SS+10d | 100% | 2026-06-25 | 2026-07-13 |  | Czeka na dostawê | HydroIns | 18CX52 | Elektryc | Budowa | Roboty | Anna | Wyspa | PM000 | Zespó³-W | Wspólne | Normalny | Pakiet | L2 |  |
| 18CX52-098 |  | Pod³¹czenia i pomiary – trasa 14 | 10d | 2026-06-25 A | 2026-07-13 A | 18CX52-097 FF | 100% | 2026-06-24 | 2026-07-07 |  |  | HydroIns | 18CX52 | Elektryc | Budowa | Roboty | Anna | Wyspa | PM000 | Zespó³-K | Wspólne | Normalny | Pakiet | L2 | Rev A |
| 18CX52-097 |  | Uk³adanie kabli – trasa 14 | 9d | 2026-06-26 A | 2026-07-13 A | 18CX52-014 SS+10d | 100% | 2026-06-25 | 2026-07-07 |  |  | HydroIns | 18CX52 | Elektryc | Budowa | Roboty | Anna | Wyspa | PM000 | Zespó³-W | Wspólne | Normalny | Pakiet | L2 |  |
| 18CX52-109 |  | Uk³adanie kabli – trasa 16 | 18d | 2026-06-26 A | 2026-07-24 A | 18CX52-014 SS+10d | 100% | 2026-06-25 | 2026-07-20 |  |  | HydroIns | 18CX52 | Elektryc | Budowa | Roboty | Anna | Wyspa | PM000 | Zespó³-K | Wspólne | Normalny | Pakiet | L2 |  |
| 18CX52-061 |  | Uk³adanie kabli – trasa 08 | 14d | 2026-06-29 A | 2026-07-21 A | 18CX52-014 SS+10d | 100% | 2026-06-25 | 2026-07-14 |  | Ryzyko opóŸnienia | HydroIns | 18CX52 | Elektryc | Budowa | Roboty | Anna | Wyspa | PM000 | Zespó³-W | Wspólne | Normalny | Pakiet | L2 |  |
| 18CX52-025 |  | Uk³adanie kabli – trasa 02 | 17d | 2026-06-30 A | 2026-07-24 A | 18CX52-014 SS+10d | 100% | 2026-06-25 | 2026-07-17 |  |  | HydroIns | 18CX52 | Elektryc | Budowa | Roboty | Anna | Wyspa | PM000 | Zespó³-W | Wspólne | Normalny | Pakiet | L2 | Rev C |
| 18CX52-073 |  | Uk³adanie kabli – trasa 10 | 9d | 2026-06-30 A | 2026-07-13 A | 18CX52-014 SS+10d | 100% | 2026-06-25 | 2026-07-07 | Kalendarz 6-dniowy |  | HydroIns | 18CX52 | Elektryc | Budowa | Roboty | Anna | Wyspa | PM000 | Zespó³-W | Wspólne | Normalny | Pakiet | L2 |  |
| 18CX52-086 |  | Pod³¹czenia i pomiary – trasa 12 | 10d | 2026-06-30 A | 2026-07-15 A | 18CX52-085 FF | 100% | 2026-06-30 | 2026-07-13 |  | Bez uwag | HydroIns | 18CX52 | Elektryc | Budowa | Roboty | Anna | Wyspa | PM000 | Zespó³-W | Wspólne | Normalny | Pakiet | L2 | Rev B |
| 18CX52-121 |  | Uk³adanie kabli – trasa 18 | 20d | 2026-06-30 A | 2026-07-27 A | 18CX52-014 SS+10d | 100% | 2026-06-25 | 2026-07-22 |  |  | HydroIns | 18CX52 | Elektryc | Budowa | Roboty | Anna | Wyspa | PM200 | Zespó³-I | Wspólne | Wysoki | Pakiet | L2 |  |
| 18CX52-110 |  | Pod³¹czenia i pomiary – trasa 16 | 10d | 2026-07-06 A | 2026-07-21 A | 18CX52-109 FF | 100% | 2026-07-07 | 2026-07-20 |  |  | HydroIns | 18CX52 | Elektryc | Budowa | Roboty | Anna | Wyspa | PM000 | Zespó³-W | Wspólne | Wysoki | Pakiet | L2 | Rev B |
| 18CX52-074 |  | Pod³¹czenia i pomiary – trasa 10 | 3d | 2026-07-07 A | 2026-07-13 A | 18CX52-073 FF | 100% | 2026-07-03 | 2026-07-07 |  |  | HydroIns | 18CX52 | Elektryc | Budowa | Roboty | Anna | Wyspa | PM000 | Zespó³-W | Wspólne | Normalny | Pakiet | L2 | Rev C |
| 18CX52-122 |  | Pod³¹czenia i pomiary – trasa 18 | 10d | 2026-07-08 A | 2026-07-24 A | 18CX52-121 FF | 100% | 2026-07-09 | 2026-07-22 |  |  | HydroIns | 18CX52 | Elektryc | Budowa | Roboty | Anna | Wyspa | PM000 | Zespó³-K | Wspólne | Normalny | Pakiet | L2 |  |
| 18CX52-050 |  | Pod³¹czenia i pomiary – trasa 06 | 6d | 2026-07-13 A | 2026-07-23 A | 18CX52-049 FF | 100% | 2026-07-13 | 2026-07-20 |  |  | HydroIns | 18CX52 | Elektryc | Budowa | Roboty | Anna | Wyspa | PM000 | Zespó³-K | Wspólne | Normalny | Pakiet | L2 |  |
| 18CX52-062 |  | Pod³¹czenia i pomiary – trasa 08 | 3d | 2026-07-13 A | 2026-07-20 A | 18CX52-061 FF | 100% | 2026-07-10 | 2026-07-14 |  |  | HydroIns | 18CX52 | Elektryc | Budowa | Roboty | Anna | Wyspa | PM000 | Zespó³-W | Wspólne | Krytyczn | Pakiet | L2 |  |
| 18CX52-026 |  | Pod³¹czenia i pomiary – trasa 02 | 4d | 2026-07-14 A | 2026-07-20 A | 18CX52-025 FF | 100% | 2026-07-14 | 2026-07-17 |  |  | HydroIns | 18CX52 | Elektryc | Budowa | Roboty | Anna | Wyspa | PM000 | Zespó³-W | Wspólne | Normalny | Pakiet | L2 | Rev A |

| ID | WBS | Activity | Type | Duration | Start | Finish | Predecessors | Complete | Actual finish | Planned start | Planned finish | AC_Wykonawca | AC_Obiekt | AC_Dyscyplina | AC_Faza | AC_Zakres | AC_Opiekun | AC_Obszar | AC_PP_PM | AC_Zespol | AC_Blok | AC_Priorytet | AC_Pakiet | AC_Poziom | Uwagi harmonogramisty | Rewizja dokumentu |
| --- | --- | --- | --- | --- | --- | --- | --- | --- | --- | --- | --- | --- | --- | --- | --- | --- | --- | --- | --- | --- | --- | --- | --- | --- | --- | --- |
|  | MONTA¯ | **Monta¿** |  |  | 2025-12-02 | 2026-08-13 |  |  |  |  |  |  |  |  |  |  |  |  |  |  |  |  |  |  |  |  |
| 18CX52-013 |  | Monta¿ konstrukcji stalowych |  | 26d | 2025-12-02 A | 2026-01-07 A | 18CX52-012 | 100% |  | 2025-12-01 | 2026-01-05 | HydroIns | 18CX52 | Mechanic | Budowa | Roboty | Anna | Wyspa | PM000 | Zespó³-W | Wspólne | Normalny | Pakiet | L2 |  |  |
| 18CX52-014 |  | Monta¿ urz¹dzeñ g³ównych |  | 35d | 2026-06-16 A | 2026-08-04 A | 18CX52-013, 18CX52-011 | 100% |  | 2026-06-11 | 2026-07-29 | HydroIns | 18CX52 | Mechanic | Budowa | Roboty | Anna | Wyspa | PM000 | Zespó³-W | Wspólne | Normalny | Pakiet | L2 |  |  |
| 18CX52-129 |  | KM: Zakoñczenie monta¿u – Bêben wysokiego ciœnienia | milestone | 0d | 2026-08-13 A | 2026-08-13 | 18CX52-120, 18CX52-122, 18CX52-127, 18CX52-128, 18CX52-014 | 100% | 2026-08-12 | 2026-08-10 | 2026-08-10 | HydroIns | 18CX52 | Mechanic | Budowa | Kamieñ | Anna | Wyspa | PM000 | Zespó³-K | Wspólne | Normalny | Pakiet | L2 |  |  |
|  | ROBOTY BUD | **Roboty budowlane** |  |  | 2025-09-19 | 2025-12-04 |  |  |  |  |  |  |  |  |  |  |  |  |  |  |  |  |  |  |  |  |
| 18CX52-012 |  | Fundamenty i roboty ziemne |  | 54d | 2025-09-19 A | 2025-12-04 A | 18CX52-007 FS+10d | 100% |  | 2025-09-16 | 2025-11-28 | HydroIns | 18CX52 | Budowlan | Budowa | Roboty | Anna | Wyspa | PM000 | Zespó³-W | Wspólne | Normalny | Pakiet | L2 |  |  |
|  | RUROCI¥GI | **Ruroci¹gi** |  |  | 2025-12-03 | 2026-08-19 |  |  |  |  |  |  |  |  |  |  |  |  |  |  |  |  |  |  |  |  |
|  | SEKCJA 01 | **Sekcja 01** |  |  | 2025-12-03 | 2026-07-10 |  |  |  |  |  |  |  |  |  |  |  |  |  |  |  |  |  |  |  |  |
| 18CX52-015 |  | Prefabrykacja ruroci¹gów – Sekcja 01 |  | 9.5d | 2025-12-03 A | 2025-12-16 A | 18CX52-012 | 100% |  | 2025-12-01 | 2025-12-11 | HydroIns | 18CX52 | Ruroci¹g | Budowa | Roboty | Anna | Wyspa | PM000 | Zespó³-W | Wspólne | Normalny | Pakiet | L2 | Ryzyko opóŸnienia | Rev B |
| 18CX52-016 |  | Monta¿ ruroci¹gów – Sekcja 01 |  | 8.3d | 2026-06-16 A | 2026-06-30 A | 18CX52-015, 18CX52-014 SS+1d | 100% |  | 2026-06-12 | 2026-06-23 | HydroIns | 18CX52 | Ruroci¹g | Budowa | Roboty | Anna | Wyspa | PM000 | Zespó³-E | Wspólne | Normalny | Pakiet | L2 |  | Rev A |
| 18CX52-017 |  | Próba ciœnieniowa – Sekcja 01 |  | 2d | 2026-06-25 A | 2026-06-30 A | 18CX52-016 | 100% |  | 2026-06-24 | 2026-06-25 | HydroIns | 18CX52 | Ruroci¹g | Budowa | Roboty | Anna | Wyspa | PM000 | Zespó³-W | Wspólne | Normalny | Pakiet | L2 |  |  |
| 18CX52-018 |  | Izolacje – Sekcja 01 |  | 6d | 2026-07-01 A | 2026-07-08 A | 18CX52-017 | 100% |  | 2026-06-26 | 2026-07-03 | HydroIns | 18CX52 | Ruroci¹g | Budowa | Roboty | Anna | Wyspa | PM000 | Zespó³-E | Wspólne | Niski | Pakiet | L2 |  |  |
| 18CX52-019 |  | Malowanie i oznakowanie – Sekcja 01 |  | 2d | 2026-07-06 A | 2026-07-10 A | 18CX52-018 FF+2d | 100% |  | 2026-07-06 | 2026-07-07 | HydroIns | 18CX52 | Ruroci¹g | Budowa | Roboty | Anna | Wyspa | PM000 | Zespó³-W | Wspólne | Normalny | Pakiet | L2 |  |  |
|  | SEKCJA 02 | **Sekcja 02** |  |  | 2025-12-10 | 2026-08-13 |  |  |  |  |  |  |  |  |  |  |  |  |  |  |  |  |  |  |  |  |
| 18CX52-020 |  | Prefabrykacja ruroci¹gów – Sekcja 02 |  | 9.1d | 2025-12-10 A | 2025-12-23 A | 18CX52-012, 18CX52-015 SS+5d | 100% |  | 2025-12-08 | 2025-12-18 | HydroIns | 18CX52 | Ruroci¹g | Budowa | Roboty | Anna | Wyspa | PM000 | Zespó³-K | Wspólne | Wysoki | Pakiet | L2 |  | Rev B |
| 18CX52-021 |  | Monta¿ ruroci¹gów – Sekcja 02 |  | 23.5d | 2026-06-23 A | 2026-07-24 A | 18CX52-020, 18CX52-014 SS+8d | 100% |  | 2026-06-23 | 2026-07-23 | HydroIns | 18CX52 | Ruroci¹g | Budowa | Roboty | Anna | Wyspa | PM000 | Zespó³-K | Wspólne | Normalny | Pakiet | L2 | Czeka na dostawê |  |
| 18CX52-022 |  | Próba ciœnieniowa – Sekcja 02 |  | 3d | 2026-07-24 A | 2026-07-30 A | 18CX52-021 | 100% |  | 2026-07-24 | 2026-07-28 | HydroIns | 18CX52 | Ruroci¹g | Budowa | Roboty | Anna | Wyspa | PM000 | Zespó³-W | Wspólne | Normalny | Pakiet | L2 | Do weryfikacji z wykonawc¹ | Rev B |
| 18CX52-023 |  | Izolacje – Sekcja 02 |  | 8d | 2026-07-31 A | 2026-08-13 A | 18CX52-022 | 100% |  | 2026-07-29 | 2026-08-07 | HydroIns | 18CX52 | Ruroci¹g | Budowa | Roboty | Anna | Wyspa | PM000 | Zespó³-K | Wspólne | Normalny | Pakiet | L2 | Czeka na dostawê | Rev C |
| 18CX52-024 |  | Malowanie i oznakowanie – Sekcja 02 |  | 2d | 2026-08-11 A | 2026-08-12 A | 18CX52-023 FF+2d | 100% |  | 2026-08-10 | 2026-08-11 | HydroIns | 18CX52 | Ruroci¹g | Budowa | Roboty | Anna | Wyspa | PM100 | Zespó³-E | Wspólne | Krytyczn | Pakiet | L2 |  |  |
|  | SEKCJA 03 | **Sekcja 03** |  |  | 2025-12-15 | 2026-08-06 |  |  |  |  |  |  |  |  |  |  |  |  |  |  |  |  |  |  |  |  |
|  | PODSEKCJA | **Podsekcja 03.A** |  |  | 2025-12-15 | 2026-08-06 |  |  |  |  |  |  |  |  |  |  |  |  |  |  |  |  |  |  |  |  |
| 18CX52-027 |  | Prefabrykacja ruroci¹gów – Sekcja 03 |  | 14.8d | 2025-12-15 A | 2026-01-05 A | 18CX52-012, 18CX52-020 SS+5d | 100% |  | 2025-12-15 | 2026-01-01 | HydroIns | 18CX52 | Ruroci¹g | Budowa | Roboty | Anna | Wyspa | PM000 | Zespó³-W | Wspólne | Normalny | Pakiet | L2 |  |  |
| 18CX52-028 |  | Monta¿ ruroci¹gów – Sekcja 03 |  | 19.2d | 2026-06-29 A | 2026-07-23 A | 18CX52-027, 18CX52-014 SS+9d | 100% |  | 2026-06-24 | 2026-07-20 | HydroIns | 18CX52 | Ruroci¹g | Budowa | Roboty | Anna | Wyspa | PM000 | Zespó³-K | Wspólne | Normalny | Pakiet | L2 |  |  |
| 18CX52-029 |  | Próba ciœnieniowa – Sekcja 03 |  | 6d | 2026-07-23 A | 2026-08-04 A | 18CX52-028 | 100% |  | 2026-07-21 | 2026-07-28 | HydroIns | 18CX52 | Ruroci¹g | Budowa | Roboty | Anna | Wyspa | PM000 | Zespó³-E | Wspólne | Wysoki | Pakiet | L2 |  |  |
| 18CX52-030 |  | Izolacje – Sekcja 03 |  | 3d | 2026-07-29 A | 2026-08-03 A | 18CX52-029 | 100% |  | 2026-07-29 | 2026-07-31 | HydroIns | 18CX52 | Ruroci¹g | Budowa | Roboty | Anna | Wyspa | PM000 | Zespó³-W | Wspólne | Normalny | Pakiet | L2 |  | Rev B |
| 18CX52-031 |  | Malowanie i oznakowanie – Sekcja 03 |  | 4d | 2026-07-31 A | 2026-08-06 A | 18CX52-030 FF+2d | 100% |  | 2026-07-30 | 2026-08-04 | HydroIns | 18CX52 | Ruroci¹g | Budowa | Roboty | Anna | Wyspa | PM000 | Zespó³-K | Wspólne | Normalny | Pakiet | L2 |  |  |

| ID | WBS | Activity | Duration | Start | Finish | Predecessors | Complete | Planned start | Planned finish | Calendar | AC_Wykonawca | AC_Obiekt | AC_Dyscyplina | AC_Faza | AC_Zakres | AC_Opiekun | AC_Obszar | AC_PP_PM | AC_Zespol | AC_Blok | AC_Priorytet | AC_Pakiet | AC_Poziom | Uwagi harmonogramisty | Rewizja dokumentu |
| --- | --- | --- | --- | --- | --- | --- | --- | --- | --- | --- | --- | --- | --- | --- | --- | --- | --- | --- | --- | --- | --- | --- | --- | --- | --- |
|  | SEKCJA 04 | **Sekcja 04** |  | 2025-12-24 | 2026-07-15 |  |  |  |  |  |  |  |  |  |  |  |  |  |  |  |  |  |  |  |  |
| 18CX52-032 |  | Prefabrykacja ruroci¹gów – Sekcja 04 | 12.3d | 2025-12-24 A | 2026-01-08 A | 18CX52-012, 18CX52-027 SS+5d | 100% | 2025-12-22 | 2026-01-06 | Kalendarz 6-dniowy | HydroIns | 18CX52 | Ruroci¹g | Budowa | Roboty | Anna | Wyspa | PM100 | Zespó³-I | Wspólne | Normalny | Pakiet | L2 |  |  |
| 18CX52-033 |  | Monta¿ ruroci¹gów – Sekcja 04 | 8.9d | 2026-06-18 A | 2026-06-29 A | 18CX52-032, 18CX52-014 SS+2d | 100% | 2026-06-15 | 2026-06-24 |  | HydroIns | 18CX52 | Ruroci¹g | Budowa | Roboty | Anna | Wyspa | PM000 | Zespó³-K | Wspólne | Normalny | Pakiet | L2 | Ryzyko opóŸnienia |  |
| 18CX52-034 |  | Próba ciœnieniowa – Sekcja 04 | 6d | 2026-06-30 A | 2026-07-10 A | 18CX52-033 | 100% | 2026-06-25 | 2026-07-02 |  | HydroIns | 18CX52 | Ruroci¹g | Budowa | Roboty | Anna | Wyspa | PM000 | Zespó³-W | Wspólne | Normalny | Pakiet | L2 |  |  |
| 18CX52-035 |  | Izolacje – Sekcja 04 | 4d | 2026-07-02 A | 2026-07-10 A | 18CX52-034 | 100% | 2026-07-03 | 2026-07-08 |  | HydroIns | 18CX52 | Ruroci¹g | Budowa | Roboty | Anna | Wyspa | PM000 | Zespó³-K | Wspólne | Normalny | Pakiet | L2 |  | Rev A |
| 18CX52-036 |  | Malowanie i oznakowanie – Sekcja 04 | 3d | 2026-07-13 A | 2026-07-15 A | 18CX52-035 FF+2d | 100% | 2026-07-08 | 2026-07-10 | Kalendarz 6-dniowy | HydroIns | 18CX52 | Ruroci¹g | Budowa | Roboty | Anna | Wyspa | PM000 | Zespó³-K | Wspólne | Normalny | Pakiet | L2 | Czeka na dostawê |  |
|  | SEKCJA 05 | **Sekcja 05** |  | 2025-12-29 | 2026-07-23 |  |  |  |  |  |  |  |  |  |  |  |  |  |  |  |  |  |  |  |  |
| 18CX52-039 |  | Prefabrykacja ruroci¹gów – Sekcja 05 | 7.8d | 2025-12-29 A | 2026-01-09 A | 18CX52-012, 18CX52-032 SS+5d | 100% | 2025-12-29 | 2026-01-06 |  | HydroIns | 18CX52 | Ruroci¹g | Budowa | Roboty | Anna | Wyspa | PM000 | Zespó³-E | Wspólne | Normalny | Pakiet | L2 |  |  |
| 18CX52-040 |  | Monta¿ ruroci¹gów – Sekcja 05 | 7.7d | 2026-06-19 A | 2026-07-01 A | 18CX52-039, 18CX52-014 SS+4d | 100% | 2026-06-17 | 2026-06-25 |  | HydroIns | 18CX52 | Ruroci¹g | Budowa | Roboty | Anna | Wyspa | PM000 | Zespó³-W | Wspólne | Normalny | Pakiet | L2 |  |  |
| 18CX52-041 |  | Próba ciœnieniowa – Sekcja 05 | 3d | 2026-07-01 A | 2026-07-03 A | 18CX52-040 | 100% | 2026-06-26 | 2026-06-30 |  | HydroIns | 18CX52 | Ruroci¹g | Budowa | Roboty | Anna | Wyspa | PM000 | Zespó³-K | Wspólne | Niski | Pakiet | L2 |  |  |
| 18CX52-042 |  | Izolacje – Sekcja 05 | 9d | 2026-07-03 A | 2026-07-15 A | 18CX52-041 | 100% | 2026-07-01 | 2026-07-13 |  | HydroIns | 18CX52 | Ruroci¹g | Budowa | Roboty | Anna | Wyspa | PM000 | Zespó³-K | Wspólne | Normalny | Pakiet | L2 | Do weryfikacji z wykonawc¹ |  |
| 18CX52-043 |  | Malowanie i oznakowanie – Sekcja 05 | 4d | 2026-07-15 A | 2026-07-23 A | 18CX52-042 FF+2d | 100% | 2026-07-10 | 2026-07-15 |  | HydroIns | 18CX52 | Ruroci¹g | Budowa | Roboty | Anna | Wyspa | PM000 | Zespó³-W | Wspólne | Normalny | Pakiet | L2 |  |  |
|  | SEKCJA 06 | **Sekcja 06** |  | 2026-01-02 | 2026-08-07 |  |  |  |  |  |  |  |  |  |  |  |  |  |  |  |  |  |  |  |  |
|  | PODSEKCJA | **Podsekcja 06.A** |  | 2026-01-02 | 2026-08-07 |  |  |  |  |  |  |  |  |  |  |  |  |  |  |  |  |  |  |  |  |
| 18CX52-044 |  | Prefabrykacja ruroci¹gów – Sekcja 06 | 10.8d | 2026-01-02 A | 2026-01-19 A | 18CX52-012, 18CX52-039 SS+5d | 100% | 2026-01-05 | 2026-01-16 |  | HydroIns | 18CX52 | Ruroci¹g | Budowa | Roboty | Anna | Wyspa | PM000 | Zespó³-K | Wspólne | Normalny | Pakiet | L2 |  | Rev A |
| 18CX52-045 |  | Monta¿ ruroci¹gów – Sekcja 06 | 21.6d | 2026-06-22 A | 2026-07-22 A | 18CX52-044, 18CX52-014 SS+4d | 100% | 2026-06-17 | 2026-07-15 |  | HydroIns | 18CX52 | Ruroci¹g | Budowa | Roboty | Anna | Wyspa | PM000 | Zespó³-W | Wspólne | Normalny | Pakiet | L2 | Czeka na dostawê |  |
| 18CX52-046 |  | Próba ciœnieniowa – Sekcja 06 | 5d | 2026-07-20 A | 2026-07-28 A | 18CX52-045 | 100% | 2026-07-16 | 2026-07-22 |  | HydroIns | 18CX52 | Ruroci¹g | Budowa | Roboty | Anna | Wyspa | PM100 | Zespó³-E | Wspólne | Niski | Pakiet | L2 |  |  |
| 18CX52-047 |  | Izolacje – Sekcja 06 | 9d | 2026-07-23 A | 2026-08-07 A | 18CX52-046 | 100% | 2026-07-23 | 2026-08-04 |  | HydroIns | 18CX52 | Ruroci¹g | Budowa | Roboty | Anna | Wyspa | PM000 | Zespó³-K | Wspólne | Normalny | Pakiet | L2 |  |  |
| 18CX52-048 |  | Malowanie i oznakowanie – Sekcja 06 | 3d | 2026-08-03 A | 2026-08-07 A | 18CX52-047 FF+2d | 100% | 2026-08-04 | 2026-08-06 |  | HydroIns | 18CX52 | Ruroci¹g | Budowa | Roboty | Anna | Wyspa | PM000 | Zespó³-W | Wspólne | Normalny | Pakiet | L2 | Ryzyko opóŸnienia |  |
|  | SEKCJA 07 | **Sekcja 07** |  | 2026-01-15 | 2026-07-30 |  |  |  |  |  |  |  |  |  |  |  |  |  |  |  |  |  |  |  |  |
| 18CX52-051 |  | Prefabrykacja ruroci¹gów – Sekcja 07 | 10.2d | 2026-01-15 A | 2026-01-30 A | 18CX52-012, 18CX52-044 SS+5d | 100% | 2026-01-12 | 2026-01-23 |  | HydroIns | 18CX52 | Ruroci¹g | Budowa | Roboty | Anna | Wyspa | PM000 | Zespó³-K | Wspólne | Normalny | Pakiet | L2 |  |  |
| 18CX52-052 |  | Monta¿ ruroci¹gów – Sekcja 07 | 9.6d | 2026-06-25 A | 2026-07-09 A | 18CX52-051, 18CX52-014 SS+7d | 100% | 2026-06-22 | 2026-07-02 |  | HydroIns | 18CX52 | Ruroci¹g | Budowa | Roboty | Anna | Wyspa | PM200 | Zespó³-E | Wspólne | Normalny | Pakiet | L2 |  |  |
| 18CX52-053 |  | Próba ciœnieniowa – Sekcja 07 | 4d | 2026-07-02 A | 2026-07-09 A | 18CX52-052 | 100% | 2026-07-03 | 2026-07-08 |  | HydroIns | 18CX52 | Ruroci¹g | Budowa | Roboty | Anna | Wyspa | PM000 | Zespó³-W | Wspólne | Normalny | Pakiet | L2 |  |  |
| 18CX52-054 |  | Izolacje – Sekcja 07 | 12d | 2026-07-13 A | 2026-07-30 A | 18CX52-053 | 100% | 2026-07-09 | 2026-07-24 |  | HydroIns | 18CX52 | Ruroci¹g | Budowa | Roboty | Anna | Wyspa | PM000 | Zespó³-K | Wspólne | Wysoki | Pakiet | L2 |  |  |
| 18CX52-055 |  | Malowanie i oznakowanie – Sekcja 07 | 3d | 2026-07-27 A | 2026-07-29 A | 18CX52-054 FF+2d | 100% | 2026-07-24 | 2026-07-28 |  | HydroIns | 18CX52 | Ruroci¹g | Budowa | Roboty | Anna | Wyspa | PM000 | Zespó³-I | Wspólne | Niski | Pakiet | L2 |  | Rev A |

| ID | WBS | Activity | Duration | Start | Finish | Predecessors | Complete | Planned start | Planned finish | Calendar | AC_Wykonawca | AC_Obiekt | AC_Dyscyplina | AC_Faza | AC_Zakres | AC_Opiekun | AC_Obszar | AC_PP_PM | AC_Zespol | AC_Blok | AC_Priorytet | AC_Pakiet | AC_Poziom | Rewizja dokumentu | Uwagi harmonogramisty |
| --- | --- | --- | --- | --- | --- | --- | --- | --- | --- | --- | --- | --- | --- | --- | --- | --- | --- | --- | --- | --- | --- | --- | --- | --- | --- |
|  | SEKCJA 08 | **Sekcja 08** |  | 2026-01-22 | 2026-07-17 |  |  |  |  |  |  |  |  |  |  |  |  |  |  |  |  |  |  |  |  |
| 18CX52-056 |  | Prefabrykacja ruroci¹gów – Sekcja 08 | 3.5d | 2026-01-22 A | 2026-01-27 A | 18CX52-012, 18CX52-051 SS+5d | 100% | 2026-01-19 | 2026-01-21 | Kalendarz 6-dniowy | HydroIns | 18CX52 | Ruroci¹g | Budowa | Roboty | Anna | Wyspa | PM000 | Zespó³-W | Wspólne | Normalny | Pakiet | L2 |  |  |
| 18CX52-057 |  | Monta¿ ruroci¹gów – Sekcja 08 | 12.4d | 2026-06-16 A | 2026-07-03 A | 18CX52-056, 18CX52-014 SS+2d | 100% | 2026-06-15 | 2026-06-30 |  | HydroIns | 18CX52 | Ruroci¹g | Budowa | Roboty | Anna | Wyspa | PM000 | Zespó³-W | Wspólne | Niski | Pakiet | L2 |  |  |
| 18CX52-058 |  | Próba ciœnieniowa – Sekcja 08 | 3d | 2026-07-03 A | 2026-07-10 A | 18CX52-057 | 100% | 2026-07-01 | 2026-07-03 |  | HydroIns | 18CX52 | Ruroci¹g | Budowa | Roboty | Anna | Wyspa | PM000 | Zespó³-K | Wspólne | Normalny | Pakiet | L2 |  |  |
| 18CX52-059 |  | Izolacje – Sekcja 08 | 4d | 2026-07-08 A | 2026-07-13 A | 18CX52-058 | 100% | 2026-07-06 | 2026-07-09 |  | HydroIns | 18CX52 | Ruroci¹g | Budowa | Roboty | Anna | Wyspa | PM000 | Zespó³-W | Wspólne | Wysoki | Pakiet | L2 | Rev C |  |
| 18CX52-060 |  | Malowanie i oznakowanie – Sekcja 08 | 3d | 2026-07-13 A | 2026-07-17 A | 18CX52-059 FF+2d | 100% | 2026-07-09 | 2026-07-13 |  | HydroIns | 18CX52 | Ruroci¹g | Budowa | Roboty | Anna | Wyspa | PM000 | Zespó³-K | Wspólne | Normalny | Pakiet | L2 |  | Do weryfikacji z wykonawc¹ |
|  | SEKCJA 09 | **Sekcja 09** |  | 2026-01-27 | 2026-08-05 |  |  |  |  |  |  |  |  |  |  |  |  |  |  |  |  |  |  |  |  |
|  | PODSEKCJA | **Podsekcja 09.A** |  | 2026-01-27 | 2026-08-05 |  |  |  |  |  |  |  |  |  |  |  |  |  |  |  |  |  |  |  |  |
| 18CX52-063 |  | Prefabrykacja ruroci¹gów – Sekcja 09 | 7.2d | 2026-01-27 A | 2026-02-04 A | 18CX52-012, 18CX52-056 SS+5d | 100% | 2026-01-26 | 2026-02-03 |  | HydroIns | 18CX52 | Ruroci¹g | Budowa | Roboty | Anna | Wyspa | PM000 | Zespó³-W | Wspólne | Normalny | Pakiet | L2 |  | Ryzyko opóŸnienia |
| 18CX52-064 |  | Monta¿ ruroci¹gów – Sekcja 09 | 23.1d | 2026-06-22 A | 2026-07-24 A | 18CX52-063, 18CX52-014 SS+6d | 100% | 2026-06-19 | 2026-07-21 |  | HydroIns | 18CX52 | Ruroci¹g | Budowa | Roboty | Anna | Wyspa | PM000 | Zespó³-E | Wspólne | Normalny | Pakiet | L2 |  |  |
| 18CX52-065 |  | Próba ciœnieniowa – Sekcja 09 | 3d | 2026-07-22 A | 2026-07-27 A | 18CX52-064 | 100% | 2026-07-22 | 2026-07-24 |  | HydroIns | 18CX52 | Ruroci¹g | Budowa | Roboty | Anna | Wyspa | PM000 | Zespó³-K | Wspólne | Normalny | Pakiet | L2 |  | Ryzyko opóŸnienia |
| 18CX52-067 |  | Malowanie i oznakowanie – Sekcja 09 | 7d | 2026-07-24 A | 2026-08-05 A | 18CX52-066 FF+2d | 100% | 2026-07-23 | 2026-07-31 |  | HydroIns | 18CX52 | Ruroci¹g | Budowa | Roboty | Anna | Wyspa | PM000 | Zespó³-W | Wspólne | Wysoki | Pakiet | L2 |  |  |
| 18CX52-066 |  | Izolacje – Sekcja 09 | 3d | 2026-07-27 A | 2026-07-29 A | 18CX52-065 | 100% |  |  |  | HydroIns | 18CX52 | Ruroci¹g | Budowa | Roboty | Anna | Wyspa | PM100 | Zespó³-I | Wspólne | Normalny | Pakiet | L2 | Rev C | Do weryfikacji z wykonawc¹ |
|  | SEKCJA 10 | **Sekcja 10** |  | 2026-02-04 | 2026-08-12 |  |  |  |  |  |  |  |  |  |  |  |  |  |  |  |  |  |  |  |  |
| 18CX52-068 |  | Prefabrykacja ruroci¹gów – Sekcja 10 | 9.7d | 2026-02-04 A | 2026-02-19 A | 18CX52-012, 18CX52-063 SS+5d | 100% | 2026-02-02 | 2026-02-12 |  | HydroIns | 18CX52 | Ruroci¹g | Budowa | Roboty | Anna | Wyspa | PM000 | Zespó³-K | Wspólne | Niski | Pakiet | L2 |  |  |
| 18CX52-069 |  | Monta¿ ruroci¹gów – Sekcja 10 | 20.1d | 2026-06-17 A | 2026-07-14 A | 18CX52-068, 18CX52-014 SS+3d | 100% | 2026-06-16 | 2026-07-13 |  | HydroIns | 18CX52 | Ruroci¹g | Budowa | Roboty | Anna | Wyspa | PM000 | Zespó³-W | Wspólne | Normalny | Pakiet | L2 |  |  |
| 18CX52-070 |  | Próba ciœnieniowa – Sekcja 10 | 6d | 2026-07-17 A | 2026-07-27 A | 18CX52-069 | 100% | 2026-07-14 | 2026-07-21 |  | HydroIns | 18CX52 | Ruroci¹g | Budowa | Roboty | Anna | Wyspa | PM000 | Zespó³-W | Wspólne | Normalny | Pakiet | L2 | Rev A |  |
| 18CX52-071 |  | Izolacje – Sekcja 10 | 12d | 2026-07-21 A | 2026-08-10 A | 18CX52-070 | 100% | 2026-07-22 | 2026-08-06 |  | HydroIns | 18CX52 | Ruroci¹g | Budowa | Roboty | Anna | Wyspa | PM000 | Zespó³-W | Wspólne | Normalny | Pakiet | L2 | Rev C |  |
| 18CX52-072 |  | Malowanie i oznakowanie – Sekcja 10 | 6d | 2026-08-04 A | 2026-08-12 A | 18CX52-071 FF+2d | 100% | 2026-08-03 | 2026-08-10 |  | HydroIns | 18CX52 | Ruroci¹g | Budowa | Roboty | Anna | Wyspa | PM000 | Zespó³-K | Wspólne | Niski | Pakiet | L2 |  |  |
|  | SEKCJA 11 | **Sekcja 11** |  | 2026-02-12 | 2026-07-07 |  |  |  |  |  |  |  |  |  |  |  |  |  |  |  |  |  |  |  |  |
| 18CX52-075 |  | Prefabrykacja ruroci¹gów – Sekcja 11 | 6.9d | 2026-02-12 A | 2026-02-20 A | 18CX52-012, 18CX52-068 SS+5d | 100% | 2026-02-09 | 2026-02-16 |  | HydroIns | 18CX52 | Ruroci¹g | Budowa | Roboty | Anna | Wyspa | PM000 | Zespó³-K | Wspólne | Normalny | Pakiet | L2 |  |  |
| 18CX52-076 |  | Monta¿ ruroci¹gów – Sekcja 11 | 7.6d | 2026-06-17 A | 2026-06-30 A | 18CX52-075, 18CX52-014 SS+4d | 100% | 2026-06-17 | 2026-06-25 | Kalendarz 6-dniowy | HydroIns | 18CX52 | Ruroci¹g | Budowa | Roboty | Anna | Wyspa | PM000 | Zespó³-I | Wspólne | Normalny | Pakiet | L2 |  |  |
| 18CX52-077 |  | Próba ciœnieniowa – Sekcja 11 | 2d | 2026-06-26 A | 2026-07-02 A | 18CX52-076 | 100% | 2026-06-26 | 2026-06-29 | Kalendarz 6-dniowy | HydroIns | 18CX52 | Ruroci¹g | Budowa | Roboty | Anna | Wyspa | PM000 | Zespó³-I | Wspólne | Normalny | Pakiet | L2 |  |  |
| 18CX52-079 |  | Malowanie i oznakowanie – Sekcja 11 | 7d | 2026-06-26 A | 2026-07-07 A | 18CX52-078 FF+2d | 100% | 2026-06-26 | 2026-07-06 |  | HydroIns | 18CX52 | Ruroci¹g | Budowa | Roboty | Anna | Wyspa | PM000 | Zespó³-W | Wspólne | Wysoki | Pakiet | L2 |  |  |
| 18CX52-078 |  | Izolacje – Sekcja 11 | 3d | 2026-06-29 A | 2026-07-03 A | 18CX52-077 | 100% | 2026-06-30 | 2026-07-02 |  | HydroIns | 18CX52 | Ruroci¹g | Budowa | Roboty | Anna | Wyspa | PM100 | Zespó³-I | Wspólne | Normalny | Pakiet | L2 | Rev B | Czeka na dostawê |

| ID | WBS | Activity | Duration | Start | Finish | Predecessors | Complete | Planned start | Planned finish | Calendar | Uwagi harmonogramisty | AC_Wykonawca | AC_Obiekt | AC_Dyscyplina | AC_Faza | AC_Zakres | AC_Opiekun | AC_Obszar | AC_PP_PM | AC_Zespol | AC_Blok | AC_Priorytet | AC_Pakiet | AC_Poziom | Rewizja dokumentu |
| --- | --- | --- | --- | --- | --- | --- | --- | --- | --- | --- | --- | --- | --- | --- | --- | --- | --- | --- | --- | --- | --- | --- | --- | --- | --- |
|  | SEKCJA 12 | **Sekcja 12** |  | 2026-02-13 | 2026-07-31 |  |  |  |  |  |  |  |  |  |  |  |  |  |  |  |  |  |  |  |  |
|  | PODSEKCJA | **Podsekcja 12.A** |  | 2026-02-13 | 2026-07-31 |  |  |  |  |  |  |  |  |  |  |  |  |  |  |  |  |  |  |  |  |
| 18CX52-080 |  | Prefabrykacja ruroci¹gów – Sekcja 12 | 11.5d | 2026-02-13 A | 2026-03-02 A | 18CX52-012, 18CX52-075 SS+5d | 100% | 2026-02-16 | 2026-03-02 |  | Do weryfikacji z wykonawc¹ | HydroIns | 18CX52 | Ruroci¹g | Budowa | Roboty | Anna | Wyspa | PM000 | Zespó³-K | Wspólne | Normalny | Pakiet | L2 |  |
| 18CX52-081 |  | Monta¿ ruroci¹gów – Sekcja 12 | 17.1d | 2026-06-19 A | 2026-07-15 A | 18CX52-080, 18CX52-014 SS+4d | 100% | 2026-06-17 | 2026-07-09 |  |  | HydroIns | 18CX52 | Ruroci¹g | Budowa | Roboty | Anna | Wyspa | PM100 | Zespó³-E | Wspólne | Normalny | Pakiet | L2 |  |
| 18CX52-082 |  | Próba ciœnieniowa – Sekcja 12 | 4d | 2026-07-09 A | 2026-07-15 A | 18CX52-081 | 100% | 2026-07-10 | 2026-07-15 |  | Uzgodnione na koordynacji | HydroIns | 18CX52 | Ruroci¹g | Budowa | Roboty | Anna | Wyspa | PM000 | Zespó³-K | Wspólne | Wysoki | Pakiet | L2 |  |
| 18CX52-083 |  | Izolacje – Sekcja 12 | 8d | 2026-07-15 A | 2026-07-29 A | 18CX52-082 | 100% | 2026-07-16 | 2026-07-27 |  |  | HydroIns | 18CX52 | Ruroci¹g | Budowa | Roboty | Anna | Wyspa | PM000 | Zespó³-W | Wspólne | Normalny | Pakiet | L2 | Rev C |
| 18CX52-084 |  | Malowanie i oznakowanie – Sekcja 12 | 7d | 2026-07-20 A | 2026-07-31 A | 18CX52-083 FF+2d | 100% | 2026-07-21 | 2026-07-29 |  |  | HydroIns | 18CX52 | Ruroci¹g | Budowa | Roboty | Anna | Wyspa | PM000 | Zespó³-W | Wspólne | Normalny | Pakiet | L2 |  |
|  | SEKCJA 13 | **Sekcja 13** |  | 2026-02-25 | 2026-08-19 |  |  |  |  |  |  |  |  |  |  |  |  |  |  |  |  |  |  |  |  |
| 18CX52-087 |  | Prefabrykacja ruroci¹gów – Sekcja 13 | 14.6d | 2026-02-25 A | 2026-03-19 A | 18CX52-012, 18CX52-080 SS+5d | 100% | 2026-02-23 | 2026-03-12 |  |  | HydroIns | 18CX52 | Ruroci¹g | Budowa | Roboty | Anna | Wyspa | PM000 | Zespó³-K | Wspólne | Normalny | Pakiet | L2 | Rev C |
| 18CX52-088 |  | Monta¿ ruroci¹gów – Sekcja 13 | 24.7d | 2026-06-30 A | 2026-07-31 A | 18CX52-087, 18CX52-014 SS+10d | 100% | 2026-06-25 | 2026-07-28 |  | Uzgodnione na koordynacji | HydroIns | 18CX52 | Ruroci¹g | Budowa | Roboty | Anna | Wyspa | PM000 | Zespó³-W | Wspólne | Normalny | Pakiet | L2 |  |
| 18CX52-089 |  | Próba ciœnieniowa – Sekcja 13 | 4d | 2026-07-29 A | 2026-08-03 A | 18CX52-088 | 100% |  |  |  |  | HydroIns | 18CX52 | Ruroci¹g | Budowa | Roboty | Anna | Wyspa | PM000 | Zespó³-W | Wspólne | Wysoki | Pakiet | L2 | Rev B |
| 18CX52-090 |  | Izolacje – Sekcja 13 | 7d | 2026-08-06 A | 2026-08-17 A | 18CX52-089 | 100% | 2026-08-04 | 2026-08-12 |  |  | HydroIns | 18CX52 | Ruroci¹g | Budowa | Roboty | Anna | Wyspa | PM000 | Zespó³-W | Wspólne | Normalny | Pakiet | L2 |  |
| 18CX52-091 |  | Malowanie i oznakowanie – Sekcja 13 | 4d | 2026-08-12 A | 2026-08-19 A | 18CX52-090 FF+2d | 100% | 2026-08-11 | 2026-08-14 |  |  | HydroIns | 18CX52 | Ruroci¹g | Budowa | Roboty | Anna | Wyspa | PM000 | Zespó³-K | Wspólne | Normalny | Pakiet | L2 |  |
|  | SEKCJA 14 | **Sekcja 14** |  | 2026-03-03 | 2026-08-07 |  |  |  |  |  |  |  |  |  |  |  |  |  |  |  |  |  |  |  |  |
| 18CX52-092 |  | Prefabrykacja ruroci¹gów – Sekcja 14 | 12d | 2026-03-03 A | 2026-03-23 A | 18CX52-012, 18CX52-087 SS+5d | 100% | 2026-03-02 | 2026-03-17 |  | Czeka na dostawê | HydroIns | 18CX52 | Ruroci¹g | Budowa | Roboty | Anna | Wyspa | PM000 | Zespó³-W | Wspólne | Normalny | Pakiet | L2 | Rev C |
| 18CX52-093 |  | Monta¿ ruroci¹gów – Sekcja 14 | 18.2d | 2026-06-22 A | 2026-07-15 A | 18CX52-092, 18CX52-014 SS+4d | 100% | 2026-06-17 | 2026-07-10 |  |  | HydroIns | 18CX52 | Ruroci¹g | Budowa | Roboty | Anna | Wyspa | PM000 | Zespó³-W | Wspólne | Normalny | Pakiet | L2 |  |
| 18CX52-094 |  | Próba ciœnieniowa – Sekcja 14 | 5d | 2026-07-13 A | 2026-07-21 A | 18CX52-093 | 100% | 2026-07-13 | 2026-07-17 |  | Do weryfikacji z wykonawc¹ | HydroIns | 18CX52 | Ruroci¹g | Budowa | Roboty | Anna | Wyspa | PM000 | Zespó³-W | Wspólne | Normalny | Pakiet | L2 | Rev B |
| 18CX52-095 |  | Izolacje – Sekcja 14 | 9d | 2026-07-23 A | 2026-08-07 A | 18CX52-094 | 100% | 2026-07-20 | 2026-07-30 | Kalendarz 6-dniowy |  | HydroIns | 18CX52 | Ruroci¹g | Budowa | Roboty | Anna | Wyspa | PM000 | Zespó³-W | Wspólne | Normalny | Pakiet | L2 | Rev B |
| 18CX52-096 |  | Malowanie i oznakowanie – Sekcja 14 | 6d | 2026-07-29 A | 2026-08-05 A | 18CX52-095 FF+2d | 100% | 2026-07-27 | 2026-08-03 |  |  | HydroIns | 18CX52 | Ruroci¹g | Budowa | Roboty | Anna | Wyspa | PM000 | Zespó³-K | Wspólne | Normalny | Pakiet | L2 |  |
|  | SEKCJA 15 | **Sekcja 15** |  | 2026-03-09 | 2026-07-24 |  |  |  |  |  |  |  |  |  |  |  |  |  |  |  |  |  |  |  |  |
|  | PODSEKCJA | **Podsekcja 15.A** |  | 2026-03-09 | 2026-07-24 |  |  |  |  |  |  |  |  |  |  |  |  |  |  |  |  |  |  |  |  |
| 18CX52-099 |  | Prefabrykacja ruroci¹gów – Sekcja 15 | 10.5d | 2026-03-09 A | 2026-03-25 A | 18CX52-012, 18CX52-092 SS+5d | 100% | 2026-03-09 | 2026-03-20 |  |  | HydroIns | 18CX52 | Ruroci¹g | Budowa | Roboty | Anna | Wyspa | PM000 | Zespó³-K | Wspólne | Normalny | Pakiet | L2 |  |
| 18CX52-100 |  | Monta¿ ruroci¹gów – Sekcja 15 | 16.4d | 2026-06-16 A | 2026-07-08 A | 18CX52-099, 18CX52-014 SS+2d | 100% | 2026-06-15 | 2026-07-06 |  | Uzgodnione na koordynacji | HydroIns | 18CX52 | Ruroci¹g | Budowa | Roboty | Anna | Wyspa | PM000 | Zespó³-W | Wspólne | Normalny | Pakiet | L2 | Rev A |
| 18CX52-101 |  | Próba ciœnieniowa – Sekcja 15 | 3d | 2026-07-10 A | 2026-07-14 A | 18CX52-100 | 100% | 2026-07-07 | 2026-07-09 |  |  | HydroIns | 18CX52 | Ruroci¹g | Budowa | Roboty | Anna | Wyspa | PM000 | Zespó³-W | Wspólne | Wysoki | Pakiet | L2 | Rev A |
| 18CX52-102 |  | Izolacje – Sekcja 15 | 8d | 2026-07-14 A | 2026-07-24 A | 18CX52-101 | 100% | 2026-07-10 | 2026-07-21 |  |  | HydroIns | 18CX52 | Ruroci¹g | Budowa | Roboty | Anna | Wyspa | PM000 | Zespó³-W | Wspólne | Niski | Pakiet | L2 |  |
| 18CX52-103 |  | Malowanie i oznakowanie – Sekcja 15 | 8d | 2026-07-14 A | 2026-07-23 A | 18CX52-102 FF+2d | 100% |  |  |  |  | HydroIns | 18CX52 | Ruroci¹g | Budowa | Roboty | Anna | Wyspa | PM000 | Zespó³-W | Wspólne | Normalny | Pakiet | L2 |  |

| ID | WBS | Activity | Duration | Start | Finish | Predecessors | Complete | Planned start | Planned finish | Calendar | AC_Wykonawca | AC_Obiekt | AC_Dyscyplina | AC_Faza | AC_Zakres | AC_Opiekun | AC_Obszar | AC_PP_PM | AC_Zespol | AC_Blok | AC_Priorytet | AC_Pakiet | AC_Poziom | Rewizja dokumentu | Uwagi harmonogramisty |
| --- | --- | --- | --- | --- | --- | --- | --- | --- | --- | --- | --- | --- | --- | --- | --- | --- | --- | --- | --- | --- | --- | --- | --- | --- | --- |
|  | SEKCJA 16 | **Sekcja 16** |  | 2026-03-16 | 2026-08-17 |  |  |  |  |  |  |  |  |  |  |  |  |  |  |  |  |  |  |  |  |
| 18CX52-104 |  | Prefabrykacja ruroci¹gów – Sekcja 16 | 14.6d | 2026-03-16 A | 2026-04-06 A | 18CX52-012, 18CX52-099 SS+5d | 100% | 2026-03-16 | 2026-04-02 |  | HydroIns | 18CX52 | Ruroci¹g | Budowa | Roboty | Anna | Wyspa | PM000 | Zespó³-I | Wspólne | Krytyczn | Pakiet | L2 |  |  |
| 18CX52-105 |  | Monta¿ ruroci¹gów – Sekcja 16 | 23.6d | 2026-06-17 A | 2026-07-17 A | 18CX52-104, 18CX52-014 SS+5d | 100% | 2026-06-18 | 2026-07-20 |  | HydroIns | 18CX52 | Ruroci¹g | Budowa | Roboty | Anna | Wyspa | PM000 | Zespó³-W | Wspólne | Normalny | Pakiet | L2 |  |  |
| 18CX52-106 |  | Próba ciœnieniowa – Sekcja 16 | 4d | 2026-07-21 A | 2026-07-24 A | 18CX52-105 | 100% |  |  |  | HydroIns | 18CX52 | Ruroci¹g | Budowa | Roboty | Anna | Wyspa | PM000 | Zespó³-K | Wspólne | Wysoki | Pakiet | L2 | Rev A |  |
| 18CX52-107 |  | Izolacje – Sekcja 16 | 9d | 2026-07-27 A | 2026-08-07 A | 18CX52-106 | 100% | 2026-07-27 | 2026-08-06 |  | HydroIns | 18CX52 | Ruroci¹g | Budowa | Roboty | Anna | Wyspa | PM000 | Zespó³-I | Wspólne | Normalny | Pakiet | L2 |  |  |
| 18CX52-108 |  | Malowanie i oznakowanie – Sekcja 16 | 7d | 2026-08-04 A | 2026-08-17 A | 18CX52-107 FF+2d | 100% | 2026-07-31 | 2026-08-10 |  | HydroIns | 18CX52 | Ruroci¹g | Budowa | Roboty | Anna | Wyspa | PM000 | Zespó³-K | Wspólne | Normalny | Pakiet | L2 | Rev A |  |
|  | SEKCJA 17 | **Sekcja 17** |  | 2026-03-26 | 2026-08-10 |  |  |  |  |  |  |  |  |  |  |  |  |  |  |  |  |  |  |  |  |
| 18CX52-111 |  | Prefabrykacja ruroci¹gów – Sekcja 17 | 4.7d | 2026-03-26 A | 2026-04-01 A | 18CX52-012, 18CX52-104 SS+5d | 100% | 2026-03-23 | 2026-03-26 |  | HydroIns | 18CX52 | Ruroci¹g | Budowa | Roboty | Anna | Wyspa | PM000 | Zespó³-W | Wspólne | Normalny | Pakiet | L2 | Rev C |  |
| 18CX52-112 |  | Monta¿ ruroci¹gów – Sekcja 17 | 23.5d | 2026-06-24 A | 2026-07-29 A | 18CX52-111, 18CX52-014 SS+8d | 100% | 2026-06-23 | 2026-07-23 |  | HydroIns | 18CX52 | Ruroci¹g | Budowa | Roboty | Anna | Wyspa | PM000 | Zespó³-W | Wspólne | Niski | Pakiet | L2 |  |  |
| 18CX52-113 |  | Próba ciœnieniowa – Sekcja 17 | 2d | 2026-07-24 A | 2026-07-27 A | 18CX52-112 | 100% |  |  |  | HydroIns | 18CX52 | Ruroci¹g | Budowa | Roboty | Anna | Wyspa | PM000 | Zespó³-W | Wspólne | Normalny | Pakiet | L2 |  |  |
| 18CX52-115 |  | Malowanie i oznakowanie – Sekcja 17 | 8d | 2026-07-27 A | 2026-08-05 A | 18CX52-114 FF+2d | 100% | 2026-07-24 | 2026-08-04 |  | HydroIns | 18CX52 | Ruroci¹g | Budowa | Roboty | Anna | Wyspa | PM000 | Zespó³-W | Wspólne | Normalny | Pakiet | L2 |  |  |
| 18CX52-114 |  | Izolacje – Sekcja 17 | 4d | 2026-07-31 A | 2026-08-10 A | 18CX52-113 | 100% | 2026-07-28 | 2026-07-31 |  | HydroIns | 18CX52 | Ruroci¹g | Budowa | Roboty | Anna | Wyspa | PM000 | Zespó³-W | Wspólne | Normalny | Pakiet | L2 |  |  |
|  | SEKCJA 18 | **Sekcja 18** |  | 2026-03-27 | 2026-08-12 |  |  |  |  |  |  |  |  |  |  |  |  |  |  |  |  |  |  |  |  |
|  | PODSEKCJA | **Podsekcja 18.A** |  | 2026-03-27 | 2026-08-12 |  |  |  |  |  |  |  |  |  |  |  |  |  |  |  |  |  |  |  |  |
| 18CX52-116 |  | Prefabrykacja ruroci¹gów – Sekcja 18 | 4.3d | 2026-03-27 A | 2026-04-01 A | 18CX52-012, 18CX52-111 SS+5d | 100% | 2026-03-30 | 2026-04-02 |  | HydroIns | 18CX52 | Ruroci¹g | Budowa | Roboty | Anna | Wyspa | PM000 | Zespó³-W | Wspólne | Normalny | Pakiet | L2 |  |  |
| 18CX52-117 |  | Monta¿ ruroci¹gów – Sekcja 18 | 15.4d | 2026-06-23 A | 2026-07-16 A | 18CX52-116, 18CX52-014 SS+9d | 100% | 2026-06-24 | 2026-07-14 |  | HydroIns | 18CX52 | Ruroci¹g | Budowa | Roboty | Anna | Wyspa | PM000 | Zespó³-K | Wspólne | Normalny | Pakiet | L2 | Rev B |  |
| 18CX52-118 |  | Próba ciœnieniowa – Sekcja 18 | 4d | 2026-07-16 A | 2026-07-24 A | 18CX52-117 | 100% | 2026-07-15 | 2026-07-20 |  | HydroIns | 18CX52 | Ruroci¹g | Budowa | Roboty | Anna | Wyspa | PM000 | Zespó³-W | Wspólne | Normalny | Pakiet | L2 | Rev B |  |
| 18CX52-119 |  | Izolacje – Sekcja 18 | 12d | 2026-07-21 A | 2026-08-05 A | 18CX52-118 | 100% |  |  | Kalendarz 6-dniowy | HydroIns | 18CX52 | Ruroci¹g | Budowa | Roboty | Anna | Wyspa | PM100 | Zespó³-E | Wspólne | Normalny | Pakiet | L2 |  |  |
| 18CX52-120 |  | Malowanie i oznakowanie – Sekcja 18 | 3d | 2026-08-05 A | 2026-08-12 A | 18CX52-119 FF+2d | 100% | 2026-08-05 | 2026-08-07 | Kalendarz 6-dniowy | HydroIns | 18CX52 | Ruroci¹g | Budowa | Roboty | Anna | Wyspa | PM000 | Zespó³-W | Wspólne | Wysoki | Pakiet | L2 | Rev A |  |
|  | SEKCJA 19 | **Sekcja 19** |  | 2026-04-09 | 2026-07-16 |  |  |  |  |  |  |  |  |  |  |  |  |  |  |  |  |  |  |  |  |
| 18CX52-123 |  | Prefabrykacja ruroci¹gów – Sekcja 19 | 7.4d | 2026-04-09 A | 2026-04-17 A | 18CX52-012, 18CX52-116 SS+5d | 100% | 2026-04-06 | 2026-04-14 |  | HydroIns | 18CX52 | Ruroci¹g | Budowa | Roboty | Anna | Wyspa | PM300 | Zespó³-I | Wspólne | Normalny | Pakiet | L2 |  |  |
| 18CX52-124 |  | Monta¿ ruroci¹gów – Sekcja 19 | 11.7d | 2026-06-12 A | 2026-06-30 A | 18CX52-123, 18CX52-014 SS | 100% | 2026-06-11 | 2026-06-25 |  | HydroIns | 18CX52 | Ruroci¹g | Budowa | Roboty | Anna | Wyspa | PM000 | Zespó³-W | Wspólne | Normalny | Pakiet | L2 |  |  |
| 18CX52-125 |  | Próba ciœnieniowa – Sekcja 19 | 2d | 2026-06-26 A | 2026-07-02 A | 18CX52-124 | 100% | 2026-06-26 | 2026-06-29 | Kalendarz 6-dniowy | HydroIns | 18CX52 | Ruroci¹g | Budowa | Roboty | Anna | Wyspa | PM000 | Zespó³-W | Wspólne | Normalny | Pakiet | L2 |  | Ryzyko opóŸnienia |
| 18CX52-126 |  | Izolacje – Sekcja 19 | 7d | 2026-07-01 A | 2026-07-10 A | 18CX52-125 | 100% | 2026-06-30 | 2026-07-08 |  | HydroIns | 18CX52 | Ruroci¹g | Budowa | Roboty | Anna | Wyspa | PM100 | Zespó³-E | Wspólne | Normalny | Pakiet | L2 | Rev A |  |
| 18CX52-127 |  | Malowanie i oznakowanie – Sekcja 19 | 7d | 2026-07-07 A | 2026-07-16 A | 18CX52-126 FF+2d | 100% | 2026-07-02 | 2026-07-10 |  | HydroIns | 18CX52 | Ruroci¹g | Budowa | Roboty | Anna | Wyspa | PM000 | Zespó³-W | Wspólne | Normalny | Pakiet | L2 | Rev B |  |

| ID | WBS | Activity | Type | Duration | Start | Finish | Predecessors | Complete | Actual start | Actual finish | Planned start | Planned finish | Calendar | Uwagi harmonogramisty | AC_Wykonawca | AC_Obiekt | AC_Dyscyplina | AC_Faza | AC_Zakres | AC_Opiekun | AC_Obszar | AC_PP_PM | AC_Zespol | AC_Blok | AC_Priorytet | AC_Pakiet | AC_Poziom | Rewizja dokumentu |
| --- | --- | --- | --- | --- | --- | --- | --- | --- | --- | --- | --- | --- | --- | --- | --- | --- | --- | --- | --- | --- | --- | --- | --- | --- | --- | --- | --- | --- |
|  | PROJ | **Projektowanie** |  |  | 2025-04-04 | 2025-08-20 |  |  |  |  |  |  |  |  |  |  |  |  |  |  |  |  |  |  |  |  |  |  |
|  | DOKUMENTAC | **Dokumentacja** |  |  | 2025-04-04 | 2025-08-20 |  |  |  |  |  |  |  |  |  |  |  |  |  |  |  |  |  |  |  |  |  |  |
| 18CX52-001 |  | Projekt wykonawczy – Bêben wysokiego ciœnienia |  | 74d | 2025-04-04 A | 2025-07-17 A |  | 100% |  |  | 2025-04-07 | 2025-07-17 | Kalendarz 6-dniowy | Do weryfikacji z wykonawc¹ | HydroIns | 18CX52 | Budowlan | Projekto | Projekt | Anna | Wyspa | PM000 | Zespó³-K | Wspólne | Normalny | Pakiet | L2 |  |
| 18CX52-002 |  | Uzgodnienie dokumentacji z Inwestorem |  | 13d | 2025-07-23 A | 2025-08-08 A | 18CX52-001 | 100% |  |  | 2025-07-18 | 2025-08-05 |  |  | HydroIns | 18CX52 | Budowlan | Projekto | Projekt | Anna | Wyspa | PM000 | Zespó³-W | Wspólne | Normalny | Pakiet | L2 | Rev A |
| 18CX52-003 |  | Zatwierdzenie dokumentacji do realizacji |  | 10d | 2025-08-07 A | 2025-08-20 A | 18CX52-002 | 100% |  |  | 2025-08-06 | 2025-08-19 |  |  | HydroIns | 18CX52 | Budowlan | Projekto | Projekt | Anna | Wyspa | PM000 | Zespó³-W | Wspólne | Wysoki | Pakiet | L2 |  |
| 18CX52-004 |  | KM: Dokumentacja zatwierdzona – Bêben wysokiego ciœnienia | milestone | 0d | 2025-08-19 A | 2025-08-19 | 18CX52-003 | 100% |  | 2025-08-18 | 2025-08-20 | 2025-08-20 |  |  | HydroIns | 18CX52 | Budowlan | Projekto | Kamieñ | Anna | Wyspa | PM000 | Zespó³-K | Wspólne | Normalny | Pakiet | L1 | Rev C |
|  | ROZR | **Rozruch** |  |  | 2026-08-13 | 2026-10-05 |  |  |  |  |  |  |  |  |  |  |  |  |  |  |  |  |  |  |  |  |  |  |
|  | ROZRUCH | **Rozruch** |  |  | 2026-08-13 | 2026-10-05 |  |  |  |  |  |  |  |  |  |  |  |  |  |  |  |  |  |  |  |  |  |  |
| 18CX52-130 |  | Przegl¹d gotowoœci do rozruchu |  | 5d | 2026-08-13 A | 2026-08-21 A | 18CX52-129, 18CX52-019, 18CX52-024, 18CX52-026 | 100% |  |  | 2026-08-12 | 2026-08-18 |  |  | HydroIns | 18CX52 | Rozruch | Rozruch | Rozruch | Anna | Wyspa | PM000 | Zespó³-K | Wspólne | Normalny | Pakiet | L2 |  |
| 18CX52-131 |  | Rozruch na zimno |  | 15d | 2026-08-19 A | 2026-09-08 A | 18CX52-130 | 100% |  |  |  |  | Kalendarz 6-dniowy |  | HydroIns | 18CX52 | Rozruch | Rozruch | Rozruch | Anna | Wyspa | PM000 | Zespó³-K | Wspólne | Wysoki | Pakiet | L2 | Rev A |
| 18CX52-132 |  | Rozruch na gor¹co / próby ruchowe |  | 16d | 2026-09-11 A | 2026-10-05 A | 18CX52-131 | 100% |  |  | 2026-09-09 | 2026-09-30 |  | Ryzyko opóŸnienia | HydroIns | 18CX52 | Rozruch | Rozruch | Rozruch | Anna | Wyspa | PM000 | Zespó³-W | Wspólne | Normalny | Pakiet | L2 |  |
| 18CX52-133 |  | KM: Odbiór koñcowy – Bêben wysokiego ciœnienia | milestone | 0d | 2026-09-30 | 2026-09-30 A | 18CX52-132 | 100% | 2026-10-01 |  | 2026-10-01 | 2026-10-01 |  |  | HydroIns | 18CX52 | Rozruch | Rozruch | Kamieñ | Anna | Wyspa | PM000 | Zespó³-W | Wspólne | Wysoki | Pakiet | L1 | Rev B |
|  | ZAKU | **Zakupy** |  |  | 2025-05-08 | 2026-06-12 |  |  |  |  |  |  |  |  |  |  |  |  |  |  |  |  |  |  |  |  |  |  |
|  | DOSTAWY | **Dostawy** |  |  | 2025-09-05 | 2026-06-12 |  |  |  |  |  |  |  |  |  |  |  |  |  |  |  |  |  |  |  |  |  |  |
| 18CX52-008 |  | Produkcja u dostawcy |  | 184d | 2025-09-05 A | 2026-05-22 A | 18CX52-007 | 100% |  |  | 2025-09-02 | 2026-05-15 |  |  | HydroIns | 18CX52 | Mechanic | Zakupy | Dostawa | Anna | Wyspa | PM000 | Zespó³-W | Wspólne | Normalny | Pakiet | L2 |  |
| 18CX52-009 |  | Testy FAT |  | 4d | 2026-05-15 A | 2026-05-21 A | 18CX52-008 | 100% |  |  | 2026-05-18 | 2026-05-21 | Kalendarz 6-dniowy |  | HydroIns | 18CX52 | Mechanic | Zakupy | Dostawa | Anna | Wyspa | PM000 | Zespó³-W | Wspólne | Wysoki | Pakiet | L2 |  |
| 18CX52-010 |  | Transport i dostawa na plac budowy |  | 14d | 2026-05-26 A | 2026-06-12 A | 18CX52-009 | 100% |  |  | 2026-05-22 | 2026-06-10 |  |  | HydroIns | 18CX52 | Mechanic | Zakupy | Dostawa | Anna | Wyspa | PM000 | Zespó³-W | Wspólne | Normalny | Pakiet | L2 |  |
| 18CX52-011 |  | KM: Dostawa na budowê – Bêben wysokiego ciœnienia | milestone | 0d | 2026-06-10 A | 2026-06-10 | 18CX52-010 | 100% |  | 2026-06-09 | 2026-06-11 | 2026-06-11 |  |  | HydroIns | 18CX52 | Mechanic | Zakupy | Kamieñ | Anna | Wyspa | PM000 | Zespó³-K | Wspólne | Normalny | Pakiet | L1 |  |
|  | ZAMÓWIENIA | **Zamówienia** |  |  | 2025-05-08 | 2025-09-05 |  |  |  |  |  |  |  |  |  |  |  |  |  |  |  |  |  |  |  |  |  |  |
| 18CX52-005 |  | Zapytanie ofertowe |  | 23d | 2025-05-08 A | 2025-06-09 A | 18CX52-001 SS+20d | 100% |  |  | 2025-05-05 | 2025-06-04 |  |  | HydroIns | 18CX52 | Mechanic | Zakupy | Dostawa | Anna | Wyspa | PM000 | Zespó³-W | Wspólne | Normalny | Pakiet | L2 | Rev A |
| 18CX52-006 |  | Analiza i wybór ofert |  | 19d | 2025-06-04 A | 2025-07-03 A | 18CX52-005 | 100% |  |  | 2025-06-05 | 2025-07-01 |  |  | HydroIns | 18CX52 | Mechanic | Zakupy | Dostawa | Anna | Wyspa | PM000 | Zespó³-K | Wspólne | Normalny | Pakiet | L2 |  |
| 18CX52-007 |  | Zawarcie umowy / zamówienie |  | 5d | 2025-08-29 A | 2025-09-05 A | 18CX52-006, 18CX52-004 SS, 15BP15-004 SF+4d | 100% |  |  | 2025-08-26 | 2025-09-01 |  |  | HydroIns | 18CX52 | Mechanic | Zakupy | Dostawa | Anna | Wyspa | PM100 | Zespó³-E | Wspólne | Normalny | Pakiet | L1 |  |
|  | 19FK60 | **19FK60 – Komin g³ówny** |  |  | 2025-06-02 | 2026-12-11 |  |  |  |  |  |  |  |  |  |  |  |  |  |  |  |  |  |  |  |  |  |  |
|  | BUDO | **Budowa** |  |  | 2026-01-21 | 2026-09-25 |  |  |  |  |  |  |  |  |  |  |  |  |  |  |  |  |  |  |  |  |  |  |
|  | AKPIA | **AKPiA** |  |  | 2026-07-30 | 2026-09-22 |  |  |  |  |  |  |  |  |  |  |  |  |  |  |  |  |  |  |  |  |  |  |
| 19FK60-116 |  | Monta¿ uk³adów AKPiA |  | 36d | 2026-07-30 A | 2026-09-22 A | 19FK60-014 SS+5d | 100% |  |  | 2026-07-29 | 2026-09-16 |  |  | Automaty | 19FK60 | AKPiA | Budowa | Roboty | Piotr | Wyspa | PM000 | Zespó³-K | Wspólne | Normalny | Pakiet | L2 | Rev A |

| ID | WBS | Activity | Type | Duration | Start | Finish | Predecessors | Complete | Actual finish | Planned start | Planned finish | Calendar | AC_Wykonawca | AC_Obiekt | AC_Dyscyplina | AC_Faza | AC_Zakres | AC_Opiekun | AC_Obszar | AC_PP_PM | AC_Zespol | AC_Blok | AC_Priorytet | AC_Pakiet | AC_Poziom | Rewizja dokumentu | Uwagi harmonogramisty |
| --- | --- | --- | --- | --- | --- | --- | --- | --- | --- | --- | --- | --- | --- | --- | --- | --- | --- | --- | --- | --- | --- | --- | --- | --- | --- | --- | --- |
|  | ELEKTRYKA | **Elektryka** |  |  | 2026-07-28 | 2026-09-02 |  |  |  |  |  |  |  |  |  |  |  |  |  |  |  |  |  |  |  |  |  |
| 19FK60-038 |  | Pod³¹czenia i pomiary – trasa 04 |  | 9d | 2026-07-28 A | 2026-08-10 A | 19FK60-037 FF | 100% |  | 2026-07-29 | 2026-08-10 |  | Automaty | 19FK60 | Elektryc | Budowa | Roboty | Piotr | Wyspa | PM000 | Zespó³-K | Wspólne | Normalny | Pakiet | L2 |  |  |
| 19FK60-097 |  | Uk³adanie kabli – trasa 14 |  | 16d | 2026-08-04 A | 2026-08-26 A | 19FK60-014 SS+10d | 100% |  | 2026-08-05 | 2026-08-26 |  | Automaty | 19FK60 | Elektryc | Budowa | Roboty | Piotr | Wyspa | PM000 | Zespó³-W | Wspólne | Niski | Pakiet | L2 |  |  |
| 19FK60-025 |  | Uk³adanie kabli – trasa 02 |  | 5d | 2026-08-05 A | 2026-08-11 A | 19FK60-014 SS+10d | 100% |  |  |  |  | Automaty | 19FK60 | Elektryc | Budowa | Roboty | Piotr | Wyspa | PM000 | Zespó³-E | Wspólne | Normalny | Pakiet | L2 |  |  |
| 19FK60-026 |  | Pod³¹czenia i pomiary – trasa 02 |  | 8d | 2026-08-05 A | 2026-08-14 A | 19FK60-025 FF | 100% |  | 2026-07-31 | 2026-08-11 |  | Automaty | 19FK60 | Elektryc | Budowa | Roboty | Piotr | Wyspa | PM000 | Zespó³-K | Wspólne | Normalny | Pakiet | L2 | Rev C |  |
| 19FK60-073 |  | Uk³adanie kabli – trasa 10 |  | 18d | 2026-08-05 A | 2026-09-02 A | 19FK60-014 SS+10d | 100% |  | 2026-08-05 | 2026-08-28 |  | Automaty | 19FK60 | Elektryc | Budowa | Roboty | Piotr | Wyspa | PM000 | Zespó³-K | Wspólne | Wysoki | Pakiet | L2 |  | Czeka na dostawê |
| 19FK60-086 |  | Pod³¹czenia i pomiary – trasa 12 |  | 9d | 2026-08-06 A | 2026-08-19 A | 19FK60-085 FF | 100% |  | 2026-08-05 | 2026-08-17 |  | Automaty | 19FK60 | Elektryc | Budowa | Roboty | Piotr | Wyspa | PM000 | Zespó³-K | Wspólne | Wysoki | Pakiet | L2 | Rev C |  |
| 19FK60-037 |  | Uk³adanie kabli – trasa 04 |  | 4d | 2026-08-07 A | 2026-08-14 A | 19FK60-014 SS+10d | 100% |  | 2026-08-05 | 2026-08-10 |  | Automaty | 19FK60 | Elektryc | Budowa | Roboty | Piotr | Wyspa | PM000 | Zespó³-K | Wspólne | Normalny | Pakiet | L2 |  |  |
| 19FK60-049 |  | Uk³adanie kabli – trasa 06 |  | 9d | 2026-08-07 A | 2026-08-21 A | 19FK60-014 SS+10d | 100% |  | 2026-08-05 | 2026-08-17 |  | Automaty | 19FK60 | Elektryc | Budowa | Roboty | Piotr | Wyspa | PM000 | Zespó³-W | Wspólne | Wysoki | Pakiet | L2 |  |  |
| 19FK60-061 |  | Uk³adanie kabli – trasa 08 |  | 10d | 2026-08-07 A | 2026-08-25 A | 19FK60-014 SS+10d | 100% |  | 2026-08-05 | 2026-08-18 |  | Automaty | 19FK60 | Elektryc | Budowa | Roboty | Piotr | Wyspa | PM000 | Zespó³-W | Wspólne | Normalny | Pakiet | L2 | Rev A |  |
| 19FK60-109 |  | Uk³adanie kabli – trasa 16 |  | 17d | 2026-08-07 A | 2026-09-01 A | 19FK60-014 SS+10d | 100% |  | 2026-08-05 | 2026-08-27 |  | Automaty | 19FK60 | Elektryc | Budowa | Roboty | Piotr | Wyspa | PM000 | Zespó³-W | Wspólne | Wysoki | Pakiet | L2 | Rev C | Uzgodnione na koordynacji |
| 19FK60-085 |  | Uk³adanie kabli – trasa 12 |  | 9d | 2026-08-10 A | 2026-08-24 A | 19FK60-014 SS+10d | 100% |  | 2026-08-05 | 2026-08-17 |  | Automaty | 19FK60 | Elektryc | Budowa | Roboty | Piotr | Wyspa | PM000 | Zespó³-W | Wspólne | Normalny | Pakiet | L2 | Rev A |  |
| 19FK60-050 |  | Pod³¹czenia i pomiary – trasa 06 |  | 7d | 2026-08-12 A | 2026-08-24 A | 19FK60-049 FF | 100% |  | 2026-08-07 | 2026-08-17 |  | Automaty | 19FK60 | Elektryc | Budowa | Roboty | Piotr | Wyspa | PM000 | Zespó³-W | Wspólne | Normalny | Pakiet | L2 |  |  |
| 19FK60-062 |  | Pod³¹czenia i pomiary – trasa 08 |  | 6d | 2026-08-13 A | 2026-08-20 A | 19FK60-061 FF | 100% |  | 2026-08-11 | 2026-08-18 |  | Automaty | 19FK60 | Elektryc | Budowa | Roboty | Piotr | Wyspa | PM000 | Zespó³-W | Wspólne | Normalny | Pakiet | L2 |  |  |
| 19FK60-074 |  | Pod³¹czenia i pomiary – trasa 10 |  | 10d | 2026-08-17 A | 2026-09-01 A | 19FK60-073 FF | 100% |  | 2026-08-17 | 2026-08-28 |  | Automaty | 19FK60 | Elektryc | Budowa | Roboty | Piotr | Wyspa | PM000 | Zespó³-W | Wspólne | Normalny | Pakiet | L2 | Rev A |  |
| 19FK60-110 |  | Pod³¹czenia i pomiary – trasa 16 |  | 5d | 2026-08-24 A | 2026-08-28 A | 19FK60-109 FF | 100% |  | 2026-08-21 | 2026-08-27 |  | Automaty | 19FK60 | Elektryc | Budowa | Roboty | Piotr | Wyspa | PM000 | Zespó³-K | Wspólne | Normalny | Pakiet | L2 |  |  |
| 19FK60-098 |  | Pod³¹czenia i pomiary – trasa 14 |  | 3d | 2026-08-26 A | 2026-08-28 A | 19FK60-097 FF | 100% |  | 2026-08-24 | 2026-08-26 |  | Automaty | 19FK60 | Elektryc | Budowa | Roboty | Piotr | Wyspa | PM000 | Zespó³-K | Wspólne | Normalny | Pakiet | L2 | Rev B |  |
|  | MONTA¯ | **Monta¿** |  |  | 2026-03-09 | 2026-09-21 |  |  |  |  |  |  |  |  |  |  |  |  |  |  |  |  |  |  |  |  |  |
| 19FK60-013 |  | Monta¿ konstrukcji stalowych |  | 37d | 2026-03-09 A | 2026-04-30 A | 19FK60-012 | 100% |  | 2026-03-05 | 2026-04-24 |  | Automaty | 19FK60 | Mechanic | Budowa | Roboty | Piotr | Wyspa | PM000 | Zespó³-I | Wspólne | Normalny | Pakiet | L2 |  |  |
| 19FK60-014 |  | Monta¿ urz¹dzeñ g³ównych |  | 28d | 2026-07-21 A | 2026-08-28 A | 19FK60-013, 19FK60-011 | 100% |  | 2026-07-22 | 2026-08-28 |  | Automaty | 19FK60 | Mechanic | Budowa | Roboty | Piotr | Wyspa | PM000 | Zespó³-E | Wspólne | Normalny | Pakiet | L2 |  |  |
| 19FK60-117 |  | KM: Zakoñczenie monta¿u – Komin g³ówny | milestone | 0d | 2026-09-21 A | 2026-09-21 | 19FK60-108, 19FK60-110, 19FK60-115, 19FK60-116, 19FK60-014 | 100% | 2026-09-18 | 2026-09-18 | 2026-09-18 |  | Automaty | 19FK60 | Mechanic | Budowa | Kamieñ | Piotr | Wyspa | PM000 | Zespó³-K | Wspólne | Normalny | Pakiet | L2 |  |  |
|  | ROBOTY BUD | **Roboty budowlane** |  |  | 2026-01-21 | 2026-03-06 |  |  |  |  |  |  |  |  |  |  |  |  |  |  |  |  |  |  |  |  |  |
| 19FK60-012 |  | Fundamenty i roboty ziemne |  | 33d | 2026-01-21 A | 2026-03-06 A | 19FK60-007 FS+10d | 100% |  | 2026-01-19 | 2026-03-04 |  | Automaty | 19FK60 | Budowlan | Budowa | Roboty | Piotr | Wyspa | PM000 | Zespó³-W | Wspólne | Normalny | Pakiet | L2 | Rev B |  |
|  | RUROCI¥GI | **Ruroci¹gi** |  |  | 2026-03-06 | 2026-09-25 |  |  |  |  |  |  |  |  |  |  |  |  |  |  |  |  |  |  |  |  |  |
|  | SEKCJA 01 | **Sekcja 01** |  |  | 2026-03-06 | 2026-09-01 |  |  |  |  |  |  |  |  |  |  |  |  |  |  |  |  |  |  |  |  |  |
| 19FK60-015 |  | Prefabrykacja ruroci¹gów – Sekcja 01 |  | 12.5d | 2026-03-06 A | 2026-03-24 A | 19FK60-012 | 100% |  | 2026-03-05 | 2026-03-20 |  | Automaty | 19FK60 | Ruroci¹g | Budowa | Roboty | Piotr | Wyspa | PM000 | Zespó³-K | Wspólne | Normalny | Pakiet | L2 |  | Czeka na dostawê |
| 19FK60-016 |  | Monta¿ ruroci¹gów – Sekcja 01 |  | 8.3d | 2026-07-28 A | 2026-08-11 A | 19FK60-015, 19FK60-014 SS+4d | 100% |  | 2026-07-28 | 2026-08-06 |  | Automaty | 19FK60 | Ruroci¹g | Budowa | Roboty | Piotr | Wyspa | PM000 | Zespó³-W | Wspólne | Normalny | Pakiet | L2 |  |  |
| 19FK60-017 |  | Próba ciœnieniowa – Sekcja 01 |  | 3d | 2026-08-10 A | 2026-08-17 A | 19FK60-016 | 100% |  | 2026-08-07 | 2026-08-11 | Kalendarz 6-dniowy | Automaty | 19FK60 | Ruroci¹g | Budowa | Roboty | Piotr | Wyspa | PM000 | Zespó³-K | Wspólne | Normalny | Pakiet | L2 |  |  |
| 19FK60-018 |  | Izolacje – Sekcja 01 |  | 8d | 2026-08-14 A | 2026-08-25 A | 19FK60-017 | 100% |  | 2026-08-12 | 2026-08-21 |  | Automaty | 19FK60 | Ruroci¹g | Budowa | Roboty | Piotr | Wyspa | PM000 | Zespó³-K | Wspólne | Wysoki | Pakiet | L2 |  |  |
| 19FK60-019 |  | Malowanie i oznakowanie – Sekcja 01 |  | 8d | 2026-08-19 A | 2026-09-01 A | 19FK60-018 FF+2d | 100% |  | 2026-08-14 | 2026-08-25 |  | Automaty | 19FK60 | Ruroci¹g | Budowa | Roboty | Piotr | Wyspa | PM000 | Zespó³-W | Wspólne | Normalny | Pakiet | L2 |  |  |

| ID | WBS | Activity | Duration | Start | Finish | Predecessors | Complete | Planned start | Planned finish | Calendar | AC_Wykonawca | AC_Obiekt | AC_Dyscyplina | AC_Faza | AC_Zakres | AC_Opiekun | AC_Obszar | AC_PP_PM | AC_Zespol | AC_Blok | AC_Priorytet | AC_Pakiet | AC_Poziom | Rewizja dokumentu | Uwagi harmonogramisty |
| --- | --- | --- | --- | --- | --- | --- | --- | --- | --- | --- | --- | --- | --- | --- | --- | --- | --- | --- | --- | --- | --- | --- | --- | --- | --- |
|  | SEKCJA 02 | **Sekcja 02** |  | 2026-03-11 | 2026-09-08 |  |  |  |  |  |  |  |  |  |  |  |  |  |  |  |  |  |  |  |  |
| 19FK60-020 |  | Prefabrykacja ruroci¹gów – Sekcja 02 | 9.6d | 2026-03-11 A | 2026-03-24 A | 19FK60-012, 19FK60-015 SS+5d | 100% | 2026-03-12 | 2026-03-24 |  | Automaty | 19FK60 | Ruroci¹g | Budowa | Roboty | Piotr | Wyspa | PM300 | Zespó³-I | Wspólne | Niski | Pakiet | L2 |  |  |
| 19FK60-021 |  | Monta¿ ruroci¹gów – Sekcja 02 | 19.1d | 2026-07-30 A | 2026-08-26 A | 19FK60-020, 19FK60-014 SS+5d | 100% | 2026-07-29 | 2026-08-24 |  | Automaty | 19FK60 | Ruroci¹g | Budowa | Roboty | Piotr | Wyspa | PM000 | Zespó³-K | Wspólne | Normalny | Pakiet | L2 | Rev C |  |
| 19FK60-022 |  | Próba ciœnieniowa – Sekcja 02 | 3d | 2026-08-27 A | 2026-09-02 A | 19FK60-021 | 100% | 2026-08-25 | 2026-08-27 |  | Automaty | 19FK60 | Ruroci¹g | Budowa | Roboty | Piotr | Wyspa | PM000 | Zespó³-K | Wspólne | Normalny | Pakiet | L2 |  |  |
| 19FK60-024 |  | Malowanie i oznakowanie – Sekcja 02 | 3d | 2026-09-01 A | 2026-09-08 A | 19FK60-023 FF+2d | 100% | 2026-09-01 | 2026-09-03 |  | Automaty | 19FK60 | Ruroci¹g | Budowa | Roboty | Piotr | Wyspa | PM000 | Zespó³-K | Wspólne | Wysoki | Pakiet | L2 |  |  |
| 19FK60-023 |  | Izolacje – Sekcja 02 | 3d | 2026-09-02 A | 2026-09-04 A | 19FK60-022 | 100% | 2026-08-28 | 2026-09-01 |  | Automaty | 19FK60 | Ruroci¹g | Budowa | Roboty | Piotr | Wyspa | PM000 | Zespó³-K | Wspólne | Normalny | Pakiet | L2 | Rev A |  |
|  | SEKCJA 03 | **Sekcja 03** |  | 2026-03-19 | 2026-09-10 |  |  |  |  |  |  |  |  |  |  |  |  |  |  |  |  |  |  |  |  |
|  | PODSEKCJA | **Podsekcja 03.A** |  | 2026-03-19 | 2026-09-10 |  |  |  |  |  |  |  |  |  |  |  |  |  |  |  |  |  |  |  |  |
| 19FK60-027 |  | Prefabrykacja ruroci¹gów – Sekcja 03 | 6d | 2026-03-19 A | 2026-03-30 A | 19FK60-012, 19FK60-020 SS+5d | 100% | 2026-03-19 | 2026-03-26 |  | Automaty | 19FK60 | Ruroci¹g | Budowa | Roboty | Piotr | Wyspa | PM300 | Zespó³-E | Wspólne | Wysoki | Pakiet | L2 |  |  |
| 19FK60-028 |  | Monta¿ ruroci¹gów – Sekcja 03 | 12.1d | 2026-08-06 A | 2026-08-24 A | 19FK60-027, 19FK60-014 SS+8d | 100% | 2026-08-03 | 2026-08-18 |  | Automaty | 19FK60 | Ruroci¹g | Budowa | Roboty | Piotr | Wyspa | PM000 | Zespó³-K | Wspólne | Normalny | Pakiet | L2 |  |  |
| 19FK60-029 |  | Próba ciœnieniowa – Sekcja 03 | 3d | 2026-08-19 A | 2026-08-21 A | 19FK60-028 | 100% |  |  |  | Automaty | 19FK60 | Ruroci¹g | Budowa | Roboty | Piotr | Wyspa | PM100 | Zespó³-I | Wspólne | Normalny | Pakiet | L2 |  |  |
| 19FK60-030 |  | Izolacje – Sekcja 03 | 10d | 2026-08-26 A | 2026-09-09 A | 19FK60-029 | 100% | 2026-08-24 | 2026-09-04 |  | Automaty | 19FK60 | Ruroci¹g | Budowa | Roboty | Piotr | Wyspa | PM000 | Zespó³-W | Wspólne | Normalny | Pakiet | L2 | Rev B |  |
| 19FK60-031 |  | Malowanie i oznakowanie – Sekcja 03 | 4d | 2026-09-07 A | 2026-09-10 A | 19FK60-030 FF+2d | 100% | 2026-09-03 | 2026-09-08 | Kalendarz 6-dniowy | Automaty | 19FK60 | Ruroci¹g | Budowa | Roboty | Piotr | Wyspa | PM000 | Zespó³-W | Wspólne | Krytyczn | Pakiet | L2 | Rev B | Uzgodnione na koordynacji |
|  | SEKCJA 04 | **Sekcja 04** |  | 2026-03-26 | 2026-09-22 |  |  |  |  |  |  |  |  |  |  |  |  |  |  |  |  |  |  |  |  |
| 19FK60-032 |  | Prefabrykacja ruroci¹gów – Sekcja 04 | 12.2d | 2026-03-26 A | 2026-04-10 A | 19FK60-012, 19FK60-027 SS+5d | 100% |  |  |  | Automaty | 19FK60 | Ruroci¹g | Budowa | Roboty | Piotr | Wyspa | PM000 | Zespó³-W | Wspólne | Normalny | Pakiet | L2 | Rev B |  |
| 19FK60-033 |  | Monta¿ ruroci¹gów – Sekcja 04 | 22.3d | 2026-08-05 A | 2026-09-03 A | 19FK60-032, 19FK60-014 SS+7d | 100% | 2026-07-31 | 2026-08-31 |  | Automaty | 19FK60 | Ruroci¹g | Budowa | Roboty | Piotr | Wyspa | PM000 | Zespó³-W | Wspólne | Normalny | Pakiet | L2 |  |  |
| 19FK60-034 |  | Próba ciœnieniowa – Sekcja 04 | 5d | 2026-09-02 A | 2026-09-09 A | 19FK60-033 | 100% | 2026-09-01 | 2026-09-07 | Kalendarz 6-dniowy | Automaty | 19FK60 | Ruroci¹g | Budowa | Roboty | Piotr | Wyspa | PM000 | Zespó³-K | Wspólne | Normalny | Pakiet | L2 |  | Uzgodnione na koordynacji |
| 19FK60-035 |  | Izolacje – Sekcja 04 | 6d | 2026-09-07 A | 2026-09-15 A | 19FK60-034 | 100% | 2026-09-08 | 2026-09-15 |  | Automaty | 19FK60 | Ruroci¹g | Budowa | Roboty | Piotr | Wyspa | PM000 | Zespó³-W | Wspólne | Normalny | Pakiet | L2 | Rev B |  |
| 19FK60-036 |  | Malowanie i oznakowanie – Sekcja 04 | 3d | 2026-09-16 A | 2026-09-22 A | 19FK60-035 FF+2d | 100% | 2026-09-15 | 2026-09-17 |  | Automaty | 19FK60 | Ruroci¹g | Budowa | Roboty | Piotr | Wyspa | PM000 | Zespó³-K | Wspólne | Wysoki | Pakiet | L2 |  |  |
|  | SEKCJA 05 | **Sekcja 05** |  | 2026-04-03 | 2026-09-01 |  |  |  |  |  |  |  |  |  |  |  |  |  |  |  |  |  |  |  |  |
| 19FK60-039 |  | Prefabrykacja ruroci¹gów – Sekcja 05 | 8.8d | 2026-04-03 A | 2026-04-17 A | 19FK60-012, 19FK60-032 SS+5d | 100% | 2026-04-02 | 2026-04-13 |  | Automaty | 19FK60 | Ruroci¹g | Budowa | Roboty | Piotr | Wyspa | PM000 | Zespó³-W | Wspólne | Normalny | Pakiet | L2 |  |  |
| 19FK60-040 |  | Monta¿ ruroci¹gów – Sekcja 05 | 9.9d | 2026-08-04 A | 2026-08-18 A | 19FK60-039, 19FK60-014 SS+8d | 100% | 2026-08-03 | 2026-08-13 |  | Automaty | 19FK60 | Ruroci¹g | Budowa | Roboty | Piotr | Wyspa | PM000 | Zespó³-W | Wspólne | Normalny | Pakiet | L2 |  |  |
| 19FK60-041 |  | Próba ciœnieniowa – Sekcja 05 | 4d | 2026-08-17 A | 2026-08-25 A | 19FK60-040 | 100% | 2026-08-14 | 2026-08-19 |  | Automaty | 19FK60 | Ruroci¹g | Budowa | Roboty | Piotr | Wyspa | PM000 | Zespó³-K | Wspólne | Normalny | Pakiet | L2 |  |  |
| 19FK60-042 |  | Izolacje – Sekcja 05 | 5d | 2026-08-20 A | 2026-08-27 A | 19FK60-041 | 100% | 2026-08-20 | 2026-08-26 |  | Automaty | 19FK60 | Ruroci¹g | Budowa | Roboty | Piotr | Wyspa | PM000 | Zespó³-E | Wspólne | Normalny | Pakiet | L2 |  | Do weryfikacji z wykonawc¹ |
| 19FK60-043 |  | Malowanie i oznakowanie – Sekcja 05 | 3d | 2026-08-26 A | 2026-09-01 A | 19FK60-042 FF+2d | 100% | 2026-08-26 | 2026-08-28 |  | Automaty | 19FK60 | Ruroci¹g | Budowa | Roboty | Piotr | Wyspa | PM300 | Zespó³-E | Wspólne | Wysoki | Pakiet | L2 | Rev B | Do weryfikacji z wykonawc¹ |

| ID | WBS | Activity | Duration | Start | Finish | Predecessors | Complete | Planned start | Planned finish | Calendar | Rewizja dokumentu | AC_Wykonawca | AC_Obiekt | AC_Dyscyplina | AC_Faza | AC_Zakres | AC_Opiekun | AC_Obszar | AC_PP_PM | AC_Zespol | AC_Blok | AC_Priorytet | AC_Pakiet | AC_Poziom | Uwagi harmonogramisty |
| --- | --- | --- | --- | --- | --- | --- | --- | --- | --- | --- | --- | --- | --- | --- | --- | --- | --- | --- | --- | --- | --- | --- | --- | --- | --- |
|  | SEKCJA 06 | **Sekcja 06** |  | 2026-04-09 | 2026-09-25 |  |  |  |  |  |  |  |  |  |  |  |  |  |  |  |  |  |  |  |  |
|  | PODSEKCJA | **Podsekcja 06.A** |  | 2026-04-09 | 2026-09-25 |  |  |  |  |  |  |  |  |  |  |  |  |  |  |  |  |  |  |  |  |
| 19FK60-044 |  | Prefabrykacja ruroci¹gów – Sekcja 06 | 14d | 2026-04-09 A | 2026-04-29 A | 19FK60-012, 19FK60-039 SS+5d | 100% | 2026-04-09 | 2026-04-28 |  | Rev B | Automaty | 19FK60 | Ruroci¹g | Budowa | Roboty | Piotr | Wyspa | PM000 | Zespó³-K | Wspólne | Normalny | Pakiet | L2 |  |
| 19FK60-045 |  | Monta¿ ruroci¹gów – Sekcja 06 | 21.6d | 2026-08-06 A | 2026-09-03 A | 19FK60-044, 19FK60-014 SS+9d | 100% | 2026-08-04 | 2026-09-01 |  |  | Automaty | 19FK60 | Ruroci¹g | Budowa | Roboty | Piotr | Wyspa | PM000 | Zespó³-W | Wspólne | Normalny | Pakiet | L2 |  |
| 19FK60-046 |  | Próba ciœnieniowa – Sekcja 06 | 2d | 2026-09-02 A | 2026-09-03 A | 19FK60-045 | 100% |  |  | Kalendarz 6-dniowy |  | Automaty | 19FK60 | Ruroci¹g | Budowa | Roboty | Piotr | Wyspa | PM000 | Zespó³-K | Wspólne | Normalny | Pakiet | L2 |  |
| 19FK60-047 |  | Izolacje – Sekcja 06 | 12d | 2026-09-09 A | 2026-09-25 A | 19FK60-046 | 100% | 2026-09-04 | 2026-09-21 |  |  | Automaty | 19FK60 | Ruroci¹g | Budowa | Roboty | Piotr | Wyspa | PM300 | Zespó³-E | Wspólne | Normalny | Pakiet | L2 |  |
| 19FK60-048 |  | Malowanie i oznakowanie – Sekcja 06 | 6d | 2026-09-15 A | 2026-09-22 A | 19FK60-047 FF+2d | 100% | 2026-09-16 | 2026-09-23 |  | Rev C | Automaty | 19FK60 | Ruroci¹g | Budowa | Roboty | Piotr | Wyspa | PM000 | Zespó³-W | Wspólne | Normalny | Pakiet | L2 |  |
|  | SEKCJA 07 | **Sekcja 07** |  | 2026-04-15 | 2026-09-23 |  |  |  |  |  |  |  |  |  |  |  |  |  |  |  |  |  |  |  |  |
| 19FK60-051 |  | Prefabrykacja ruroci¹gów – Sekcja 07 | 6.3d | 2026-04-15 A | 2026-04-24 A | 19FK60-012, 19FK60-044 SS+5d | 100% | 2026-04-16 | 2026-04-23 |  | Rev A | Automaty | 19FK60 | Ruroci¹g | Budowa | Roboty | Piotr | Wyspa | PM000 | Zespó³-W | Wspólne | Niski | Pakiet | L2 |  |
| 19FK60-052 |  | Monta¿ ruroci¹gów – Sekcja 07 | 19.5d | 2026-07-31 A | 2026-08-27 A | 19FK60-051, 19FK60-014 SS+7d | 100% | 2026-07-31 | 2026-08-26 |  | Rev B | Automaty | 19FK60 | Ruroci¹g | Budowa | Roboty | Piotr | Wyspa | PM000 | Zespó³-W | Wspólne | Normalny | Pakiet | L2 |  |
| 19FK60-053 |  | Próba ciœnieniowa – Sekcja 07 | 5d | 2026-08-31 A | 2026-09-08 A | 19FK60-052 | 100% | 2026-08-27 | 2026-09-02 |  |  | Automaty | 19FK60 | Ruroci¹g | Budowa | Roboty | Piotr | Wyspa | PM000 | Zespó³-W | Wspólne | Normalny | Pakiet | L2 | Uzgodnione na koordynacji |
| 19FK60-054 |  | Izolacje – Sekcja 07 | 10d | 2026-09-03 A | 2026-09-18 A | 19FK60-053 | 100% | 2026-09-03 | 2026-09-16 |  | Rev B | Automaty | 19FK60 | Ruroci¹g | Budowa | Roboty | Piotr | Wyspa | PM000 | Zespó³-K | Wspólne | Normalny | Pakiet | L2 | Uzgodnione na koordynacji |
| 19FK60-055 |  | Malowanie i oznakowanie – Sekcja 07 | 4d | 2026-09-16 A | 2026-09-23 A | 19FK60-054 FF+2d | 100% | 2026-09-15 | 2026-09-18 |  |  | Automaty | 19FK60 | Ruroci¹g | Budowa | Roboty | Piotr | Wyspa | PM000 | Zespó³-W | Wspólne | Niski | Pakiet | L2 |  |
|  | SEKCJA 08 | **Sekcja 08** |  | 2026-04-23 | 2026-09-16 |  |  |  |  |  |  |  |  |  |  |  |  |  |  |  |  |  |  |  |  |
| 19FK60-056 |  | Prefabrykacja ruroci¹gów – Sekcja 08 | 3.7d | 2026-04-23 A | 2026-04-30 A | 19FK60-012, 19FK60-051 SS+5d | 100% | 2026-04-23 | 2026-04-27 | Kalendarz 6-dniowy |  | Automaty | 19FK60 | Ruroci¹g | Budowa | Roboty | Piotr | Wyspa | PM000 | Zespó³-K | Wspólne | Wysoki | Pakiet | L2 | Uzgodnione na koordynacji |
| 19FK60-057 |  | Monta¿ ruroci¹gów – Sekcja 08 | 7.5d | 2026-08-07 A | 2026-08-17 A | 19FK60-056, 19FK60-014 SS+10d | 100% | 2026-08-05 | 2026-08-13 | Kalendarz 6-dniowy | Rev C | Automaty | 19FK60 | Ruroci¹g | Budowa | Roboty | Piotr | Wyspa | PM000 | Zespó³-K | Wspólne | Normalny | Pakiet | L2 | Uzgodnione na koordynacji |
| 19FK60-058 |  | Próba ciœnieniowa – Sekcja 08 | 6d | 2026-08-14 A | 2026-08-24 A | 19FK60-057 | 100% | 2026-08-14 | 2026-08-21 |  |  | Automaty | 19FK60 | Ruroci¹g | Budowa | Roboty | Piotr | Wyspa | PM000 | Zespó³-K | Wspólne | Normalny | Pakiet | L2 |  |
| 19FK60-059 |  | Izolacje – Sekcja 08 | 11d | 2026-08-24 A | 2026-09-08 A | 19FK60-058 | 100% | 2026-08-24 | 2026-09-07 |  | Rev C | Automaty | 19FK60 | Ruroci¹g | Budowa | Roboty | Piotr | Wyspa | PM000 | Zespó³-W | Wspólne | Normalny | Pakiet | L2 |  |
| 19FK60-060 |  | Malowanie i oznakowanie – Sekcja 08 | 6d | 2026-09-07 A | 2026-09-16 A | 19FK60-059 FF+2d | 100% | 2026-09-02 | 2026-09-09 |  |  | Automaty | 19FK60 | Ruroci¹g | Budowa | Roboty | Piotr | Wyspa | PM000 | Zespó³-K | Wspólne | Niski | Pakiet | L2 |  |
|  | SEKCJA 09 | **Sekcja 09** |  | 2026-04-29 | 2026-09-15 |  |  |  |  |  |  |  |  |  |  |  |  |  |  |  |  |  |  |  |  |
|  | PODSEKCJA | **Podsekcja 09.A** |  | 2026-04-29 | 2026-09-15 |  |  |  |  |  |  |  |  |  |  |  |  |  |  |  |  |  |  |  |  |
| 19FK60-063 |  | Prefabrykacja ruroci¹gów – Sekcja 09 | 10d | 2026-04-29 A | 2026-05-15 A | 19FK60-012, 19FK60-056 SS+5d | 100% | 2026-04-30 | 2026-05-13 |  | Rev A | Automaty | 19FK60 | Ruroci¹g | Budowa | Roboty | Piotr | Wyspa | PM000 | Zespó³-E | Wspólne | Normalny | Pakiet | L2 |  |
| 19FK60-064 |  | Monta¿ ruroci¹gów – Sekcja 09 | 12.3d | 2026-07-29 A | 2026-08-14 A | 19FK60-063, 19FK60-014 SS+6d | 100% | 2026-07-30 | 2026-08-14 |  |  | Automaty | 19FK60 | Ruroci¹g | Budowa | Roboty | Piotr | Wyspa | PM000 | Zespó³-W | Wspólne | Normalny | Pakiet | L2 |  |
| 19FK60-065 |  | Próba ciœnieniowa – Sekcja 09 | 6d | 2026-08-18 A | 2026-08-26 A | 19FK60-064 | 100% | 2026-08-17 | 2026-08-24 |  |  | Automaty | 19FK60 | Ruroci¹g | Budowa | Roboty | Piotr | Wyspa | PM000 | Zespó³-K | Wspólne | Normalny | Pakiet | L2 |  |
| 19FK60-066 |  | Izolacje – Sekcja 09 | 10d | 2026-08-28 A | 2026-09-15 A | 19FK60-065 | 100% | 2026-08-25 | 2026-09-07 |  |  | Automaty | 19FK60 | Ruroci¹g | Budowa | Roboty | Piotr | Wyspa | PM000 | Zespó³-K | Wspólne | Wysoki | Pakiet | L2 |  |
| 19FK60-067 |  | Malowanie i oznakowanie – Sekcja 09 | 5d | 2026-09-08 A | 2026-09-15 A | 19FK60-066 FF+2d | 100% | 2026-09-03 | 2026-09-09 |  |  | Automaty | 19FK60 | Ruroci¹g | Budowa | Roboty | Piotr | Wyspa | PM000 | Zespó³-W | Wspólne | Normalny | Pakiet | L2 |  |

| ID | WBS | Activity | Duration | Start | Finish | Predecessors | Complete | Planned start | Planned finish | Calendar | Uwagi harmonogramisty | AC_Wykonawca | AC_Obiekt | AC_Dyscyplina | AC_Faza | AC_Zakres | AC_Opiekun | AC_Obszar | AC_PP_PM | AC_Zespol | AC_Blok | AC_Priorytet | AC_Pakiet | AC_Poziom | Rewizja dokumentu |
| --- | --- | --- | --- | --- | --- | --- | --- | --- | --- | --- | --- | --- | --- | --- | --- | --- | --- | --- | --- | --- | --- | --- | --- | --- | --- |
|  | SEKCJA 10 | **Sekcja 10** |  | 2026-05-12 | 2026-09-02 |  |  |  |  |  |  |  |  |  |  |  |  |  |  |  |  |  |  |  |  |
| 19FK60-068 |  | Prefabrykacja ruroci¹gów – Sekcja 10 | 11.6d | 2026-05-12 A | 2026-05-29 A | 19FK60-012, 19FK60-063 SS+5d | 100% | 2026-05-07 | 2026-05-21 |  | Do weryfikacji z wykonawc¹ | Automaty | 19FK60 | Ruroci¹g | Budowa | Roboty | Piotr | Wyspa | PM000 | Zespó³-W | Wspólne | Normalny | Pakiet | L2 |  |
| 19FK60-069 |  | Monta¿ ruroci¹gów – Sekcja 10 | 9.8d | 2026-07-31 A | 2026-08-14 A | 19FK60-068, 19FK60-014 SS+7d | 100% | 2026-07-31 | 2026-08-12 |  |  | Automaty | 19FK60 | Ruroci¹g | Budowa | Roboty | Piotr | Wyspa | PM000 | Zespó³-K | Wspólne | Normalny | Pakiet | L2 |  |
| 19FK60-070 |  | Próba ciœnieniowa – Sekcja 10 | 2d | 2026-08-17 A | 2026-08-18 A | 19FK60-069 | 100% | 2026-08-13 | 2026-08-14 |  |  | Automaty | 19FK60 | Ruroci¹g | Budowa | Roboty | Piotr | Wyspa | PM000 | Zespó³-K | Wspólne | Normalny | Pakiet | L2 |  |
| 19FK60-071 |  | Izolacje – Sekcja 10 | 10d | 2026-08-19 A | 2026-09-02 A | 19FK60-070 | 100% | 2026-08-17 | 2026-08-28 |  |  | Automaty | 19FK60 | Ruroci¹g | Budowa | Roboty | Piotr | Wyspa | PM000 | Zespó³-W | Wspólne | Normalny | Pakiet | L2 |  |
| 19FK60-072 |  | Malowanie i oznakowanie – Sekcja 10 | 5d | 2026-08-27 A | 2026-09-02 A | 19FK60-071 FF+2d | 100% | 2026-08-26 | 2026-09-01 |  | Ryzyko opóŸnienia | Automaty | 19FK60 | Ruroci¹g | Budowa | Roboty | Piotr | Wyspa | PM000 | Zespó³-W | Wspólne | Wysoki | Pakiet | L2 |  |
|  | SEKCJA 11 | **Sekcja 11** |  | 2026-05-14 | 2026-09-16 |  |  |  |  |  |  |  |  |  |  |  |  |  |  |  |  |  |  |  |  |
| 19FK60-075 |  | Prefabrykacja ruroci¹gów – Sekcja 11 | 5.1d | 2026-05-14 A | 2026-05-21 A | 19FK60-012, 19FK60-068 SS+5d | 100% | 2026-05-14 | 2026-05-20 |  |  | Automaty | 19FK60 | Ruroci¹g | Budowa | Roboty | Piotr | Wyspa | PM000 | Zespó³-W | Wspólne | Normalny | Pakiet | L2 | Rev B |
| 19FK60-076 |  | Monta¿ ruroci¹gów – Sekcja 11 | 17.6d | 2026-08-04 A | 2026-08-28 A | 19FK60-075, 19FK60-014 SS+7d | 100% | 2026-07-31 | 2026-08-24 |  |  | Automaty | 19FK60 | Ruroci¹g | Budowa | Roboty | Piotr | Wyspa | PM000 | Zespó³-K | Wspólne | Wysoki | Pakiet | L2 |  |
| 19FK60-077 |  | Próba ciœnieniowa – Sekcja 11 | 3d | 2026-08-24 A | 2026-08-27 A | 19FK60-076 | 100% | 2026-08-25 | 2026-08-27 |  |  | Automaty | 19FK60 | Ruroci¹g | Budowa | Roboty | Piotr | Wyspa | PM000 | Zespó³-W | Wspólne | Normalny | Pakiet | L2 |  |
| 19FK60-078 |  | Izolacje – Sekcja 11 | 10d | 2026-08-27 A | 2026-09-14 A | 19FK60-077 | 100% | 2026-08-28 | 2026-09-10 |  |  | Automaty | 19FK60 | Ruroci¹g | Budowa | Roboty | Piotr | Wyspa | PM000 | Zespó³-W | Wspólne | Normalny | Pakiet | L2 |  |
| 19FK60-079 |  | Malowanie i oznakowanie – Sekcja 11 | 2d | 2026-09-10 A | 2026-09-16 A | 19FK60-078 FF+2d | 100% | 2026-09-11 | 2026-09-14 |  |  | Automaty | 19FK60 | Ruroci¹g | Budowa | Roboty | Piotr | Wyspa | PM000 | Zespó³-W | Wspólne | Normalny | Pakiet | L2 | Rev B |
|  | SEKCJA 12 | **Sekcja 12** |  | 2026-05-25 | 2026-09-14 |  |  |  |  |  |  |  |  |  |  |  |  |  |  |  |  |  |  |  |  |
|  | PODSEKCJA | **Podsekcja 12.A** |  | 2026-05-25 | 2026-09-14 |  |  |  |  |  |  |  |  |  |  |  |  |  |  |  |  |  |  |  |  |
| 19FK60-080 |  | Prefabrykacja ruroci¹gów – Sekcja 12 | 14.3d | 2026-05-25 A | 2026-06-15 A | 19FK60-012, 19FK60-075 SS+5d | 100% | 2026-05-21 | 2026-06-09 |  |  | Automaty | 19FK60 | Ruroci¹g | Budowa | Roboty | Piotr | Wyspa | PM000 | Zespó³-K | Wspólne | Normalny | Pakiet | L2 | Rev B |
| 19FK60-081 |  | Monta¿ ruroci¹gów – Sekcja 12 | 21.5d | 2026-07-28 A | 2026-08-27 A | 19FK60-080, 19FK60-014 SS+1d | 100% | 2026-07-23 | 2026-08-20 |  |  | Automaty | 19FK60 | Ruroci¹g | Budowa | Roboty | Piotr | Wyspa | PM000 | Zespó³-I | Wspólne | Normalny | Pakiet | L2 |  |
| 19FK60-082 |  | Próba ciœnieniowa – Sekcja 12 | 3d | 2026-08-21 A | 2026-08-25 A | 19FK60-081 | 100% |  |  |  |  | Automaty | 19FK60 | Ruroci¹g | Budowa | Roboty | Piotr | Wyspa | PM000 | Zespó³-K | Wspólne | Normalny | Pakiet | L2 |  |
| 19FK60-083 |  | Izolacje – Sekcja 12 | 11d | 2026-08-26 A | 2026-09-11 A | 19FK60-082 | 100% | 2026-08-26 | 2026-09-09 |  |  | Automaty | 19FK60 | Ruroci¹g | Budowa | Roboty | Piotr | Wyspa | PM000 | Zespó³-W | Wspólne | Normalny | Pakiet | L2 |  |
| 19FK60-084 |  | Malowanie i oznakowanie – Sekcja 12 | 6d | 2026-09-03 A | 2026-09-14 A | 19FK60-083 FF+2d | 100% | 2026-09-04 | 2026-09-11 |  | Uzgodnione na koordynacji | Automaty | 19FK60 | Ruroci¹g | Budowa | Roboty | Piotr | Wyspa | PM000 | Zespó³-W | Wspólne | Niski | Pakiet | L2 | Rev C |
|  | SEKCJA 13 | **Sekcja 13** |  | 2026-05-27 | 2026-08-26 |  |  |  |  |  |  |  |  |  |  |  |  |  |  |  |  |  |  |  |  |
| 19FK60-087 |  | Prefabrykacja ruroci¹gów – Sekcja 13 | 7.8d | 2026-05-27 A | 2026-06-05 A | 19FK60-012, 19FK60-080 SS+5d | 100% | 2026-05-28 | 2026-06-05 | Kalendarz 6-dniowy |  | Automaty | 19FK60 | Ruroci¹g | Budowa | Roboty | Piotr | Wyspa | PM000 | Zespó³-K | Wspólne | Normalny | Pakiet | L2 |  |
| 19FK60-088 |  | Monta¿ ruroci¹gów – Sekcja 13 | 16.5d | 2026-07-21 A | 2026-08-11 A | 19FK60-087, 19FK60-014 SS | 100% | 2026-07-22 | 2026-08-12 |  |  | Automaty | 19FK60 | Ruroci¹g | Budowa | Roboty | Piotr | Wyspa | PM000 | Zespó³-W | Wspólne | Normalny | Pakiet | L2 |  |
| 19FK60-089 |  | Próba ciœnieniowa – Sekcja 13 | 2d | 2026-08-12 A | 2026-08-18 A | 19FK60-088 | 100% | 2026-08-13 | 2026-08-14 |  |  | Automaty | 19FK60 | Ruroci¹g | Budowa | Roboty | Piotr | Wyspa | PM000 | Zespó³-W | Wspólne | Normalny | Pakiet | L2 |  |
| 19FK60-090 |  | Izolacje – Sekcja 13 | 3d | 2026-08-17 A | 2026-08-20 A | 19FK60-089 | 100% | 2026-08-17 | 2026-08-19 |  |  | Automaty | 19FK60 | Ruroci¹g | Budowa | Roboty | Piotr | Wyspa | PM000 | Zespó³-K | Wspólne | Normalny | Pakiet | L2 |  |
| 19FK60-091 |  | Malowanie i oznakowanie – Sekcja 13 | 7d | 2026-08-18 A | 2026-08-26 A | 19FK60-090 FF+2d | 100% | 2026-08-13 | 2026-08-21 |  |  | Automaty | 19FK60 | Ruroci¹g | Budowa | Roboty | Piotr | Wyspa | PM000 | Zespó³-W | Wspólne | Krytyczn | Pakiet | L2 |  |

| ID | WBS | Activity | Duration | Start | Finish | Predecessors | Complete | Planned start | Planned finish | Rewizja dokumentu | AC_Wykonawca | AC_Obiekt | AC_Dyscyplina | AC_Faza | AC_Zakres | AC_Opiekun | AC_Obszar | AC_PP_PM | AC_Zespol | AC_Blok | AC_Priorytet | AC_Pakiet | AC_Poziom | Uwagi harmonogramisty |
| --- | --- | --- | --- | --- | --- | --- | --- | --- | --- | --- | --- | --- | --- | --- | --- | --- | --- | --- | --- | --- | --- | --- | --- | --- |
|  | SEKCJA 14 | **Sekcja 14** |  | 2026-06-08 | 2026-08-18 |  |  |  |  |  |  |  |  |  |  |  |  |  |  |  |  |  |  |  |
| 19FK60-092 |  | Prefabrykacja ruroci¹gów – Sekcja 14 | 9.8d | 2026-06-08 A | 2026-06-19 A | 19FK60-012, 19FK60-087 SS+5d | 100% | 2026-06-04 | 2026-06-16 | Rev C | Automaty | 19FK60 | Ruroci¹g | Budowa | Roboty | Piotr | Wyspa | PM000 | Zespó³-W | Wspólne | Normalny | Pakiet | L2 |  |
| 19FK60-093 |  | Monta¿ ruroci¹gów – Sekcja 14 | 6.5d | 2026-07-27 A | 2026-08-04 A | 19FK60-092, 19FK60-014 SS+2d | 100% | 2026-07-24 | 2026-07-31 |  | Automaty | 19FK60 | Ruroci¹g | Budowa | Roboty | Piotr | Wyspa | PM000 | Zespó³-K | Wspólne | Normalny | Pakiet | L2 |  |
| 19FK60-094 |  | Próba ciœnieniowa – Sekcja 14 | 4d | 2026-08-04 A | 2026-08-11 A | 19FK60-093 | 100% | 2026-08-03 | 2026-08-06 |  | Automaty | 19FK60 | Ruroci¹g | Budowa | Roboty | Piotr | Wyspa | PM000 | Zespó³-K | Wspólne | Wysoki | Pakiet | L2 |  |
| 19FK60-095 |  | Izolacje – Sekcja 14 | 7d | 2026-08-10 A | 2026-08-18 A | 19FK60-094 | 100% | 2026-08-07 | 2026-08-17 |  | Automaty | 19FK60 | Ruroci¹g | Budowa | Roboty | Piotr | Wyspa | PM000 | Zespó³-K | Wspólne | Normalny | Pakiet | L2 | Do weryfikacji z wykonawc¹ |
| 19FK60-096 |  | Malowanie i oznakowanie – Sekcja 14 | 4d | 2026-08-13 A | 2026-08-18 A | 19FK60-095 FF+2d | 100% | 2026-08-14 | 2026-08-19 |  | Automaty | 19FK60 | Ruroci¹g | Budowa | Roboty | Piotr | Wyspa | PM000 | Zespó³-K | Wspólne | Normalny | Pakiet | L2 |  |
|  | SEKCJA 15 | **Sekcja 15** |  | 2026-06-10 | 2026-09-16 |  |  |  |  |  |  |  |  |  |  |  |  |  |  |  |  |  |  |  |
|  | PODSEKCJA | **Podsekcja 15.A** |  | 2026-06-10 | 2026-09-16 |  |  |  |  |  |  |  |  |  |  |  |  |  |  |  |  |  |  |  |
| 19FK60-099 |  | Prefabrykacja ruroci¹gów – Sekcja 15 | 5.1d | 2026-06-10 A | 2026-06-19 A | 19FK60-012, 19FK60-092 SS+5d | 100% | 2026-06-11 | 2026-06-17 |  | Automaty | 19FK60 | Ruroci¹g | Budowa | Roboty | Piotr | Wyspa | PM000 | Zespó³-W | Wspólne | Normalny | Pakiet | L2 |  |
| 19FK60-100 |  | Monta¿ ruroci¹gów – Sekcja 15 | 16.6d | 2026-08-05 A | 2026-08-27 A | 19FK60-099, 19FK60-014 SS+10d | 100% | 2026-08-05 | 2026-08-26 | Rev B | Automaty | 19FK60 | Ruroci¹g | Budowa | Roboty | Piotr | Wyspa | PM000 | Zespó³-K | Wspólne | Normalny | Pakiet | L2 |  |
| 19FK60-101 |  | Próba ciœnieniowa – Sekcja 15 | 5d | 2026-08-28 A | 2026-09-08 A | 19FK60-100 | 100% | 2026-08-27 | 2026-09-02 | Rev C | Automaty | 19FK60 | Ruroci¹g | Budowa | Roboty | Piotr | Wyspa | PM300 | Zespó³-E | Wspólne | Normalny | Pakiet | L2 |  |
| 19FK60-102 |  | Izolacje – Sekcja 15 | 4d | 2026-09-07 A | 2026-09-15 A | 19FK60-101 | 100% | 2026-09-03 | 2026-09-08 | Rev B | Automaty | 19FK60 | Ruroci¹g | Budowa | Roboty | Piotr | Wyspa | PM000 | Zespó³-W | Wspólne | Normalny | Pakiet | L2 |  |
| 19FK60-103 |  | Malowanie i oznakowanie – Sekcja 15 | 2d | 2026-09-11 A | 2026-09-16 A | 19FK60-102 FF+2d | 100% | 2026-09-09 | 2026-09-10 |  | Automaty | 19FK60 | Ruroci¹g | Budowa | Roboty | Piotr | Wyspa | PM000 | Zespó³-K | Wspólne | Normalny | Pakiet | L2 |  |
|  | SEKCJA 16 | **Sekcja 16** |  | 2026-06-22 | 2026-08-21 |  |  |  |  |  |  |  |  |  |  |  |  |  |  |  |  |  |  |  |
| 19FK60-104 |  | Prefabrykacja ruroci¹gów – Sekcja 16 | 7.5d | 2026-06-22 A | 2026-07-03 A | 19FK60-012, 19FK60-099 SS+5d | 100% | 2026-06-18 | 2026-06-26 |  | Automaty | 19FK60 | Ruroci¹g | Budowa | Roboty | Piotr | Wyspa | PM000 | Zespó³-K | Wspólne | Normalny | Pakiet | L2 |  |
| 19FK60-105 |  | Monta¿ ruroci¹gów – Sekcja 16 | 7.9d | 2026-07-28 A | 2026-08-10 A | 19FK60-104, 19FK60-014 SS+5d | 100% | 2026-07-29 | 2026-08-06 |  | Automaty | 19FK60 | Ruroci¹g | Budowa | Roboty | Piotr | Wyspa | PM000 | Zespó³-W | Wspólne | Normalny | Pakiet | L2 |  |
| 19FK60-106 |  | Próba ciœnieniowa – Sekcja 16 | 2d | 2026-08-10 A | 2026-08-11 A | 19FK60-105 | 100% | 2026-08-07 | 2026-08-10 | Rev B | Automaty | 19FK60 | Ruroci¹g | Budowa | Roboty | Piotr | Wyspa | PM000 | Zespó³-W | Wspólne | Normalny | Pakiet | L2 |  |
| 19FK60-107 |  | Izolacje – Sekcja 16 | 5d | 2026-08-12 A | 2026-08-21 A | 19FK60-106 | 100% | 2026-08-11 | 2026-08-17 | Rev A | Automaty | 19FK60 | Ruroci¹g | Budowa | Roboty | Piotr | Wyspa | PM000 | Zespó³-W | Wspólne | Normalny | Pakiet | L2 |  |
| 19FK60-108 |  | Malowanie i oznakowanie – Sekcja 16 | 4d | 2026-08-17 A | 2026-08-20 A | 19FK60-107 FF+2d | 100% | 2026-08-14 | 2026-08-19 | Rev C | Automaty | 19FK60 | Ruroci¹g | Budowa | Roboty | Piotr | Wyspa | PM000 | Zespó³-K | Wspólne | Normalny | Pakiet | L2 |  |
|  | SEKCJA 17 | **Sekcja 17** |  | 2026-06-30 | 2026-09-23 |  |  |  |  |  |  |  |  |  |  |  |  |  |  |  |  |  |  |  |
| 19FK60-111 |  | Prefabrykacja ruroci¹gów – Sekcja 17 | 11.2d | 2026-06-30 A | 2026-07-14 A | 19FK60-012, 19FK60-104 SS+5d | 100% | 2026-06-25 | 2026-07-09 |  | Automaty | 19FK60 | Ruroci¹g | Budowa | Roboty | Piotr | Wyspa | PM000 | Zespó³-W | Wspólne | Normalny | Pakiet | L2 | Do weryfikacji z wykonawc¹ |
| 19FK60-112 |  | Monta¿ ruroci¹gów – Sekcja 17 | 22d | 2026-07-30 A | 2026-08-31 A | 19FK60-111, 19FK60-014 SS+5d | 100% | 2026-07-29 | 2026-08-27 | Rev C | Automaty | 19FK60 | Ruroci¹g | Budowa | Roboty | Piotr | Wyspa | PM000 | Zespó³-W | Wspólne | Niski | Pakiet | L2 |  |
| 19FK60-113 |  | Próba ciœnieniowa – Sekcja 17 | 6d | 2026-08-27 A | 2026-09-04 A | 19FK60-112 | 100% | 2026-08-28 | 2026-09-04 | Rev C | Automaty | 19FK60 | Ruroci¹g | Budowa | Roboty | Piotr | Wyspa | PM000 | Zespó³-K | Wspólne | Normalny | Pakiet | L2 |  |
| 19FK60-114 |  | Izolacje – Sekcja 17 | 7d | 2026-09-04 A | 2026-09-16 A | 19FK60-113 | 100% | 2026-09-07 | 2026-09-15 |  | Automaty | 19FK60 | Ruroci¹g | Budowa | Roboty | Piotr | Wyspa | PM000 | Zespó³-E | Wspólne | Niski | Pakiet | L2 |  |
| 19FK60-115 |  | Malowanie i oznakowanie – Sekcja 17 | 8d | 2026-09-11 A | 2026-09-23 A | 19FK60-114 FF+2d | 100% | 2026-09-08 | 2026-09-17 | Rev B | Automaty | 19FK60 | Ruroci¹g | Budowa | Roboty | Piotr | Wyspa | PM000 | Zespó³-W | Wspólne | Normalny | Pakiet | L2 | Uzgodnione na koordynacji |

| ID | WBS | Activity | Type | Duration | Start | Finish | Predecessors | Complete | Remaining | Actual finish | Planned start | Planned finish | Total float | Free float | Calendar | Uwagi harmonogramisty | AC_Wykonawca | AC_Obiekt | AC_Dyscyplina | AC_Faza | AC_Zakres | AC_Opiekun | AC_Obszar | AC_PP_PM | AC_Zespol | AC_Blok | AC_Priorytet | AC_Pakiet | AC_Poziom | Rewizja dokumentu |
| --- | --- | --- | --- | --- | --- | --- | --- | --- | --- | --- | --- | --- | --- | --- | --- | --- | --- | --- | --- | --- | --- | --- | --- | --- | --- | --- | --- | --- | --- | --- |
|  | PROJ | **Projektowanie** |  |  | 2025-06-02 | 2025-12-30 |  |  |  |  |  |  |  |  |  |  |  |  |  |  |  |  |  |  |  |  |  |  |  |  |
|  | DOKUMENTAC | **Dokumentacja** |  |  | 2025-06-02 | 2025-12-30 |  |  |  |  |  |  |  |  |  |  |  |  |  |  |  |  |  |  |  |  |  |  |  |  |
| 19FK60-001 |  | Projekt wykonawczy – Komin g³ówny |  | 113d | 2025-06-02 A | 2025-11-06 A |  | 100% |  |  | 2025-05-29 | 2025-11-03 |  |  |  | Ryzyko opóŸnienia | Automaty | 19FK60 | Budowlan | Projekto | Projekt | Piotr | Wyspa | PM000 | Zespó³-W | Wspólne | Normalny | Pakiet | L2 |  |
| 19FK60-002 |  | Uzgodnienie dokumentacji z Inwestorem |  | 23d | 2025-11-06 A | 2025-12-10 A | 19FK60-001 | 100% |  |  | 2025-11-04 | 2025-12-04 |  |  |  |  | Automaty | 19FK60 | Budowlan | Projekto | Projekt | Piotr | Wyspa | PM000 | Zespó³-K | Wspólne | Krytyczn | Pakiet | L2 |  |
| 19FK60-003 |  | Zatwierdzenie dokumentacji do realizacji |  | 13d | 2025-12-09 A | 2025-12-30 A | 19FK60-002 | 100% |  |  | 2025-12-05 | 2025-12-23 |  |  |  |  | Automaty | 19FK60 | Budowlan | Projekto | Projekt | Piotr | Wyspa | PM000 | Zespó³-E | Wspólne | Normalny | Pakiet | L2 |  |
| 19FK60-004 |  | KM: Dokumentacja zatwierdzona – Komin g³ówny | milestone | 0d | 2025-12-23 A | 2025-12-23 | 19FK60-003 | 100% |  | 2025-12-22 | 2025-12-24 | 2025-12-24 |  |  | Kalendarz 6-dniowy | Uzgodnione na koordynacji | Automaty | 19FK60 | Budowlan | Projekto | Kamieñ | Piotr | Wyspa | PM000 | Zespó³-W | Wspólne | Normalny | Pakiet | L1 |  |
|  | ROZR | **Rozruch** |  |  | 2026-09-23 | 2026-12-11 |  |  |  |  |  |  |  |  |  |  |  |  |  |  |  |  |  |  |  |  |  |  |  |  |
|  | ROZRUCH | **Rozruch** |  |  | 2026-09-23 | 2026-12-11 |  |  |  |  |  |  |  |  |  |  |  |  |  |  |  |  |  |  |  |  |  |  |  |  |
| 19FK60-118 |  | Przegl¹d gotowoœci do rozruchu |  | 8d | 2026-09-23 A | 2026-09-29 A | 19FK60-117, 19FK60-019, 19FK60-024, 19FK60-026 | 100% |  |  | 2026-09-18 | 2026-09-29 |  |  |  |  | Automaty | 19FK60 | Rozruch | Rozruch | Rozruch | Piotr | Wyspa | PM000 | Zespó³-E | Wspólne | Normalny | Pakiet | L2 |  |
| 19FK60-119 |  | Rozruch na zimno |  | 9d | 2026-10-02 A | 2026-10-14 | 19FK60-118 | 29% | 6.4d |  | 2026-09-30 | 2026-10-12 | 362.6d | 0d |  |  | Automaty | 19FK60 | Rozruch | Rozruch | Rozruch | Piotr | Wyspa | PM000 | Zespó³-W | Wspólne | Normalny | Pakiet | L2 |  |
| 19FK60-120 |  | Rozruch na gor¹co / próby ruchowe |  | 25d | 2026-11-06 | 2026-12-10 | 19FK60-119 |  |  |  | 2026-10-13 | 2026-11-16 | 346.6d | 0d |  | Do weryfikacji z wykonawc¹ | Automaty | 19FK60 | Rozruch | Rozruch | Rozruch | Piotr | Wyspa | PM000 | Zespó³-I | Wspólne | Normalny | Pakiet | L2 | Rev A |
| 19FK60-121 |  | KM: Odbiór koñcowy – Komin g³ówny | milestone | 0d | 2026-12-11 | 2026-12-11 | 19FK60-120 |  |  |  | 2026-11-17 | 2026-11-17 | 346.6d | 0d |  | Czeka na dostawê | Automaty | 19FK60 | Rozruch | Rozruch | Kamieñ | Piotr | Wyspa | PM000 | Zespó³-I | Wspólne | Normalny | Pakiet | L1 |  |
|  | ZAKU | **Zakupy** |  |  | 2025-06-30 | 2026-07-22 |  |  |  |  |  |  |  |  |  |  |  |  |  |  |  |  |  |  |  |  |  |  |  |  |
|  | DOSTAWY | **Dostawy** |  |  | 2026-01-06 | 2026-07-22 |  |  |  |  |  |  |  |  |  |  |  |  |  |  |  |  |  |  |  |  |  |  |  |  |
| 19FK60-008 |  | Produkcja u dostawcy |  | 94d | 2026-01-06 A | 2026-05-18 A | 19FK60-007 | 100% |  |  | 2026-01-05 | 2026-05-14 |  |  |  |  | Automaty | 19FK60 | Mechanic | Zakupy | Dostawa | Piotr | Wyspa | PM000 | Zespó³-K | Wspólne | Normalny | Pakiet | L2 |  |
| 19FK60-009 |  | Testy FAT |  | 8d | 2026-05-19 A | 2026-05-29 A | 19FK60-008 | 100% |  |  | 2026-05-15 | 2026-05-26 |  |  |  |  | Automaty | 19FK60 | Mechanic | Zakupy | Dostawa | Piotr | Wyspa | PM000 | Zespó³-W | Wspólne | Normalny | Pakiet | L2 |  |
| 19FK60-010 |  | Transport i dostawa na plac budowy |  | 40d | 2026-05-28 A | 2026-07-22 A | 19FK60-009 | 100% |  |  | 2026-05-27 | 2026-07-21 |  |  |  |  | Automaty | 19FK60 | Mechanic | Zakupy | Dostawa | Piotr | Wyspa | PM000 | Zespó³-W | Wspólne | Normalny | Pakiet | L2 | Rev C |
| 19FK60-011 |  | KM: Dostawa na budowê – Komin g³ówny | milestone | 0d | 2026-07-22 A | 2026-07-22 | 19FK60-010 | 100% |  | 2026-07-21 |  |  |  |  |  | Ryzyko opóŸnienia | Automaty | 19FK60 | Mechanic | Zakupy | Kamieñ | Piotr | Wyspa | PM000 | Zespó³-W | Wspólne | Normalny | Pakiet | L1 |  |
|  | ZAMÓWIENIA | **Zamówienia** |  |  | 2025-06-30 | 2026-01-08 |  |  |  |  |  |  |  |  |  |  |  |  |  |  |  |  |  |  |  |  |  |  |  |  |
| 19FK60-005 |  | Zapytanie ofertowe |  | 28d | 2025-06-30 A | 2025-08-06 A | 19FK60-001 SS+20d | 100% |  |  | 2025-06-26 | 2025-08-04 |  |  | Kalendarz 6-dniowy | Uzgodnione na koordynacji | Automaty | 19FK60 | Mechanic | Zakupy | Dostawa | Piotr | Wyspa | PM000 | Zespó³-K | Wspólne | Normalny | Pakiet | L2 |  |
| 19FK60-006 |  | Analiza i wybór ofert |  | 15d | 2025-08-05 A | 2025-08-25 A | 19FK60-005 | 100% |  |  |  |  |  |  | Kalendarz 6-dniowy |  | Automaty | 19FK60 | Mechanic | Zakupy | Dostawa | Piotr | Wyspa | PM000 | Zespó³-W | Wspólne | Normalny | Pakiet | L2 | Rev A |
| 19FK60-007 |  | Zawarcie umowy / zamówienie |  | 8d | 2025-12-29 A | 2026-01-08 A | 19FK60-006, 19FK60-004 SS, 10TM34-004 FS+13d | 100% |  |  | 2025-12-24 | 2026-01-02 |  |  |  |  | Automaty | 19FK60 | Mechanic | Zakupy | Dostawa | Piotr | Wyspa | PM000 | Zespó³-W | Wspólne | Wysoki | Pakiet | L1 | Rev A |
|  | 27XT34 | **27XT34 – Zbiornik wody zasilaj¹cej** |  |  | 2025-06-19 | 2027-01-07 |  |  |  |  |  |  |  |  |  |  |  |  |  |  |  |  |  |  |  |  |  |  |  |  |
|  | BUDO | **Budowa** |  |  | 2025-12-29 | 2027-01-07 |  |  |  |  |  |  |  |  |  |  |  |  |  |  |  |  |  |  |  |  |  |  |  |  |
|  | AKPIA | **AKPiA** |  |  | 2026-09-29 | 2026-10-09 |  |  |  |  |  |  |  |  |  |  |  |  |  |  |  |  |  |  |  |  |  |  |  |  |
| 27XT34-140 |  | Monta¿ uk³adów AKPiA |  | 10d | 2026-09-29 A | 2026-10-09 | 27XT34-014 SS+5d | 69% | 3.1d |  | 2026-09-29 | 2026-10-12 | 360.6d | 0d | Kalendarz 6-dniowy |  | Automaty | 27XT34 | AKPiA | Budowa | Roboty | Marek | Wyspa | PM000 | Zespó³-E | Wspólne | Normalny | Pakiet | L2 |  |

| ID | WBS | Activity | Type | Duration | Start | Finish | Predecessors | Complete | Remaining | Planned start | Planned finish | Total float | Free float | Calendar | AC_Wykonawca | AC_Obiekt | AC_Dyscyplina | AC_Faza | AC_Zakres | AC_Opiekun | AC_Obszar | AC_PP_PM | AC_Zespol | AC_Blok | AC_Priorytet | AC_Pakiet | AC_Poziom | Uwagi harmonogramisty | Rewizja dokumentu |
| --- | --- | --- | --- | --- | --- | --- | --- | --- | --- | --- | --- | --- | --- | --- | --- | --- | --- | --- | --- | --- | --- | --- | --- | --- | --- | --- | --- | --- | --- |
|  | ELEKTRYKA | **Elektryka** |  |  | 2026-10-05 | 2026-10-20 |  |  |  |  |  |  |  |  |  |  |  |  |  |  |  |  |  |  |  |  |  |  |  |
| 27XT34-086 |  | Pod³¹czenia i pomiary – trasa 12 |  | 9d | 2026-10-05 A | 2026-10-07 | 27XT34-085 FF | 86% | 1.3d | 2026-10-02 | 2026-10-14 | 396.6d | 0d |  | Automaty | 27XT34 | Elektryc | Budowa | Roboty | Marek | Wyspa | PM000 | Zespó³-W | Wspólne | Normalny | Pakiet | L2 |  |  |
| 27XT34-025 |  | Uk³adanie kabli – trasa 02 |  | 7d | 2026-10-07 A | 2026-10-12 | 27XT34-014 SS+10d | 36% | 4.5d | 2026-10-06 | 2026-10-14 | 357.6d | 0d | Kalendarz 6-dniowy | Automaty | 27XT34 | Elektryc | Budowa | Roboty | Marek | Wyspa | PM000 | Zespó³-W | Wspólne | Wysoki | Pakiet | L2 |  |  |
| 27XT34-026 |  | Pod³¹czenia i pomiary – trasa 02 |  | 4d | 2026-10-07 | 2026-10-12 | 27XT34-025 FF |  |  | 2026-10-09 | 2026-10-14 | 360.1d | 0d |  | Automaty | 27XT34 | Elektryc | Budowa | Roboty | Marek | Wyspa | PM000 | Zespó³-E | Wspólne | Normalny | Pakiet | L2 |  |  |
| 27XT34-037 |  | Uk³adanie kabli – trasa 04 |  | 11d | 2026-10-07 A | 2026-10-12 | 27XT34-014 SS+10d | 59% | 4.5d | 2026-10-06 | 2026-10-20 | 392.6d | 0d |  | Automaty | 27XT34 | Elektryc | Budowa | Roboty | Marek | Wyspa | PM000 | Zespó³-K | Wspólne | Normalny | Pakiet | L2 |  |  |
| 27XT34-049 |  | Uk³adanie kabli – trasa 06 |  | 20d | 2026-10-07 A | 2026-10-09 | 27XT34-014 SS+10d | 82% | 3.6d | 2026-10-06 | 2026-11-02 | 383.6d | 0d | Kalendarz 6-dniowy | Automaty | 27XT34 | Elektryc | Budowa | Roboty | Marek | Wyspa | PM000 | Zespó³-W | Wspólne | Normalny | Pakiet | L2 |  |  |
| 27XT34-050 |  | Pod³¹czenia i pomiary – trasa 06 |  | 9d | 2026-10-07 | 2026-10-19 | 27XT34-049 FF |  |  | 2026-10-21 | 2026-11-02 | 394.6d | 0d |  | Automaty | 27XT34 | Elektryc | Budowa | Roboty | Marek | Wyspa | PM000 | Zespó³-K | Wspólne | Normalny | Pakiet | L2 | Do weryfikacji z wykonawc¹ |  |
| 27XT34-061 |  | Uk³adanie kabli – trasa 08 |  | 20d | 2026-10-07 A | 2026-10-16 | 27XT34-014 SS+10d | 58% | 8.3d | 2026-10-06 | 2026-11-02 | 383.6d | 0d |  | Automaty | 27XT34 | Elektryc | Budowa | Roboty | Marek | Wyspa | PM000 | Zespó³-K | Wspólne | Niski | Pakiet | L2 |  |  |
| 27XT34-073 |  | Uk³adanie kabli – trasa 10 |  | 19d | 2026-10-07 A | 2026-10-15 | 27XT34-014 SS+10d | 62% | 7.2d | 2026-10-06 | 2026-10-30 | 384.6d | 0d |  | Automaty | 27XT34 | Elektryc | Budowa | Roboty | Marek | Wyspa | PM000 | Zespó³-I | Wspólne | Normalny | Pakiet | L2 |  | Rev A |
| 27XT34-074 |  | Pod³¹czenia i pomiary – trasa 10 |  | 10d | 2026-10-07 | 2026-10-20 | 27XT34-073 FF |  |  | 2026-10-19 | 2026-10-30 | 393.6d | 0d |  | Automaty | 27XT34 | Elektryc | Budowa | Roboty | Marek | Wyspa | PM000 | Zespó³-E | Wspólne | Normalny | Pakiet | L2 |  |  |
| 27XT34-097 |  | Uk³adanie kabli – trasa 14 |  | 16d | 2026-10-07 A | 2026-10-08 | 27XT34-014 SS+10d | 87% | 2.1d | 2026-10-06 | 2026-10-27 | 387.6d | 0d |  | Automaty | 27XT34 | Elektryc | Budowa | Roboty | Marek | Wyspa | PM000 | Zespó³-K | Wspólne | Normalny | Pakiet | L2 | Do weryfikacji z wykonawc¹ |  |
| 27XT34-098 |  | Pod³¹czenia i pomiary – trasa 14 |  | 7d | 2026-10-07 | 2026-10-15 | 27XT34-097 FF |  |  | 2026-10-19 | 2026-10-27 | 396.6d | 0d |  | Automaty | 27XT34 | Elektryc | Budowa | Roboty | Marek | Wyspa | PM000 | Zespó³-W | Wspólne | Normalny | Pakiet | L2 | Ryzyko opóŸnienia |  |
| 27XT34-109 |  | Uk³adanie kabli – trasa 16 |  | 14d | 2026-10-07 A | 2026-10-19 | 27XT34-014 SS+10d | 35% | 9.1d | 2026-10-06 | 2026-10-23 | 389.6d | 0d | Kalendarz 6-dniowy | Automaty | 27XT34 | Elektryc | Budowa | Roboty | Marek | Wyspa | PM000 | Zespó³-K | Wspólne | Wysoki | Pakiet | L2 |  |  |
| 27XT34-121 |  | Uk³adanie kabli – trasa 18 |  | 17d | 2026-10-07 A | 2026-10-20 | 27XT34-014 SS+10d | 36% | 10.9d | 2026-10-06 | 2026-10-28 | 386.6d | 0d |  | Automaty | 27XT34 | Elektryc | Budowa | Roboty | Marek | Wyspa | PM000 | Zespó³-K | Wspólne | Normalny | Pakiet | L2 |  |  |
| 27XT34-133 |  | Uk³adanie kabli – trasa 20 |  | 11d | 2026-10-07 A | 2026-10-13 | 27XT34-014 SS+10d | 53% | 5.2d | 2026-10-06 | 2026-10-20 | 353.6d | 0d |  | Automaty | 27XT34 | Elektryc | Budowa | Roboty | Marek | Wyspa | PM000 | Zespó³-K | Wspólne | Normalny | Pakiet | L2 |  | Rev A |
| 27XT34-038 |  | Pod³¹czenia i pomiary – trasa 04 |  | 3d | 2026-10-08 | 2026-10-12 | 27XT34-037 FF |  |  | 2026-10-16 | 2026-10-20 | 399.1d | 0d |  | Automaty | 27XT34 | Elektryc | Budowa | Roboty | Marek | Wyspa | PM000 | Zespó³-K | Wspólne | Normalny | Pakiet | L2 |  |  |
| 27XT34-062 |  | Pod³¹czenia i pomiary – trasa 08 |  | 7d | 2026-10-08 | 2026-10-16 | 27XT34-061 FF |  |  | 2026-10-23 | 2026-11-02 | 395.3d | 0d |  | Automaty | 27XT34 | Elektryc | Budowa | Roboty | Marek | Wyspa | PM000 | Zespó³-W | Wspólne | Normalny | Pakiet | L2 | Czeka na dostawê |  |
| 27XT34-085 |  | Uk³adanie kabli – trasa 12 |  | 7d | 2026-10-08 | 2026-10-16 | 27XT34-014 SS+10d |  |  | 2026-10-06 | 2026-10-14 | 395.6d | 0d | Kalendarz 6-dniowy | Automaty | 27XT34 | Elektryc | Budowa | Roboty | Marek | Wyspa | PM000 | Zespó³-K | Wspólne | Normalny | Pakiet | L2 |  |  |
| 27XT34-134 |  | Pod³¹czenia i pomiary – trasa 20 |  | 3d | 2026-10-09 | 2026-10-13 | 27XT34-133 FF |  |  | 2026-10-16 | 2026-10-20 | 359.4d | 0d |  | Automaty | 27XT34 | Elektryc | Budowa | Roboty | Marek | Wyspa | PM000 | Zespó³-W | Wspólne | Wysoki | Pakiet | L2 |  | Rev A |
| 27XT34-110 |  | Pod³¹czenia i pomiary – trasa 16 |  | 4d | 2026-10-14 | 2026-10-19 | 27XT34-109 FF |  |  | 2026-10-20 | 2026-10-23 | 394.5d | 0d |  | Automaty | 27XT34 | Elektryc | Budowa | Roboty | Marek | Wyspa | PM000 | Zespó³-K | Wspólne | Normalny | Pakiet | L2 |  |  |
| 27XT34-122 |  | Pod³¹czenia i pomiary – trasa 18 |  | 4d | 2026-10-15 | 2026-10-20 | 27XT34-121 FF |  |  | 2026-10-23 | 2026-10-28 | 392.7d | 0d |  | Automaty | 27XT34 | Elektryc | Budowa | Roboty | Marek | Wyspa | PM000 | Zespó³-K | Wspólne | Normalny | Pakiet | L2 |  |  |
|  | MONTA¯ | **Monta¿** |  |  | 2026-03-10 | 2026-11-24 |  |  |  |  |  |  |  |  |  |  |  |  |  |  |  |  |  |  |  |  |  |  |  |
| 27XT34-013 |  | Monta¿ konstrukcji stalowych |  | 18d | 2026-03-10 A | 2026-04-03 A | 27XT34-012 | 100% |  | 2026-03-09 | 2026-04-01 |  |  |  | Automaty | 27XT34 | Mechanic | Budowa | Roboty | Marek | Wyspa | PM000 | Zespó³-K | Wspólne | Wysoki | Pakiet | L2 |  |  |
| 27XT34-014 |  | Monta¿ urz¹dzeñ g³ównych |  | 34d | 2026-09-24 A | 2026-10-20 | 27XT34-013, 27XT34-011 | 69% | 10.6d | 2026-09-22 | 2026-11-06 | 323.2d | 0d |  | Automaty | 27XT34 | Mechanic | Budowa | Roboty | Marek | Wyspa | PM000 | Zespó³-K | Wspólne | Normalny | Pakiet | L2 |  |  |
| 27XT34-141 |  | KM: Zakoñczenie monta¿u – Zbiornik wody zasilaj¹cej | milestone | 0d | 2026-11-24 | 2026-11-24 | 27XT34-132, 27XT34-134, 27XT34-139, 27XT34-140, 27XT34-014 |  |  | 2026-11-18 | 2026-11-18 | 330.6d | 0d |  | Automaty | 27XT34 | Mechanic | Budowa | Kamieñ | Marek | Wyspa | PM000 | Zespó³-W | Wspólne | Normalny | Pakiet | L2 |  |  |

| ID | WBS | Activity | Duration | Start | Finish | Predecessors | Complete | Remaining | Planned start | Planned finish | Total float | Free float | Calendar | AC_Wykonawca | AC_Obiekt | AC_Dyscyplina | AC_Faza | AC_Zakres | AC_Opiekun | AC_Obszar | AC_PP_PM | AC_Zespol | AC_Blok | AC_Priorytet | AC_Pakiet | AC_Poziom | Rewizja dokumentu | Uwagi harmonogramisty |
| --- | --- | --- | --- | --- | --- | --- | --- | --- | --- | --- | --- | --- | --- | --- | --- | --- | --- | --- | --- | --- | --- | --- | --- | --- | --- | --- | --- | --- |
|  | ROBOTY BUD | **Roboty budowlane** |  | 2025-12-29 | 2026-03-13 |  |  |  |  |  |  |  |  |  |  |  |  |  |  |  |  |  |  |  |  |  |  |  |
| 27XT34-012 |  | Fundamenty i roboty ziemne | 52d | 2025-12-29 A | 2026-03-13 A | 27XT34-007 FS+7d | 100% |  | 2025-12-25 | 2026-03-06 |  |  |  | Automaty | 27XT34 | Budowlan | Budowa | Roboty | Marek | Wyspa | PM300 | Zespó³-E | Wspólne | Normalny | Pakiet | L2 |  |  |
|  | RUROCI¥GI | **Ruroci¹gi** |  | 2026-03-11 | 2027-01-07 |  |  |  |  |  |  |  |  |  |  |  |  |  |  |  |  |  |  |  |  |  |  |  |
|  | SEKCJA 01 | **Sekcja 01** |  | 2026-03-11 | 2026-11-23 |  |  |  |  |  |  |  |  |  |  |  |  |  |  |  |  |  |  |  |  |  |  |  |
| 27XT34-015 |  | Prefabrykacja ruroci¹gów – Sekcja 01 | 14.6d | 2026-03-11 A | 2026-03-31 A | 27XT34-012 | 100% |  | 2026-03-09 | 2026-03-26 |  |  |  | Automaty | 27XT34 | Ruroci¹g | Budowa | Roboty | Marek | Wyspa | PM000 | Zespó³-K | Wspólne | Normalny | Pakiet | L2 |  |  |
| 27XT34-016 |  | Monta¿ ruroci¹gów – Sekcja 01 | 24.4d | 2026-10-05 A | 2026-10-28 | 27XT34-015, 27XT34-014 SS+8d | 32% | 16.5d | 2026-10-02 | 2026-11-04 | 324.2d | 0d | Kalendarz 6-dniowy | Automaty | 27XT34 | Ruroci¹g | Budowa | Roboty | Marek | Wyspa | PM000 | Zespó³-K | Wspólne | Normalny | Pakiet | L2 | Rev A |  |
| 27XT34-017 |  | Próba ciœnieniowa – Sekcja 01 | 4d | 2026-10-29 | 2026-11-03 | 27XT34-016 |  |  | 2026-11-05 | 2026-11-10 | 330.1d | 0d |  | Automaty | 27XT34 | Ruroci¹g | Budowa | Roboty | Marek | Wyspa | PM000 | Zespó³-I | Wspólne | Normalny | Pakiet | L2 | Rev A |  |
| 27XT34-018 |  | Izolacje – Sekcja 01 | 12d | 2026-11-04 | 2026-11-19 | 27XT34-017 |  |  | 2026-11-11 | 2026-11-26 | 330.1d | 0d |  | Automaty | 27XT34 | Ruroci¹g | Budowa | Roboty | Marek | Wyspa | PM000 | Zespó³-W | Wspólne | Normalny | Pakiet | L2 |  |  |
| 27XT34-019 |  | Malowanie i oznakowanie – Sekcja 01 | 6d | 2026-11-16 | 2026-11-23 | 27XT34-018 FF+2d |  |  | 2026-11-23 | 2026-11-30 | 330.1d | 0d |  | Automaty | 27XT34 | Ruroci¹g | Budowa | Roboty | Marek | Wyspa | PM000 | Zespó³-E | Wspólne | Normalny | Pakiet | L2 |  |  |
|  | SEKCJA 02 | **Sekcja 02** |  | 2026-03-19 | 2026-11-03 |  |  |  |  |  |  |  |  |  |  |  |  |  |  |  |  |  |  |  |  |  |  |  |
| 27XT34-020 |  | Prefabrykacja ruroci¹gów – Sekcja 02 | 13.6d | 2026-03-19 A | 2026-04-06 A | 27XT34-012, 27XT34-015 SS+5d | 100% |  | 2026-03-16 | 2026-04-01 |  |  |  | Automaty | 27XT34 | Ruroci¹g | Budowa | Roboty | Marek | Wyspa | PM000 | Zespó³-W | Wspólne | Normalny | Pakiet | L2 | Rev C | Ryzyko opóŸnienia |
| 27XT34-021 |  | Monta¿ ruroci¹gów – Sekcja 02 | 19d | 2026-10-07 A | 2026-10-19 | 27XT34-020, 27XT34-014 SS+9d | 48% | 9.9d | 2026-10-05 | 2026-10-29 | 334.6d | 0d |  | Automaty | 27XT34 | Ruroci¹g | Budowa | Roboty | Marek | Wyspa | PM000 | Zespó³-K | Wspólne | Niski | Pakiet | L2 | Rev A | Czeka na dostawê |
| 27XT34-022 |  | Próba ciœnieniowa – Sekcja 02 | 3d | 2026-10-20 | 2026-10-22 | 27XT34-021 |  |  | 2026-10-30 | 2026-11-03 | 343.7d | 0d |  | Automaty | 27XT34 | Ruroci¹g | Budowa | Roboty | Marek | Wyspa | PM000 | Zespó³-W | Wspólne | Normalny | Pakiet | L2 | Rev B |  |
| 27XT34-023 |  | Izolacje – Sekcja 02 | 6d | 2026-10-23 | 2026-10-30 | 27XT34-022 |  |  | 2026-11-04 | 2026-11-11 | 343.7d | 0d |  | Automaty | 27XT34 | Ruroci¹g | Budowa | Roboty | Marek | Wyspa | PM000 | Zespó³-K | Wspólne | Normalny | Pakiet | L2 |  | Bez uwag |
| 27XT34-024 |  | Malowanie i oznakowanie – Sekcja 02 | 3d | 2026-10-30 | 2026-11-03 | 27XT34-023 FF+2d |  |  | 2026-11-11 | 2026-11-13 | 343.7d | 0d |  | Automaty | 27XT34 | Ruroci¹g | Budowa | Roboty | Marek | Wyspa | PM000 | Zespó³-K | Wspólne | Niski | Pakiet | L2 | Rev A |  |
|  | SEKCJA 03 | **Sekcja 03** |  | 2026-03-24 | 2026-10-30 |  |  |  |  |  |  |  |  |  |  |  |  |  |  |  |  |  |  |  |  |  |  |  |
|  | PODSEKCJA | **Podsekcja 03.A** |  | 2026-03-24 | 2026-10-30 |  |  |  |  |  |  |  |  |  |  |  |  |  |  |  |  |  |  |  |  |  |  |  |
| 27XT34-027 |  | Prefabrykacja ruroci¹gów – Sekcja 03 | 10d | 2026-03-24 A | 2026-04-08 A | 27XT34-012, 27XT34-020 SS+5d | 100% |  | 2026-03-23 | 2026-04-03 |  |  |  | Automaty | 27XT34 | Ruroci¹g | Budowa | Roboty | Marek | Wyspa | PM000 | Zespó³-K | Wspólne | Normalny | Pakiet | L2 |  |  |
| 27XT34-028 |  | Monta¿ ruroci¹gów – Sekcja 03 | 7.2d | 2026-09-30 A | 2026-10-06 A | 27XT34-027, 27XT34-014 SS+4d | 100% |  | 2026-09-28 | 2026-10-06 |  |  |  | Automaty | 27XT34 | Ruroci¹g | Budowa | Roboty | Marek | Wyspa | PM000 | Zespó³-W | Wspólne | Normalny | Pakiet | L2 | Rev C |  |
| 27XT34-029 |  | Próba ciœnieniowa – Sekcja 03 | 2d | 2026-10-14 | 2026-10-15 | 27XT34-028 |  |  | 2026-10-07 | 2026-10-08 | 385.6d | 0d |  | Automaty | 27XT34 | Ruroci¹g | Budowa | Roboty | Marek | Wyspa | PM000 | Zespó³-K | Wspólne | Normalny | Pakiet | L2 |  |  |
| 27XT34-030 |  | Izolacje – Sekcja 03 | 9d | 2026-10-16 | 2026-10-28 | 27XT34-029 |  |  | 2026-10-09 | 2026-10-21 | 385.6d | 0d |  | Automaty | 27XT34 | Ruroci¹g | Budowa | Roboty | Marek | Wyspa | PM000 | Zespó³-W | Wspólne | Normalny | Pakiet | L2 |  |  |
| 27XT34-031 |  | Malowanie i oznakowanie – Sekcja 03 | 2d | 2026-10-29 | 2026-10-30 | 27XT34-030 FF+2d |  |  | 2026-10-22 | 2026-10-23 | 385.6d | 0d |  | Automaty | 27XT34 | Ruroci¹g | Budowa | Roboty | Marek | Wyspa | PM000 | Zespó³-K | Wspólne | Normalny | Pakiet | L2 |  |  |
|  | SEKCJA 04 | **Sekcja 04** |  | 2026-03-30 | 2026-10-27 |  |  |  |  |  |  |  |  |  |  |  |  |  |  |  |  |  |  |  |  |  |  |  |
| 27XT34-032 |  | Prefabrykacja ruroci¹gów – Sekcja 04 | 10.3d | 2026-03-30 A | 2026-04-15 A | 27XT34-012, 27XT34-027 SS+5d | 100% |  | 2026-03-30 | 2026-04-10 |  |  |  | Automaty | 27XT34 | Ruroci¹g | Budowa | Roboty | Marek | Wyspa | PM000 | Zespó³-K | Wspólne | Normalny | Pakiet | L2 |  | Do weryfikacji z wykonawc¹ |
| 27XT34-033 |  | Monta¿ ruroci¹gów – Sekcja 04 | 11.3d | 2026-10-02 A | 2026-10-13 | 27XT34-032, 27XT34-014 SS+6d | 48% | 5.9d | 2026-09-30 | 2026-10-14 | 385.3d | 0d |  | Automaty | 27XT34 | Ruroci¹g | Budowa | Roboty | Marek | Wyspa | PM000 | Zespó³-W | Wspólne | Normalny | Pakiet | L2 |  | Ryzyko opóŸnienia |
| 27XT34-034 |  | Próba ciœnieniowa – Sekcja 04 | 3d | 2026-10-14 | 2026-10-16 | 27XT34-033 |  |  | 2026-10-15 | 2026-10-19 | 387.7d | 0d |  | Automaty | 27XT34 | Ruroci¹g | Budowa | Roboty | Marek | Wyspa | PM000 | Zespó³-W | Wspólne | Normalny | Pakiet | L2 | Rev C | Bez uwag |
| 27XT34-035 |  | Izolacje – Sekcja 04 | 5d | 2026-10-19 | 2026-10-23 | 27XT34-034 |  |  | 2026-10-20 | 2026-10-26 | 387.7d | 0d |  | Automaty | 27XT34 | Ruroci¹g | Budowa | Roboty | Marek | Wyspa | PM000 | Zespó³-K | Wspólne | Wysoki | Pakiet | L2 | Rev C | Do weryfikacji z wykonawc¹ |
| 27XT34-036 |  | Malowanie i oznakowanie – Sekcja 04 | 7d | 2026-10-19 | 2026-10-27 | 27XT34-035 FF+2d |  |  | 2026-10-20 | 2026-10-28 | 387.7d | 0d |  | Automaty | 27XT34 | Ruroci¹g | Budowa | Roboty | Marek | Wyspa | PM000 | Zespó³-W | Wspólne | Normalny | Pakiet | L2 |  |  |

| ID | WBS | Activity | Duration | Start | Finish | Predecessors | Complete | Remaining | Planned start | Planned finish | Total float | Free float | Calendar | Uwagi harmonogramisty | Rewizja dokumentu | AC_Wykonawca | AC_Obiekt | AC_Dyscyplina | AC_Faza | AC_Zakres | AC_Opiekun | AC_Obszar | AC_PP_PM | AC_Zespol | AC_Blok | AC_Priorytet | AC_Pakiet | AC_Poziom |
| --- | --- | --- | --- | --- | --- | --- | --- | --- | --- | --- | --- | --- | --- | --- | --- | --- | --- | --- | --- | --- | --- | --- | --- | --- | --- | --- | --- | --- |
|  | SEKCJA 05 | **Sekcja 05** |  | 2026-04-09 | 2026-11-09 |  |  |  |  |  |  |  |  |  |  |  |  |  |  |  |  |  |  |  |  |  |  |  |
| 27XT34-039 |  | Prefabrykacja ruroci¹gów – Sekcja 05 | 9.8d | 2026-04-09 A | 2026-04-23 A | 27XT34-012, 27XT34-032 SS+5d | 100% |  | 2026-04-06 | 2026-04-16 |  |  |  | Czeka na dostawê | Rev A | Automaty | 27XT34 | Ruroci¹g | Budowa | Roboty | Marek | Wyspa | PM000 | Zespó³-E | Wspólne | Normalny | Pakiet | L2 |
| 27XT34-040 |  | Monta¿ ruroci¹gów – Sekcja 05 | 14.1d | 2026-10-05 A | 2026-10-22 | 27XT34-039, 27XT34-014 SS+9d | 13% | 12.3d |  |  | 379.5d | 0d |  |  |  | Automaty | 27XT34 | Ruroci¹g | Budowa | Roboty | Marek | Wyspa | PM000 | Zespó³-K | Wspólne | Normalny | Pakiet | L2 |
| 27XT34-041 |  | Próba ciœnieniowa – Sekcja 05 | 4d | 2026-10-23 | 2026-10-28 | 27XT34-040 |  |  |  |  | 379.3d | 0d |  | Ryzyko opóŸnienia |  | Automaty | 27XT34 | Ruroci¹g | Budowa | Roboty | Marek | Wyspa | PM000 | Zespó³-K | Wspólne | Normalny | Pakiet | L2 |
| 27XT34-042 |  | Izolacje – Sekcja 05 | 6d | 2026-10-29 | 2026-11-05 | 27XT34-041 |  |  |  |  | 379.3d | 0d | Kalendarz 6-dniowy | Uzgodnione na koordynacji |  | Automaty | 27XT34 | Ruroci¹g | Budowa | Roboty | Marek | Wyspa | PM100 | Zespó³-I | Wspólne | Niski | Pakiet | L2 |
| 27XT34-043 |  | Malowanie i oznakowanie – Sekcja 05 | 2d | 2026-11-06 | 2026-11-09 | 27XT34-042 FF+2d |  |  |  |  | 379.3d | 0d |  |  |  | Automaty | 27XT34 | Ruroci¹g | Budowa | Roboty | Marek | Wyspa | PM000 | Zespó³-W | Wspólne | Normalny | Pakiet | L2 |
|  | SEKCJA 06 | **Sekcja 06** |  | 2026-04-16 | 2026-12-18 |  |  |  |  |  |  |  |  |  |  |  |  |  |  |  |  |  |  |  |  |  |  |  |
|  | PODSEKCJA | **Podsekcja 06.A** |  | 2026-04-16 | 2026-12-18 |  |  |  |  |  |  |  |  |  |  |  |  |  |  |  |  |  |  |  |  |  |  |  |
| 27XT34-044 |  | Prefabrykacja ruroci¹gów – Sekcja 06 | 6.9d | 2026-04-16 A | 2026-04-23 A | 27XT34-012, 27XT34-039 SS+5d | 100% |  | 2026-04-13 | 2026-04-20 |  |  |  |  |  | Automaty | 27XT34 | Ruroci¹g | Budowa | Roboty | Marek | Wyspa | PM000 | Zespó³-K | Wspólne | Normalny | Pakiet | L2 |
| 27XT34-045 |  | Monta¿ ruroci¹gów – Sekcja 06 | 17.8d | 2026-09-28 A | 2026-10-22 | 27XT34-044, 27XT34-014 SS+2d | 31% | 12.2d | 2026-09-24 | 2026-10-16 | 374.8d | 0d |  |  | Rev B | Automaty | 27XT34 | Ruroci¹g | Budowa | Roboty | Marek | Wyspa | PM000 | Zespó³-W | Wspólne | Normalny | Pakiet | L2 |
| 27XT34-046 |  | Próba ciœnieniowa – Sekcja 06 | 5d | 2026-10-23 | 2026-10-29 | 27XT34-045 |  |  | 2026-10-19 | 2026-10-23 | 373.4d | 0d |  |  | Rev B | Automaty | 27XT34 | Ruroci¹g | Budowa | Roboty | Marek | Wyspa | PM000 | Zespó³-K | Wspólne | Normalny | Pakiet | L2 |
| 27XT34-047 |  | Izolacje – Sekcja 06 | 11d | 2026-12-02 | 2026-12-16 | 27XT34-046 |  |  | 2026-10-26 | 2026-11-09 | 350.6d | 0d | Kalendarz 6-dniowy |  |  | Automaty | 27XT34 | Ruroci¹g | Budowa | Roboty | Marek | Wyspa | PM000 | Zespó³-E | Wspólne | Normalny | Pakiet | L2 |
| 27XT34-048 |  | Malowanie i oznakowanie – Sekcja 06 | 7d | 2026-12-10 | 2026-12-18 | 27XT34-047 FF+2d |  |  | 2026-11-03 | 2026-11-11 | 350.6d | 0d |  | Czeka na dostawê | Rev A | Automaty | 27XT34 | Ruroci¹g | Budowa | Roboty | Marek | Wyspa | PM000 | Zespó³-W | Wspólne | Normalny | Pakiet | L2 |
|  | SEKCJA 07 | **Sekcja 07** |  | 2026-04-21 | 2026-11-19 |  |  |  |  |  |  |  |  |  |  |  |  |  |  |  |  |  |  |  |  |  |  |  |
| 27XT34-051 |  | Prefabrykacja ruroci¹gów – Sekcja 07 | 6.7d | 2026-04-21 A | 2026-04-28 A | 27XT34-012, 27XT34-044 SS+5d | 100% |  | 2026-04-20 | 2026-04-27 |  |  |  |  |  | Automaty | 27XT34 | Ruroci¹g | Budowa | Roboty | Marek | Wyspa | PM000 | Zespó³-K | Wspólne | Normalny | Pakiet | L2 |
| 27XT34-052 |  | Monta¿ ruroci¹gów – Sekcja 07 | 19.9d | 2026-10-07 | 2026-11-02 | 27XT34-051, 27XT34-014 SS+9d |  |  | 2026-10-05 | 2026-10-29 | 370.7d | 0d |  | Czeka na dostawê | Rev A | Automaty | 27XT34 | Ruroci¹g | Budowa | Roboty | Marek | Wyspa | PM000 | Zespó³-K | Wspólne | Normalny | Pakiet | L2 |
| 27XT34-053 |  | Próba ciœnieniowa – Sekcja 07 | 5d | 2026-11-03 | 2026-11-09 | 27XT34-052 |  |  | 2026-10-30 | 2026-11-05 | 370.7d | 0d |  |  |  | Automaty | 27XT34 | Ruroci¹g | Budowa | Roboty | Marek | Wyspa | PM300 | Zespó³-E | Wspólne | Niski | Pakiet | L2 |
| 27XT34-054 |  | Izolacje – Sekcja 07 | 6d | 2026-11-10 | 2026-11-17 | 27XT34-053 |  |  | 2026-11-06 | 2026-11-13 | 370.7d | 0d |  | Ryzyko opóŸnienia |  | Automaty | 27XT34 | Ruroci¹g | Budowa | Roboty | Marek | Wyspa | PM000 | Zespó³-I | Wspólne | Normalny | Pakiet | L2 |
| 27XT34-055 |  | Malowanie i oznakowanie – Sekcja 07 | 6d | 2026-11-12 | 2026-11-19 | 27XT34-054 FF+2d |  |  | 2026-11-10 | 2026-11-17 | 370.7d | 0d |  | Do weryfikacji z wykonawc¹ |  | Automaty | 27XT34 | Ruroci¹g | Budowa | Roboty | Marek | Wyspa | PM000 | Zespó³-K | Wspólne | Normalny | Pakiet | L2 |
|  | SEKCJA 08 | **Sekcja 08** |  | 2026-04-30 | 2026-10-21 |  |  |  |  |  |  |  |  |  |  |  |  |  |  |  |  |  |  |  |  |  |  |  |
| 27XT34-056 |  | Prefabrykacja ruroci¹gów – Sekcja 08 | 11.6d | 2026-04-30 A | 2026-05-19 A | 27XT34-012, 27XT34-051 SS+5d | 100% |  | 2026-04-27 | 2026-05-11 |  |  |  |  | Rev B | Automaty | 27XT34 | Ruroci¹g | Budowa | Roboty | Marek | Wyspa | PM000 | Zespó³-W | Wspólne | Normalny | Pakiet | L2 |
| 27XT34-057 |  | Monta¿ ruroci¹gów – Sekcja 08 | 18.9d | 2026-09-29 A | 2026-10-08 | 27XT34-056, 27XT34-014 SS+3d | 89% | 2.1d | 2026-09-25 | 2026-10-20 | 381.7d | 0d |  |  |  | Automaty | 27XT34 | Ruroci¹g | Budowa | Roboty | Marek | Wyspa | PM000 | Zespó³-W | Wspólne | Normalny | Pakiet | L2 |
| 27XT34-058 |  | Próba ciœnieniowa – Sekcja 08 | 4d | 2026-10-09 | 2026-10-14 | 27XT34-057 |  |  | 2026-10-21 | 2026-10-26 | 392.5d | 0d |  | Bez uwag |  | Automaty | 27XT34 | Ruroci¹g | Budowa | Roboty | Marek | Wyspa | PM000 | Zespó³-K | Wspólne | Normalny | Pakiet | L2 |
| 27XT34-059 |  | Izolacje – Sekcja 08 | 3d | 2026-10-15 | 2026-10-19 | 27XT34-058 |  |  | 2026-10-27 | 2026-10-29 | 392.5d | 0d |  |  |  | Automaty | 27XT34 | Ruroci¹g | Budowa | Roboty | Marek | Wyspa | PM000 | Zespó³-W | Wspólne | Normalny | Pakiet | L2 |
| 27XT34-060 |  | Malowanie i oznakowanie – Sekcja 08 | 2d | 2026-10-20 | 2026-10-21 | 27XT34-059 FF+2d |  |  | 2026-10-30 | 2026-11-02 | 392.5d | 0d |  |  | Rev B | Automaty | 27XT34 | Ruroci¹g | Budowa | Roboty | Marek | Wyspa | PM000 | Zespó³-W | Wspólne | Normalny | Pakiet | L2 |

| ID | WBS | Activity | Duration | Start | Finish | Predecessors | Complete | Remaining | Planned start | Planned finish | Total float | Free float | Calendar | AC_Wykonawca | AC_Obiekt | AC_Dyscyplina | AC_Faza | AC_Zakres | AC_Opiekun | AC_Obszar | AC_PP_PM | AC_Zespol | AC_Blok | AC_Priorytet | AC_Pakiet | AC_Poziom | Uwagi harmonogramisty | Rewizja dokumentu |
| --- | --- | --- | --- | --- | --- | --- | --- | --- | --- | --- | --- | --- | --- | --- | --- | --- | --- | --- | --- | --- | --- | --- | --- | --- | --- | --- | --- | --- |
|  | SEKCJA 09 | **Sekcja 09** |  | 2026-05-04 | 2026-11-17 |  |  |  |  |  |  |  |  |  |  |  |  |  |  |  |  |  |  |  |  |  |  |  |
|  | PODSEKCJA | **Podsekcja 09.A** |  | 2026-05-04 | 2026-11-17 |  |  |  |  |  |  |  |  |  |  |  |  |  |  |  |  |  |  |  |  |  |  |  |
| 27XT34-063 |  | Prefabrykacja ruroci¹gów – Sekcja 09 | 4.1d | 2026-05-04 A | 2026-05-12 A | 27XT34-012, 27XT34-056 SS+5d | 100% |  | 2026-05-04 | 2026-05-07 |  |  |  | Automaty | 27XT34 | Ruroci¹g | Budowa | Roboty | Marek | Wyspa | PM000 | Zespó³-E | Wspólne | Normalny | Pakiet | L2 |  |  |
| 27XT34-064 |  | Monta¿ ruroci¹gów – Sekcja 09 | 18.3d | 2026-09-28 A | 2026-10-28 | 27XT34-063, 27XT34-014 SS+1d | 12% | 16.1d | 2026-09-23 | 2026-10-16 | 378.3d | 0d |  | Automaty | 27XT34 | Ruroci¹g | Budowa | Roboty | Marek | Wyspa | PM000 | Zespó³-K | Wspólne | Normalny | Pakiet | L2 | Uzgodnione na koordynacji |  |
| 27XT34-065 |  | Próba ciœnieniowa – Sekcja 09 | 5d | 2026-10-29 | 2026-11-04 | 27XT34-064 |  |  | 2026-10-19 | 2026-10-23 | 373.5d | 0d |  | Automaty | 27XT34 | Ruroci¹g | Budowa | Roboty | Marek | Wyspa | PM000 | Zespó³-W | Wspólne | Normalny | Pakiet | L2 | Bez uwag |  |
| 27XT34-066 |  | Izolacje – Sekcja 09 | 7d | 2026-11-05 | 2026-11-13 | 27XT34-065 |  |  | 2026-10-26 | 2026-11-03 | 373.5d | 0d |  | Automaty | 27XT34 | Ruroci¹g | Budowa | Roboty | Marek | Wyspa | PM000 | Zespó³-K | Wspólne | Normalny | Pakiet | L2 | Czeka na dostawê | Rev B |
| 27XT34-067 |  | Malowanie i oznakowanie – Sekcja 09 | 2d | 2026-11-16 | 2026-11-17 | 27XT34-066 FF+2d |  |  | 2026-11-04 | 2026-11-05 | 373.5d | 0d |  | Automaty | 27XT34 | Ruroci¹g | Budowa | Roboty | Marek | Wyspa | PM000 | Zespó³-K | Wspólne | Niski | Pakiet | L2 | Bez uwag | Rev A |
|  | SEKCJA 10 | **Sekcja 10** |  | 2026-05-12 | 2026-11-12 |  |  |  |  |  |  |  |  |  |  |  |  |  |  |  |  |  |  |  |  |  |  |  |
| 27XT34-068 |  | Prefabrykacja ruroci¹gów – Sekcja 10 | 12.6d | 2026-05-12 A | 2026-05-29 A | 27XT34-012, 27XT34-063 SS+5d | 100% |  | 2026-05-11 | 2026-05-26 |  |  |  | Automaty | 27XT34 | Ruroci¹g | Budowa | Roboty | Marek | Wyspa | PM000 | Zespó³-W | Wspólne | Wysoki | Pakiet | L2 |  |  |
| 27XT34-069 |  | Monta¿ ruroci¹gów – Sekcja 10 | 9.5d | 2026-09-24 A | 2026-10-12 | 27XT34-068, 27XT34-014 SS+2d | 57% | 4.1d | 2026-09-24 | 2026-10-06 | 393.1d | 0d |  | Automaty | 27XT34 | Ruroci¹g | Budowa | Roboty | Marek | Wyspa | PM000 | Zespó³-W | Wspólne | Niski | Pakiet | L2 | Czeka na dostawê |  |
| 27XT34-070 |  | Próba ciœnieniowa – Sekcja 10 | 2d | 2026-10-13 | 2026-10-14 | 27XT34-069 |  |  | 2026-10-07 | 2026-10-08 | 389.5d | 0d |  | Automaty | 27XT34 | Ruroci¹g | Budowa | Roboty | Marek | Wyspa | PM000 | Zespó³-K | Wspólne | Normalny | Pakiet | L2 |  |  |
| 27XT34-071 |  | Izolacje – Sekcja 10 | 6d | 2026-11-03 | 2026-11-10 | 27XT34-070 |  |  | 2026-10-09 | 2026-10-16 | 376.6d | 0d | Kalendarz 6-dniowy | Automaty | 27XT34 | Ruroci¹g | Budowa | Roboty | Marek | Wyspa | PM000 | Zespó³-W | Wspólne | Krytyczn | Pakiet | L2 |  |  |
| 27XT34-072 |  | Malowanie i oznakowanie – Sekcja 10 | 3d | 2026-11-10 | 2026-11-12 | 27XT34-071 FF+2d |  |  | 2026-10-16 | 2026-10-20 | 376.6d | 0d |  | Automaty | 27XT34 | Ruroci¹g | Budowa | Roboty | Marek | Wyspa | PM000 | Zespó³-K | Wspólne | Niski | Pakiet | L2 |  | Rev C |
|  | SEKCJA 11 | **Sekcja 11** |  | 2026-05-19 | 2026-11-10 |  |  |  |  |  |  |  |  |  |  |  |  |  |  |  |  |  |  |  |  |  |  |  |
| 27XT34-075 |  | Prefabrykacja ruroci¹gów – Sekcja 11 | 8.2d | 2026-05-19 A | 2026-06-01 A | 27XT34-012, 27XT34-068 SS+5d | 100% |  | 2026-05-18 | 2026-05-27 |  |  |  | Automaty | 27XT34 | Ruroci¹g | Budowa | Roboty | Marek | Wyspa | PM000 | Zespó³-K | Wspólne | Normalny | Pakiet | L2 | Czeka na dostawê |  |
| 27XT34-076 |  | Monta¿ ruroci¹gów – Sekcja 11 | 19.3d | 2026-09-28 A | 2026-10-16 | 27XT34-075, 27XT34-014 SS+3d | 56% | 8.4d | 2026-09-25 | 2026-10-21 | 374.3d | 0d |  | Automaty | 27XT34 | Ruroci¹g | Budowa | Roboty | Marek | Wyspa | PM000 | Zespó³-W | Wspólne | Normalny | Pakiet | L2 |  |  |
| 27XT34-077 |  | Próba ciœnieniowa – Sekcja 11 | 5d | 2026-10-19 | 2026-10-23 | 27XT34-076 |  |  | 2026-10-22 | 2026-10-28 | 378.2d | 0d |  | Automaty | 27XT34 | Ruroci¹g | Budowa | Roboty | Marek | Wyspa | PM000 | Zespó³-W | Wspólne | Niski | Pakiet | L2 |  |  |
| 27XT34-078 |  | Izolacje – Sekcja 11 | 10d | 2026-10-26 | 2026-11-06 | 27XT34-077 |  |  | 2026-10-29 | 2026-11-11 | 378.2d | 0d |  | Automaty | 27XT34 | Ruroci¹g | Budowa | Roboty | Marek | Wyspa | PM000 | Zespó³-W | Wspólne | Normalny | Pakiet | L2 | Bez uwag |  |
| 27XT34-079 |  | Malowanie i oznakowanie – Sekcja 11 | 5d | 2026-11-04 | 2026-11-10 | 27XT34-078 FF+2d |  |  | 2026-11-09 | 2026-11-13 | 378.2d | 0d | Kalendarz 6-dniowy | Automaty | 27XT34 | Ruroci¹g | Budowa | Roboty | Marek | Wyspa | PM000 | Zespó³-W | Wspólne | Normalny | Pakiet | L2 |  | Rev A |
|  | SEKCJA 12 | **Sekcja 12** |  | 2026-05-25 | 2026-11-03 |  |  |  |  |  |  |  |  |  |  |  |  |  |  |  |  |  |  |  |  |  |  |  |
|  | PODSEKCJA | **Podsekcja 12.A** |  | 2026-05-25 | 2026-11-03 |  |  |  |  |  |  |  |  |  |  |  |  |  |  |  |  |  |  |  |  |  |  |  |
| 27XT34-080 |  | Prefabrykacja ruroci¹gów – Sekcja 12 | 7.5d | 2026-05-25 A | 2026-06-02 A | 27XT34-012, 27XT34-075 SS+5d | 100% |  |  |  |  |  |  | Automaty | 27XT34 | Ruroci¹g | Budowa | Roboty | Marek | Wyspa | PM000 | Zespó³-K | Wspólne | Normalny | Pakiet | L2 |  |  |
| 27XT34-081 |  | Monta¿ ruroci¹gów – Sekcja 12 | 21.2d | 2026-09-23 A | 2026-10-15 | 27XT34-080, 27XT34-014 SS+1d | 64% | 7.6d | 2026-09-23 | 2026-10-21 | 379.4d | 0d |  | Automaty | 27XT34 | Ruroci¹g | Budowa | Roboty | Marek | Wyspa | PM000 | Zespó³-K | Wspólne | Wysoki | Pakiet | L2 | Ryzyko opóŸnienia |  |
| 27XT34-082 |  | Próba ciœnieniowa – Sekcja 12 | 4d | 2026-10-16 | 2026-10-21 | 27XT34-081 |  |  | 2026-10-22 | 2026-10-27 | 383d | 0d |  | Automaty | 27XT34 | Ruroci¹g | Budowa | Roboty | Marek | Wyspa | PM000 | Zespó³-K | Wspólne | Normalny | Pakiet | L2 |  |  |
| 27XT34-083 |  | Izolacje – Sekcja 12 | 7d | 2026-10-22 | 2026-10-30 | 27XT34-082 |  |  | 2026-10-28 | 2026-11-05 | 383d | 0d |  | Automaty | 27XT34 | Ruroci¹g | Budowa | Roboty | Marek | Wyspa | PM000 | Zespó³-K | Wspólne | Normalny | Pakiet | L2 |  |  |
| 27XT34-084 |  | Malowanie i oznakowanie – Sekcja 12 | 3d | 2026-10-30 | 2026-11-03 | 27XT34-083 FF+2d |  |  | 2026-11-05 | 2026-11-09 | 383d | 0d |  | Automaty | 27XT34 | Ruroci¹g | Budowa | Roboty | Marek | Wyspa | PM000 | Zespó³-W | Wspólne | Normalny | Pakiet | L2 |  |  |

| ID | WBS | Activity | Duration | Start | Finish | Predecessors | Complete | Remaining | Planned start | Planned finish | Total float | Free float | Calendar | AC_Wykonawca | AC_Obiekt | AC_Dyscyplina | AC_Faza | AC_Zakres | AC_Opiekun | AC_Obszar | AC_PP_PM | AC_Zespol | AC_Blok | AC_Priorytet | AC_Pakiet | AC_Poziom | Uwagi harmonogramisty | Rewizja dokumentu |
| --- | --- | --- | --- | --- | --- | --- | --- | --- | --- | --- | --- | --- | --- | --- | --- | --- | --- | --- | --- | --- | --- | --- | --- | --- | --- | --- | --- | --- |
|  | SEKCJA 13 | **Sekcja 13** |  | 2026-05-29 | 2026-11-04 |  |  |  |  |  |  |  |  |  |  |  |  |  |  |  |  |  |  |  |  |  |  |  |
| 27XT34-087 |  | Prefabrykacja ruroci¹gów – Sekcja 13 | 7d | 2026-05-29 A | 2026-06-09 A | 27XT34-012, 27XT34-080 SS+5d | 100% |  | 2026-06-01 | 2026-06-09 |  |  |  | Automaty | 27XT34 | Ruroci¹g | Budowa | Roboty | Marek | Wyspa | PM000 | Zespó³-W | Wspólne | Normalny | Pakiet | L2 |  |  |
| 27XT34-088 |  | Monta¿ ruroci¹gów – Sekcja 13 | 22d | 2026-09-29 A | 2026-10-22 | 27XT34-087, 27XT34-014 SS+1d | 42% | 12.8d | 2026-09-23 | 2026-10-22 | 378.6d | 0d |  | Automaty | 27XT34 | Ruroci¹g | Budowa | Roboty | Marek | Wyspa | PM000 | Zespó³-W | Wspólne | Normalny | Pakiet | L2 |  |  |
| 27XT34-089 |  | Próba ciœnieniowa – Sekcja 13 | 3d | 2026-10-23 | 2026-10-27 | 27XT34-088 |  |  |  |  | 381.8d | 0d |  | Automaty | 27XT34 | Ruroci¹g | Budowa | Roboty | Marek | Wyspa | PM000 | Zespó³-K | Wspólne | Normalny | Pakiet | L2 | Ryzyko opóŸnienia | Rev B |
| 27XT34-091 |  | Malowanie i oznakowanie – Sekcja 13 | 7d | 2026-10-27 | 2026-11-04 | 27XT34-090 FF+2d |  |  |  |  | 381.8d | 0d |  | Automaty | 27XT34 | Ruroci¹g | Budowa | Roboty | Marek | Wyspa | PM000 | Zespó³-W | Wspólne | Wysoki | Pakiet | L2 | Uzgodnione na koordynacji | Rev A |
| 27XT34-090 |  | Izolacje – Sekcja 13 | 4d | 2026-10-28 | 2026-11-02 | 27XT34-089 |  |  |  |  | 381.8d | 0d | Kalendarz 6-dniowy | Automaty | 27XT34 | Ruroci¹g | Budowa | Roboty | Marek | Wyspa | PM000 | Zespó³-W | Wspólne | Normalny | Pakiet | L2 |  | Rev B |
|  | SEKCJA 14 | **Sekcja 14** |  | 2026-06-08 | 2026-11-19 |  |  |  |  |  |  |  |  |  |  |  |  |  |  |  |  |  |  |  |  |  |  |  |
| 27XT34-092 |  | Prefabrykacja ruroci¹gów – Sekcja 14 | 5.2d | 2026-06-08 A | 2026-06-16 A | 27XT34-012, 27XT34-087 SS+5d | 100% |  | 2026-06-08 | 2026-06-12 |  |  |  | Automaty | 27XT34 | Ruroci¹g | Budowa | Roboty | Marek | Wyspa | PM000 | Zespó³-W | Wspólne | Niski | Pakiet | L2 |  |  |
| 27XT34-093 |  | Monta¿ ruroci¹gów – Sekcja 14 | 24.8d | 2026-09-28 A | 2026-10-26 | 27XT34-092, 27XT34-014 SS+1d | 42% | 14.4d | 2026-09-23 | 2026-10-26 | 367.8d | 0d |  | Automaty | 27XT34 | Ruroci¹g | Budowa | Roboty | Marek | Wyspa | PM000 | Zespó³-W | Wspólne | Niski | Pakiet | L2 |  |  |
| 27XT34-094 |  | Próba ciœnieniowa – Sekcja 14 | 6d | 2026-10-27 | 2026-11-03 | 27XT34-093 |  |  |  |  | 371.2d | 0d |  | Automaty | 27XT34 | Ruroci¹g | Budowa | Roboty | Marek | Wyspa | PM000 | Zespó³-W | Wspólne | Normalny | Pakiet | L2 |  |  |
| 27XT34-095 |  | Izolacje – Sekcja 14 | 10d | 2026-11-04 | 2026-11-17 | 27XT34-094 |  |  |  |  | 371.2d | 0d |  | Automaty | 27XT34 | Ruroci¹g | Budowa | Roboty | Marek | Wyspa | PM000 | Zespó³-K | Wspólne | Niski | Pakiet | L2 | Ryzyko opóŸnienia |  |
| 27XT34-096 |  | Malowanie i oznakowanie – Sekcja 14 | 8d | 2026-11-10 | 2026-11-19 | 27XT34-095 FF+2d |  |  |  |  | 371.2d | 0d |  | Automaty | 27XT34 | Ruroci¹g | Budowa | Roboty | Marek | Wyspa | PM000 | Zespó³-W | Wspólne | Normalny | Pakiet | L2 | Do weryfikacji z wykonawc¹ |  |
|  | SEKCJA 15 | **Sekcja 15** |  | 2026-06-18 | 2026-11-02 |  |  |  |  |  |  |  |  |  |  |  |  |  |  |  |  |  |  |  |  |  |  |  |
|  | PODSEKCJA | **Podsekcja 15.A** |  | 2026-06-18 | 2026-11-02 |  |  |  |  |  |  |  |  |  |  |  |  |  |  |  |  |  |  |  |  |  |  |  |
| 27XT34-099 |  | Prefabrykacja ruroci¹gów – Sekcja 15 | 10d | 2026-06-18 A | 2026-07-01 A | 27XT34-012, 27XT34-092 SS+5d | 100% |  | 2026-06-15 | 2026-06-26 |  |  |  | Automaty | 27XT34 | Ruroci¹g | Budowa | Roboty | Marek | Wyspa | PM000 | Zespó³-W | Wspólne | Normalny | Pakiet | L2 |  | Rev C |
| 27XT34-100 |  | Monta¿ ruroci¹gów – Sekcja 15 | 6.7d | 2026-09-30 A | 2026-10-12 | 27XT34-099, 27XT34-014 SS+6d | 37% | 4.2d | 2026-09-30 | 2026-10-07 | 386.9d | 0d |  | Automaty | 27XT34 | Ruroci¹g | Budowa | Roboty | Marek | Wyspa | PM000 | Zespó³-K | Wspólne | Normalny | Pakiet | L2 |  | Rev A |
| 27XT34-101 |  | Próba ciœnieniowa – Sekcja 15 | 6d | 2026-10-13 | 2026-10-20 | 27XT34-100 |  |  | 2026-10-08 | 2026-10-15 | 384.4d | 0d |  | Automaty | 27XT34 | Ruroci¹g | Budowa | Roboty | Marek | Wyspa | PM000 | Zespó³-W | Wspólne | Niski | Pakiet | L2 | Ryzyko opóŸnienia |  |
| 27XT34-102 |  | Izolacje – Sekcja 15 | 7d | 2026-10-21 | 2026-10-29 | 27XT34-101 |  |  | 2026-10-16 | 2026-10-26 | 384.4d | 0d |  | Automaty | 27XT34 | Ruroci¹g | Budowa | Roboty | Marek | Wyspa | PM000 | Zespó³-E | Wspólne | Normalny | Pakiet | L2 | Bez uwag | Rev B |
| 27XT34-103 |  | Malowanie i oznakowanie – Sekcja 15 | 7d | 2026-10-23 | 2026-11-02 | 27XT34-102 FF+2d |  |  | 2026-10-20 | 2026-10-28 | 384.4d | 0d |  | Automaty | 27XT34 | Ruroci¹g | Budowa | Roboty | Marek | Wyspa | PM000 | Zespó³-W | Wspólne | Normalny | Pakiet | L2 |  |  |
|  | SEKCJA 16 | **Sekcja 16** |  | 2026-06-22 | 2026-11-04 |  |  |  |  |  |  |  |  |  |  |  |  |  |  |  |  |  |  |  |  |  |  |  |
| 27XT34-104 |  | Prefabrykacja ruroci¹gów – Sekcja 16 | 12.9d | 2026-06-22 A | 2026-07-10 A | 27XT34-012, 27XT34-099 SS+5d | 100% |  | 2026-06-22 | 2026-07-07 |  |  |  | Automaty | 27XT34 | Ruroci¹g | Budowa | Roboty | Marek | Wyspa | PM000 | Zespó³-W | Wspólne | Normalny | Pakiet | L2 |  |  |
| 27XT34-105 |  | Monta¿ ruroci¹gów – Sekcja 16 | 11.6d | 2026-09-24 A | 2026-10-20 | 27XT34-104, 27XT34-014 SS+1d | 13% | 10.1d | 2026-09-23 | 2026-10-07 | 390d | 0d |  | Automaty | 27XT34 | Ruroci¹g | Budowa | Roboty | Marek | Wyspa | PM000 | Zespó³-K | Wspólne | Normalny | Pakiet | L2 |  |  |
| 27XT34-106 |  | Próba ciœnieniowa – Sekcja 16 | 5d | 2026-10-21 | 2026-10-27 | 27XT34-105 |  |  | 2026-10-08 | 2026-10-14 | 382.5d | 0d | Kalendarz 6-dniowy | Automaty | 27XT34 | Ruroci¹g | Budowa | Roboty | Marek | Wyspa | PM000 | Zespó³-K | Wspólne | Normalny | Pakiet | L2 |  |  |
| 27XT34-108 |  | Malowanie i oznakowanie – Sekcja 16 | 8d | 2026-10-26 | 2026-11-04 | 27XT34-107 FF+2d |  |  | 2026-10-13 | 2026-10-22 | 382.5d | 0d |  | Automaty | 27XT34 | Ruroci¹g | Budowa | Roboty | Marek | Wyspa | PM000 | Zespó³-W | Wspólne | Niski | Pakiet | L2 | Uzgodnione na koordynacji |  |
| 27XT34-107 |  | Izolacje – Sekcja 16 | 4d | 2026-10-28 | 2026-11-02 | 27XT34-106 |  |  | 2026-10-15 | 2026-10-20 | 382.5d | 0d |  | Automaty | 27XT34 | Ruroci¹g | Budowa | Roboty | Marek | Wyspa | PM000 | Zespó³-K | Wspólne | Wysoki | Pakiet | L2 |  |  |

| ID | WBS | Activity | Duration | Start | Finish | Predecessors | Complete | Remaining | Planned start | Planned finish | Total float | Free float | Calendar | AC_Wykonawca | AC_Obiekt | AC_Dyscyplina | AC_Faza | AC_Zakres | AC_Opiekun | AC_Obszar | AC_PP_PM | AC_Zespol | AC_Blok | AC_Priorytet | AC_Pakiet | AC_Poziom | Rewizja dokumentu | Uwagi harmonogramisty |
| --- | --- | --- | --- | --- | --- | --- | --- | --- | --- | --- | --- | --- | --- | --- | --- | --- | --- | --- | --- | --- | --- | --- | --- | --- | --- | --- | --- | --- |
|  | SEKCJA 17 | **Sekcja 17** |  | 2026-07-02 | 2027-01-07 |  |  |  |  |  |  |  |  |  |  |  |  |  |  |  |  |  |  |  |  |  |  |  |
| 27XT34-111 |  | Prefabrykacja ruroci¹gów – Sekcja 17 | 4.9d | 2026-07-02 A | 2026-07-08 A | 27XT34-012, 27XT34-104 SS+5d | 100% |  | 2026-06-29 | 2026-07-02 |  |  |  | Automaty | 27XT34 | Ruroci¹g | Budowa | Roboty | Marek | Wyspa | PM000 | Zespó³-K | Wspólne | Normalny | Pakiet | L2 |  |  |
| 27XT34-112 |  | Monta¿ ruroci¹gów – Sekcja 17 | 24d | 2026-10-06 A | 2026-10-19 | 27XT34-111, 27XT34-014 SS+8d | 60% | 9.6d | 2026-10-02 | 2026-11-04 | 369.6d | 0d |  | Automaty | 27XT34 | Ruroci¹g | Budowa | Roboty | Marek | Wyspa | PM000 | Zespó³-W | Wspólne | Normalny | Pakiet | L2 |  |  |
| 27XT34-113 |  | Próba ciœnieniowa – Sekcja 17 | 4d | 2026-12-24 | 2026-12-29 | 27XT34-112 |  |  | 2026-11-05 | 2026-11-10 | 336.6d | 0d |  | Automaty | 27XT34 | Ruroci¹g | Budowa | Roboty | Marek | Wyspa | PM000 | Zespó³-E | Wspólne | Normalny | Pakiet | L2 | Rev C |  |
| 27XT34-115 |  | Malowanie i oznakowanie – Sekcja 17 | 8d | 2026-12-29 | 2027-01-07 | 27XT34-114 FF+2d |  |  | 2026-11-10 | 2026-11-19 | 336.6d | 0d |  | Automaty | 27XT34 | Ruroci¹g | Budowa | Roboty | Marek | Wyspa | PM000 | Zespó³-K | Wspólne | Wysoki | Pakiet | L2 |  |  |
| 27XT34-114 |  | Izolacje – Sekcja 17 | 5d | 2026-12-30 | 2027-01-05 | 27XT34-113 |  |  | 2026-11-11 | 2026-11-17 | 336.6d | 0d |  | Automaty | 27XT34 | Ruroci¹g | Budowa | Roboty | Marek | Wyspa | PM000 | Zespó³-E | Wspólne | Normalny | Pakiet | L2 | Rev A | Uzgodnione na koordynacji |
|  | SEKCJA 18 | **Sekcja 18** |  | 2026-07-07 | 2026-10-28 |  |  |  |  |  |  |  |  |  |  |  |  |  |  |  |  |  |  |  |  |  |  |  |
|  | PODSEKCJA | **Podsekcja 18.A** |  | 2026-07-07 | 2026-10-28 |  |  |  |  |  |  |  |  |  |  |  |  |  |  |  |  |  |  |  |  |  |  |  |
| 27XT34-116 |  | Prefabrykacja ruroci¹gów – Sekcja 18 | 5.9d | 2026-07-07 A | 2026-07-14 A | 27XT34-012, 27XT34-111 SS+5d | 100% |  | 2026-07-06 | 2026-07-10 |  |  |  | Automaty | 27XT34 | Ruroci¹g | Budowa | Roboty | Marek | Wyspa | PM000 | Zespó³-W | Wspólne | Krytyczn | Pakiet | L2 |  |  |
| 27XT34-117 |  | Monta¿ ruroci¹gów – Sekcja 18 | 21.2d | 2026-09-29 A | 2026-10-19 | 27XT34-116, 27XT34-014 SS+4d | 56% | 9.3d | 2026-09-28 | 2026-10-26 | 381.4d | 0d |  | Automaty | 27XT34 | Ruroci¹g | Budowa | Roboty | Marek | Wyspa | PM000 | Zespó³-W | Wspólne | Normalny | Pakiet | L2 | Rev C |  |
| 27XT34-118 |  | Próba ciœnieniowa – Sekcja 18 | 2d | 2026-10-20 | 2026-10-21 | 27XT34-117 |  |  | 2026-10-27 | 2026-10-28 | 387.3d | 0d |  | Automaty | 27XT34 | Ruroci¹g | Budowa | Roboty | Marek | Wyspa | PM000 | Zespó³-W | Wspólne | Normalny | Pakiet | L2 |  |  |
| 27XT34-119 |  | Izolacje – Sekcja 18 | 3d | 2026-10-22 | 2026-10-26 | 27XT34-118 |  |  | 2026-10-29 | 2026-11-02 | 387.3d | 0d |  | Automaty | 27XT34 | Ruroci¹g | Budowa | Roboty | Marek | Wyspa | PM000 | Zespó³-K | Wspólne | Wysoki | Pakiet | L2 | Rev C | Czeka na dostawê |
| 27XT34-120 |  | Malowanie i oznakowanie – Sekcja 18 | 4d | 2026-10-23 | 2026-10-28 | 27XT34-119 FF+2d |  |  | 2026-10-30 | 2026-11-04 | 387.3d | 0d |  | Automaty | 27XT34 | Ruroci¹g | Budowa | Roboty | Marek | Wyspa | PM000 | Zespó³-W | Wspólne | Normalny | Pakiet | L2 |  |  |
|  | SEKCJA 19 | **Sekcja 19** |  | 2026-07-15 | 2026-11-25 |  |  |  |  |  |  |  |  |  |  |  |  |  |  |  |  |  |  |  |  |  |  |  |
| 27XT34-123 |  | Prefabrykacja ruroci¹gów – Sekcja 19 | 3.2d | 2026-07-15 A | 2026-07-22 A | 27XT34-012, 27XT34-116 SS+5d | 100% |  | 2026-07-13 | 2026-07-15 |  |  |  | Automaty | 27XT34 | Ruroci¹g | Budowa | Roboty | Marek | Wyspa | PM000 | Zespó³-K | Wspólne | Normalny | Pakiet | L2 |  |  |
| 27XT34-124 |  | Monta¿ ruroci¹gów – Sekcja 19 | 24.9d | 2026-10-01 A | 2026-10-30 | 27XT34-123, 27XT34-014 SS+4d | 27% | 18.3d | 2026-09-28 | 2026-10-29 | 364.7d | 0d |  | Automaty | 27XT34 | Ruroci¹g | Budowa | Roboty | Marek | Wyspa | PM000 | Zespó³-W | Wspólne | Normalny | Pakiet | L2 |  | Do weryfikacji z wykonawc¹ |
| 27XT34-125 |  | Próba ciœnieniowa – Sekcja 19 | 5d | 2026-11-02 | 2026-11-06 | 27XT34-124 |  |  | 2026-10-30 | 2026-11-05 | 367.3d | 0d |  | Automaty | 27XT34 | Ruroci¹g | Budowa | Roboty | Marek | Wyspa | PM000 | Zespó³-W | Wspólne | Normalny | Pakiet | L2 | Rev A |  |
| 27XT34-126 |  | Izolacje – Sekcja 19 | 11d | 2026-11-09 | 2026-11-23 | 27XT34-125 |  |  | 2026-11-06 | 2026-11-20 | 367.3d | 0d |  | Automaty | 27XT34 | Ruroci¹g | Budowa | Roboty | Marek | Wyspa | PM200 | Zespó³-E | Wspólne | Wysoki | Pakiet | L2 |  | Ryzyko opóŸnienia |
| 27XT34-127 |  | Malowanie i oznakowanie – Sekcja 19 | 3d | 2026-11-23 | 2026-11-25 | 27XT34-126 FF+2d |  |  | 2026-11-20 | 2026-11-24 | 367.3d | 0d |  | Automaty | 27XT34 | Ruroci¹g | Budowa | Roboty | Marek | Wyspa | PM000 | Zespó³-W | Wspólne | Normalny | Pakiet | L2 |  |  |
|  | SEKCJA 20 | **Sekcja 20** |  | 2026-07-20 | 2026-10-20 |  |  |  |  |  |  |  |  |  |  |  |  |  |  |  |  |  |  |  |  |  |  |  |
| 27XT34-128 |  | Prefabrykacja ruroci¹gów – Sekcja 20 | 7.1d | 2026-07-20 A | 2026-07-31 A | 27XT34-012, 27XT34-123 SS+5d | 100% |  | 2026-07-20 | 2026-07-28 |  |  |  | Automaty | 27XT34 | Ruroci¹g | Budowa | Roboty | Marek | Wyspa | PM000 | Zespó³-K | Wspólne | Wysoki | Pakiet | L2 |  |  |
| 27XT34-129 |  | Monta¿ ruroci¹gów – Sekcja 20 | 10.2d | 2026-10-07 | 2026-10-20 | 27XT34-128, 27XT34-014 SS |  |  | 2026-09-22 | 2026-10-05 | 344.4d | 0d |  | Automaty | 27XT34 | Ruroci¹g | Budowa | Roboty | Marek | Wyspa | PM000 | Zespó³-W | Wspólne | Niski | Pakiet | L2 |  |  |
| 27XT34-130 |  | Próba ciœnieniowa – Sekcja 20 | 4d | 2026-10-07 A | 2026-10-09 | 27XT34-129 | 12% | 3.5d | 2026-10-06 | 2026-10-09 | 354.6d | 0d | Kalendarz 6-dniowy | Automaty | 27XT34 | Ruroci¹g | Budowa | Roboty | Marek | Wyspa | PM000 | Zespó³-K | Wspólne | Wysoki | Pakiet | L2 | Rev C |  |
| 27XT34-131 |  | Izolacje – Sekcja 20 | 4d | 2026-10-12 | 2026-10-15 | 27XT34-130 |  |  |  |  | 355.1d | 0d |  | Automaty | 27XT34 | Ruroci¹g | Budowa | Roboty | Marek | Wyspa | PM000 | Zespó³-W | Wspólne | Normalny | Pakiet | L2 |  |  |
| 27XT34-132 |  | Malowanie i oznakowanie – Sekcja 20 | 4d | 2026-10-14 | 2026-10-19 | 27XT34-131 FF+2d |  |  |  |  | 355.1d | 0d |  | Automaty | 27XT34 | Ruroci¹g | Budowa | Roboty | Marek | Wyspa | PM000 | Zespó³-W | Wspólne | Normalny | Pakiet | L2 |  |  |

| ID | WBS | Activity | Type | Duration | Start | Finish | Predecessors | Complete | Remaining | Actual finish | Planned start | Planned finish | Total float | Free float | Calendar | AC_Wykonawca | AC_Obiekt | AC_Dyscyplina | AC_Faza | AC_Zakres | AC_Opiekun | AC_Obszar | AC_PP_PM | AC_Zespol | AC_Blok | AC_Priorytet | AC_Pakiet | AC_Poziom | Rewizja dokumentu | Uwagi harmonogramisty |
| --- | --- | --- | --- | --- | --- | --- | --- | --- | --- | --- | --- | --- | --- | --- | --- | --- | --- | --- | --- | --- | --- | --- | --- | --- | --- | --- | --- | --- | --- | --- |
|  | SEKCJA 21 | **Sekcja 21** |  |  | 2026-07-27 | 2026-11-23 |  |  |  |  |  |  |  |  |  |  |  |  |  |  |  |  |  |  |  |  |  |  |  |  |
|  | PODSEKCJA | **Podsekcja 21.A** |  |  | 2026-07-27 | 2026-11-23 |  |  |  |  |  |  |  |  |  |  |  |  |  |  |  |  |  |  |  |  |  |  |  |  |
| 27XT34-135 |  | Prefabrykacja ruroci¹gów – Sekcja 21 |  | 12d | 2026-07-27 A | 2026-08-12 A | 27XT34-012, 27XT34-128 SS+5d | 100% |  |  | 2026-07-27 | 2026-08-11 |  |  |  | Automaty | 27XT34 | Ruroci¹g | Budowa | Roboty | Marek | Wyspa | PM000 | Zespó³-K | Wspólne | Normalny | Pakiet | L2 |  |  |
| 27XT34-136 |  | Monta¿ ruroci¹gów – Sekcja 21 |  | 24.4d | 2026-09-24 A | 2026-10-30 | 27XT34-135, 27XT34-014 SS+1d | 26% | 18d |  | 2026-09-23 | 2026-10-26 | 333.2d | 0d |  | Automaty | 27XT34 | Ruroci¹g | Budowa | Roboty | Marek | Wyspa | PM000 | Zespó³-K | Wspólne | Krytyczn | Pakiet | L2 | Rev B |  |
| 27XT34-137 |  | Próba ciœnieniowa – Sekcja 21 |  | 5d | 2026-11-02 | 2026-11-06 | 27XT34-136 |  |  |  | 2026-10-27 | 2026-11-02 | 330.6d | 0d |  | Automaty | 27XT34 | Ruroci¹g | Budowa | Roboty | Marek | Wyspa | PM000 | Zespó³-W | Wspólne | Wysoki | Pakiet | L2 |  |  |
| 27XT34-138 |  | Izolacje – Sekcja 21 |  | 9d | 2026-11-09 | 2026-11-19 | 27XT34-137 |  |  |  | 2026-11-03 | 2026-11-13 | 330.6d | 0d |  | Automaty | 27XT34 | Ruroci¹g | Budowa | Roboty | Marek | Wyspa | PM000 | Zespó³-W | Wspólne | Normalny | Pakiet | L2 |  | Czeka na dostawê |
| 27XT34-139 |  | Malowanie i oznakowanie – Sekcja 21 |  | 6d | 2026-11-16 | 2026-11-23 | 27XT34-138 FF+2d |  |  |  | 2026-11-10 | 2026-11-17 | 330.6d | 0d |  | Automaty | 27XT34 | Ruroci¹g | Budowa | Roboty | Marek | Wyspa | PM000 | Zespó³-K | Wspólne | Normalny | Pakiet | L2 |  | Ryzyko opóŸnienia |
|  | PROJ | **Projektowanie** |  |  | 2025-06-19 | 2025-12-11 |  |  |  |  |  |  |  |  |  |  |  |  |  |  |  |  |  |  |  |  |  |  |  |  |
|  | DOKUMENTAC | **Dokumentacja** |  |  | 2025-06-19 | 2025-12-11 |  |  |  |  |  |  |  |  |  |  |  |  |  |  |  |  |  |  |  |  |  |  |  |  |
| 27XT34-001 |  | Projekt wykonawczy – Zbiornik wody zasilaj¹cej |  | 86d | 2025-06-19 A | 2025-10-20 A |  | 100% |  |  | 2025-06-18 | 2025-10-15 |  |  |  | Automaty | 27XT34 | Budowlan | Projekto | Projekt | Marek | Wyspa | PM000 | Zespó³-W | Wspólne | Normalny | Pakiet | L2 |  |  |
| 27XT34-002 |  | Uzgodnienie dokumentacji z Inwestorem |  | 30d | 2025-10-21 A | 2025-12-03 A | 27XT34-001 | 100% |  |  | 2025-10-16 | 2025-11-26 |  |  |  | Automaty | 27XT34 | Budowlan | Projekto | Projekt | Marek | Wyspa | PM000 | Zespó³-E | Wspólne | Niski | Pakiet | L2 |  | Ryzyko opóŸnienia |
| 27XT34-003 |  | Zatwierdzenie dokumentacji do realizacji |  | 6d | 2025-12-02 A | 2025-12-11 A | 27XT34-002 | 100% |  |  | 2025-11-27 | 2025-12-04 |  |  |  | Automaty | 27XT34 | Budowlan | Projekto | Projekt | Marek | Wyspa | PM000 | Zespó³-W | Wspólne | Wysoki | Pakiet | L2 |  |  |
| 27XT34-004 |  | KM: Dokumentacja zatwierdzona – Zbiornik wody zasilaj¹cej | milestone | 0d | 2025-12-09 A | 2025-12-09 | 27XT34-003 | 100% |  | 2025-12-08 | 2025-12-05 | 2025-12-05 |  |  |  | Automaty | 27XT34 | Budowlan | Projekto | Kamieñ | Marek | Wyspa | PM000 | Zespó³-W | Wspólne | Normalny | Pakiet | L1 |  |  |
|  | ROZR | **Rozruch** |  |  | 2026-11-24 | 2027-01-04 |  |  |  |  |  |  |  |  |  |  |  |  |  |  |  |  |  |  |  |  |  |  |  |  |
|  | ROZRUCH | **Rozruch** |  |  | 2026-11-24 | 2027-01-04 |  |  |  |  |  |  |  |  |  |  |  |  |  |  |  |  |  |  |  |  |  |  |  |  |
| 27XT34-142 |  | Przegl¹d gotowoœci do rozruchu |  | 5d | 2026-11-24 | 2026-11-30 | 27XT34-141, 27XT34-019, 27XT34-024, 27XT34-026 |  |  |  | 2026-12-01 | 2026-12-07 | 330.1d | 0d |  | Automaty | 27XT34 | Rozruch | Rozruch | Rozruch | Marek | Wyspa | PM000 | Zespó³-W | Wspólne | Normalny | Pakiet | L2 | Rev A |  |
| 27XT34-143 |  | Rozruch na zimno |  | 10d | 2026-12-01 | 2026-12-14 | 27XT34-142 |  |  |  | 2026-12-08 | 2026-12-21 | 330.1d | 0d |  | Automaty | 27XT34 | Rozruch | Rozruch | Rozruch | Marek | Wyspa | PM000 | Zespó³-K | Wspólne | Normalny | Pakiet | L2 | Rev C |  |
| 27XT34-144 |  | Rozruch na gor¹co / próby ruchowe |  | 14d | 2026-12-15 | 2027-01-01 | 27XT34-143 |  |  |  | 2026-12-22 | 2027-01-08 | 330.1d | 0d |  | Automaty | 27XT34 | Rozruch | Rozruch | Rozruch | Marek | Wyspa | PM000 | Zespó³-K | Wspólne | Wysoki | Pakiet | L2 |  | Czeka na dostawê |
| 27XT34-145 |  | KM: Odbiór koñcowy – Zbiornik wody zasilaj¹cej | milestone | 0d | 2027-01-04 | 2027-01-04 | 27XT34-144 |  |  |  | 2027-01-11 | 2027-01-11 | 330.1d | 0d |  | Automaty | 27XT34 | Rozruch | Rozruch | Kamieñ | Marek | Wyspa | PM000 | Zespó³-K | Wspólne | Normalny | Pakiet | L1 | Rev B |  |
|  | ZAKU | **Zakupy** |  |  | 2025-07-16 | 2026-09-25 |  |  |  |  |  |  |  |  |  |  |  |  |  |  |  |  |  |  |  |  |  |  |  |  |
|  | DOSTAWY | **Dostawy** |  |  | 2025-12-18 | 2026-09-25 |  |  |  |  |  |  |  |  |  |  |  |  |  |  |  |  |  |  |  |  |  |  |  |  |
| 27XT34-008 |  | Produkcja u dostawcy |  | 158d | 2025-12-18 A | 2026-07-29 A | 27XT34-007 | 100% |  |  | 2025-12-16 | 2026-07-23 |  |  |  | Automaty | 27XT34 | Mechanic | Zakupy | Dostawa | Marek | Wyspa | PM000 | Zespó³-W | Wspólne | Normalny | Pakiet | L2 |  | Czeka na dostawê |
| 27XT34-009 |  | Testy FAT |  | 5d | 2026-07-29 A | 2026-08-07 A | 27XT34-008 | 100% |  |  | 2026-07-24 | 2026-07-30 |  |  |  | Automaty | 27XT34 | Mechanic | Zakupy | Dostawa | Marek | Wyspa | PM000 | Zespó³-K | Wspólne | Niski | Pakiet | L2 |  |  |
| 27XT34-010 |  | Transport i dostawa na plac budowy |  | 37d | 2026-08-03 A | 2026-09-22 A | 27XT34-009 | 100% |  |  | 2026-07-31 | 2026-09-21 |  |  | Kalendarz 6-dniowy | Automaty | 27XT34 | Mechanic | Zakupy | Dostawa | Marek | Wyspa | PM000 | Zespó³-K | Wspólne | Normalny | Pakiet | L2 |  |  |
| 27XT34-011 |  | KM: Dostawa na budowê – Zbiornik wody zasilaj¹cej | milestone | 0d | 2026-09-25 A | 2026-09-25 | 27XT34-010 | 100% |  | 2026-09-24 | 2026-09-22 | 2026-09-22 |  |  |  | Automaty | 27XT34 | Mechanic | Zakupy | Kamieñ | Marek | Wyspa | PM000 | Zespó³-E | Wspólne | Normalny | Pakiet | L1 | Rev B |  |

| ID | WBS | Activity | Type | Duration | Start | Finish | Predecessors | Complete | Planned start | Planned finish | Total float | Free float | Calendar | Uwagi harmonogramisty | AC_Wykonawca | AC_Obiekt | AC_Dyscyplina | AC_Faza | AC_Zakres | AC_Opiekun | AC_Obszar | AC_PP_PM | AC_Zespol | AC_Blok | AC_Priorytet | AC_Pakiet | AC_Poziom | Rewizja dokumentu |
| --- | --- | --- | --- | --- | --- | --- | --- | --- | --- | --- | --- | --- | --- | --- | --- | --- | --- | --- | --- | --- | --- | --- | --- | --- | --- | --- | --- | --- |
|  | ZAMÓWIENIA | **Zamówienia** |  |  | 2025-07-16 | 2025-12-15 |  |  |  |  |  |  |  |  |  |  |  |  |  |  |  |  |  |  |  |  |  |  |
| 27XT34-005 |  | Zapytanie ofertowe |  | 15d | 2025-07-16 A | 2025-08-06 A | 27XT34-001 SS+20d | 100% | 2025-07-16 | 2025-08-05 |  |  |  | Do weryfikacji z wykonawc¹ | Automaty | 27XT34 | Mechanic | Zakupy | Dostawa | Marek | Wyspa | PM000 | Zespó³-K | Wspólne | Krytyczn | Pakiet | L2 |  |
| 27XT34-006 |  | Analiza i wybór ofert |  | 17d | 2025-08-08 A | 2025-09-02 A | 27XT34-005 | 100% | 2025-08-06 | 2025-08-28 |  |  | Kalendarz 6-dniowy |  | Automaty | 27XT34 | Mechanic | Zakupy | Dostawa | Marek | Wyspa | PM000 | Zespó³-W | Wspólne | Normalny | Pakiet | L2 | Rev C |
| 27XT34-007 |  | Zawarcie umowy / zamówienie |  | 7d | 2025-12-05 A | 2025-12-15 A | 27XT34-006, 27XT34-004 SS, 10BW45-004 SS+7d | 100% |  |  |  |  |  |  | Automaty | 27XT34 | Mechanic | Zakupy | Dostawa | Marek | Wyspa | PM000 | Zespó³-W | Wspólne | Wysoki | Pakiet | L1 |  |
|  | 28BW90 | **28BW90 – Uk³ad by-pass pary** |  |  | 2025-05-20 | 2028-01-24 |  |  |  |  |  |  |  |  |  |  |  |  |  |  |  |  |  |  |  |  |  |  |
|  | BUDO | **Budowa** |  |  | 2025-11-03 | 2027-12-30 |  |  |  |  |  |  |  |  |  |  |  |  |  |  |  |  |  |  |  |  |  |  |
|  | AKPIA | **AKPiA** |  |  | 2027-04-19 | 2027-05-21 |  |  |  |  |  |  |  |  |  |  |  |  |  |  |  |  |  |  |  |  |  |  |
| 28BW90-104 |  | Monta¿ uk³adów AKPiA |  | 25d | 2027-04-19 | 2027-05-21 | 28BW90-014 SS+5d |  | 2027-01-26 | 2027-03-01 | 207.3d | 0d | Kalendarz 6-dniowy |  | HydroIns | 28BW90 | AKPiA | Budowa | Roboty | Piotr | Wyspa | PM000 | Zespó³-W | Wspólne | Niski | Pakiet | L2 |  |
|  | ELEKTRYKA | **Elektryka** |  |  | 2027-04-26 | 2027-05-20 |  |  |  |  |  |  |  |  |  |  |  |  |  |  |  |  |  |  |  |  |  |  |
| 28BW90-025 |  | Uk³adanie kabli – trasa 02 |  | 10d | 2027-04-26 | 2027-05-07 | 28BW90-014 SS+10d |  | 2027-02-02 | 2027-02-15 | 217.3d | 0d |  |  | HydroIns | 28BW90 | Elektryc | Budowa | Roboty | Piotr | Wyspa | PM000 | Zespó³-W | Wspólne | Normalny | Pakiet | L2 |  |
| 28BW90-037 |  | Uk³adanie kabli – trasa 04 |  | 16d | 2027-04-26 | 2027-05-17 | 28BW90-014 SS+10d |  | 2027-02-02 | 2027-02-23 | 244.3d | 0d |  |  | HydroIns | 28BW90 | Elektryc | Budowa | Roboty | Piotr | Wyspa | PM000 | Zespó³-K | Wspólne | Normalny | Pakiet | L2 | Rev C |
| 28BW90-049 |  | Uk³adanie kabli – trasa 06 |  | 8d | 2027-04-26 | 2027-05-05 | 28BW90-014 SS+10d |  | 2027-02-02 | 2027-02-11 | 252.3d | 0d |  |  | HydroIns | 28BW90 | Elektryc | Budowa | Roboty | Piotr | Wyspa | PM000 | Zespó³-W | Wspólne | Wysoki | Pakiet | L2 |  |
| 28BW90-061 |  | Uk³adanie kabli – trasa 08 |  | 11d | 2027-04-26 | 2027-05-10 | 28BW90-014 SS+10d |  | 2027-02-02 | 2027-02-16 | 249.3d | 0d |  |  | HydroIns | 28BW90 | Elektryc | Budowa | Roboty | Piotr | Wyspa | PM000 | Zespó³-K | Wspólne | Normalny | Pakiet | L2 |  |
| 28BW90-073 |  | Uk³adanie kabli – trasa 10 |  | 19d | 2027-04-26 | 2027-05-20 | 28BW90-014 SS+10d |  | 2027-02-02 | 2027-02-26 | 241.3d | 0d |  | Uzgodnione na koordynacji | HydroIns | 28BW90 | Elektryc | Budowa | Roboty | Piotr | Wyspa | PM000 | Zespó³-W | Wspólne | Normalny | Pakiet | L2 |  |
| 28BW90-085 |  | Uk³adanie kabli – trasa 12 |  | 4d | 2027-04-26 | 2027-04-29 | 28BW90-014 SS+10d |  | 2027-02-02 | 2027-02-05 | 256.3d | 0d |  |  | HydroIns | 28BW90 | Elektryc | Budowa | Roboty | Piotr | Wyspa | PM000 | Zespó³-E | Wspólne | Normalny | Pakiet | L2 |  |
| 28BW90-097 |  | Uk³adanie kabli – trasa 14 |  | 8d | 2027-04-26 | 2027-05-05 | 28BW90-014 SS+10d |  | 2027-02-02 | 2027-02-11 | 219.3d | 0d |  | Ryzyko opóŸnienia | HydroIns | 28BW90 | Elektryc | Budowa | Roboty | Piotr | Wyspa | PM000 | Zespó³-W | Wspólne | Wysoki | Pakiet | L2 |  |
| 28BW90-062 |  | Pod³¹czenia i pomiary – trasa 08 |  | 10d | 2027-04-27 | 2027-05-10 | 28BW90-061 FF |  | 2027-02-03 | 2027-02-16 | 249.3d | 0d |  |  | HydroIns | 28BW90 | Elektryc | Budowa | Roboty | Piotr | Wyspa | PM000 | Zespó³-W | Wspólne | Normalny | Pakiet | L2 |  |
| 28BW90-086 |  | Pod³¹czenia i pomiary – trasa 12 |  | 3d | 2027-04-27 | 2027-04-29 | 28BW90-085 FF |  | 2027-02-03 | 2027-02-05 | 256.3d | 0d |  |  | HydroIns | 28BW90 | Elektryc | Budowa | Roboty | Piotr | Wyspa | PM000 | Zespó³-W | Wspólne | Normalny | Pakiet | L2 | Rev C |
| 28BW90-098 |  | Pod³¹czenia i pomiary – trasa 14 |  | 7d | 2027-04-27 | 2027-05-05 | 28BW90-097 FF |  | 2027-02-03 | 2027-02-11 | 219.3d | 0d |  |  | HydroIns | 28BW90 | Elektryc | Budowa | Roboty | Piotr | Wyspa | PM000 | Zespó³-K | Wspólne | Normalny | Pakiet | L2 |  |
| 28BW90-026 |  | Pod³¹czenia i pomiary – trasa 02 |  | 8d | 2027-04-28 | 2027-05-07 | 28BW90-025 FF |  | 2027-02-04 | 2027-02-15 | 217.3d | 0d |  |  | HydroIns | 28BW90 | Elektryc | Budowa | Roboty | Piotr | Wyspa | PM000 | Zespó³-W | Wspólne | Normalny | Pakiet | L2 |  |
| 28BW90-050 |  | Pod³¹czenia i pomiary – trasa 06 |  | 3d | 2027-05-03 | 2027-05-05 | 28BW90-049 FF |  | 2027-02-09 | 2027-02-11 | 252.3d | 0d |  |  | HydroIns | 28BW90 | Elektryc | Budowa | Roboty | Piotr | Wyspa | PM000 | Zespó³-W | Wspólne | Niski | Pakiet | L2 | Rev A |
| 28BW90-038 |  | Pod³¹czenia i pomiary – trasa 04 |  | 6d | 2027-05-10 | 2027-05-17 | 28BW90-037 FF |  | 2027-02-16 | 2027-02-23 | 244.3d | 0d |  | Do weryfikacji z wykonawc¹ | HydroIns | 28BW90 | Elektryc | Budowa | Roboty | Piotr | Wyspa | PM000 | Zespó³-K | Wspólne | Normalny | Pakiet | L2 |  |
| 28BW90-074 |  | Pod³¹czenia i pomiary – trasa 10 |  | 4d | 2027-05-17 | 2027-05-20 | 28BW90-073 FF |  | 2027-02-23 | 2027-02-26 | 241.3d | 0d |  | Do weryfikacji z wykonawc¹ | HydroIns | 28BW90 | Elektryc | Budowa | Roboty | Piotr | Wyspa | PM000 | Zespó³-K | Wspólne | Niski | Pakiet | L2 |  |
|  | MONTA¯ | **Monta¿** |  |  | 2025-11-27 | 2027-12-22 |  |  |  |  |  |  |  |  |  |  |  |  |  |  |  |  |  |  |  |  |  |  |
| 28BW90-013 |  | Monta¿ konstrukcji stalowych |  | 33d | 2025-11-27 A | 2026-01-13 A | 28BW90-012 | 100% | 2025-11-28 | 2026-01-13 |  |  |  | Do weryfikacji z wykonawc¹ | HydroIns | 28BW90 | Mechanic | Budowa | Roboty | Piotr | Wyspa | PM000 | Zespó³-K | Wspólne | Normalny | Pakiet | L2 |  |
| 28BW90-014 |  | Monta¿ urz¹dzeñ g³ównych |  | 48d | 2027-04-12 | 2027-06-16 | 28BW90-013, 28BW90-011 |  | 2027-01-19 | 2027-03-25 | 189.3d | 0d |  |  | HydroIns | 28BW90 | Mechanic | Budowa | Roboty | Piotr | Wyspa | PM000 | Zespó³-W | Wspólne | Normalny | Pakiet | L2 | Rev C |
| 28BW90-105 |  | KM: Zakoñczenie monta¿u – Uk³ad by-pass pary | milestone | 0d | 2027-12-22 | 2027-12-22 | 28BW90-096, 28BW90-098, 28BW90-103, 28BW90-104, 28BW90-014 |  | 2027-03-26 | 2027-03-26 | 55.6d | 0d |  |  | HydroIns | 28BW90 | Mechanic | Budowa | Kamieñ | Piotr | Wyspa | PM000 | Zespó³-K | Wspólne | Niski | Pakiet | L2 |  |

| ID | WBS | Activity | Duration | Start | Finish | Predecessors | Complete | Planned start | Planned finish | Total float | Free float | Calendar | Uwagi harmonogramisty | AC_Wykonawca | AC_Obiekt | AC_Dyscyplina | AC_Faza | AC_Zakres | AC_Opiekun | AC_Obszar | AC_PP_PM | AC_Zespol | AC_Blok | AC_Priorytet | AC_Pakiet | AC_Poziom | Rewizja dokumentu |
| --- | --- | --- | --- | --- | --- | --- | --- | --- | --- | --- | --- | --- | --- | --- | --- | --- | --- | --- | --- | --- | --- | --- | --- | --- | --- | --- | --- |
|  | ROBOTY BUD | **Roboty budowlane** |  | 2025-11-03 | 2025-12-04 |  |  |  |  |  |  |  |  |  |  |  |  |  |  |  |  |  |  |  |  |  |  |
| 28BW90-012 |  | Fundamenty i roboty ziemne | 21d | 2025-11-03 A | 2025-12-04 A | 28BW90-007 FS+4d | 100% | 2025-10-30 | 2025-11-27 |  |  |  | Bez uwag | HydroIns | 28BW90 | Budowlan | Budowa | Roboty | Piotr | Wyspa | PM000 | Zespó³-K | Wspólne | Normalny | Pakiet | L2 |  |
|  | RUROCI¥GI | **Ruroci¹gi** |  | 2025-12-01 | 2027-12-30 |  |  |  |  |  |  |  |  |  |  |  |  |  |  |  |  |  |  |  |  |  |  |
|  | SEKCJA 01 | **Sekcja 01** |  | 2025-12-01 | 2027-06-03 |  |  |  |  |  |  |  |  |  |  |  |  |  |  |  |  |  |  |  |  |  |  |
| 28BW90-015 |  | Prefabrykacja ruroci¹gów – Sekcja 01 | 13.3d | 2025-12-01 A | 2025-12-17 A | 28BW90-012 | 100% | 2025-11-28 | 2025-12-16 |  |  |  |  | HydroIns | 28BW90 | Ruroci¹g | Budowa | Roboty | Piotr | Wyspa | PM000 | Zespó³-K | Wspólne | Normalny | Pakiet | L2 |  |
| 28BW90-016 |  | Monta¿ ruroci¹gów – Sekcja 01 | 17.2d | 2027-04-15 | 2027-05-07 | 28BW90-015, 28BW90-014 SS+3d |  | 2027-01-22 | 2027-02-15 | 198.1d | 0d | Kalendarz 6-dniowy |  | HydroIns | 28BW90 | Ruroci¹g | Budowa | Roboty | Piotr | Wyspa | PM000 | Zespó³-W | Wspólne | Normalny | Pakiet | L2 | Rev B |
| 28BW90-017 |  | Próba ciœnieniowa – Sekcja 01 | 5d | 2027-05-10 | 2027-05-14 | 28BW90-016 |  | 2027-02-16 | 2027-02-22 | 198.1d | 0d | Kalendarz 6-dniowy |  | HydroIns | 28BW90 | Ruroci¹g | Budowa | Roboty | Piotr | Wyspa | PM000 | Zespó³-W | Wspólne | Niski | Pakiet | L2 | Rev B |
| 28BW90-018 |  | Izolacje – Sekcja 01 | 12d | 2027-05-17 | 2027-06-01 | 28BW90-017 |  | 2027-02-23 | 2027-03-10 | 198.1d | 0d |  |  | HydroIns | 28BW90 | Ruroci¹g | Budowa | Roboty | Piotr | Wyspa | PM000 | Zespó³-K | Wspólne | Wysoki | Pakiet | L2 | Rev A |
| 28BW90-019 |  | Malowanie i oznakowanie – Sekcja 01 | 4d | 2027-05-31 | 2027-06-03 | 28BW90-018 FF+2d |  | 2027-03-09 | 2027-03-12 | 198.1d | 0d |  | Bez uwag | HydroIns | 28BW90 | Ruroci¹g | Budowa | Roboty | Piotr | Wyspa | PM000 | Zespó³-W | Wspólne | Normalny | Pakiet | L2 |  |
|  | SEKCJA 02 | **Sekcja 02** |  | 2025-12-09 | 2027-05-20 |  |  |  |  |  |  |  |  |  |  |  |  |  |  |  |  |  |  |  |  |  |  |
| 28BW90-020 |  | Prefabrykacja ruroci¹gów – Sekcja 02 | 10d | 2025-12-09 A | 2025-12-23 A | 28BW90-012, 28BW90-015 SS+5d | 100% | 2025-12-05 | 2025-12-18 |  |  |  |  | HydroIns | 28BW90 | Ruroci¹g | Budowa | Roboty | Piotr | Wyspa | PM000 | Zespó³-W | Wspólne | Niski | Pakiet | L2 |  |
| 28BW90-021 |  | Monta¿ ruroci¹gów – Sekcja 02 | 13d | 2027-04-20 | 2027-05-06 | 28BW90-020, 28BW90-014 SS+6d |  | 2027-01-27 | 2027-02-12 | 208.3d | 0d |  |  | HydroIns | 28BW90 | Ruroci¹g | Budowa | Roboty | Piotr | Wyspa | PM000 | Zespó³-W | Wspólne | Normalny | Pakiet | L2 |  |
| 28BW90-022 |  | Próba ciœnieniowa – Sekcja 02 | 2d | 2027-05-07 | 2027-05-10 | 28BW90-021 |  | 2027-02-15 | 2027-02-16 | 208.3d | 0d |  |  | HydroIns | 28BW90 | Ruroci¹g | Budowa | Roboty | Piotr | Wyspa | PM000 | Zespó³-K | Wspólne | Normalny | Pakiet | L2 |  |
| 28BW90-023 |  | Izolacje – Sekcja 02 | 6d | 2027-05-11 | 2027-05-18 | 28BW90-022 |  | 2027-02-17 | 2027-02-24 | 208.3d | 0d |  |  | HydroIns | 28BW90 | Ruroci¹g | Budowa | Roboty | Piotr | Wyspa | PM000 | Zespó³-W | Wspólne | Normalny | Pakiet | L2 |  |
| 28BW90-024 |  | Malowanie i oznakowanie – Sekcja 02 | 4d | 2027-05-17 | 2027-05-20 | 28BW90-023 FF+2d |  | 2027-02-23 | 2027-02-26 | 208.3d | 0d |  | Czeka na dostawê | HydroIns | 28BW90 | Ruroci¹g | Budowa | Roboty | Piotr | Wyspa | PM000 | Zespó³-K | Wspólne | Normalny | Pakiet | L2 |  |
|  | SEKCJA 03 | **Sekcja 03** |  | 2025-12-12 | 2027-06-04 |  |  |  |  |  |  |  |  |  |  |  |  |  |  |  |  |  |  |  |  |  |  |
|  | PODSEKCJA | **Podsekcja 03.A** |  | 2025-12-12 | 2027-06-04 |  |  |  |  |  |  |  |  |  |  |  |  |  |  |  |  |  |  |  |  |  |  |
| 28BW90-027 |  | Prefabrykacja ruroci¹gów – Sekcja 03 | 14.4d | 2025-12-12 A | 2026-01-01 A | 28BW90-012, 28BW90-020 SS+5d | 100% | 2025-12-12 | 2025-12-31 |  |  |  |  | HydroIns | 28BW90 | Ruroci¹g | Budowa | Roboty | Piotr | Wyspa | PM000 | Zespó³-K | Wspólne | Wysoki | Pakiet | L2 | Rev B |
| 28BW90-028 |  | Monta¿ ruroci¹gów – Sekcja 03 | 23.4d | 2027-04-19 | 2027-05-19 | 28BW90-027, 28BW90-014 SS+5d |  | 2027-01-26 | 2027-02-25 | 229.9d | 0d | Kalendarz 6-dniowy |  | HydroIns | 28BW90 | Ruroci¹g | Budowa | Roboty | Piotr | Wyspa | PM000 | Zespó³-K | Wspólne | Normalny | Pakiet | L2 | Rev C |
| 28BW90-029 |  | Próba ciœnieniowa – Sekcja 03 | 3d | 2027-05-20 | 2027-05-24 | 28BW90-028 |  | 2027-02-26 | 2027-03-02 | 229.9d | 0d |  |  | HydroIns | 28BW90 | Ruroci¹g | Budowa | Roboty | Piotr | Wyspa | PM000 | Zespó³-W | Wspólne | Normalny | Pakiet | L2 | Rev B |
| 28BW90-030 |  | Izolacje – Sekcja 03 | 7d | 2027-05-25 | 2027-06-02 | 28BW90-029 |  | 2027-03-03 | 2027-03-11 | 229.9d | 0d |  |  | HydroIns | 28BW90 | Ruroci¹g | Budowa | Roboty | Piotr | Wyspa | PM000 | Zespó³-W | Wspólne | Normalny | Pakiet | L2 |  |
| 28BW90-031 |  | Malowanie i oznakowanie – Sekcja 03 | 2d | 2027-06-03 | 2027-06-04 | 28BW90-030 FF+2d |  | 2027-03-12 | 2027-03-15 | 229.9d | 0d |  | Do weryfikacji z wykonawc¹ | HydroIns | 28BW90 | Ruroci¹g | Budowa | Roboty | Piotr | Wyspa | PM000 | Zespó³-W | Wspólne | Normalny | Pakiet | L2 | Rev C |
|  | SEKCJA 04 | **Sekcja 04** |  | 2025-12-24 | 2027-05-18 |  |  |  |  |  |  |  |  |  |  |  |  |  |  |  |  |  |  |  |  |  |  |
| 28BW90-032 |  | Prefabrykacja ruroci¹gów – Sekcja 04 | 6.1d | 2025-12-24 A | 2026-01-02 A | 28BW90-012, 28BW90-027 SS+5d | 100% | 2025-12-19 | 2025-12-26 |  |  |  |  | HydroIns | 28BW90 | Ruroci¹g | Budowa | Roboty | Piotr | Wyspa | PM000 | Zespó³-W | Wspólne | Normalny | Pakiet | L2 |  |
| 28BW90-033 |  | Monta¿ ruroci¹gów – Sekcja 04 | 17.6d | 2027-04-12 | 2027-05-04 | 28BW90-032, 28BW90-014 SS |  | 2027-01-19 | 2027-02-10 | 242.7d | 0d |  |  | HydroIns | 28BW90 | Ruroci¹g | Budowa | Roboty | Piotr | Wyspa | PM000 | Zespó³-W | Wspólne | Wysoki | Pakiet | L2 |  |
| 28BW90-034 |  | Próba ciœnieniowa – Sekcja 04 | 5d | 2027-05-05 | 2027-05-11 | 28BW90-033 |  | 2027-02-11 | 2027-02-17 | 242.7d | 0d | Kalendarz 6-dniowy |  | HydroIns | 28BW90 | Ruroci¹g | Budowa | Roboty | Piotr | Wyspa | PM000 | Zespó³-W | Wspólne | Niski | Pakiet | L2 | Rev C |
| 28BW90-036 |  | Malowanie i oznakowanie – Sekcja 04 | 8d | 2027-05-07 | 2027-05-18 | 28BW90-035 FF+2d |  | 2027-02-15 | 2027-02-24 | 242.7d | 0d |  | Ryzyko opóŸnienia | HydroIns | 28BW90 | Ruroci¹g | Budowa | Roboty | Piotr | Wyspa | PM000 | Zespó³-K | Wspólne | Normalny | Pakiet | L2 |  |
| 28BW90-035 |  | Izolacje – Sekcja 04 | 3d | 2027-05-12 | 2027-05-14 | 28BW90-034 |  | 2027-02-18 | 2027-02-22 | 242.7d | 0d |  |  | HydroIns | 28BW90 | Ruroci¹g | Budowa | Roboty | Piotr | Wyspa | PM000 | Zespó³-W | Wspólne | Wysoki | Pakiet | L2 |  |

| ID | WBS | Activity | Duration | Start | Finish | Predecessors | Complete | Planned start | Planned finish | Total float | Free float | Rewizja dokumentu | AC_Wykonawca | AC_Obiekt | AC_Dyscyplina | AC_Faza | AC_Zakres | AC_Opiekun | AC_Obszar | AC_PP_PM | AC_Zespol | AC_Blok | AC_Priorytet | AC_Pakiet | AC_Poziom | Uwagi harmonogramisty |
| --- | --- | --- | --- | --- | --- | --- | --- | --- | --- | --- | --- | --- | --- | --- | --- | --- | --- | --- | --- | --- | --- | --- | --- | --- | --- | --- |
|  | SEKCJA 05 | **Sekcja 05** |  | 2025-12-31 | 2027-05-28 |  |  |  |  |  |  |  |  |  |  |  |  |  |  |  |  |  |  |  |  |  |
| 28BW90-039 |  | Prefabrykacja ruroci¹gów – Sekcja 05 | 5.7d | 2025-12-31 A | 2026-01-06 A | 28BW90-012, 28BW90-032 SS+5d | 100% | 2025-12-26 | 2026-01-01 |  |  | Rev C | HydroIns | 28BW90 | Ruroci¹g | Budowa | Roboty | Piotr | Wyspa | PM000 | Zespó³-W | Wspólne | Wysoki | Pakiet | L2 |  |
| 28BW90-040 |  | Monta¿ ruroci¹gów – Sekcja 05 | 17.6d | 2027-04-21 | 2027-05-13 | 28BW90-039, 28BW90-014 SS+7d |  | 2027-01-28 | 2027-02-19 | 234.7d | 0d | Rev B | HydroIns | 28BW90 | Ruroci¹g | Budowa | Roboty | Piotr | Wyspa | PM000 | Zespó³-K | Wspólne | Normalny | Pakiet | L2 |  |
| 28BW90-041 |  | Próba ciœnieniowa – Sekcja 05 | 6d | 2027-05-14 | 2027-05-21 | 28BW90-040 |  | 2027-02-22 | 2027-03-01 | 234.7d | 0d |  | HydroIns | 28BW90 | Ruroci¹g | Budowa | Roboty | Piotr | Wyspa | PM000 | Zespó³-W | Wspólne | Niski | Pakiet | L2 |  |
| 28BW90-043 |  | Malowanie i oznakowanie – Sekcja 05 | 7d | 2027-05-20 | 2027-05-28 | 28BW90-042 FF+2d |  | 2027-02-26 | 2027-03-08 | 234.7d | 0d |  | HydroIns | 28BW90 | Ruroci¹g | Budowa | Roboty | Piotr | Wyspa | PM000 | Zespó³-K | Wspólne | Normalny | Pakiet | L2 |  |
| 28BW90-042 |  | Izolacje – Sekcja 05 | 3d | 2027-05-24 | 2027-05-26 | 28BW90-041 |  | 2027-03-02 | 2027-03-04 | 234.7d | 0d |  | HydroIns | 28BW90 | Ruroci¹g | Budowa | Roboty | Piotr | Wyspa | PM000 | Zespó³-K | Wspólne | Wysoki | Pakiet | L2 | Do weryfikacji z wykonawc¹ |
|  | SEKCJA 06 | **Sekcja 06** |  | 2026-01-02 | 2027-06-10 |  |  |  |  |  |  |  |  |  |  |  |  |  |  |  |  |  |  |  |  |  |
|  | PODSEKCJA | **Podsekcja 06.A** |  | 2026-01-02 | 2027-06-10 |  |  |  |  |  |  |  |  |  |  |  |  |  |  |  |  |  |  |  |  |  |
| 28BW90-044 |  | Prefabrykacja ruroci¹gów – Sekcja 06 | 6.7d | 2026-01-02 A | 2026-01-13 A | 28BW90-012, 28BW90-039 SS+5d | 100% | 2026-01-02 | 2026-01-09 |  |  |  | HydroIns | 28BW90 | Ruroci¹g | Budowa | Roboty | Piotr | Wyspa | PM000 | Zespó³-K | Wspólne | Niski | Pakiet | L2 |  |
| 28BW90-045 |  | Monta¿ ruroci¹gów – Sekcja 06 | 21.3d | 2027-04-22 | 2027-05-20 | 28BW90-044, 28BW90-014 SS+8d |  | 2027-01-29 | 2027-02-26 | 226d | 0d |  | HydroIns | 28BW90 | Ruroci¹g | Budowa | Roboty | Piotr | Wyspa | PM000 | Zespó³-W | Wspólne | Wysoki | Pakiet | L2 |  |
| 28BW90-046 |  | Próba ciœnieniowa – Sekcja 06 | 2d | 2027-05-21 | 2027-05-24 | 28BW90-045 |  | 2027-03-01 | 2027-03-02 | 226d | 0d |  | HydroIns | 28BW90 | Ruroci¹g | Budowa | Roboty | Piotr | Wyspa | PM200 | Zespó³-E | Wspólne | Normalny | Pakiet | L2 |  |
| 28BW90-047 |  | Izolacje – Sekcja 06 | 11d | 2027-05-25 | 2027-06-08 | 28BW90-046 |  | 2027-03-03 | 2027-03-17 | 226d | 0d |  | HydroIns | 28BW90 | Ruroci¹g | Budowa | Roboty | Piotr | Wyspa | PM000 | Zespó³-W | Wspólne | Krytyczn | Pakiet | L2 | Czeka na dostawê |
| 28BW90-048 |  | Malowanie i oznakowanie – Sekcja 06 | 4d | 2027-06-07 | 2027-06-10 | 28BW90-047 FF+2d |  | 2027-03-16 | 2027-03-19 | 226d | 0d |  | HydroIns | 28BW90 | Ruroci¹g | Budowa | Roboty | Piotr | Wyspa | PM000 | Zespó³-K | Wspólne | Niski | Pakiet | L2 |  |
|  | SEKCJA 07 | **Sekcja 07** |  | 2026-01-08 | 2027-05-13 |  |  |  |  |  |  |  |  |  |  |  |  |  |  |  |  |  |  |  |  |  |
| 28BW90-051 |  | Prefabrykacja ruroci¹gów – Sekcja 07 | 5.8d | 2026-01-08 A | 2026-01-14 A | 28BW90-012, 28BW90-044 SS+5d | 100% | 2026-01-09 | 2026-01-15 |  |  | Rev A | HydroIns | 28BW90 | Ruroci¹g | Budowa | Roboty | Piotr | Wyspa | PM000 | Zespó³-K | Wspólne | Wysoki | Pakiet | L2 |  |
| 28BW90-052 |  | Monta¿ ruroci¹gów – Sekcja 07 | 12.1d | 2027-04-12 | 2027-04-27 | 28BW90-051, 28BW90-014 SS |  | 2027-01-19 | 2027-02-03 | 246.2d | 0d |  | HydroIns | 28BW90 | Ruroci¹g | Budowa | Roboty | Piotr | Wyspa | PM000 | Zespó³-W | Wspólne | Normalny | Pakiet | L2 |  |
| 28BW90-053 |  | Próba ciœnieniowa – Sekcja 07 | 3d | 2027-04-28 | 2027-04-30 | 28BW90-052 |  | 2027-02-04 | 2027-02-08 | 246.2d | 0d | Rev C | HydroIns | 28BW90 | Ruroci¹g | Budowa | Roboty | Piotr | Wyspa | PM000 | Zespó³-K | Wspólne | Normalny | Pakiet | L2 |  |
| 28BW90-054 |  | Izolacje – Sekcja 07 | 7d | 2027-05-03 | 2027-05-11 | 28BW90-053 |  | 2027-02-09 | 2027-02-17 | 246.2d | 0d | Rev B | HydroIns | 28BW90 | Ruroci¹g | Budowa | Roboty | Piotr | Wyspa | PM000 | Zespó³-W | Wspólne | Normalny | Pakiet | L2 |  |
| 28BW90-055 |  | Malowanie i oznakowanie – Sekcja 07 | 5d | 2027-05-07 | 2027-05-13 | 28BW90-054 FF+2d |  | 2027-02-15 | 2027-02-19 | 246.2d | 0d |  | HydroIns | 28BW90 | Ruroci¹g | Budowa | Roboty | Piotr | Wyspa | PM000 | Zespó³-W | Wspólne | Normalny | Pakiet | L2 |  |
|  | SEKCJA 08 | **Sekcja 08** |  | 2026-01-21 | 2027-05-14 |  |  |  |  |  |  |  |  |  |  |  |  |  |  |  |  |  |  |  |  |  |
| 28BW90-056 |  | Prefabrykacja ruroci¹gów – Sekcja 08 | 4.6d | 2026-01-21 A | 2026-01-26 A | 28BW90-012, 28BW90-051 SS+5d | 100% | 2026-01-16 | 2026-01-21 |  |  |  | HydroIns | 28BW90 | Ruroci¹g | Budowa | Roboty | Piotr | Wyspa | PM000 | Zespó³-K | Wspólne | Normalny | Pakiet | L2 | Uzgodnione na koordynacji |
| 28BW90-057 |  | Monta¿ ruroci¹gów – Sekcja 08 | 10.5d | 2027-04-21 | 2027-05-04 | 28BW90-056, 28BW90-014 SS+7d |  | 2027-01-28 | 2027-02-10 | 244.8d | 0d | Rev C | HydroIns | 28BW90 | Ruroci¹g | Budowa | Roboty | Piotr | Wyspa | PM000 | Zespó³-K | Wspólne | Normalny | Pakiet | L2 |  |
| 28BW90-058 |  | Próba ciœnieniowa – Sekcja 08 | 3d | 2027-05-05 | 2027-05-07 | 28BW90-057 |  | 2027-02-11 | 2027-02-15 | 244.8d | 0d |  | HydroIns | 28BW90 | Ruroci¹g | Budowa | Roboty | Piotr | Wyspa | PM000 | Zespó³-W | Wspólne | Normalny | Pakiet | L2 |  |
| 28BW90-060 |  | Malowanie i oznakowanie – Sekcja 08 | 6d | 2027-05-07 | 2027-05-14 | 28BW90-059 FF+2d |  | 2027-02-15 | 2027-02-22 | 244.8d | 0d | Rev A | HydroIns | 28BW90 | Ruroci¹g | Budowa | Roboty | Piotr | Wyspa | PM000 | Zespó³-K | Wspólne | Normalny | Pakiet | L2 |  |
| 28BW90-059 |  | Izolacje – Sekcja 08 | 3d | 2027-05-10 | 2027-05-12 | 28BW90-058 |  | 2027-02-16 | 2027-02-18 | 244.8d | 0d | Rev C | HydroIns | 28BW90 | Ruroci¹g | Budowa | Roboty | Piotr | Wyspa | PM000 | Zespó³-W | Wspólne | Normalny | Pakiet | L2 |  |

| ID | WBS | Activity | Duration | Start | Finish | Predecessors | Complete | Planned start | Planned finish | Total float | Free float | Calendar | AC_Wykonawca | AC_Obiekt | AC_Dyscyplina | AC_Faza | AC_Zakres | AC_Opiekun | AC_Obszar | AC_PP_PM | AC_Zespol | AC_Blok | AC_Priorytet | AC_Pakiet | AC_Poziom | Uwagi harmonogramisty | Rewizja dokumentu |
| --- | --- | --- | --- | --- | --- | --- | --- | --- | --- | --- | --- | --- | --- | --- | --- | --- | --- | --- | --- | --- | --- | --- | --- | --- | --- | --- | --- |
|  | SEKCJA 09 | **Sekcja 09** |  | 2026-01-27 | 2027-05-26 |  |  |  |  |  |  |  |  |  |  |  |  |  |  |  |  |  |  |  |  |  |  |
|  | PODSEKCJA | **Podsekcja 09.A** |  | 2026-01-27 | 2027-05-26 |  |  |  |  |  |  |  |  |  |  |  |  |  |  |  |  |  |  |  |  |  |  |
| 28BW90-063 |  | Prefabrykacja ruroci¹gów – Sekcja 09 | 4.8d | 2026-01-27 A | 2026-02-04 A | 28BW90-012, 28BW90-056 SS+5d | 100% | 2026-01-23 | 2026-01-28 |  |  |  | HydroIns | 28BW90 | Ruroci¹g | Budowa | Roboty | Piotr | Wyspa | PM000 | Zespó³-K | Wspólne | Wysoki | Pakiet | L2 |  |  |
| 28BW90-064 |  | Monta¿ ruroci¹gów – Sekcja 09 | 13.6d | 2027-04-20 | 2027-05-06 | 28BW90-063, 28BW90-014 SS+6d |  | 2027-01-27 | 2027-02-12 | 236.7d | 0d |  | HydroIns | 28BW90 | Ruroci¹g | Budowa | Roboty | Piotr | Wyspa | PM000 | Zespó³-K | Wspólne | Normalny | Pakiet | L2 |  |  |
| 28BW90-065 |  | Próba ciœnieniowa – Sekcja 09 | 3d | 2027-05-07 | 2027-05-11 | 28BW90-064 |  | 2027-02-15 | 2027-02-17 | 236.7d | 0d |  | HydroIns | 28BW90 | Ruroci¹g | Budowa | Roboty | Piotr | Wyspa | PM000 | Zespó³-K | Wspólne | Krytyczn | Pakiet | L2 |  |  |
| 28BW90-066 |  | Izolacje – Sekcja 09 | 9d | 2027-05-12 | 2027-05-24 | 28BW90-065 |  | 2027-02-18 | 2027-03-02 | 236.7d | 0d |  | HydroIns | 28BW90 | Ruroci¹g | Budowa | Roboty | Piotr | Wyspa | PM000 | Zespó³-I | Wspólne | Normalny | Pakiet | L2 | Uzgodnione na koordynacji | Rev A |
| 28BW90-067 |  | Malowanie i oznakowanie – Sekcja 09 | 2d | 2027-05-25 | 2027-05-26 | 28BW90-066 FF+2d |  | 2027-03-03 | 2027-03-04 | 236.7d | 0d | Kalendarz 6-dniowy | HydroIns | 28BW90 | Ruroci¹g | Budowa | Roboty | Piotr | Wyspa | PM000 | Zespó³-W | Wspólne | Wysoki | Pakiet | L2 |  |  |
|  | SEKCJA 10 | **Sekcja 10** |  | 2026-02-02 | 2027-12-30 |  |  |  |  |  |  |  |  |  |  |  |  |  |  |  |  |  |  |  |  |  |  |
| 28BW90-068 |  | Prefabrykacja ruroci¹gów – Sekcja 10 | 6.2d | 2026-02-02 A | 2026-02-10 A | 28BW90-012, 28BW90-063 SS+5d | 100% | 2026-01-30 | 2026-02-06 |  |  |  | HydroIns | 28BW90 | Ruroci¹g | Budowa | Roboty | Piotr | Wyspa | PM000 | Zespó³-W | Wspólne | Normalny | Pakiet | L2 |  |  |
| 28BW90-069 |  | Monta¿ ruroci¹gów – Sekcja 10 | 20.6d | 2027-04-13 | 2027-05-10 | 28BW90-068, 28BW90-014 SS+1d |  | 2027-01-20 | 2027-02-16 | 235.7d | 0d |  | HydroIns | 28BW90 | Ruroci¹g | Budowa | Roboty | Piotr | Wyspa | PM000 | Zespó³-K | Wspólne | Normalny | Pakiet | L2 | Czeka na dostawê |  |
| 28BW90-070 |  | Próba ciœnieniowa – Sekcja 10 | 4d | 2027-05-11 | 2027-05-14 | 28BW90-069 |  | 2027-02-17 | 2027-02-22 | 235.7d | 0d |  | HydroIns | 28BW90 | Ruroci¹g | Budowa | Roboty | Piotr | Wyspa | PM000 | Zespó³-K | Wspólne | Normalny | Pakiet | L2 |  |  |
| 28BW90-071 |  | Izolacje – Sekcja 10 | 7d | 2027-05-17 | 2027-05-25 | 28BW90-070 |  | 2027-02-23 | 2027-03-03 | 235.7d | 0d |  | HydroIns | 28BW90 | Ruroci¹g | Budowa | Roboty | Piotr | Wyspa | PM000 | Zespó³-K | Wspólne | Niski | Pakiet | L2 | Do weryfikacji z wykonawc¹ | Rev C |
| 28BW90-072 |  | Malowanie i oznakowanie – Sekcja 10 | 7d | 2027-12-22 | 2027-12-30 | 28BW90-071 FF+2d |  | 2027-02-25 | 2027-03-05 | 81.6d | 0d |  | HydroIns | 28BW90 | Ruroci¹g | Budowa | Roboty | Piotr | Wyspa | PM000 | Zespó³-E | Wspólne | Normalny | Pakiet | L2 |  |  |
|  | SEKCJA 11 | **Sekcja 11** |  | 2026-02-06 | 2027-05-25 |  |  |  |  |  |  |  |  |  |  |  |  |  |  |  |  |  |  |  |  |  |  |
| 28BW90-075 |  | Prefabrykacja ruroci¹gów – Sekcja 11 | 3.4d | 2026-02-06 A | 2026-02-11 A | 28BW90-012, 28BW90-068 SS+5d | 100% | 2026-02-06 | 2026-02-10 |  |  |  | HydroIns | 28BW90 | Ruroci¹g | Budowa | Roboty | Piotr | Wyspa | PM000 | Zespó³-W | Wspólne | Normalny | Pakiet | L2 |  |  |
| 28BW90-076 |  | Monta¿ ruroci¹gów – Sekcja 11 | 19.5d | 2027-04-13 | 2027-05-07 | 28BW90-075, 28BW90-014 SS+1d |  | 2027-01-20 | 2027-02-15 | 237.8d | 0d |  | HydroIns | 28BW90 | Ruroci¹g | Budowa | Roboty | Piotr | Wyspa | PM000 | Zespó³-K | Wspólne | Normalny | Pakiet | L2 | Do weryfikacji z wykonawc¹ |  |
| 28BW90-077 |  | Próba ciœnieniowa – Sekcja 11 | 5d | 2027-05-10 | 2027-05-14 | 28BW90-076 |  | 2027-02-16 | 2027-02-22 | 237.8d | 0d |  | HydroIns | 28BW90 | Ruroci¹g | Budowa | Roboty | Piotr | Wyspa | PM000 | Zespó³-W | Wspólne | Normalny | Pakiet | L2 |  |  |
| 28BW90-078 |  | Izolacje – Sekcja 11 | 5d | 2027-05-17 | 2027-05-21 | 28BW90-077 |  | 2027-02-23 | 2027-03-01 | 237.8d | 0d |  | HydroIns | 28BW90 | Ruroci¹g | Budowa | Roboty | Piotr | Wyspa | PM000 | Zespó³-W | Wspólne | Normalny | Pakiet | L2 | Uzgodnione na koordynacji | Rev B |
| 28BW90-079 |  | Malowanie i oznakowanie – Sekcja 11 | 4d | 2027-05-20 | 2027-05-25 | 28BW90-078 FF+2d |  | 2027-02-26 | 2027-03-03 | 237.8d | 0d |  | HydroIns | 28BW90 | Ruroci¹g | Budowa | Roboty | Piotr | Wyspa | PM000 | Zespó³-K | Wspólne | Wysoki | Pakiet | L2 |  | Rev C |
|  | SEKCJA 12 | **Sekcja 12** |  | 2026-02-16 | 2027-11-30 |  |  |  |  |  |  |  |  |  |  |  |  |  |  |  |  |  |  |  |  |  |  |
|  | PODSEKCJA | **Podsekcja 12.A** |  | 2026-02-16 | 2027-11-30 |  |  |  |  |  |  |  |  |  |  |  |  |  |  |  |  |  |  |  |  |  |  |
| 28BW90-080 |  | Prefabrykacja ruroci¹gów – Sekcja 12 | 11.3d | 2026-02-16 A | 2026-03-05 A | 28BW90-012, 28BW90-075 SS+5d | 100% | 2026-02-13 | 2026-02-27 |  |  |  | HydroIns | 28BW90 | Ruroci¹g | Budowa | Roboty | Piotr | Wyspa | PM000 | Zespó³-K | Wspólne | Wysoki | Pakiet | L2 |  | Rev A |
| 28BW90-081 |  | Monta¿ ruroci¹gów – Sekcja 12 | 7d | 2027-04-22 | 2027-04-30 | 28BW90-080, 28BW90-014 SS+8d |  | 2027-01-29 | 2027-02-08 | 240.3d | 0d |  | HydroIns | 28BW90 | Ruroci¹g | Budowa | Roboty | Piotr | Wyspa | PM000 | Zespó³-W | Wspólne | Normalny | Pakiet | L2 |  |  |
| 28BW90-082 |  | Próba ciœnieniowa – Sekcja 12 | 4d | 2027-05-03 | 2027-05-06 | 28BW90-081 |  | 2027-02-09 | 2027-02-12 | 240.3d | 0d |  | HydroIns | 28BW90 | Ruroci¹g | Budowa | Roboty | Piotr | Wyspa | PM000 | Zespó³-W | Wspólne | Normalny | Pakiet | L2 |  | Rev C |
| 28BW90-083 |  | Izolacje – Sekcja 12 | 9d | 2027-11-16 | 2027-11-26 | 28BW90-082 |  | 2027-02-15 | 2027-02-25 | 103.6d | 0d |  | HydroIns | 28BW90 | Ruroci¹g | Budowa | Roboty | Piotr | Wyspa | PM200 | Zespó³-E | Wspólne | Normalny | Pakiet | L2 |  |  |
| 28BW90-084 |  | Malowanie i oznakowanie – Sekcja 12 | 5d | 2027-11-24 | 2027-11-30 | 28BW90-083 FF+2d |  | 2027-02-23 | 2027-03-01 | 103.6d | 0d |  | HydroIns | 28BW90 | Ruroci¹g | Budowa | Roboty | Piotr | Wyspa | PM000 | Zespó³-W | Wspólne | Normalny | Pakiet | L2 |  |  |

| ID | WBS | Activity | Type | Duration | Start | Finish | Predecessors | Complete | Actual finish | Planned start | Planned finish | Total float | Free float | Calendar | Uwagi harmonogramisty | AC_Wykonawca | AC_Obiekt | AC_Dyscyplina | AC_Faza | AC_Zakres | AC_Opiekun | AC_Obszar | AC_PP_PM | AC_Zespol | AC_Blok | AC_Priorytet | AC_Pakiet | AC_Poziom | Rewizja dokumentu |
| --- | --- | --- | --- | --- | --- | --- | --- | --- | --- | --- | --- | --- | --- | --- | --- | --- | --- | --- | --- | --- | --- | --- | --- | --- | --- | --- | --- | --- | --- |
|  | SEKCJA 13 | **Sekcja 13** |  |  | 2026-02-19 | 2027-05-19 |  |  |  |  |  |  |  |  |  |  |  |  |  |  |  |  |  |  |  |  |  |  |  |
| 28BW90-087 |  | Prefabrykacja ruroci¹gów – Sekcja 13 |  | 7.4d | 2026-02-19 A | 2026-03-03 A | 28BW90-012, 28BW90-080 SS+5d | 100% |  | 2026-02-20 | 2026-03-02 |  |  |  | Uzgodnione na koordynacji | HydroIns | 28BW90 | Ruroci¹g | Budowa | Roboty | Piotr | Wyspa | PM000 | Zespó³-W | Wspólne | Normalny | Pakiet | L2 |  |
| 28BW90-088 |  | Monta¿ ruroci¹gów – Sekcja 13 |  | 11.7d | 2027-04-16 | 2027-05-03 | 28BW90-087, 28BW90-014 SS+4d |  |  | 2027-01-25 | 2027-02-08 | 242.6d | 0d |  |  | HydroIns | 28BW90 | Ruroci¹g | Budowa | Roboty | Piotr | Wyspa | PM000 | Zespó³-K | Wspólne | Wysoki | Pakiet | L2 |  |
| 28BW90-089 |  | Próba ciœnieniowa – Sekcja 13 |  | 5d | 2027-05-04 | 2027-05-10 | 28BW90-088 |  |  | 2027-02-09 | 2027-02-15 | 242.6d | 0d |  |  | HydroIns | 28BW90 | Ruroci¹g | Budowa | Roboty | Piotr | Wyspa | PM000 | Zespó³-W | Wspólne | Niski | Pakiet | L2 |  |
| 28BW90-090 |  | Izolacje – Sekcja 13 |  | 5d | 2027-05-11 | 2027-05-17 | 28BW90-089 |  |  | 2027-02-16 | 2027-02-22 | 242.6d | 0d |  |  | HydroIns | 28BW90 | Ruroci¹g | Budowa | Roboty | Piotr | Wyspa | PM000 | Zespó³-K | Wspólne | Wysoki | Pakiet | L2 | Rev A |
| 28BW90-091 |  | Malowanie i oznakowanie – Sekcja 13 |  | 7d | 2027-05-11 | 2027-05-19 | 28BW90-090 FF+2d |  |  | 2027-02-16 | 2027-02-24 | 242.6d | 0d |  |  | HydroIns | 28BW90 | Ruroci¹g | Budowa | Roboty | Piotr | Wyspa | PM200 | Zespó³-I | Wspólne | Wysoki | Pakiet | L2 |  |
|  | SEKCJA 14 | **Sekcja 14** |  |  | 2026-02-27 | 2027-06-02 |  |  |  |  |  |  |  |  |  |  |  |  |  |  |  |  |  |  |  |  |  |  |  |
| 28BW90-092 |  | Prefabrykacja ruroci¹gów – Sekcja 14 |  | 11.7d | 2026-02-27 A | 2026-03-13 A | 28BW90-012, 28BW90-087 SS+5d | 100% |  |  |  |  |  |  |  | HydroIns | 28BW90 | Ruroci¹g | Budowa | Roboty | Piotr | Wyspa | PM200 | Zespó³-I | Wspólne | Wysoki | Pakiet | L2 |  |
| 28BW90-093 |  | Monta¿ ruroci¹gów – Sekcja 14 |  | 16.8d | 2027-04-26 | 2027-05-18 | 28BW90-092, 28BW90-014 SS+10d |  |  | 2027-02-02 | 2027-02-23 | 199.5d | 0d |  |  | HydroIns | 28BW90 | Ruroci¹g | Budowa | Roboty | Piotr | Wyspa | PM000 | Zespó³-K | Wspólne | Normalny | Pakiet | L2 |  |
| 28BW90-094 |  | Próba ciœnieniowa – Sekcja 14 |  | 3d | 2027-05-19 | 2027-05-21 | 28BW90-093 |  |  | 2027-02-24 | 2027-02-26 | 199.5d | 0d |  |  | HydroIns | 28BW90 | Ruroci¹g | Budowa | Roboty | Piotr | Wyspa | PM000 | Zespó³-W | Wspólne | Krytyczn | Pakiet | L2 | Rev C |
| 28BW90-095 |  | Izolacje – Sekcja 14 |  | 6d | 2027-05-24 | 2027-05-31 | 28BW90-094 |  |  | 2027-03-01 | 2027-03-08 | 199.5d | 0d |  | Ryzyko opóŸnienia | HydroIns | 28BW90 | Ruroci¹g | Budowa | Roboty | Piotr | Wyspa | PM000 | Zespó³-W | Wspólne | Normalny | Pakiet | L2 |  |
| 28BW90-096 |  | Malowanie i oznakowanie – Sekcja 14 |  | 6d | 2027-05-26 | 2027-06-02 | 28BW90-095 FF+2d |  |  | 2027-03-03 | 2027-03-10 | 199.5d | 0d |  |  | HydroIns | 28BW90 | Ruroci¹g | Budowa | Roboty | Piotr | Wyspa | PM000 | Zespó³-W | Wspólne | Niski | Pakiet | L2 |  |
|  | SEKCJA 15 | **Sekcja 15** |  |  | 2026-03-10 | 2027-12-21 |  |  |  |  |  |  |  |  |  |  |  |  |  |  |  |  |  |  |  |  |  |  |  |
|  | PODSEKCJA | **Podsekcja 15.A** |  |  | 2026-03-10 | 2027-12-21 |  |  |  |  |  |  |  |  |  |  |  |  |  |  |  |  |  |  |  |  |  |  |  |
| 28BW90-099 |  | Prefabrykacja ruroci¹gów – Sekcja 15 |  | 10.8d | 2026-03-10 A | 2026-03-23 A | 28BW90-012, 28BW90-092 SS+5d | 100% |  | 2026-03-06 | 2026-03-19 |  |  |  |  | HydroIns | 28BW90 | Ruroci¹g | Budowa | Roboty | Piotr | Wyspa | PM000 | Zespó³-W | Wspólne | Normalny | Pakiet | L2 |  |
| 28BW90-100 |  | Monta¿ ruroci¹gów – Sekcja 15 |  | 15d | 2027-04-21 | 2027-05-11 | 28BW90-099, 28BW90-014 SS+7d |  |  | 2027-01-28 | 2027-02-17 | 198.3d | 0d |  |  | HydroIns | 28BW90 | Ruroci¹g | Budowa | Roboty | Piotr | Wyspa | PM000 | Zespó³-W | Wspólne | Normalny | Pakiet | L2 |  |
| 28BW90-101 |  | Próba ciœnieniowa – Sekcja 15 |  | 3d | 2027-05-12 | 2027-05-14 | 28BW90-100 |  |  | 2027-02-18 | 2027-02-22 | 198.3d | 0d | Kalendarz 6-dniowy |  | HydroIns | 28BW90 | Ruroci¹g | Budowa | Roboty | Piotr | Wyspa | PM000 | Zespó³-K | Wspólne | Normalny | Pakiet | L2 |  |
| 28BW90-102 |  | Izolacje – Sekcja 15 |  | 12d | 2027-12-02 | 2027-12-17 | 28BW90-101 |  |  | 2027-02-23 | 2027-03-10 | 55.6d | 0d | Kalendarz 6-dniowy | Do weryfikacji z wykonawc¹ | HydroIns | 28BW90 | Ruroci¹g | Budowa | Roboty | Piotr | Wyspa | PM300 | Zespó³-I | Wspólne | Normalny | Pakiet | L2 | Rev A |
| 28BW90-103 |  | Malowanie i oznakowanie – Sekcja 15 |  | 8d | 2027-12-10 | 2027-12-21 | 28BW90-102 FF+2d |  |  | 2027-03-03 | 2027-03-12 | 55.6d | 0d |  |  | HydroIns | 28BW90 | Ruroci¹g | Budowa | Roboty | Piotr | Wyspa | PM000 | Zespó³-W | Wspólne | Normalny | Pakiet | L2 |  |
|  | PROJ | **Projektowanie** |  |  | 2025-05-20 | 2025-09-15 |  |  |  |  |  |  |  |  |  |  |  |  |  |  |  |  |  |  |  |  |  |  |  |
|  | DOKUMENTAC | **Dokumentacja** |  |  | 2025-05-20 | 2025-09-15 |  |  |  |  |  |  |  |  |  |  |  |  |  |  |  |  |  |  |  |  |  |  |  |
| 28BW90-001 |  | Projekt wykonawczy – Uk³ad by-pass pary |  | 55d | 2025-05-20 A | 2025-08-06 A |  | 100% |  | 2025-05-20 | 2025-08-04 |  |  |  |  | HydroIns | 28BW90 | Budowlan | Projekto | Projekt | Piotr | Wyspa | PM000 | Zespó³-K | Wspólne | Niski | Pakiet | L2 |  |
| 28BW90-002 |  | Uzgodnienie dokumentacji z Inwestorem |  | 23d | 2025-08-07 A | 2025-09-08 A | 28BW90-001 | 100% |  | 2025-08-05 | 2025-09-04 |  |  |  |  | HydroIns | 28BW90 | Budowlan | Projekto | Projekt | Piotr | Wyspa | PM000 | Zespó³-K | Wspólne | Normalny | Pakiet | L2 |  |
| 28BW90-003 |  | Zatwierdzenie dokumentacji do realizacji |  | 5d | 2025-09-04 A | 2025-09-12 A | 28BW90-002 | 100% |  | 2025-09-05 | 2025-09-11 |  |  |  |  | HydroIns | 28BW90 | Budowlan | Projekto | Projekt | Piotr | Wyspa | PM300 | Zespó³-I | Wspólne | Krytyczn | Pakiet | L2 | Rev C |
| 28BW90-004 |  | KM: Dokumentacja zatwierdzona – Uk³ad by-pass pary | milestone | 0d | 2025-09-15 A | 2025-09-15 | 28BW90-003 | 100% | 2025-09-12 | 2025-09-12 | 2025-09-12 |  |  |  |  | HydroIns | 28BW90 | Budowlan | Projekto | Kamieñ | Piotr | Wyspa | PM000 | Zespó³-K | Wspólne | Normalny | Pakiet | L1 |  |

| ID | WBS | Activity | Type | Duration | Start | Finish | Predecessors | Complete | Remaining | Planned start | Planned finish | Total float | Free float | Calendar | AC_Wykonawca | AC_Obiekt | AC_Dyscyplina | AC_Faza | AC_Zakres | AC_Opiekun | AC_Obszar | AC_PP_PM | AC_Zespol | AC_Blok | AC_Priorytet | AC_Pakiet | AC_Poziom | Rewizja dokumentu | Uwagi harmonogramisty |
| --- | --- | --- | --- | --- | --- | --- | --- | --- | --- | --- | --- | --- | --- | --- | --- | --- | --- | --- | --- | --- | --- | --- | --- | --- | --- | --- | --- | --- | --- |
|  | ROZR | **Rozruch** |  |  | 2027-12-22 | 2028-01-24 |  |  |  |  |  |  |  |  |  |  |  |  |  |  |  |  |  |  |  |  |  |  |  |
|  | ROZRUCH | **Rozruch** |  |  | 2027-12-22 | 2028-01-24 |  |  |  |  |  |  |  |  |  |  |  |  |  |  |  |  |  |  |  |  |  |  |  |
| 28BW90-106 |  | Przegl¹d gotowoœci do rozruchu |  | 8d | 2027-12-22 | 2027-12-31 | 28BW90-105, 28BW90-019, 28BW90-024, 28BW90-026 |  |  | 2027-03-26 | 2027-04-06 | 55.6d | 0d |  | HydroIns | 28BW90 | Rozruch | Rozruch | Rozruch | Piotr | Wyspa | PM000 | Zespó³-W | Wspólne | Normalny | Pakiet | L2 |  |  |
| 28BW90-107 |  | Rozruch na zimno |  | 5d | 2028-01-03 | 2028-01-07 | 28BW90-106 |  |  | 2027-04-07 | 2027-04-13 | 55.6d | 0d |  | HydroIns | 28BW90 | Rozruch | Rozruch | Rozruch | Piotr | Wyspa | PM000 | Zespó³-K | Wspólne | Normalny | Pakiet | L2 |  |  |
| 28BW90-108 |  | Rozruch na gor¹co / próby ruchowe |  | 10d | 2028-01-10 | 2028-01-21 | 28BW90-107 |  |  | 2027-04-14 | 2027-04-27 | 55.6d | 0d |  | HydroIns | 28BW90 | Rozruch | Rozruch | Rozruch | Piotr | Wyspa | PM000 | Zespó³-K | Wspólne | Normalny | Pakiet | L2 |  |  |
| 28BW90-109 |  | KM: Odbiór koñcowy – Uk³ad by-pass pary | milestone | 0d | 2028-01-24 | 2028-01-24 | 28BW90-108 |  |  | 2027-04-28 | 2027-04-28 | 55.6d | 0d |  | HydroIns | 28BW90 | Rozruch | Rozruch | Kamieñ | Piotr | Wyspa | PM000 | Zespó³-K | Wspólne | Normalny | Pakiet | L1 | Rev C |  |
|  | ZAKU | **Zakupy** |  |  | 2025-06-16 | 2027-04-12 |  |  |  |  |  |  |  |  |  |  |  |  |  |  |  |  |  |  |  |  |  |  |  |
|  | DOSTAWY | **Dostawy** |  |  | 2025-10-28 | 2027-04-12 |  |  |  |  |  |  |  |  |  |  |  |  |  |  |  |  |  |  |  |  |  |  |  |
| 28BW90-008 |  | Produkcja u dostawcy |  | 287d | 2025-10-28 A | 2027-02-19 | 28BW90-007 | 66% | 98.3d | 2025-10-24 | 2026-11-30 | 246.6d | 0d |  | HydroIns | 28BW90 | Mechanic | Zakupy | Dostawa | Piotr | Wyspa | PM000 | Zespó³-K | Wspólne | Krytyczn | Pakiet | L2 | Rev C |  |
| 28BW90-009 |  | Testy FAT |  | 5d | 2027-02-22 | 2027-02-26 | 28BW90-008 |  |  | 2026-12-01 | 2026-12-07 | 189.3d | 0d |  | HydroIns | 28BW90 | Mechanic | Zakupy | Dostawa | Piotr | Wyspa | PM000 | Zespó³-K | Wspólne | Wysoki | Pakiet | L2 |  |  |
| 28BW90-010 |  | Transport i dostawa na plac budowy |  | 30d | 2027-03-01 | 2027-04-09 | 28BW90-009 |  |  | 2026-12-08 | 2027-01-18 | 189.3d | 0d |  | HydroIns | 28BW90 | Mechanic | Zakupy | Dostawa | Piotr | Wyspa | PM000 | Zespó³-W | Wspólne | Krytyczn | Pakiet | L2 |  | Czeka na dostawê |
| 28BW90-011 |  | KM: Dostawa na budowê – Uk³ad by-pass pary | milestone | 0d | 2027-04-12 | 2027-04-12 | 28BW90-010 |  |  | 2027-01-19 | 2027-01-19 | 189.3d | 0d |  | HydroIns | 28BW90 | Mechanic | Zakupy | Kamieñ | Piotr | Wyspa | PM000 | Zespó³-K | Wspólne | Normalny | Pakiet | L1 |  |  |
|  | ZAMÓWIENIA | **Zamówienia** |  |  | 2025-06-16 | 2025-10-24 |  |  |  |  |  |  |  |  |  |  |  |  |  |  |  |  |  |  |  |  |  |  |  |
| 28BW90-005 |  | Zapytanie ofertowe |  | 22d | 2025-06-16 A | 2025-07-16 A | 28BW90-001 SS+20d | 100% |  | 2025-06-17 | 2025-07-16 |  |  |  | HydroIns | 28BW90 | Mechanic | Zakupy | Dostawa | Piotr | Wyspa | PM000 | Zespó³-K | Wspólne | Normalny | Pakiet | L2 | Rev C |  |
| 28BW90-006 |  | Analiza i wybór ofert |  | 10d | 2025-07-16 A | 2025-07-30 A | 28BW90-005 | 100% |  | 2025-07-17 | 2025-07-30 |  |  |  | HydroIns | 28BW90 | Mechanic | Zakupy | Dostawa | Piotr | Wyspa | PM000 | Zespó³-W | Wspólne | Niski | Pakiet | L2 |  |  |
| 28BW90-007 |  | Zawarcie umowy / zamówienie |  | 6d | 2025-10-16 A | 2025-10-24 A | 28BW90-006, 28BW90-004 SS, 11CP59-004 FS+7d, 18CX52-004 FS+11d | 100% |  | 2025-10-16 | 2025-10-23 |  |  |  | HydroIns | 28BW90 | Mechanic | Zakupy | Dostawa | Piotr | Wyspa | PM000 | Zespó³-W | Wspólne | Niski | Pakiet | L1 | Rev B |  |
|  | 30BU48 | **30BU48 – Kocio³ odzyskowy HRSG** |  |  | 2025-01-13 | 2026-10-21 |  |  |  |  |  |  |  |  |  |  |  |  |  |  |  |  |  |  |  |  |  |  |  |
|  | BUDO | **Budowa** |  |  | 2025-07-28 | 2026-09-21 |  |  |  |  |  |  |  |  |  |  |  |  |  |  |  |  |  |  |  |  |  |  |  |
|  | AKPIA | **AKPiA** |  |  | 2026-07-17 | 2026-09-10 |  |  |  |  |  |  |  |  |  |  |  |  |  |  |  |  |  |  |  |  |  |  |  |
| 30BU48-147 |  | Monta¿ uk³adów AKPiA |  | 40d | 2026-07-17 A | 2026-09-10 A | 30BU48-014 SS+5d | 100% |  |  |  |  |  |  | GdanskSt | 30BU48 | AKPiA | Budowa | Roboty | Piotr | Wyspa | PM000 | Zespó³-K | Blok | Normalny | Pakiet | L2 |  | Ryzyko opóŸnienia |
|  | ELEKTRYKA | **Elektryka** |  |  | 2026-07-17 | 2026-08-27 |  |  |  |  |  |  |  |  |  |  |  |  |  |  |  |  |  |  |  |  |  |  |  |
| 30BU48-074 |  | Pod³¹czenia i pomiary – trasa 10 |  | 10d | 2026-07-17 A | 2026-07-30 A | 30BU48-073 FF | 100% |  | 2026-07-20 | 2026-07-31 |  |  |  | GdanskSt | 30BU48 | Elektryc | Budowa | Roboty | Piotr | Wyspa | PM000 | Zespó³-W | Blok | Normalny | Pakiet | L2 |  |  |
| 30BU48-025 |  | Uk³adanie kabli – trasa 02 |  | 10d | 2026-07-23 A | 2026-08-06 A | 30BU48-014 SS+10d | 100% |  | 2026-07-24 | 2026-08-06 |  |  |  | GdanskSt | 30BU48 | Elektryc | Budowa | Roboty | Piotr | Wyspa | PM000 | Zespó³-K | Blok | Wysoki | Pakiet | L2 |  |  |
| 30BU48-061 |  | Uk³adanie kabli – trasa 08 |  | 17d | 2026-07-23 A | 2026-08-18 A | 30BU48-014 SS+10d | 100% |  | 2026-07-24 | 2026-08-17 |  |  |  | GdanskSt | 30BU48 | Elektryc | Budowa | Roboty | Piotr | Wyspa | PM000 | Zespó³-W | Blok | Niski | Pakiet | L2 |  | Ryzyko opóŸnienia |
| 30BU48-121 |  | Uk³adanie kabli – trasa 18 |  | 17d | 2026-07-23 A | 2026-08-17 A | 30BU48-014 SS+10d | 100% |  | 2026-07-24 | 2026-08-17 |  |  |  | GdanskSt | 30BU48 | Elektryc | Budowa | Roboty | Piotr | Wyspa | PM000 | Zespó³-W | Blok | Normalny | Pakiet | L2 | Rev B | Ryzyko opóŸnienia |
| 30BU48-145 |  | Uk³adanie kabli – trasa 22 |  | 20d | 2026-07-23 A | 2026-08-21 A | 30BU48-014 SS+10d | 100% |  | 2026-07-24 | 2026-08-20 |  |  |  | GdanskSt | 30BU48 | Elektryc | Budowa | Roboty | Piotr | Wyspa | PM300 | Zespó³-I | Blok | Normalny | Pakiet | L2 | Rev B |  |
| 30BU48-073 |  | Uk³adanie kabli – trasa 10 |  | 6d | 2026-07-24 A | 2026-07-31 A | 30BU48-014 SS+10d | 100% |  |  |  |  |  |  | GdanskSt | 30BU48 | Elektryc | Budowa | Roboty | Piotr | Wyspa | PM000 | Zespó³-W | Blok | Wysoki | Pakiet | L2 | Rev C |  |
| 30BU48-109 |  | Uk³adanie kabli – trasa 16 |  | 16d | 2026-07-27 A | 2026-08-17 A | 30BU48-014 SS+10d | 100% |  | 2026-07-24 | 2026-08-14 |  |  |  | GdanskSt | 30BU48 | Elektryc | Budowa | Roboty | Piotr | Wyspa | PM000 | Zespó³-K | Blok | Normalny | Pakiet | L2 |  | Ryzyko opóŸnienia |
| 30BU48-037 |  | Uk³adanie kabli – trasa 04 |  | 19d | 2026-07-28 A | 2026-08-25 A | 30BU48-014 SS+10d | 100% |  | 2026-07-24 | 2026-08-19 |  |  |  | GdanskSt | 30BU48 | Elektryc | Budowa | Roboty | Piotr | Wyspa | PM000 | Zespó³-W | Blok | Normalny | Pakiet | L2 |  |  |
| 30BU48-049 |  | Uk³adanie kabli – trasa 06 |  | 8d | 2026-07-28 A | 2026-08-10 A | 30BU48-014 SS+10d | 100% |  | 2026-07-24 | 2026-08-04 |  |  |  | GdanskSt | 30BU48 | Elektryc | Budowa | Roboty | Piotr | Wyspa | PM000 | Zespó³-E | Blok | Normalny | Pakiet | L2 |  |  |
| 30BU48-085 |  | Uk³adanie kabli – trasa 12 |  | 12d | 2026-07-28 A | 2026-08-13 A | 30BU48-014 SS+10d | 100% |  | 2026-07-24 | 2026-08-10 |  |  | Kalendarz 6-dniowy | GdanskSt | 30BU48 | Elektryc | Budowa | Roboty | Piotr | Wyspa | PM000 | Zespó³-K | Blok | Normalny | Pakiet | L2 | Rev C |  |
| 30BU48-133 |  | Uk³adanie kabli – trasa 20 |  | 6d | 2026-07-28 A | 2026-08-04 A | 30BU48-014 SS+10d | 100% |  | 2026-07-24 | 2026-07-31 |  |  |  | GdanskSt | 30BU48 | Elektryc | Budowa | Roboty | Piotr | Wyspa | PM100 | Zespó³-E | Blok | Normalny | Pakiet | L2 |  |  |
| 30BU48-050 |  | Pod³¹czenia i pomiary – trasa 06 |  | 5d | 2026-07-29 A | 2026-08-04 A | 30BU48-049 FF | 100% |  |  |  |  |  |  | GdanskSt | 30BU48 | Elektryc | Budowa | Roboty | Piotr | Wyspa | PM000 | Zespó³-K | Blok | Normalny | Pakiet | L2 | Rev B |  |
| 30BU48-097 |  | Uk³adanie kabli – trasa 14 |  | 15d | 2026-07-29 A | 2026-08-19 A | 30BU48-014 SS+10d | 100% |  | 2026-07-24 | 2026-08-13 |  |  |  | GdanskSt | 30BU48 | Elektryc | Budowa | Roboty | Piotr | Wyspa | PM000 | Zespó³-W | Blok | Normalny | Pakiet | L2 |  |  |
| 30BU48-134 |  | Pod³¹czenia i pomiary – trasa 20 |  | 4d | 2026-07-30 A | 2026-08-06 A | 30BU48-133 FF | 100% |  | 2026-07-28 | 2026-07-31 |  |  |  | GdanskSt | 30BU48 | Elektryc | Budowa | Roboty | Piotr | Wyspa | PM000 | Zespó³-K | Blok | Normalny | Pakiet | L2 | Rev A |  |
| 30BU48-062 |  | Pod³¹czenia i pomiary – trasa 08 |  | 9d | 2026-08-04 A | 2026-08-19 A | 30BU48-061 FF | 100% |  | 2026-08-05 | 2026-08-17 |  |  |  | GdanskSt | 30BU48 | Elektryc | Budowa | Roboty | Piotr | Wyspa | PM000 | Zespó³-W | Blok | Normalny | Pakiet | L2 |  |  |
| 30BU48-026 |  | Pod³¹czenia i pomiary – trasa 02 |  | 4d | 2026-08-06 A | 2026-08-12 A | 30BU48-025 FF | 100% |  | 2026-08-03 | 2026-08-06 |  |  |  | GdanskSt | 30BU48 | Elektryc | Budowa | Roboty | Piotr | Wyspa | PM200 | Zespó³-E | Blok | Normalny | Pakiet | L2 |  | Do weryfikacji z wykonawc¹ |
| 30BU48-086 |  | Pod³¹czenia i pomiary – trasa 12 |  | 3d | 2026-08-06 A | 2026-08-10 A | 30BU48-085 FF | 100% |  |  |  |  |  |  | GdanskSt | 30BU48 | Elektryc | Budowa | Roboty | Piotr | Wyspa | PM000 | Zespó³-K | Blok | Normalny | Pakiet | L2 |  | Czeka na dostawê |
| 30BU48-098 |  | Pod³¹czenia i pomiary – trasa 14 |  | 3d | 2026-08-10 A | 2026-08-12 A | 30BU48-097 FF | 100% |  | 2026-08-11 | 2026-08-13 |  |  |  | GdanskSt | 30BU48 | Elektryc | Budowa | Roboty | Piotr | Wyspa | PM000 | Zespó³-K | Blok | Normalny | Pakiet | L2 |  | Czeka na dostawê |
| 30BU48-110 |  | Pod³¹czenia i pomiary – trasa 16 |  | 5d | 2026-08-11 A | 2026-08-17 A | 30BU48-109 FF | 100% |  | 2026-08-10 | 2026-08-14 |  |  |  | GdanskSt | 30BU48 | Elektryc | Budowa | Roboty | Piotr | Wyspa | PM000 | Zespó³-W | Blok | Wysoki | Pakiet | L2 | Rev B |  |
| 30BU48-122 |  | Pod³¹czenia i pomiary – trasa 18 |  | 7d | 2026-08-12 A | 2026-08-20 A | 30BU48-121 FF | 100% |  | 2026-08-07 | 2026-08-17 |  |  |  | GdanskSt | 30BU48 | Elektryc | Budowa | Roboty | Piotr | Wyspa | PM000 | Zespó³-K | Blok | Wysoki | Pakiet | L2 | Rev A |  |
| 30BU48-038 |  | Pod³¹czenia i pomiary – trasa 04 |  | 8d | 2026-08-13 A | 2026-08-24 A | 30BU48-037 FF | 100% |  | 2026-08-10 | 2026-08-19 |  |  |  | GdanskSt | 30BU48 | Elektryc | Budowa | Roboty | Piotr | Wyspa | PM000 | Zespó³-W | Blok | Normalny | Pakiet | L2 | Rev C |  |
| 30BU48-146 |  | Pod³¹czenia i pomiary – trasa 22 |  | 4d | 2026-08-19 A | 2026-08-27 A | 30BU48-145 FF | 100% |  | 2026-08-17 | 2026-08-20 |  |  |  | GdanskSt | 30BU48 | Elektryc | Budowa | Roboty | Piotr | Wyspa | PM000 | Zespó³-K | Blok | Normalny | Pakiet | L2 | Rev B |  |

| ID | WBS | Activity | Type | Duration | Start | Finish | Predecessors | Complete | Actual finish | Planned start | Planned finish | Calendar | AC_Wykonawca | AC_Obiekt | AC_Dyscyplina | AC_Faza | AC_Zakres | AC_Opiekun | AC_Obszar | AC_PP_PM | AC_Zespol | AC_Blok | AC_Priorytet | AC_Pakiet | AC_Poziom | Uwagi harmonogramisty | Rewizja dokumentu |
| --- | --- | --- | --- | --- | --- | --- | --- | --- | --- | --- | --- | --- | --- | --- | --- | --- | --- | --- | --- | --- | --- | --- | --- | --- | --- | --- | --- |
|  | MONTA¯ | **Monta¿** |  |  | 2025-09-15 | 2026-09-16 |  |  |  |  |  |  |  |  |  |  |  |  |  |  |  |  |  |  |  |  |  |
| 30BU48-013 |  | Monta¿ konstrukcji stalowych |  | 39d | 2025-09-15 A | 2025-11-07 A | 30BU48-012 | 100% |  | 2025-09-12 | 2025-11-05 |  | GdanskSt | 30BU48 | Mechanic | Budowa | Roboty | Piotr | Wyspa | PM000 | Zespó³-K | Blok | Normalny | Pakiet | L2 |  |  |
| 30BU48-014 |  | Monta¿ urz¹dzeñ g³ównych |  | 26d | 2026-07-09 A | 2026-08-14 A | 30BU48-013, 30BU48-011 | 100% |  | 2026-07-10 | 2026-08-14 |  | GdanskSt | 30BU48 | Mechanic | Budowa | Roboty | Piotr | Wyspa | PM000 | Zespó³-W | Blok | Wysoki | Pakiet | L2 |  |  |
| 30BU48-148 |  | KM: Zakoñczenie monta¿u – Kocio³ odzyskowy HRSG | milestone | 0d | 2026-09-16 A | 2026-09-16 | 30BU48-139, 30BU48-144, 30BU48-146, 30BU48-147, 30BU48-014 | 100% | 2026-09-15 | 2026-09-11 | 2026-09-11 |  | GdanskSt | 30BU48 | Mechanic | Budowa | Kamieñ | Piotr | Wyspa | PM000 | Zespó³-K | Blok | Wysoki | Pakiet | L2 | Czeka na dostawê |  |
|  | ROBOTY BUD | **Roboty budowlane** |  |  | 2025-07-28 | 2025-09-15 |  |  |  |  |  |  |  |  |  |  |  |  |  |  |  |  |  |  |  |  |  |
| 30BU48-012 |  | Fundamenty i roboty ziemne |  | 34d | 2025-07-28 A | 2025-09-15 A | 30BU48-007 FS+14d | 100% |  | 2025-07-28 | 2025-09-11 |  | GdanskSt | 30BU48 | Budowlan | Budowa | Roboty | Piotr | Wyspa | PM000 | Zespó³-K | Blok | Normalny | Pakiet | L2 |  |  |
|  | RUROCI¥GI | **Ruroci¹gi** |  |  | 2025-09-15 | 2026-09-21 |  |  |  |  |  |  |  |  |  |  |  |  |  |  |  |  |  |  |  |  |  |
|  | SEKCJA 01 | **Sekcja 01** |  |  | 2025-09-15 | 2026-09-04 |  |  |  |  |  |  |  |  |  |  |  |  |  |  |  |  |  |  |  |  |  |
| 30BU48-015 |  | Prefabrykacja ruroci¹gów – Sekcja 01 |  | 14.6d | 2025-09-15 A | 2025-10-03 A | 30BU48-012 | 100% |  | 2025-09-12 | 2025-10-01 | Kalendarz 6-dniowy | GdanskSt | 30BU48 | Ruroci¹g | Budowa | Roboty | Piotr | Wyspa | PM200 | Zespó³-E | Blok | Wysoki | Pakiet | L2 |  |  |
| 30BU48-016 |  | Monta¿ ruroci¹gów – Sekcja 01 |  | 17.9d | 2026-07-23 A | 2026-08-14 A | 30BU48-015, 30BU48-014 SS+10d | 100% |  | 2026-07-24 | 2026-08-17 |  | GdanskSt | 30BU48 | Ruroci¹g | Budowa | Roboty | Piotr | Wyspa | PM000 | Zespó³-K | Blok | Wysoki | Pakiet | L2 |  | Rev A |
| 30BU48-017 |  | Próba ciœnieniowa – Sekcja 01 |  | 3d | 2026-08-19 A | 2026-08-26 A | 30BU48-016 | 100% |  | 2026-08-18 | 2026-08-20 |  | GdanskSt | 30BU48 | Ruroci¹g | Budowa | Roboty | Piotr | Wyspa | PM000 | Zespó³-W | Blok | Normalny | Pakiet | L2 |  |  |
| 30BU48-018 |  | Izolacje – Sekcja 01 |  | 6d | 2026-08-21 A | 2026-08-31 A | 30BU48-017 | 100% |  | 2026-08-21 | 2026-08-28 |  | GdanskSt | 30BU48 | Ruroci¹g | Budowa | Roboty | Piotr | Wyspa | PM000 | Zespó³-K | Blok | Krytyczn | Pakiet | L2 |  |  |
| 30BU48-019 |  | Malowanie i oznakowanie – Sekcja 01 |  | 2d | 2026-09-01 A | 2026-09-04 A | 30BU48-018 FF+2d | 100% |  | 2026-08-31 | 2026-09-01 |  | GdanskSt | 30BU48 | Ruroci¹g | Budowa | Roboty | Piotr | Wyspa | PM000 | Zespó³-W | Blok | Normalny | Pakiet | L2 |  |  |
|  | SEKCJA 02 | **Sekcja 02** |  |  | 2025-09-23 | 2026-09-21 |  |  |  |  |  |  |  |  |  |  |  |  |  |  |  |  |  |  |  |  |  |
| 30BU48-020 |  | Prefabrykacja ruroci¹gów – Sekcja 02 |  | 4.9d | 2025-09-23 A | 2025-09-30 A | 30BU48-012, 30BU48-015 SS+5d | 100% |  | 2025-09-19 | 2025-09-24 |  | GdanskSt | 30BU48 | Ruroci¹g | Budowa | Roboty | Piotr | Wyspa | PM000 | Zespó³-W | Blok | Normalny | Pakiet | L2 |  | Rev A |
| 30BU48-021 |  | Monta¿ ruroci¹gów – Sekcja 02 |  | 24.9d | 2026-07-17 A | 2026-08-24 A | 30BU48-020, 30BU48-014 SS+5d | 100% |  | 2026-07-17 | 2026-08-19 |  | GdanskSt | 30BU48 | Ruroci¹g | Budowa | Roboty | Piotr | Wyspa | PM000 | Zespó³-K | Blok | Normalny | Pakiet | L2 |  |  |
| 30BU48-022 |  | Próba ciœnieniowa – Sekcja 02 |  | 5d | 2026-08-24 A | 2026-09-01 A | 30BU48-021 | 100% |  | 2026-08-20 | 2026-08-26 |  | GdanskSt | 30BU48 | Ruroci¹g | Budowa | Roboty | Piotr | Wyspa | PM000 | Zespó³-K | Blok | Normalny | Pakiet | L2 | Bez uwag |  |
| 30BU48-023 |  | Izolacje – Sekcja 02 |  | 11d | 2026-08-27 A | 2026-09-10 A | 30BU48-022 | 100% |  |  |  |  | GdanskSt | 30BU48 | Ruroci¹g | Budowa | Roboty | Piotr | Wyspa | PM000 | Zespó³-W | Blok | Wysoki | Pakiet | L2 |  | Rev A |
| 30BU48-024 |  | Malowanie i oznakowanie – Sekcja 02 |  | 4d | 2026-09-11 A | 2026-09-21 A | 30BU48-023 FF+2d | 100% |  | 2026-09-09 | 2026-09-14 |  | GdanskSt | 30BU48 | Ruroci¹g | Budowa | Roboty | Piotr | Wyspa | PM000 | Zespó³-K | Blok | Normalny | Pakiet | L2 |  |  |
|  | SEKCJA 03 | **Sekcja 03** |  |  | 2025-09-30 | 2026-09-17 |  |  |  |  |  |  |  |  |  |  |  |  |  |  |  |  |  |  |  |  |  |
|  | PODSEKCJA | **Podsekcja 03.A** |  |  | 2025-09-30 | 2026-09-17 |  |  |  |  |  |  |  |  |  |  |  |  |  |  |  |  |  |  |  |  |  |
| 30BU48-027 |  | Prefabrykacja ruroci¹gów – Sekcja 03 |  | 11.4d | 2025-09-30 A | 2025-10-15 A | 30BU48-012, 30BU48-020 SS+5d | 100% |  | 2025-09-26 | 2025-10-10 |  | GdanskSt | 30BU48 | Ruroci¹g | Budowa | Roboty | Piotr | Wyspa | PM000 | Zespó³-W | Blok | Normalny | Pakiet | L2 | Uzgodnione na koordynacji |  |
| 30BU48-028 |  | Monta¿ ruroci¹gów – Sekcja 03 |  | 20.2d | 2026-07-27 A | 2026-08-21 A | 30BU48-027, 30BU48-014 SS+10d | 100% |  | 2026-07-24 | 2026-08-20 |  | GdanskSt | 30BU48 | Ruroci¹g | Budowa | Roboty | Piotr | Wyspa | PM000 | Zespó³-K | Blok | Normalny | Pakiet | L2 |  |  |
| 30BU48-029 |  | Próba ciœnieniowa – Sekcja 03 |  | 3d | 2026-08-20 A | 2026-08-25 A | 30BU48-028 | 100% |  | 2026-08-21 | 2026-08-25 |  | GdanskSt | 30BU48 | Ruroci¹g | Budowa | Roboty | Piotr | Wyspa | PM000 | Zespó³-W | Blok | Normalny | Pakiet | L2 |  |  |
| 30BU48-030 |  | Izolacje – Sekcja 03 |  | 12d | 2026-08-26 A | 2026-09-11 A | 30BU48-029 | 100% |  | 2026-08-26 | 2026-09-10 |  | GdanskSt | 30BU48 | Ruroci¹g | Budowa | Roboty | Piotr | Wyspa | PM200 | Zespó³-I | Blok | Wysoki | Pakiet | L2 |  |  |
| 30BU48-031 |  | Malowanie i oznakowanie – Sekcja 03 |  | 2d | 2026-09-16 A | 2026-09-17 A | 30BU48-030 FF+2d | 100% |  | 2026-09-11 | 2026-09-14 |  | GdanskSt | 30BU48 | Ruroci¹g | Budowa | Roboty | Piotr | Wyspa | PM000 | Zespó³-K | Blok | Normalny | Pakiet | L2 |  |  |

| ID | WBS | Activity | Duration | Start | Finish | Predecessors | Complete | Planned start | Planned finish | Calendar | AC_Wykonawca | AC_Obiekt | AC_Dyscyplina | AC_Faza | AC_Zakres | AC_Opiekun | AC_Obszar | AC_PP_PM | AC_Zespol | AC_Blok | AC_Priorytet | AC_Pakiet | AC_Poziom | Uwagi harmonogramisty | Rewizja dokumentu |
| --- | --- | --- | --- | --- | --- | --- | --- | --- | --- | --- | --- | --- | --- | --- | --- | --- | --- | --- | --- | --- | --- | --- | --- | --- | --- |
|  | SEKCJA 04 | **Sekcja 04** |  | 2025-10-07 | 2026-08-14 |  |  |  |  |  |  |  |  |  |  |  |  |  |  |  |  |  |  |  |  |
| 30BU48-032 |  | Prefabrykacja ruroci¹gów – Sekcja 04 | 7.1d | 2025-10-07 A | 2025-10-16 A | 30BU48-012, 30BU48-027 SS+5d | 100% | 2025-10-03 | 2025-10-13 |  | GdanskSt | 30BU48 | Ruroci¹g | Budowa | Roboty | Piotr | Wyspa | PM000 | Zespó³-W | Blok | Normalny | Pakiet | L2 |  |  |
| 30BU48-033 |  | Monta¿ ruroci¹gów – Sekcja 04 | 11.6d | 2026-07-14 A | 2026-07-30 A | 30BU48-032, 30BU48-014 SS+3d | 100% | 2026-07-15 | 2026-07-29 |  | GdanskSt | 30BU48 | Ruroci¹g | Budowa | Roboty | Piotr | Wyspa | PM000 | Zespó³-K | Blok | Niski | Pakiet | L2 | Czeka na dostawê | Rev C |
| 30BU48-034 |  | Próba ciœnieniowa – Sekcja 04 | 3d | 2026-08-04 A | 2026-08-11 A | 30BU48-033 | 100% | 2026-07-30 | 2026-08-03 |  | GdanskSt | 30BU48 | Ruroci¹g | Budowa | Roboty | Piotr | Wyspa | PM000 | Zespó³-I | Blok | Normalny | Pakiet | L2 |  | Rev C |
| 30BU48-035 |  | Izolacje – Sekcja 04 | 5d | 2026-08-06 A | 2026-08-13 A | 30BU48-034 | 100% | 2026-08-04 | 2026-08-10 |  | GdanskSt | 30BU48 | Ruroci¹g | Budowa | Roboty | Piotr | Wyspa | PM000 | Zespó³-W | Blok | Niski | Pakiet | L2 |  |  |
| 30BU48-036 |  | Malowanie i oznakowanie – Sekcja 04 | 2d | 2026-08-10 A | 2026-08-14 A | 30BU48-035 FF+2d | 100% | 2026-08-11 | 2026-08-12 |  | GdanskSt | 30BU48 | Ruroci¹g | Budowa | Roboty | Piotr | Wyspa | PM000 | Zespó³-W | Blok | Normalny | Pakiet | L2 | Bez uwag |  |
|  | SEKCJA 05 | **Sekcja 05** |  | 2025-10-13 | 2026-09-08 |  |  |  |  |  |  |  |  |  |  |  |  |  |  |  |  |  |  |  |  |
| 30BU48-039 |  | Prefabrykacja ruroci¹gów – Sekcja 05 | 3.4d | 2025-10-13 A | 2025-10-15 A | 30BU48-012, 30BU48-032 SS+5d | 100% | 2025-10-10 | 2025-10-14 |  | GdanskSt | 30BU48 | Ruroci¹g | Budowa | Roboty | Piotr | Wyspa | PM000 | Zespó³-K | Blok | Normalny | Pakiet | L2 |  |  |
| 30BU48-040 |  | Monta¿ ruroci¹gów – Sekcja 05 | 21.5d | 2026-07-24 A | 2026-08-21 A | 30BU48-039, 30BU48-014 SS+9d | 100% | 2026-07-23 | 2026-08-20 |  | GdanskSt | 30BU48 | Ruroci¹g | Budowa | Roboty | Piotr | Wyspa | PM000 | Zespó³-W | Blok | Normalny | Pakiet | L2 |  |  |
| 30BU48-041 |  | Próba ciœnieniowa – Sekcja 05 | 3d | 2026-08-21 A | 2026-08-28 A | 30BU48-040 | 100% | 2026-08-21 | 2026-08-25 |  | GdanskSt | 30BU48 | Ruroci¹g | Budowa | Roboty | Piotr | Wyspa | PM200 | Zespó³-I | Blok | Wysoki | Pakiet | L2 |  |  |
| 30BU48-042 |  | Izolacje – Sekcja 05 | 6d | 2026-08-31 A | 2026-09-07 A | 30BU48-041 | 100% | 2026-08-26 | 2026-09-02 |  | GdanskSt | 30BU48 | Ruroci¹g | Budowa | Roboty | Piotr | Wyspa | PM000 | Zespó³-K | Blok | Normalny | Pakiet | L2 |  |  |
| 30BU48-043 |  | Malowanie i oznakowanie – Sekcja 05 | 2d | 2026-09-03 A | 2026-09-08 A | 30BU48-042 FF+2d | 100% | 2026-09-03 | 2026-09-04 |  | GdanskSt | 30BU48 | Ruroci¹g | Budowa | Roboty | Piotr | Wyspa | PM000 | Zespó³-W | Blok | Normalny | Pakiet | L2 |  | Rev B |
|  | SEKCJA 06 | **Sekcja 06** |  | 2025-10-17 | 2026-09-07 |  |  |  |  |  |  |  |  |  |  |  |  |  |  |  |  |  |  |  |  |
|  | PODSEKCJA | **Podsekcja 06.A** |  | 2025-10-17 | 2026-09-07 |  |  |  |  |  |  |  |  |  |  |  |  |  |  |  |  |  |  |  |  |
| 30BU48-044 |  | Prefabrykacja ruroci¹gów – Sekcja 06 | 14.7d | 2025-10-17 A | 2025-11-07 A | 30BU48-012, 30BU48-039 SS+5d | 100% | 2025-10-17 | 2025-11-05 |  | GdanskSt | 30BU48 | Ruroci¹g | Budowa | Roboty | Piotr | Wyspa | PM000 | Zespó³-K | Blok | Normalny | Pakiet | L2 |  |  |
| 30BU48-045 |  | Monta¿ ruroci¹gów – Sekcja 06 | 19.2d | 2026-07-17 A | 2026-08-13 A | 30BU48-044, 30BU48-014 SS+5d | 100% | 2026-07-17 | 2026-08-12 |  | GdanskSt | 30BU48 | Ruroci¹g | Budowa | Roboty | Piotr | Wyspa | PM000 | Zespó³-K | Blok | Normalny | Pakiet | L2 |  | Rev B |
| 30BU48-046 |  | Próba ciœnieniowa – Sekcja 06 | 4d | 2026-08-18 A | 2026-08-25 A | 30BU48-045 | 100% | 2026-08-13 | 2026-08-18 |  | GdanskSt | 30BU48 | Ruroci¹g | Budowa | Roboty | Piotr | Wyspa | PM000 | Zespó³-K | Blok | Normalny | Pakiet | L2 |  |  |
| 30BU48-047 |  | Izolacje – Sekcja 06 | 9d | 2026-08-21 A | 2026-09-07 A | 30BU48-046 | 100% | 2026-08-19 | 2026-08-31 | Kalendarz 6-dniowy | GdanskSt | 30BU48 | Ruroci¹g | Budowa | Roboty | Piotr | Wyspa | PM000 | Zespó³-K | Blok | Normalny | Pakiet | L2 | Ryzyko opóŸnienia |  |
| 30BU48-048 |  | Malowanie i oznakowanie – Sekcja 06 | 6d | 2026-08-26 A | 2026-09-03 A | 30BU48-047 FF+2d | 100% | 2026-08-26 | 2026-09-02 |  | GdanskSt | 30BU48 | Ruroci¹g | Budowa | Roboty | Piotr | Wyspa | PM000 | Zespó³-W | Blok | Normalny | Pakiet | L2 | Bez uwag |  |
|  | SEKCJA 07 | **Sekcja 07** |  | 2025-10-24 | 2026-08-20 |  |  |  |  |  |  |  |  |  |  |  |  |  |  |  |  |  |  |  |  |
| 30BU48-051 |  | Prefabrykacja ruroci¹gów – Sekcja 07 | 12.6d | 2025-10-24 A | 2025-11-12 A | 30BU48-012, 30BU48-044 SS+5d | 100% | 2025-10-24 | 2025-11-10 |  | GdanskSt | 30BU48 | Ruroci¹g | Budowa | Roboty | Piotr | Wyspa | PM000 | Zespó³-W | Blok | Normalny | Pakiet | L2 |  | Rev C |
| 30BU48-052 |  | Monta¿ ruroci¹gów – Sekcja 07 | 10.5d | 2026-07-24 A | 2026-08-10 A | 30BU48-051, 30BU48-014 SS+7d | 100% | 2026-07-21 | 2026-08-03 |  | GdanskSt | 30BU48 | Ruroci¹g | Budowa | Roboty | Piotr | Wyspa | PM300 | Zespó³-I | Blok | Normalny | Pakiet | L2 | Ryzyko opóŸnienia |  |
| 30BU48-053 |  | Próba ciœnieniowa – Sekcja 07 | 3d | 2026-08-04 A | 2026-08-06 A | 30BU48-052 | 100% |  |  |  | GdanskSt | 30BU48 | Ruroci¹g | Budowa | Roboty | Piotr | Wyspa | PM000 | Zespó³-K | Blok | Normalny | Pakiet | L2 |  |  |
| 30BU48-054 |  | Izolacje – Sekcja 07 | 5d | 2026-08-11 A | 2026-08-20 A | 30BU48-053 | 100% | 2026-08-07 | 2026-08-13 |  | GdanskSt | 30BU48 | Ruroci¹g | Budowa | Roboty | Piotr | Wyspa | PM000 | Zespó³-W | Blok | Niski | Pakiet | L2 |  |  |
| 30BU48-055 |  | Malowanie i oznakowanie – Sekcja 07 | 8d | 2026-08-11 A | 2026-08-20 A | 30BU48-054 FF+2d | 100% | 2026-08-06 | 2026-08-17 |  | GdanskSt | 30BU48 | Ruroci¹g | Budowa | Roboty | Piotr | Wyspa | PM000 | Zespó³-K | Blok | Normalny | Pakiet | L2 |  | Rev A |

| ID | WBS | Activity | Duration | Start | Finish | Predecessors | Complete | Planned start | Planned finish | Calendar | AC_Wykonawca | AC_Obiekt | AC_Dyscyplina | AC_Faza | AC_Zakres | AC_Opiekun | AC_Obszar | AC_PP_PM | AC_Zespol | AC_Blok | AC_Priorytet | AC_Pakiet | AC_Poziom | Rewizja dokumentu | Uwagi harmonogramisty |
| --- | --- | --- | --- | --- | --- | --- | --- | --- | --- | --- | --- | --- | --- | --- | --- | --- | --- | --- | --- | --- | --- | --- | --- | --- | --- |
|  | SEKCJA 08 | **Sekcja 08** |  | 2025-11-05 | 2026-09-10 |  |  |  |  |  |  |  |  |  |  |  |  |  |  |  |  |  |  |  |  |
| 30BU48-056 |  | Prefabrykacja ruroci¹gów – Sekcja 08 | 6.2d | 2025-11-05 A | 2025-11-13 A | 30BU48-012, 30BU48-051 SS+5d | 100% | 2025-10-31 | 2025-11-07 |  | GdanskSt | 30BU48 | Ruroci¹g | Budowa | Roboty | Piotr | Wyspa | PM000 | Zespó³-K | Blok | Wysoki | Pakiet | L2 |  |  |
| 30BU48-057 |  | Monta¿ ruroci¹gów – Sekcja 08 | 21.9d | 2026-07-14 A | 2026-08-14 A | 30BU48-056, 30BU48-014 SS | 100% | 2026-07-10 | 2026-08-07 |  | GdanskSt | 30BU48 | Ruroci¹g | Budowa | Roboty | Piotr | Wyspa | PM200 | Zespó³-I | Blok | Normalny | Pakiet | L2 |  |  |
| 30BU48-058 |  | Próba ciœnieniowa – Sekcja 08 | 5d | 2026-08-12 A | 2026-08-21 A | 30BU48-057 | 100% | 2026-08-10 | 2026-08-14 |  | GdanskSt | 30BU48 | Ruroci¹g | Budowa | Roboty | Piotr | Wyspa | PM000 | Zespó³-W | Blok | Normalny | Pakiet | L2 |  |  |
| 30BU48-059 |  | Izolacje – Sekcja 08 | 12d | 2026-08-20 A | 2026-09-07 A | 30BU48-058 | 100% | 2026-08-17 | 2026-09-01 |  | GdanskSt | 30BU48 | Ruroci¹g | Budowa | Roboty | Piotr | Wyspa | PM000 | Zespó³-K | Blok | Normalny | Pakiet | L2 | Rev B |  |
| 30BU48-060 |  | Malowanie i oznakowanie – Sekcja 08 | 8d | 2026-08-27 A | 2026-09-10 A | 30BU48-059 FF+2d | 100% | 2026-08-25 | 2026-09-03 |  | GdanskSt | 30BU48 | Ruroci¹g | Budowa | Roboty | Piotr | Wyspa | PM300 | Zespó³-I | Blok | Wysoki | Pakiet | L2 | Rev C | Uzgodnione na koordynacji |
|  | SEKCJA 09 | **Sekcja 09** |  | 2025-11-11 | 2026-08-31 |  |  |  |  |  |  |  |  |  |  |  |  |  |  |  |  |  |  |  |  |
|  | PODSEKCJA | **Podsekcja 09.A** |  | 2025-11-11 | 2026-08-31 |  |  |  |  |  |  |  |  |  |  |  |  |  |  |  |  |  |  |  |  |
| 30BU48-063 |  | Prefabrykacja ruroci¹gów – Sekcja 09 | 5.3d | 2025-11-11 A | 2025-11-19 A | 30BU48-012, 30BU48-056 SS+5d | 100% | 2025-11-07 | 2025-11-13 |  | GdanskSt | 30BU48 | Ruroci¹g | Budowa | Roboty | Piotr | Wyspa | PM000 | Zespó³-I | Blok | Normalny | Pakiet | L2 |  |  |
| 30BU48-064 |  | Monta¿ ruroci¹gów – Sekcja 09 | 11.2d | 2026-07-24 A | 2026-08-12 A | 30BU48-063, 30BU48-014 SS+7d | 100% | 2026-07-21 | 2026-08-04 |  | GdanskSt | 30BU48 | Ruroci¹g | Budowa | Roboty | Piotr | Wyspa | PM000 | Zespó³-W | Blok | Normalny | Pakiet | L2 | Rev C |  |
| 30BU48-065 |  | Próba ciœnieniowa – Sekcja 09 | 6d | 2026-08-06 A | 2026-08-13 A | 30BU48-064 | 100% | 2026-08-05 | 2026-08-12 |  | GdanskSt | 30BU48 | Ruroci¹g | Budowa | Roboty | Piotr | Wyspa | PM000 | Zespó³-W | Blok | Wysoki | Pakiet | L2 |  | Uzgodnione na koordynacji |
| 30BU48-066 |  | Izolacje – Sekcja 09 | 9d | 2026-08-12 A | 2026-08-24 A | 30BU48-065 | 100% | 2026-08-13 | 2026-08-25 |  | GdanskSt | 30BU48 | Ruroci¹g | Budowa | Roboty | Piotr | Wyspa | PM000 | Zespó³-W | Blok | Wysoki | Pakiet | L2 | Rev A |  |
| 30BU48-067 |  | Malowanie i oznakowanie – Sekcja 09 | 5d | 2026-08-24 A | 2026-08-31 A | 30BU48-066 FF+2d | 100% | 2026-08-21 | 2026-08-27 | Kalendarz 6-dniowy | GdanskSt | 30BU48 | Ruroci¹g | Budowa | Roboty | Piotr | Wyspa | PM000 | Zespó³-W | Blok | Normalny | Pakiet | L2 |  |  |
|  | SEKCJA 10 | **Sekcja 10** |  | 2025-11-14 | 2026-09-08 |  |  |  |  |  |  |  |  |  |  |  |  |  |  |  |  |  |  |  |  |
| 30BU48-068 |  | Prefabrykacja ruroci¹gów – Sekcja 10 | 5d | 2025-11-14 A | 2025-11-25 A | 30BU48-012, 30BU48-063 SS+5d | 100% | 2025-11-14 | 2025-11-20 |  | GdanskSt | 30BU48 | Ruroci¹g | Budowa | Roboty | Piotr | Wyspa | PM000 | Zespó³-K | Blok | Normalny | Pakiet | L2 | Rev C |  |
| 30BU48-069 |  | Monta¿ ruroci¹gów – Sekcja 10 | 19.1d | 2026-07-20 A | 2026-08-14 A | 30BU48-068, 30BU48-014 SS+7d | 100% | 2026-07-21 | 2026-08-14 |  | GdanskSt | 30BU48 | Ruroci¹g | Budowa | Roboty | Piotr | Wyspa | PM000 | Zespó³-W | Blok | Normalny | Pakiet | L2 | Rev B |  |
| 30BU48-070 |  | Próba ciœnieniowa – Sekcja 10 | 5d | 2026-08-17 A | 2026-08-25 A | 30BU48-069 | 100% | 2026-08-17 | 2026-08-21 | Kalendarz 6-dniowy | GdanskSt | 30BU48 | Ruroci¹g | Budowa | Roboty | Piotr | Wyspa | PM000 | Zespó³-W | Blok | Normalny | Pakiet | L2 |  |  |
| 30BU48-071 |  | Izolacje – Sekcja 10 | 10d | 2026-08-21 A | 2026-09-07 A | 30BU48-070 | 100% | 2026-08-24 | 2026-09-04 |  | GdanskSt | 30BU48 | Ruroci¹g | Budowa | Roboty | Piotr | Wyspa | PM000 | Zespó³-W | Blok | Normalny | Pakiet | L2 |  | Ryzyko opóŸnienia |
| 30BU48-072 |  | Malowanie i oznakowanie – Sekcja 10 | 7d | 2026-08-31 A | 2026-09-08 A | 30BU48-071 FF+2d | 100% |  |  |  | GdanskSt | 30BU48 | Ruroci¹g | Budowa | Roboty | Piotr | Wyspa | PM000 | Zespó³-W | Blok | Wysoki | Pakiet | L2 |  |  |
|  | SEKCJA 11 | **Sekcja 11** |  | 2025-11-26 | 2026-09-01 |  |  |  |  |  |  |  |  |  |  |  |  |  |  |  |  |  |  |  |  |
| 30BU48-075 |  | Prefabrykacja ruroci¹gów – Sekcja 11 | 8.4d | 2025-11-26 A | 2025-12-10 A | 30BU48-012, 30BU48-068 SS+5d | 100% | 2025-11-21 | 2025-12-02 |  | GdanskSt | 30BU48 | Ruroci¹g | Budowa | Roboty | Piotr | Wyspa | PM000 | Zespó³-W | Blok | Normalny | Pakiet | L2 |  | Ryzyko opóŸnienia |
| 30BU48-076 |  | Monta¿ ruroci¹gów – Sekcja 11 | 13.7d | 2026-07-17 A | 2026-08-06 A | 30BU48-075, 30BU48-014 SS+4d | 100% | 2026-07-16 | 2026-08-03 |  | GdanskSt | 30BU48 | Ruroci¹g | Budowa | Roboty | Piotr | Wyspa | PM000 | Zespó³-K | Blok | Wysoki | Pakiet | L2 |  | Do weryfikacji z wykonawc¹ |
| 30BU48-077 |  | Próba ciœnieniowa – Sekcja 11 | 6d | 2026-08-04 A | 2026-08-12 A | 30BU48-076 | 100% | 2026-08-04 | 2026-08-11 |  | GdanskSt | 30BU48 | Ruroci¹g | Budowa | Roboty | Piotr | Wyspa | PM000 | Zespó³-I | Blok | Normalny | Pakiet | L2 |  | Ryzyko opóŸnienia |
| 30BU48-078 |  | Izolacje – Sekcja 11 | 10d | 2026-08-13 A | 2026-08-26 A | 30BU48-077 | 100% | 2026-08-12 | 2026-08-25 |  | GdanskSt | 30BU48 | Ruroci¹g | Budowa | Roboty | Piotr | Wyspa | PM000 | Zespó³-K | Blok | Normalny | Pakiet | L2 |  |  |
| 30BU48-079 |  | Malowanie i oznakowanie – Sekcja 11 | 2d | 2026-08-27 A | 2026-09-01 A | 30BU48-078 FF+2d | 100% | 2026-08-26 | 2026-08-27 |  | GdanskSt | 30BU48 | Ruroci¹g | Budowa | Roboty | Piotr | Wyspa | PM000 | Zespó³-W | Blok | Normalny | Pakiet | L2 |  | Do weryfikacji z wykonawc¹ |

| ID | WBS | Activity | Duration | Start | Finish | Predecessors | Complete | Planned start | Planned finish | Calendar | Uwagi harmonogramisty | AC_Wykonawca | AC_Obiekt | AC_Dyscyplina | AC_Faza | AC_Zakres | AC_Opiekun | AC_Obszar | AC_PP_PM | AC_Zespol | AC_Blok | AC_Priorytet | AC_Pakiet | AC_Poziom | Rewizja dokumentu |
| --- | --- | --- | --- | --- | --- | --- | --- | --- | --- | --- | --- | --- | --- | --- | --- | --- | --- | --- | --- | --- | --- | --- | --- | --- | --- |
|  | SEKCJA 12 | **Sekcja 12** |  | 2025-12-02 | 2026-08-28 |  |  |  |  |  |  |  |  |  |  |  |  |  |  |  |  |  |  |  |  |
|  | PODSEKCJA | **Podsekcja 12.A** |  | 2025-12-02 | 2026-08-28 |  |  |  |  |  |  |  |  |  |  |  |  |  |  |  |  |  |  |  |  |
| 30BU48-080 |  | Prefabrykacja ruroci¹gów – Sekcja 12 | 13.7d | 2025-12-02 A | 2025-12-23 A | 30BU48-012, 30BU48-075 SS+5d | 100% | 2025-11-28 | 2025-12-16 |  | Do weryfikacji z wykonawc¹ | GdanskSt | 30BU48 | Ruroci¹g | Budowa | Roboty | Piotr | Wyspa | PM000 | Zespó³-I | Blok | Normalny | Pakiet | L2 |  |
| 30BU48-081 |  | Monta¿ ruroci¹gów – Sekcja 12 | 11.3d | 2026-07-22 A | 2026-08-10 A | 30BU48-080, 30BU48-014 SS+9d | 100% | 2026-07-23 | 2026-08-06 |  | Ryzyko opóŸnienia | GdanskSt | 30BU48 | Ruroci¹g | Budowa | Roboty | Piotr | Wyspa | PM000 | Zespó³-K | Blok | Normalny | Pakiet | L2 |  |
| 30BU48-082 |  | Próba ciœnieniowa – Sekcja 12 | 2d | 2026-08-06 A | 2026-08-07 A | 30BU48-081 | 100% | 2026-08-07 | 2026-08-10 |  |  | GdanskSt | 30BU48 | Ruroci¹g | Budowa | Roboty | Piotr | Wyspa | PM000 | Zespó³-W | Blok | Normalny | Pakiet | L2 | Rev B |
| 30BU48-083 |  | Izolacje – Sekcja 12 | 8d | 2026-08-12 A | 2026-08-26 A | 30BU48-082 | 100% | 2026-08-11 | 2026-08-20 |  |  | GdanskSt | 30BU48 | Ruroci¹g | Budowa | Roboty | Piotr | Wyspa | PM000 | Zespó³-I | Blok | Niski | Pakiet | L2 | Rev A |
| 30BU48-084 |  | Malowanie i oznakowanie – Sekcja 12 | 8d | 2026-08-17 A | 2026-08-28 A | 30BU48-083 FF+2d | 100% | 2026-08-13 | 2026-08-24 |  |  | GdanskSt | 30BU48 | Ruroci¹g | Budowa | Roboty | Piotr | Wyspa | PM000 | Zespó³-W | Blok | Wysoki | Pakiet | L2 |  |
|  | SEKCJA 13 | **Sekcja 13** |  | 2025-12-09 | 2026-09-02 |  |  |  |  |  |  |  |  |  |  |  |  |  |  |  |  |  |  |  |  |
| 30BU48-087 |  | Prefabrykacja ruroci¹gów – Sekcja 13 | 8.9d | 2025-12-09 A | 2025-12-19 A | 30BU48-012, 30BU48-080 SS+5d | 100% | 2025-12-05 | 2025-12-16 |  |  | GdanskSt | 30BU48 | Ruroci¹g | Budowa | Roboty | Piotr | Wyspa | PM000 | Zespó³-K | Blok | Normalny | Pakiet | L2 |  |
| 30BU48-088 |  | Monta¿ ruroci¹gów – Sekcja 13 | 18.8d | 2026-07-27 A | 2026-08-24 A | 30BU48-087, 30BU48-014 SS+10d | 100% | 2026-07-24 | 2026-08-18 |  |  | GdanskSt | 30BU48 | Ruroci¹g | Budowa | Roboty | Piotr | Wyspa | PM000 | Zespó³-I | Blok | Krytyczn | Pakiet | L2 |  |
| 30BU48-089 |  | Próba ciœnieniowa – Sekcja 13 | 3d | 2026-08-20 A | 2026-08-27 A | 30BU48-088 | 100% | 2026-08-19 | 2026-08-21 |  |  | GdanskSt | 30BU48 | Ruroci¹g | Budowa | Roboty | Piotr | Wyspa | PM000 | Zespó³-K | Blok | Normalny | Pakiet | L2 |  |
| 30BU48-090 |  | Izolacje – Sekcja 13 | 5d | 2026-08-26 A | 2026-09-02 A | 30BU48-089 | 100% | 2026-08-24 | 2026-08-28 |  |  | GdanskSt | 30BU48 | Ruroci¹g | Budowa | Roboty | Piotr | Wyspa | PM000 | Zespó³-K | Blok | Normalny | Pakiet | L2 |  |
| 30BU48-091 |  | Malowanie i oznakowanie – Sekcja 13 | 3d | 2026-08-27 A | 2026-09-02 A | 30BU48-090 FF+2d | 100% | 2026-08-28 | 2026-09-01 |  |  | GdanskSt | 30BU48 | Ruroci¹g | Budowa | Roboty | Piotr | Wyspa | PM000 | Zespó³-K | Blok | Normalny | Pakiet | L2 | Rev B |
|  | SEKCJA 14 | **Sekcja 14** |  | 2025-12-17 | 2026-09-03 |  |  |  |  |  |  |  |  |  |  |  |  |  |  |  |  |  |  |  |  |
| 30BU48-092 |  | Prefabrykacja ruroci¹gów – Sekcja 14 | 5.3d | 2025-12-17 A | 2025-12-24 A | 30BU48-012, 30BU48-087 SS+5d | 100% | 2025-12-12 | 2025-12-18 |  |  | GdanskSt | 30BU48 | Ruroci¹g | Budowa | Roboty | Piotr | Wyspa | PM000 | Zespó³-W | Blok | Normalny | Pakiet | L2 |  |
| 30BU48-093 |  | Monta¿ ruroci¹gów – Sekcja 14 | 13.6d | 2026-07-21 A | 2026-08-11 A | 30BU48-092, 30BU48-014 SS+7d | 100% | 2026-07-21 | 2026-08-06 |  | Uzgodnione na koordynacji | GdanskSt | 30BU48 | Ruroci¹g | Budowa | Roboty | Piotr | Wyspa | PM000 | Zespó³-K | Blok | Krytyczn | Pakiet | L2 |  |
| 30BU48-094 |  | Próba ciœnieniowa – Sekcja 14 | 6d | 2026-08-11 A | 2026-08-20 A | 30BU48-093 | 100% | 2026-08-07 | 2026-08-14 |  |  | GdanskSt | 30BU48 | Ruroci¹g | Budowa | Roboty | Piotr | Wyspa | PM000 | Zespó³-W | Blok | Wysoki | Pakiet | L2 |  |
| 30BU48-095 |  | Izolacje – Sekcja 14 | 12d | 2026-08-18 A | 2026-09-02 A | 30BU48-094 | 100% | 2026-08-17 | 2026-09-01 |  |  | GdanskSt | 30BU48 | Ruroci¹g | Budowa | Roboty | Piotr | Wyspa | PM000 | Zespó³-W | Blok | Normalny | Pakiet | L2 |  |
| 30BU48-096 |  | Malowanie i oznakowanie – Sekcja 14 | 4d | 2026-08-28 A | 2026-09-03 A | 30BU48-095 FF+2d | 100% | 2026-08-31 | 2026-09-03 |  |  | GdanskSt | 30BU48 | Ruroci¹g | Budowa | Roboty | Piotr | Wyspa | PM000 | Zespó³-K | Blok | Wysoki | Pakiet | L2 |  |
|  | SEKCJA 15 | **Sekcja 15** |  | 2025-12-22 | 2026-08-26 |  |  |  |  |  |  |  |  |  |  |  |  |  |  |  |  |  |  |  |  |
|  | PODSEKCJA | **Podsekcja 15.A** |  | 2025-12-22 | 2026-08-26 |  |  |  |  |  |  |  |  |  |  |  |  |  |  |  |  |  |  |  |  |
| 30BU48-099 |  | Prefabrykacja ruroci¹gów – Sekcja 15 | 5.5d | 2025-12-22 A | 2025-12-29 A | 30BU48-012, 30BU48-092 SS+5d | 100% | 2025-12-19 | 2025-12-25 | Kalendarz 6-dniowy | Ryzyko opóŸnienia | GdanskSt | 30BU48 | Ruroci¹g | Budowa | Roboty | Piotr | Wyspa | PM300 | Zespó³-E | Blok | Niski | Pakiet | L2 |  |
| 30BU48-100 |  | Monta¿ ruroci¹gów – Sekcja 15 | 9.3d | 2026-07-14 A | 2026-07-27 A | 30BU48-099, 30BU48-014 SS+3d | 100% | 2026-07-15 | 2026-07-27 |  |  | GdanskSt | 30BU48 | Ruroci¹g | Budowa | Roboty | Piotr | Wyspa | PM000 | Zespó³-K | Blok | Wysoki | Pakiet | L2 |  |
| 30BU48-101 |  | Próba ciœnieniowa – Sekcja 15 | 2d | 2026-07-30 A | 2026-08-03 A | 30BU48-100 | 100% | 2026-07-28 | 2026-07-29 |  | Czeka na dostawê | GdanskSt | 30BU48 | Ruroci¹g | Budowa | Roboty | Piotr | Wyspa | PM000 | Zespó³-W | Blok | Normalny | Pakiet | L2 |  |
| 30BU48-102 |  | Izolacje – Sekcja 15 | 12d | 2026-08-03 A | 2026-08-18 A | 30BU48-101 | 100% | 2026-07-30 | 2026-08-14 |  | Do weryfikacji z wykonawc¹ | GdanskSt | 30BU48 | Ruroci¹g | Budowa | Roboty | Piotr | Wyspa | PM000 | Zespó³-W | Blok | Normalny | Pakiet | L2 |  |
| 30BU48-103 |  | Malowanie i oznakowanie – Sekcja 15 | 2d | 2026-08-20 A | 2026-08-26 A | 30BU48-102 FF+2d | 100% | 2026-08-17 | 2026-08-18 |  |  | GdanskSt | 30BU48 | Ruroci¹g | Budowa | Roboty | Piotr | Wyspa | PM100 | Zespó³-I | Blok | Normalny | Pakiet | L2 | Rev C |

| ID | WBS | Activity | Duration | Start | Finish | Predecessors | Complete | Planned start | Planned finish | Calendar | AC_Wykonawca | AC_Obiekt | AC_Dyscyplina | AC_Faza | AC_Zakres | AC_Opiekun | AC_Obszar | AC_PP_PM | AC_Zespol | AC_Blok | AC_Priorytet | AC_Pakiet | AC_Poziom | Rewizja dokumentu | Uwagi harmonogramisty |
| --- | --- | --- | --- | --- | --- | --- | --- | --- | --- | --- | --- | --- | --- | --- | --- | --- | --- | --- | --- | --- | --- | --- | --- | --- | --- |
|  | SEKCJA 16 | **Sekcja 16** |  | 2025-12-30 | 2026-09-17 |  |  |  |  |  |  |  |  |  |  |  |  |  |  |  |  |  |  |  |  |
| 30BU48-104 |  | Prefabrykacja ruroci¹gów – Sekcja 16 | 11.6d | 2025-12-30 A | 2026-01-14 A | 30BU48-012, 30BU48-099 SS+5d | 100% | 2025-12-26 | 2026-01-09 |  | GdanskSt | 30BU48 | Ruroci¹g | Budowa | Roboty | Piotr | Wyspa | PM000 | Zespó³-K | Blok | Wysoki | Pakiet | L2 |  |  |
| 30BU48-105 |  | Monta¿ ruroci¹gów – Sekcja 16 | 24.7d | 2026-07-23 A | 2026-08-27 A | 30BU48-104, 30BU48-014 SS+8d | 100% | 2026-07-22 | 2026-08-24 |  | GdanskSt | 30BU48 | Ruroci¹g | Budowa | Roboty | Piotr | Wyspa | PM000 | Zespó³-W | Blok | Normalny | Pakiet | L2 |  |  |
| 30BU48-106 |  | Próba ciœnieniowa – Sekcja 16 | 4d | 2026-08-27 A | 2026-09-02 A | 30BU48-105 | 100% | 2026-08-25 | 2026-08-28 |  | GdanskSt | 30BU48 | Ruroci¹g | Budowa | Roboty | Piotr | Wyspa | PM000 | Zespó³-K | Blok | Wysoki | Pakiet | L2 |  |  |
| 30BU48-107 |  | Izolacje – Sekcja 16 | 11d | 2026-08-28 A | 2026-09-11 A | 30BU48-106 | 100% | 2026-08-31 | 2026-09-14 |  | GdanskSt | 30BU48 | Ruroci¹g | Budowa | Roboty | Piotr | Wyspa | PM200 | Zespó³-I | Blok | Normalny | Pakiet | L2 |  |  |
| 30BU48-108 |  | Malowanie i oznakowanie – Sekcja 16 | 2d | 2026-09-16 A | 2026-09-17 A | 30BU48-107 FF+2d | 100% | 2026-09-15 | 2026-09-16 | Kalendarz 6-dniowy | GdanskSt | 30BU48 | Ruroci¹g | Budowa | Roboty | Piotr | Wyspa | PM000 | Zespó³-W | Blok | Normalny | Pakiet | L2 | Rev C |  |
|  | SEKCJA 17 | **Sekcja 17** |  | 2026-01-05 | 2026-08-14 |  |  |  |  |  |  |  |  |  |  |  |  |  |  |  |  |  |  |  |  |
| 30BU48-111 |  | Prefabrykacja ruroci¹gów – Sekcja 17 | 11.4d | 2026-01-05 A | 2026-01-20 A | 30BU48-012, 30BU48-104 SS+5d | 100% | 2026-01-02 | 2026-01-16 |  | GdanskSt | 30BU48 | Ruroci¹g | Budowa | Roboty | Piotr | Wyspa | PM000 | Zespó³-K | Blok | Normalny | Pakiet | L2 |  |  |
| 30BU48-112 |  | Monta¿ ruroci¹gów – Sekcja 17 | 13d | 2026-07-15 A | 2026-08-05 A | 30BU48-111, 30BU48-014 SS | 100% | 2026-07-10 | 2026-07-28 |  | GdanskSt | 30BU48 | Ruroci¹g | Budowa | Roboty | Piotr | Wyspa | PM000 | Zespó³-W | Blok | Normalny | Pakiet | L2 | Rev A | Ryzyko opóŸnienia |
| 30BU48-113 |  | Próba ciœnieniowa – Sekcja 17 | 2d | 2026-07-30 A | 2026-07-31 A | 30BU48-112 | 100% | 2026-07-29 | 2026-07-30 | Kalendarz 6-dniowy | GdanskSt | 30BU48 | Ruroci¹g | Budowa | Roboty | Piotr | Wyspa | PM000 | Zespó³-W | Blok | Normalny | Pakiet | L2 |  |  |
| 30BU48-114 |  | Izolacje – Sekcja 17 | 3d | 2026-07-31 A | 2026-08-04 A | 30BU48-113 | 100% |  |  |  | GdanskSt | 30BU48 | Ruroci¹g | Budowa | Roboty | Piotr | Wyspa | PM000 | Zespó³-I | Blok | Normalny | Pakiet | L2 | Rev B |  |
| 30BU48-115 |  | Malowanie i oznakowanie – Sekcja 17 | 2d | 2026-08-10 A | 2026-08-14 A | 30BU48-114 FF+2d | 100% | 2026-08-05 | 2026-08-06 |  | GdanskSt | 30BU48 | Ruroci¹g | Budowa | Roboty | Piotr | Wyspa | PM000 | Zespó³-W | Blok | Normalny | Pakiet | L2 |  |  |
|  | SEKCJA 18 | **Sekcja 18** |  | 2026-01-09 | 2026-09-02 |  |  |  |  |  |  |  |  |  |  |  |  |  |  |  |  |  |  |  |  |
|  | PODSEKCJA | **Podsekcja 18.A** |  | 2026-01-09 | 2026-09-02 |  |  |  |  |  |  |  |  |  |  |  |  |  |  |  |  |  |  |  |  |
| 30BU48-116 |  | Prefabrykacja ruroci¹gów – Sekcja 18 | 3.1d | 2026-01-09 A | 2026-01-13 A | 30BU48-012, 30BU48-111 SS+5d | 100% |  |  |  | GdanskSt | 30BU48 | Ruroci¹g | Budowa | Roboty | Piotr | Wyspa | PM000 | Zespó³-K | Blok | Wysoki | Pakiet | L2 | Rev B |  |
| 30BU48-117 |  | Monta¿ ruroci¹gów – Sekcja 18 | 12.4d | 2026-07-27 A | 2026-08-11 A | 30BU48-116, 30BU48-014 SS+10d | 100% | 2026-07-24 | 2026-08-10 |  | GdanskSt | 30BU48 | Ruroci¹g | Budowa | Roboty | Piotr | Wyspa | PM000 | Zespó³-E | Blok | Normalny | Pakiet | L2 |  |  |
| 30BU48-118 |  | Próba ciœnieniowa – Sekcja 18 | 6d | 2026-08-10 A | 2026-08-17 A | 30BU48-117 | 100% | 2026-08-11 | 2026-08-18 |  | GdanskSt | 30BU48 | Ruroci¹g | Budowa | Roboty | Piotr | Wyspa | PM000 | Zespó³-K | Blok | Krytyczn | Pakiet | L2 |  |  |
| 30BU48-119 |  | Izolacje – Sekcja 18 | 3d | 2026-08-20 A | 2026-08-27 A | 30BU48-118 | 100% | 2026-08-19 | 2026-08-21 |  | GdanskSt | 30BU48 | Ruroci¹g | Budowa | Roboty | Piotr | Wyspa | PM000 | Zespó³-W | Blok | Normalny | Pakiet | L2 |  |  |
| 30BU48-120 |  | Malowanie i oznakowanie – Sekcja 18 | 6d | 2026-08-21 A | 2026-09-02 A | 30BU48-119 FF+2d | 100% | 2026-08-18 | 2026-08-25 |  | GdanskSt | 30BU48 | Ruroci¹g | Budowa | Roboty | Piotr | Wyspa | PM000 | Zespó³-W | Blok | Normalny | Pakiet | L2 | Rev C | Czeka na dostawê |
|  | SEKCJA 19 | **Sekcja 19** |  | 2026-01-19 | 2026-09-07 |  |  |  |  |  |  |  |  |  |  |  |  |  |  |  |  |  |  |  |  |
| 30BU48-123 |  | Prefabrykacja ruroci¹gów – Sekcja 19 | 6.8d | 2026-01-19 A | 2026-01-27 A | 30BU48-012, 30BU48-116 SS+5d | 100% | 2026-01-16 | 2026-01-23 |  | GdanskSt | 30BU48 | Ruroci¹g | Budowa | Roboty | Piotr | Wyspa | PM000 | Zespó³-W | Blok | Normalny | Pakiet | L2 | Rev B |  |
| 30BU48-124 |  | Monta¿ ruroci¹gów – Sekcja 19 | 15.8d | 2026-07-21 A | 2026-08-10 A | 30BU48-123, 30BU48-014 SS+8d | 100% | 2026-07-22 | 2026-08-11 |  | GdanskSt | 30BU48 | Ruroci¹g | Budowa | Roboty | Piotr | Wyspa | PM000 | Zespó³-E | Blok | Niski | Pakiet | L2 | Rev A | Ryzyko opóŸnienia |
| 30BU48-125 |  | Próba ciœnieniowa – Sekcja 19 | 4d | 2026-08-14 A | 2026-08-21 A | 30BU48-124 | 100% | 2026-08-12 | 2026-08-17 |  | GdanskSt | 30BU48 | Ruroci¹g | Budowa | Roboty | Piotr | Wyspa | PM000 | Zespó³-W | Blok | Normalny | Pakiet | L2 |  | Czeka na dostawê |
| 30BU48-126 |  | Izolacje – Sekcja 19 | 8d | 2026-08-18 A | 2026-08-28 A | 30BU48-125 | 100% | 2026-08-18 | 2026-08-27 |  | GdanskSt | 30BU48 | Ruroci¹g | Budowa | Roboty | Piotr | Wyspa | PM000 | Zespó³-K | Blok | Wysoki | Pakiet | L2 |  |  |
| 30BU48-127 |  | Malowanie i oznakowanie – Sekcja 19 | 8d | 2026-08-25 A | 2026-09-07 A | 30BU48-126 FF+2d | 100% | 2026-08-20 | 2026-08-31 |  | GdanskSt | 30BU48 | Ruroci¹g | Budowa | Roboty | Piotr | Wyspa | PM000 | Zespó³-W | Blok | Normalny | Pakiet | L2 |  |  |

| ID | WBS | Activity | Type | Duration | Start | Finish | Predecessors | Complete | Actual finish | Planned start | Planned finish | Calendar | AC_Wykonawca | AC_Obiekt | AC_Dyscyplina | AC_Faza | AC_Zakres | AC_Opiekun | AC_Obszar | AC_PP_PM | AC_Zespol | AC_Blok | AC_Priorytet | AC_Pakiet | AC_Poziom | Rewizja dokumentu | Uwagi harmonogramisty |
| --- | --- | --- | --- | --- | --- | --- | --- | --- | --- | --- | --- | --- | --- | --- | --- | --- | --- | --- | --- | --- | --- | --- | --- | --- | --- | --- | --- |
|  | SEKCJA 20 | **Sekcja 20** |  |  | 2026-01-28 | 2026-09-07 |  |  |  |  |  |  |  |  |  |  |  |  |  |  |  |  |  |  |  |  |  |
| 30BU48-128 |  | Prefabrykacja ruroci¹gów – Sekcja 20 |  | 9.3d | 2026-01-28 A | 2026-02-09 A | 30BU48-012, 30BU48-123 SS+5d | 100% |  | 2026-01-23 | 2026-02-04 |  | GdanskSt | 30BU48 | Ruroci¹g | Budowa | Roboty | Piotr | Wyspa | PM000 | Zespó³-K | Blok | Wysoki | Pakiet | L2 |  |  |
| 30BU48-129 |  | Monta¿ ruroci¹gów – Sekcja 20 |  | 18.2d | 2026-07-20 A | 2026-08-13 A | 30BU48-128, 30BU48-014 SS+6d | 100% |  | 2026-07-20 | 2026-08-12 |  | GdanskSt | 30BU48 | Ruroci¹g | Budowa | Roboty | Piotr | Wyspa | PM000 | Zespó³-K | Blok | Normalny | Pakiet | L2 |  |  |
| 30BU48-130 |  | Próba ciœnieniowa – Sekcja 20 |  | 3d | 2026-08-12 A | 2026-08-18 A | 30BU48-129 | 100% |  | 2026-08-13 | 2026-08-17 |  | GdanskSt | 30BU48 | Ruroci¹g | Budowa | Roboty | Piotr | Wyspa | PM000 | Zespó³-E | Blok | Niski | Pakiet | L2 | Rev A |  |
| 30BU48-131 |  | Izolacje – Sekcja 20 |  | 8d | 2026-08-19 A | 2026-09-01 A | 30BU48-130 | 100% |  | 2026-08-18 | 2026-08-27 |  | GdanskSt | 30BU48 | Ruroci¹g | Budowa | Roboty | Piotr | Wyspa | PM000 | Zespó³-I | Blok | Normalny | Pakiet | L2 |  |  |
| 30BU48-132 |  | Malowanie i oznakowanie – Sekcja 20 |  | 3d | 2026-08-31 A | 2026-09-07 A | 30BU48-131 FF+2d | 100% |  | 2026-08-27 | 2026-08-31 |  | GdanskSt | 30BU48 | Ruroci¹g | Budowa | Roboty | Piotr | Wyspa | PM000 | Zespó³-E | Blok | Krytyczn | Pakiet | L2 | Rev B |  |
|  | SEKCJA 21 | **Sekcja 21** |  |  | 2026-01-29 | 2026-09-11 |  |  |  |  |  |  |  |  |  |  |  |  |  |  |  |  |  |  |  |  |  |
|  | PODSEKCJA | **Podsekcja 21.A** |  |  | 2026-01-29 | 2026-09-11 |  |  |  |  |  |  |  |  |  |  |  |  |  |  |  |  |  |  |  |  |  |
| 30BU48-135 |  | Prefabrykacja ruroci¹gów – Sekcja 21 |  | 6.7d | 2026-01-29 A | 2026-02-05 A | 30BU48-012, 30BU48-128 SS+5d | 100% |  | 2026-01-30 | 2026-02-06 |  | GdanskSt | 30BU48 | Ruroci¹g | Budowa | Roboty | Piotr | Wyspa | PM000 | Zespó³-E | Blok | Normalny | Pakiet | L2 |  |  |
| 30BU48-136 |  | Monta¿ ruroci¹gów – Sekcja 21 |  | 21.3d | 2026-07-22 A | 2026-08-19 A | 30BU48-135, 30BU48-014 SS+9d | 100% |  | 2026-07-23 | 2026-08-20 |  | GdanskSt | 30BU48 | Ruroci¹g | Budowa | Roboty | Piotr | Wyspa | PM000 | Zespó³-W | Blok | Normalny | Pakiet | L2 |  |  |
| 30BU48-137 |  | Próba ciœnieniowa – Sekcja 21 |  | 4d | 2026-08-20 A | 2026-08-26 A | 30BU48-136 | 100% |  | 2026-08-21 | 2026-08-26 |  | GdanskSt | 30BU48 | Ruroci¹g | Budowa | Roboty | Piotr | Wyspa | PM000 | Zespó³-K | Blok | Wysoki | Pakiet | L2 |  | Do weryfikacji z wykonawc¹ |
| 30BU48-138 |  | Izolacje – Sekcja 21 |  | 6d | 2026-08-26 A | 2026-09-07 A | 30BU48-137 | 100% |  | 2026-08-27 | 2026-09-03 |  | GdanskSt | 30BU48 | Ruroci¹g | Budowa | Roboty | Piotr | Wyspa | PM000 | Zespó³-W | Blok | Normalny | Pakiet | L2 | Rev A | Czeka na dostawê |
| 30BU48-139 |  | Malowanie i oznakowanie – Sekcja 21 |  | 6d | 2026-09-02 A | 2026-09-11 A | 30BU48-138 FF+2d | 100% |  | 2026-08-31 | 2026-09-07 |  | GdanskSt | 30BU48 | Ruroci¹g | Budowa | Roboty | Piotr | Wyspa | PM000 | Zespó³-W | Blok | Normalny | Pakiet | L2 | Rev B |  |
|  | SEKCJA 22 | **Sekcja 22** |  |  | 2026-02-06 | 2026-09-03 |  |  |  |  |  |  |  |  |  |  |  |  |  |  |  |  |  |  |  |  |  |
| 30BU48-140 |  | Prefabrykacja ruroci¹gów – Sekcja 22 |  | 5.8d | 2026-02-06 A | 2026-02-16 A | 30BU48-012, 30BU48-135 SS+5d | 100% |  | 2026-02-06 | 2026-02-12 |  | GdanskSt | 30BU48 | Ruroci¹g | Budowa | Roboty | Piotr | Wyspa | PM000 | Zespó³-K | Blok | Normalny | Pakiet | L2 |  |  |
| 30BU48-141 |  | Monta¿ ruroci¹gów – Sekcja 22 |  | 19d | 2026-07-23 A | 2026-08-20 A | 30BU48-140, 30BU48-014 SS+8d | 100% |  | 2026-07-22 | 2026-08-17 | Kalendarz 6-dniowy | GdanskSt | 30BU48 | Ruroci¹g | Budowa | Roboty | Piotr | Wyspa | PM000 | Zespó³-W | Blok | Wysoki | Pakiet | L2 | Rev C |  |
| 30BU48-142 |  | Próba ciœnieniowa – Sekcja 22 |  | 5d | 2026-08-21 A | 2026-09-01 A | 30BU48-141 | 100% |  | 2026-08-18 | 2026-08-24 |  | GdanskSt | 30BU48 | Ruroci¹g | Budowa | Roboty | Piotr | Wyspa | PM000 | Zespó³-K | Blok | Normalny | Pakiet | L2 |  |  |
| 30BU48-144 |  | Malowanie i oznakowanie – Sekcja 22 |  | 7d | 2026-08-26 A | 2026-09-03 A | 30BU48-143 FF+2d | 100% |  | 2026-08-24 | 2026-09-01 |  | GdanskSt | 30BU48 | Ruroci¹g | Budowa | Roboty | Piotr | Wyspa | PM000 | Zespó³-K | Blok | Normalny | Pakiet | L2 | Rev A |  |
| 30BU48-143 |  | Izolacje – Sekcja 22 |  | 4d | 2026-08-28 A | 2026-09-02 A | 30BU48-142 | 100% |  | 2026-08-25 | 2026-08-28 |  | GdanskSt | 30BU48 | Ruroci¹g | Budowa | Roboty | Piotr | Wyspa | PM000 | Zespó³-W | Blok | Wysoki | Pakiet | L2 |  |  |
|  | PROJ | **Projektowanie** |  |  | 2025-01-13 | 2025-07-01 |  |  |  |  |  |  |  |  |  |  |  |  |  |  |  |  |  |  |  |  |  |
|  | DOKUMENTAC | **Dokumentacja** |  |  | 2025-01-13 | 2025-07-01 |  |  |  |  |  |  |  |  |  |  |  |  |  |  |  |  |  |  |  |  |  |
| 30BU48-001 |  | Projekt wykonawczy – Kocio³ odzyskowy HRSG |  | 98d | 2025-01-13 A | 2025-05-30 A |  | 100% |  | 2025-01-13 | 2025-05-28 |  | GdanskSt | 30BU48 | Budowlan | Projekto | Projekt | Piotr | Wyspa | PM000 | Zespó³-K | Blok | Normalny | Pakiet | L2 |  |  |
| 30BU48-002 |  | Uzgodnienie dokumentacji z Inwestorem |  | 10d | 2025-05-28 A | 2025-06-12 A | 30BU48-001 | 100% |  | 2025-05-29 | 2025-06-11 |  | GdanskSt | 30BU48 | Budowlan | Projekto | Projekt | Piotr | Wyspa | PM000 | Zespó³-W | Blok | Normalny | Pakiet | L2 |  | Ryzyko opóŸnienia |
| 30BU48-003 |  | Zatwierdzenie dokumentacji do realizacji |  | 12d | 2025-06-11 A | 2025-06-27 A | 30BU48-002 | 100% |  | 2025-06-12 | 2025-06-27 |  | GdanskSt | 30BU48 | Budowlan | Projekto | Projekt | Piotr | Wyspa | PM000 | Zespó³-W | Blok | Krytyczn | Pakiet | L2 |  |  |
| 30BU48-004 |  | KM: Dokumentacja zatwierdzona – Kocio³ odzyskowy HRSG | milestone | 0d | 2025-07-01 A | 2025-07-01 | 30BU48-003 | 100% | 2025-06-30 | 2025-06-30 | 2025-06-30 | Kalendarz 6-dniowy | GdanskSt | 30BU48 | Budowlan | Projekto | Kamieñ | Piotr | Wyspa | PM000 | Zespó³-W | Blok | Normalny | Pakiet | L1 |  |  |

| ID | WBS | Activity | Type | Duration | Start | Finish | Predecessors | Complete | Remaining | Actual finish | Planned start | Planned finish | Total float | Free float | AC_Wykonawca | AC_Obiekt | AC_Dyscyplina | AC_Faza | AC_Zakres | AC_Opiekun | AC_Obszar | AC_PP_PM | AC_Zespol | AC_Blok | AC_Priorytet | AC_Pakiet | AC_Poziom | Rewizja dokumentu | Uwagi harmonogramisty |
| --- | --- | --- | --- | --- | --- | --- | --- | --- | --- | --- | --- | --- | --- | --- | --- | --- | --- | --- | --- | --- | --- | --- | --- | --- | --- | --- | --- | --- | --- |
|  | ROZR | **Rozruch** |  |  | 2026-09-14 | 2026-10-21 |  |  |  |  |  |  |  |  |  |  |  |  |  |  |  |  |  |  |  |  |  |  |  |
|  | ROZRUCH | **Rozruch** |  |  | 2026-09-14 | 2026-10-21 |  |  |  |  |  |  |  |  |  |  |  |  |  |  |  |  |  |  |  |  |  |  |  |
| 30BU48-149 |  | Przegl¹d gotowoœci do rozruchu |  | 5d | 2026-09-14 A | 2026-09-18 A | 30BU48-148, 30BU48-019, 30BU48-024, 30BU48-026 | 100% |  |  | 2026-09-15 | 2026-09-21 |  |  | GdanskSt | 30BU48 | Rozruch | Rozruch | Rozruch | Piotr | Wyspa | PM000 | Zespó³-K | Blok | Normalny | Pakiet | L2 |  |  |
| 30BU48-150 |  | Rozruch na zimno |  | 9d | 2026-09-24 A | 2026-10-06 A | 30BU48-149 | 100% |  |  | 2026-09-22 | 2026-10-02 |  |  | GdanskSt | 30BU48 | Rozruch | Rozruch | Rozruch | Piotr | Wyspa | PM000 | Zespó³-K | Blok | Normalny | Pakiet | L2 |  |  |
| 30BU48-151 |  | Rozruch na gor¹co / próby ruchowe |  | 18d | 2026-10-07 A | 2026-10-20 | 30BU48-150 | 42% | 10.4d |  | 2026-10-05 | 2026-10-28 | 375.6d | 0d | GdanskSt | 30BU48 | Rozruch | Rozruch | Rozruch | Piotr | Wyspa | PM000 | Zespó³-K | Blok | Normalny | Pakiet | L2 | Rev B |  |
| 30BU48-152 |  | KM: Odbiór koñcowy – Kocio³ odzyskowy HRSG | milestone | 0d | 2026-10-21 | 2026-10-21 | 30BU48-151 |  |  |  | 2026-10-29 | 2026-10-29 | 383.2d | 0d | GdanskSt | 30BU48 | Rozruch | Rozruch | Kamieñ | Piotr | Wyspa | PM000 | Zespó³-K | Blok | Wysoki | Pakiet | L1 |  | Ryzyko opóŸnienia |
|  | ZAKU | **Zakupy** |  |  | 2025-02-10 | 2026-07-13 |  |  |  |  |  |  |  |  |  |  |  |  |  |  |  |  |  |  |  |  |  |  |  |
|  | DOSTAWY | **Dostawy** |  |  | 2025-07-07 | 2026-07-13 |  |  |  |  |  |  |  |  |  |  |  |  |  |  |  |  |  |  |  |  |  |  |  |
| 30BU48-008 |  | Produkcja u dostawcy |  | 241d | 2025-07-07 A | 2026-06-10 A | 30BU48-007 | 100% |  |  | 2025-07-08 | 2026-06-09 |  |  | GdanskSt | 30BU48 | Mechanic | Zakupy | Dostawa | Piotr | Wyspa | PM000 | Zespó³-W | Blok | Normalny | Pakiet | L2 |  | Uzgodnione na koordynacji |
| 30BU48-009 |  | Testy FAT |  | 4d | 2026-06-09 A | 2026-06-15 A | 30BU48-008 | 100% |  |  | 2026-06-10 | 2026-06-15 |  |  | GdanskSt | 30BU48 | Mechanic | Zakupy | Dostawa | Piotr | Wyspa | PM000 | Zespó³-W | Blok | Niski | Pakiet | L2 |  |  |
| 30BU48-010 |  | Transport i dostawa na plac budowy |  | 18d | 2026-06-17 A | 2026-07-13 A | 30BU48-009 | 100% |  |  | 2026-06-16 | 2026-07-09 |  |  | GdanskSt | 30BU48 | Mechanic | Zakupy | Dostawa | Piotr | Wyspa | PM000 | Zespó³-K | Blok | Normalny | Pakiet | L2 |  |  |
| 30BU48-011 |  | KM: Dostawa na budowê – Kocio³ odzyskowy HRSG | milestone | 0d | 2026-07-10 A | 2026-07-10 | 30BU48-010 | 100% |  | 2026-07-09 |  |  |  |  | GdanskSt | 30BU48 | Mechanic | Zakupy | Kamieñ | Piotr | Wyspa | PM000 | Zespó³-W | Blok | Normalny | Pakiet | L1 | Rev A |  |
|  | ZAMÓWIENIA | **Zamówienia** |  |  | 2025-02-10 | 2025-07-11 |  |  |  |  |  |  |  |  |  |  |  |  |  |  |  |  |  |  |  |  |  |  |  |
| 30BU48-005 |  | Zapytanie ofertowe |  | 23d | 2025-02-10 A | 2025-03-13 A | 30BU48-001 SS+20d | 100% |  |  | 2025-02-10 | 2025-03-12 |  |  | GdanskSt | 30BU48 | Mechanic | Zakupy | Dostawa | Piotr | Wyspa | PM300 | Zespó³-E | Blok | Wysoki | Pakiet | L2 |  |  |
| 30BU48-006 |  | Analiza i wybór ofert |  | 16d | 2025-03-18 A | 2025-04-08 A | 30BU48-005 | 100% |  |  | 2025-03-13 | 2025-04-03 |  |  | GdanskSt | 30BU48 | Mechanic | Zakupy | Dostawa | Piotr | Wyspa | PM000 | Zespó³-W | Blok | Normalny | Pakiet | L2 |  |  |
| 30BU48-007 |  | Zawarcie umowy / zamówienie |  | 6d | 2025-07-01 A | 2025-07-11 A | 30BU48-006, 30BU48-004 SS, 29UF44-004 SF+15d | 100% |  |  | 2025-06-30 | 2025-07-07 |  |  | GdanskSt | 30BU48 | Mechanic | Zakupy | Dostawa | Piotr | Wyspa | PM000 | Zespó³-W | Blok | Normalny | Pakiet | L1 | Rev C |  |
|  | WYSPA_TURBIN | **Wyspa turbinowa** |  |  | 2025-01-16 | 2028-04-24 |  |  |  |  |  |  |  |  |  |  |  |  |  |  |  |  |  |  |  |  |  |  |  |
|  | 10BW45 | **10BW45 – Generator** |  |  | 2025-04-02 | 2026-09-15 |  |  |  |  |  |  |  |  |  |  |  |  |  |  |  |  |  |  |  |  |  |  |  |
|  | BUDO | **Budowa** |  |  | 2025-11-17 | 2026-07-28 |  |  |  |  |  |  |  |  |  |  |  |  |  |  |  |  |  |  |  |  |  |  |  |
|  | AKPIA | **AKPiA** |  |  | 2026-04-30 | 2026-05-20 |  |  |  |  |  |  |  |  |  |  |  |  |  |  |  |  |  |  |  |  |  |  |  |
| 10BW45-092 |  | Monta¿ uk³adów AKPiA |  | 13d | 2026-04-30 A | 2026-05-20 A | 10BW45-014 SS+5d | 100% |  |  | 2026-05-01 | 2026-05-19 |  |  | Kablex | 10BW45 | AKPiA | Budowa | Roboty | Krzyszto | Wyspa | PM000 | Zespó³-K | Blok | Normalny | Pakiet | L2 |  | Uzgodnione na koordynacji |
|  | ELEKTRYKA | **Elektryka** |  |  | 2026-05-08 | 2026-06-09 |  |  |  |  |  |  |  |  |  |  |  |  |  |  |  |  |  |  |  |  |  |  |  |
| 10BW45-025 |  | Uk³adanie kabli – trasa 02 |  | 20d | 2026-05-08 A | 2026-06-08 A | 10BW45-014 SS+10d | 100% |  |  | 2026-05-08 | 2026-06-04 |  |  | Kablex | 10BW45 | Elektryc | Budowa | Roboty | Krzyszto | Wyspa | PM000 | Zespó³-K | Blok | Wysoki | Pakiet | L2 |  |  |
| 10BW45-073 |  | Uk³adanie kabli – trasa 10 |  | 9d | 2026-05-08 A | 2026-05-21 A | 10BW45-014 SS+10d | 100% |  |  | 2026-05-08 | 2026-05-20 |  |  | Kablex | 10BW45 | Elektryc | Budowa | Roboty | Krzyszto | Wyspa | PM000 | Zespó³-W | Blok | Wysoki | Pakiet | L2 |  |  |
| 10BW45-049 |  | Uk³adanie kabli – trasa 06 |  | 18d | 2026-05-12 A | 2026-06-09 A | 10BW45-014 SS+10d | 100% |  |  | 2026-05-08 | 2026-06-02 |  |  | Kablex | 10BW45 | Elektryc | Budowa | Roboty | Krzyszto | Wyspa | PM000 | Zespó³-K | Blok | Normalny | Pakiet | L2 |  |  |
| 10BW45-037 |  | Uk³adanie kabli – trasa 04 |  | 7d | 2026-05-13 A | 2026-05-22 A | 10BW45-014 SS+10d | 100% |  |  | 2026-05-08 | 2026-05-18 |  |  | Kablex | 10BW45 | Elektryc | Budowa | Roboty | Krzyszto | Wyspa | PM300 | Zespó³-E | Blok | Wysoki | Pakiet | L2 |  |  |
| 10BW45-038 |  | Pod³¹czenia i pomiary – trasa 04 |  | 5d | 2026-05-13 A | 2026-05-21 A | 10BW45-037 FF | 100% |  |  | 2026-05-12 | 2026-05-18 |  |  | Kablex | 10BW45 | Elektryc | Budowa | Roboty | Krzyszto | Wyspa | PM000 | Zespó³-W | Blok | Wysoki | Pakiet | L2 | Rev B |  |
| 10BW45-061 |  | Uk³adanie kabli – trasa 08 |  | 17d | 2026-05-13 A | 2026-06-09 A | 10BW45-014 SS+10d | 100% |  |  | 2026-05-08 | 2026-06-01 |  |  | Kablex | 10BW45 | Elektryc | Budowa | Roboty | Krzyszto | Wyspa | PM000 | Zespó³-W | Blok | Normalny | Pakiet | L2 | Rev C |  |
| 10BW45-085 |  | Uk³adanie kabli – trasa 12 |  | 8d | 2026-05-13 A | 2026-05-26 A | 10BW45-014 SS+10d | 100% |  |  | 2026-05-08 | 2026-05-19 |  |  | Kablex | 10BW45 | Elektryc | Budowa | Roboty | Krzyszto | Wyspa | PM000 | Zespó³-K | Blok | Normalny | Pakiet | L2 |  | Uzgodnione na koordynacji |
| 10BW45-086 |  | Pod³¹czenia i pomiary – trasa 12 |  | 7d | 2026-05-13 A | 2026-05-21 A | 10BW45-085 FF | 100% |  |  | 2026-05-11 | 2026-05-19 |  |  | Kablex | 10BW45 | Elektryc | Budowa | Roboty | Krzyszto | Wyspa | PM000 | Zespó³-E | Blok | Normalny | Pakiet | L2 | Rev B | Ryzyko opóŸnienia |
| 10BW45-074 |  | Pod³¹czenia i pomiary – trasa 10 |  | 6d | 2026-05-18 A | 2026-05-27 A | 10BW45-073 FF | 100% |  |  | 2026-05-13 | 2026-05-20 |  |  | Kablex | 10BW45 | Elektryc | Budowa | Roboty | Krzyszto | Wyspa | PM000 | Zespó³-K | Blok | Normalny | Pakiet | L2 | Rev A |  |
| 10BW45-050 |  | Pod³¹czenia i pomiary – trasa 06 |  | 6d | 2026-05-25 A | 2026-06-01 A | 10BW45-049 FF | 100% |  |  | 2026-05-26 | 2026-06-02 |  |  | Kablex | 10BW45 | Elektryc | Budowa | Roboty | Krzyszto | Wyspa | PM000 | Zespó³-W | Blok | Normalny | Pakiet | L2 |  |  |
| 10BW45-026 |  | Pod³¹czenia i pomiary – trasa 02 |  | 7d | 2026-05-27 A | 2026-06-08 A | 10BW45-025 FF | 100% |  |  | 2026-05-27 | 2026-06-04 |  |  | Kablex | 10BW45 | Elektryc | Budowa | Roboty | Krzyszto | Wyspa | PM000 | Zespó³-K | Blok | Normalny | Pakiet | L2 |  |  |
| 10BW45-062 |  | Pod³¹czenia i pomiary – trasa 08 |  | 6d | 2026-05-27 A | 2026-06-05 A | 10BW45-061 FF | 100% |  |  | 2026-05-25 | 2026-06-01 |  |  | Kablex | 10BW45 | Elektryc | Budowa | Roboty | Krzyszto | Wyspa | PM000 | Zespó³-K | Blok | Normalny | Pakiet | L2 |  | Do weryfikacji z wykonawc¹ |

| ID | WBS | Activity | Type | Duration | Start | Finish | Predecessors | Complete | Actual finish | Planned start | Planned finish | Calendar | Uwagi harmonogramisty | AC_Wykonawca | AC_Obiekt | AC_Dyscyplina | AC_Faza | AC_Zakres | AC_Opiekun | AC_Obszar | AC_PP_PM | AC_Zespol | AC_Blok | AC_Priorytet | AC_Pakiet | AC_Poziom | Rewizja dokumentu |
| --- | --- | --- | --- | --- | --- | --- | --- | --- | --- | --- | --- | --- | --- | --- | --- | --- | --- | --- | --- | --- | --- | --- | --- | --- | --- | --- | --- |
|  | MONTA¯ | **Monta¿** |  |  | 2026-01-20 | 2026-07-28 |  |  |  |  |  |  |  |  |  |  |  |  |  |  |  |  |  |  |  |  |  |
| 10BW45-013 |  | Monta¿ konstrukcji stalowych |  | 18d | 2026-01-20 A | 2026-02-16 A | 10BW45-012 | 100% |  | 2026-01-15 | 2026-02-09 |  | Do weryfikacji z wykonawc¹ | Kablex | 10BW45 | Mechanic | Budowa | Roboty | Krzyszto | Wyspa | PM000 | Zespó³-W | Blok | Niski | Pakiet | L2 |  |
| 10BW45-014 |  | Monta¿ urz¹dzeñ g³ównych |  | 64d | 2026-04-27 A | 2026-07-23 A | 10BW45-013, 10BW45-011 | 100% |  | 2026-04-24 | 2026-07-22 | Kalendarz 6-dniowy |  | Kablex | 10BW45 | Mechanic | Budowa | Roboty | Krzyszto | Wyspa | PM000 | Zespó³-W | Blok | Normalny | Pakiet | L2 | Rev B |
| 10BW45-093 |  | KM: Zakoñczenie monta¿u – Generator | milestone | 0d | 2026-07-28 A | 2026-07-28 | 10BW45-084, 10BW45-086, 10BW45-091, 10BW45-092, 10BW45-014 | 100% | 2026-07-27 | 2026-07-23 | 2026-07-23 |  |  | Kablex | 10BW45 | Mechanic | Budowa | Kamieñ | Krzyszto | Wyspa | PM000 | Zespó³-W | Blok | Normalny | Pakiet | L2 | Rev A |
|  | ROBOTY BUD | **Roboty budowlane** |  |  | 2025-11-17 | 2026-01-19 |  |  |  |  |  |  |  |  |  |  |  |  |  |  |  |  |  |  |  |  |  |
| 10BW45-012 |  | Fundamenty i roboty ziemne |  | 44d | 2025-11-17 A | 2026-01-19 A | 10BW45-007 FS+9d | 100% |  | 2025-11-14 | 2026-01-14 |  |  | Kablex | 10BW45 | Budowlan | Budowa | Roboty | Krzyszto | Wyspa | PM000 | Zespó³-K | Blok | Normalny | Pakiet | L2 |  |
|  | RUROCI¥GI | **Ruroci¹gi** |  |  | 2026-01-15 | 2026-07-01 |  |  |  |  |  |  |  |  |  |  |  |  |  |  |  |  |  |  |  |  |  |
|  | SEKCJA 01 | **Sekcja 01** |  |  | 2026-01-15 | 2026-06-17 |  |  |  |  |  |  |  |  |  |  |  |  |  |  |  |  |  |  |  |  |  |
| 10BW45-015 |  | Prefabrykacja ruroci¹gów – Sekcja 01 |  | 12.9d | 2026-01-15 A | 2026-01-30 A | 10BW45-012 | 100% |  |  |  |  |  | Kablex | 10BW45 | Ruroci¹g | Budowa | Roboty | Krzyszto | Wyspa | PM000 | Zespó³-K | Blok | Normalny | Pakiet | L2 | Rev C |
| 10BW45-016 |  | Monta¿ ruroci¹gów – Sekcja 01 |  | 15.8d | 2026-05-08 A | 2026-05-29 A | 10BW45-015, 10BW45-014 SS+8d | 100% |  | 2026-05-06 | 2026-05-26 |  |  | Kablex | 10BW45 | Ruroci¹g | Budowa | Roboty | Krzyszto | Wyspa | PM000 | Zespó³-K | Blok | Normalny | Pakiet | L2 |  |
| 10BW45-017 |  | Próba ciœnieniowa – Sekcja 01 |  | 3d | 2026-05-29 A | 2026-06-05 A | 10BW45-016 | 100% |  | 2026-05-27 | 2026-05-29 |  | Bez uwag | Kablex | 10BW45 | Ruroci¹g | Budowa | Roboty | Krzyszto | Wyspa | PM000 | Zespó³-W | Blok | Normalny | Pakiet | L2 |  |
| 10BW45-018 |  | Izolacje – Sekcja 01 |  | 8d | 2026-06-03 A | 2026-06-15 A | 10BW45-017 | 100% |  | 2026-06-01 | 2026-06-10 |  |  | Kablex | 10BW45 | Ruroci¹g | Budowa | Roboty | Krzyszto | Wyspa | PM000 | Zespó³-K | Blok | Normalny | Pakiet | L2 | Rev B |
| 10BW45-019 |  | Malowanie i oznakowanie – Sekcja 01 |  | 8d | 2026-06-04 A | 2026-06-17 A | 10BW45-018 FF+2d | 100% |  | 2026-06-03 | 2026-06-12 |  | Uzgodnione na koordynacji | Kablex | 10BW45 | Ruroci¹g | Budowa | Roboty | Krzyszto | Wyspa | PM000 | Zespó³-K | Blok | Normalny | Pakiet | L2 | Rev A |
|  | SEKCJA 02 | **Sekcja 02** |  |  | 2026-01-26 | 2026-06-12 |  |  |  |  |  |  |  |  |  |  |  |  |  |  |  |  |  |  |  |  |  |
| 10BW45-020 |  | Prefabrykacja ruroci¹gów – Sekcja 02 |  | 8.1d | 2026-01-26 A | 2026-02-04 A | 10BW45-012, 10BW45-015 SS+5d | 100% |  | 2026-01-22 | 2026-02-02 |  |  | Kablex | 10BW45 | Ruroci¹g | Budowa | Roboty | Krzyszto | Wyspa | PM000 | Zespó³-W | Blok | Normalny | Pakiet | L2 |  |
| 10BW45-021 |  | Monta¿ ruroci¹gów – Sekcja 02 |  | 8.2d | 2026-05-11 A | 2026-05-22 A | 10BW45-020, 10BW45-014 SS+10d | 100% |  | 2026-05-08 | 2026-05-19 |  |  | Kablex | 10BW45 | Ruroci¹g | Budowa | Roboty | Krzyszto | Wyspa | PM000 | Zespó³-W | Blok | Niski | Pakiet | L2 | Rev A |
| 10BW45-022 |  | Próba ciœnieniowa – Sekcja 02 |  | 6d | 2026-05-21 A | 2026-05-29 A | 10BW45-021 | 100% |  | 2026-05-20 | 2026-05-27 |  |  | Kablex | 10BW45 | Ruroci¹g | Budowa | Roboty | Krzyszto | Wyspa | PM000 | Zespó³-K | Blok | Normalny | Pakiet | L2 |  |
| 10BW45-023 |  | Izolacje – Sekcja 02 |  | 7d | 2026-05-28 A | 2026-06-08 A | 10BW45-022 | 100% |  | 2026-05-28 | 2026-06-05 |  |  | Kablex | 10BW45 | Ruroci¹g | Budowa | Roboty | Krzyszto | Wyspa | PM000 | Zespó³-W | Blok | Normalny | Pakiet | L2 |  |
| 10BW45-024 |  | Malowanie i oznakowanie – Sekcja 02 |  | 5d | 2026-06-04 A | 2026-06-12 A | 10BW45-023 FF+2d | 100% |  | 2026-06-03 | 2026-06-09 |  |  | Kablex | 10BW45 | Ruroci¹g | Budowa | Roboty | Krzyszto | Wyspa | PM000 | Zespó³-W | Blok | Normalny | Pakiet | L2 |  |
|  | SEKCJA 03 | **Sekcja 03** |  |  | 2026-02-02 | 2026-06-09 |  |  |  |  |  |  |  |  |  |  |  |  |  |  |  |  |  |  |  |  |  |
|  | PODSEKCJA | **Podsekcja 03.A** |  |  | 2026-02-02 | 2026-06-09 |  |  |  |  |  |  |  |  |  |  |  |  |  |  |  |  |  |  |  |  |  |
| 10BW45-027 |  | Prefabrykacja ruroci¹gów – Sekcja 03 |  | 5.5d | 2026-02-02 A | 2026-02-11 A | 10BW45-012, 10BW45-020 SS+5d | 100% |  | 2026-01-29 | 2026-02-04 |  |  | Kablex | 10BW45 | Ruroci¹g | Budowa | Roboty | Krzyszto | Wyspa | PM000 | Zespó³-K | Blok | Normalny | Pakiet | L2 | Rev A |
| 10BW45-028 |  | Monta¿ ruroci¹gów – Sekcja 03 |  | 14.7d | 2026-05-01 A | 2026-05-20 A | 10BW45-027, 10BW45-014 SS+6d | 100% |  | 2026-05-04 | 2026-05-21 |  |  | Kablex | 10BW45 | Ruroci¹g | Budowa | Roboty | Krzyszto | Wyspa | PM000 | Zespó³-W | Blok | Normalny | Pakiet | L2 |  |
| 10BW45-029 |  | Próba ciœnieniowa – Sekcja 03 |  | 3d | 2026-05-27 A | 2026-05-29 A | 10BW45-028 | 100% |  | 2026-05-22 | 2026-05-26 |  | Ryzyko opóŸnienia | Kablex | 10BW45 | Ruroci¹g | Budowa | Roboty | Krzyszto | Wyspa | PM000 | Zespó³-K | Blok | Niski | Pakiet | L2 | Rev B |
| 10BW45-030 |  | Izolacje – Sekcja 03 |  | 4d | 2026-05-29 A | 2026-06-08 A | 10BW45-029 | 100% |  | 2026-05-27 | 2026-06-01 |  |  | Kablex | 10BW45 | Ruroci¹g | Budowa | Roboty | Krzyszto | Wyspa | PM000 | Zespó³-W | Blok | Niski | Pakiet | L2 |  |
| 10BW45-031 |  | Malowanie i oznakowanie – Sekcja 03 |  | 5d | 2026-06-01 A | 2026-06-09 A | 10BW45-030 FF+2d | 100% |  | 2026-05-28 | 2026-06-03 |  |  | Kablex | 10BW45 | Ruroci¹g | Budowa | Roboty | Krzyszto | Wyspa | PM000 | Zespó³-W | Blok | Wysoki | Pakiet | L2 |  |

| ID | WBS | Activity | Duration | Start | Finish | Predecessors | Complete | Planned start | Planned finish | Calendar | AC_Wykonawca | AC_Obiekt | AC_Dyscyplina | AC_Faza | AC_Zakres | AC_Opiekun | AC_Obszar | AC_PP_PM | AC_Zespol | AC_Blok | AC_Priorytet | AC_Pakiet | AC_Poziom | Rewizja dokumentu | Uwagi harmonogramisty |
| --- | --- | --- | --- | --- | --- | --- | --- | --- | --- | --- | --- | --- | --- | --- | --- | --- | --- | --- | --- | --- | --- | --- | --- | --- | --- |
|  | SEKCJA 04 | **Sekcja 04** |  | 2026-02-06 | 2026-06-26 |  |  |  |  |  |  |  |  |  |  |  |  |  |  |  |  |  |  |  |  |
| 10BW45-032 |  | Prefabrykacja ruroci¹gów – Sekcja 04 | 10.9d | 2026-02-06 A | 2026-02-20 A | 10BW45-012, 10BW45-027 SS+5d | 100% | 2026-02-05 | 2026-02-18 |  | Kablex | 10BW45 | Ruroci¹g | Budowa | Roboty | Krzyszto | Wyspa | PM000 | Zespó³-K | Blok | Normalny | Pakiet | L2 |  |  |
| 10BW45-033 |  | Monta¿ ruroci¹gów – Sekcja 04 | 21.5d | 2026-05-12 A | 2026-06-12 A | 10BW45-032, 10BW45-014 SS+10d | 100% | 2026-05-08 | 2026-06-05 |  | Kablex | 10BW45 | Ruroci¹g | Budowa | Roboty | Krzyszto | Wyspa | PM000 | Zespó³-W | Blok | Normalny | Pakiet | L2 | Rev A |  |
| 10BW45-035 |  | Izolacje – Sekcja 04 | 8d | 2026-06-09 A | 2026-06-22 A | 10BW45-034 | 100% | 2026-06-10 | 2026-06-19 |  | Kablex | 10BW45 | Ruroci¹g | Budowa | Roboty | Krzyszto | Wyspa | PM000 | Zespó³-W | Blok | Normalny | Pakiet | L2 |  |  |
| 10BW45-034 |  | Próba ciœnieniowa – Sekcja 04 | 2d | 2026-06-11 A | 2026-06-16 A | 10BW45-033 | 100% | 2026-06-08 | 2026-06-09 |  | Kablex | 10BW45 | Ruroci¹g | Budowa | Roboty | Krzyszto | Wyspa | PM000 | Zespó³-K | Blok | Normalny | Pakiet | L2 | Rev C |  |
| 10BW45-036 |  | Malowanie i oznakowanie – Sekcja 04 | 2d | 2026-06-22 A | 2026-06-26 A | 10BW45-035 FF+2d | 100% | 2026-06-22 | 2026-06-23 |  | Kablex | 10BW45 | Ruroci¹g | Budowa | Roboty | Krzyszto | Wyspa | PM100 | Zespó³-E | Blok | Niski | Pakiet | L2 |  |  |
|  | SEKCJA 05 | **Sekcja 05** |  | 2026-02-11 | 2026-06-05 |  |  |  |  |  |  |  |  |  |  |  |  |  |  |  |  |  |  |  |  |
| 10BW45-039 |  | Prefabrykacja ruroci¹gów – Sekcja 05 | 9.1d | 2026-02-11 A | 2026-02-25 A | 10BW45-012, 10BW45-032 SS+5d | 100% | 2026-02-12 | 2026-02-24 |  | Kablex | 10BW45 | Ruroci¹g | Budowa | Roboty | Krzyszto | Wyspa | PM000 | Zespó³-K | Blok | Normalny | Pakiet | L2 |  |  |
| 10BW45-040 |  | Monta¿ ruroci¹gów – Sekcja 05 | 8.9d | 2026-05-08 A | 2026-05-22 A | 10BW45-039, 10BW45-014 SS+7d | 100% | 2026-05-05 | 2026-05-14 |  | Kablex | 10BW45 | Ruroci¹g | Budowa | Roboty | Krzyszto | Wyspa | PM000 | Zespó³-W | Blok | Normalny | Pakiet | L2 |  |  |
| 10BW45-041 |  | Próba ciœnieniowa – Sekcja 05 | 4d | 2026-05-15 A | 2026-05-20 A | 10BW45-040 | 100% |  |  |  | Kablex | 10BW45 | Ruroci¹g | Budowa | Roboty | Krzyszto | Wyspa | PM000 | Zespó³-W | Blok | Wysoki | Pakiet | L2 |  |  |
| 10BW45-042 |  | Izolacje – Sekcja 05 | 6d | 2026-05-21 A | 2026-05-28 A | 10BW45-041 | 100% |  |  |  | Kablex | 10BW45 | Ruroci¹g | Budowa | Roboty | Krzyszto | Wyspa | PM000 | Zespó³-K | Blok | Normalny | Pakiet | L2 |  | Czeka na dostawê |
| 10BW45-043 |  | Malowanie i oznakowanie – Sekcja 05 | 3d | 2026-05-29 A | 2026-06-05 A | 10BW45-042 FF+2d | 100% | 2026-05-28 | 2026-06-01 |  | Kablex | 10BW45 | Ruroci¹g | Budowa | Roboty | Krzyszto | Wyspa | PM000 | Zespó³-K | Blok | Niski | Pakiet | L2 |  |  |
|  | SEKCJA 06 | **Sekcja 06** |  | 2026-02-20 | 2026-06-15 |  |  |  |  |  |  |  |  |  |  |  |  |  |  |  |  |  |  |  |  |
|  | PODSEKCJA | **Podsekcja 06.A** |  | 2026-02-20 | 2026-06-15 |  |  |  |  |  |  |  |  |  |  |  |  |  |  |  |  |  |  |  |  |
| 10BW45-044 |  | Prefabrykacja ruroci¹gów – Sekcja 06 | 3.9d | 2026-02-20 A | 2026-02-27 A | 10BW45-012, 10BW45-039 SS+5d | 100% | 2026-02-19 | 2026-02-23 |  | Kablex | 10BW45 | Ruroci¹g | Budowa | Roboty | Krzyszto | Wyspa | PM000 | Zespó³-W | Blok | Normalny | Pakiet | L2 |  | Ryzyko opóŸnienia |
| 10BW45-045 |  | Monta¿ ruroci¹gów – Sekcja 06 | 18.7d | 2026-05-04 A | 2026-05-29 A | 10BW45-044, 10BW45-014 SS+7d | 100% | 2026-05-05 | 2026-05-28 |  | Kablex | 10BW45 | Ruroci¹g | Budowa | Roboty | Krzyszto | Wyspa | PM000 | Zespó³-K | Blok | Normalny | Pakiet | L2 |  |  |
| 10BW45-046 |  | Próba ciœnieniowa – Sekcja 06 | 3d | 2026-06-02 A | 2026-06-04 A | 10BW45-045 | 100% | 2026-05-29 | 2026-06-02 |  | Kablex | 10BW45 | Ruroci¹g | Budowa | Roboty | Krzyszto | Wyspa | PM000 | Zespó³-W | Blok | Normalny | Pakiet | L2 |  |  |
| 10BW45-047 |  | Izolacje – Sekcja 06 | 4d | 2026-06-03 A | 2026-06-09 A | 10BW45-046 | 100% | 2026-06-03 | 2026-06-08 |  | Kablex | 10BW45 | Ruroci¹g | Budowa | Roboty | Krzyszto | Wyspa | PM000 | Zespó³-K | Blok | Normalny | Pakiet | L2 | Rev C | Czeka na dostawê |
| 10BW45-048 |  | Malowanie i oznakowanie – Sekcja 06 | 3d | 2026-06-10 A | 2026-06-15 A | 10BW45-047 FF+2d | 100% | 2026-06-08 | 2026-06-10 |  | Kablex | 10BW45 | Ruroci¹g | Budowa | Roboty | Krzyszto | Wyspa | PM000 | Zespó³-K | Blok | Normalny | Pakiet | L2 |  | Do weryfikacji z wykonawc¹ |
|  | SEKCJA 07 | **Sekcja 07** |  | 2026-03-02 | 2026-06-16 |  |  |  |  |  |  |  |  |  |  |  |  |  |  |  |  |  |  |  |  |
| 10BW45-051 |  | Prefabrykacja ruroci¹gów – Sekcja 07 | 7.9d | 2026-03-02 A | 2026-03-13 A | 10BW45-012, 10BW45-044 SS+5d | 100% | 2026-02-26 | 2026-03-06 |  | Kablex | 10BW45 | Ruroci¹g | Budowa | Roboty | Krzyszto | Wyspa | PM000 | Zespó³-W | Blok | Krytyczn | Pakiet | L2 |  |  |
| 10BW45-052 |  | Monta¿ ruroci¹gów – Sekcja 07 | 21.7d | 2026-05-07 A | 2026-06-08 A | 10BW45-051, 10BW45-014 SS+6d | 100% | 2026-05-04 | 2026-06-01 |  | Kablex | 10BW45 | Ruroci¹g | Budowa | Roboty | Krzyszto | Wyspa | PM000 | Zespó³-W | Blok | Normalny | Pakiet | L2 |  |  |
| 10BW45-053 |  | Próba ciœnieniowa – Sekcja 07 | 2d | 2026-06-05 A | 2026-06-10 A | 10BW45-052 | 100% | 2026-06-02 | 2026-06-03 |  | Kablex | 10BW45 | Ruroci¹g | Budowa | Roboty | Krzyszto | Wyspa | PM000 | Zespó³-K | Blok | Krytyczn | Pakiet | L2 |  | Bez uwag |
| 10BW45-054 |  | Izolacje – Sekcja 07 | 4d | 2026-06-08 A | 2026-06-12 A | 10BW45-053 | 100% | 2026-06-04 | 2026-06-09 |  | Kablex | 10BW45 | Ruroci¹g | Budowa | Roboty | Krzyszto | Wyspa | PM000 | Zespó³-K | Blok | Normalny | Pakiet | L2 | Rev C |  |
| 10BW45-055 |  | Malowanie i oznakowanie – Sekcja 07 | 3d | 2026-06-12 A | 2026-06-16 A | 10BW45-054 FF+2d | 100% | 2026-06-09 | 2026-06-11 | Kalendarz 6-dniowy | Kablex | 10BW45 | Ruroci¹g | Budowa | Roboty | Krzyszto | Wyspa | PM100 | Zespó³-I | Blok | Normalny | Pakiet | L2 | Rev C |  |

| ID | WBS | Activity | Duration | Start | Finish | Predecessors | Complete | Planned start | Planned finish | Calendar | Rewizja dokumentu | AC_Wykonawca | AC_Obiekt | AC_Dyscyplina | AC_Faza | AC_Zakres | AC_Opiekun | AC_Obszar | AC_PP_PM | AC_Zespol | AC_Blok | AC_Priorytet | AC_Pakiet | AC_Poziom | Uwagi harmonogramisty |
| --- | --- | --- | --- | --- | --- | --- | --- | --- | --- | --- | --- | --- | --- | --- | --- | --- | --- | --- | --- | --- | --- | --- | --- | --- | --- |
|  | SEKCJA 08 | **Sekcja 08** |  | 2026-03-04 | 2026-06-05 |  |  |  |  |  |  |  |  |  |  |  |  |  |  |  |  |  |  |  |  |
| 10BW45-056 |  | Prefabrykacja ruroci¹gów – Sekcja 08 | 11.6d | 2026-03-04 A | 2026-03-23 A | 10BW45-012, 10BW45-051 SS+5d | 100% | 2026-03-05 | 2026-03-19 |  | Rev B | Kablex | 10BW45 | Ruroci¹g | Budowa | Roboty | Krzyszto | Wyspa | PM000 | Zespó³-W | Blok | Normalny | Pakiet | L2 |  |
| 10BW45-057 |  | Monta¿ ruroci¹gów – Sekcja 08 | 7.4d | 2026-04-29 A | 2026-05-12 A | 10BW45-056, 10BW45-014 SS | 100% | 2026-04-24 | 2026-05-04 |  | Rev A | Kablex | 10BW45 | Ruroci¹g | Budowa | Roboty | Krzyszto | Wyspa | PM300 | Zespó³-E | Blok | Normalny | Pakiet | L2 | Uzgodnione na koordynacji |
| 10BW45-058 |  | Próba ciœnieniowa – Sekcja 08 | 6d | 2026-05-08 A | 2026-05-15 A | 10BW45-057 | 100% | 2026-05-05 | 2026-05-12 | Kalendarz 6-dniowy | Rev A | Kablex | 10BW45 | Ruroci¹g | Budowa | Roboty | Krzyszto | Wyspa | PM000 | Zespó³-W | Blok | Normalny | Pakiet | L2 |  |
| 10BW45-059 |  | Izolacje – Sekcja 08 | 12d | 2026-05-18 A | 2026-06-05 A | 10BW45-058 | 100% | 2026-05-13 | 2026-05-28 |  |  | Kablex | 10BW45 | Ruroci¹g | Budowa | Roboty | Krzyszto | Wyspa | PM000 | Zespó³-K | Blok | Normalny | Pakiet | L2 | Czeka na dostawê |
| 10BW45-060 |  | Malowanie i oznakowanie – Sekcja 08 | 2d | 2026-06-02 A | 2026-06-03 A | 10BW45-059 FF+2d | 100% | 2026-05-29 | 2026-06-01 |  | Rev C | Kablex | 10BW45 | Ruroci¹g | Budowa | Roboty | Krzyszto | Wyspa | PM000 | Zespó³-K | Blok | Normalny | Pakiet | L2 |  |
|  | SEKCJA 09 | **Sekcja 09** |  | 2026-03-11 | 2026-07-01 |  |  |  |  |  |  |  |  |  |  |  |  |  |  |  |  |  |  |  |  |
|  | PODSEKCJA | **Podsekcja 09.A** |  | 2026-03-11 | 2026-07-01 |  |  |  |  |  |  |  |  |  |  |  |  |  |  |  |  |  |  |  |  |
| 10BW45-063 |  | Prefabrykacja ruroci¹gów – Sekcja 09 | 11.5d | 2026-03-11 A | 2026-03-30 A | 10BW45-012, 10BW45-056 SS+5d | 100% | 2026-03-12 | 2026-03-26 |  |  | Kablex | 10BW45 | Ruroci¹g | Budowa | Roboty | Krzyszto | Wyspa | PM000 | Zespó³-W | Blok | Wysoki | Pakiet | L2 |  |
| 10BW45-064 |  | Monta¿ ruroci¹gów – Sekcja 09 | 19.6d | 2026-05-08 A | 2026-06-03 A | 10BW45-063, 10BW45-014 SS+7d | 100% | 2026-05-05 | 2026-05-29 |  | Rev B | Kablex | 10BW45 | Ruroci¹g | Budowa | Roboty | Krzyszto | Wyspa | PM000 | Zespó³-W | Blok | Normalny | Pakiet | L2 |  |
| 10BW45-065 |  | Próba ciœnieniowa – Sekcja 09 | 6d | 2026-05-29 A | 2026-06-09 A | 10BW45-064 | 100% | 2026-06-01 | 2026-06-08 |  | Rev A | Kablex | 10BW45 | Ruroci¹g | Budowa | Roboty | Krzyszto | Wyspa | PM000 | Zespó³-K | Blok | Wysoki | Pakiet | L2 |  |
| 10BW45-066 |  | Izolacje – Sekcja 09 | 11d | 2026-06-09 A | 2026-06-24 A | 10BW45-065 | 100% | 2026-06-09 | 2026-06-23 |  |  | Kablex | 10BW45 | Ruroci¹g | Budowa | Roboty | Krzyszto | Wyspa | PM000 | Zespó³-W | Blok | Normalny | Pakiet | L2 |  |
| 10BW45-067 |  | Malowanie i oznakowanie – Sekcja 09 | 4d | 2026-06-25 A | 2026-07-01 A | 10BW45-066 FF+2d | 100% | 2026-06-22 | 2026-06-25 |  | Rev A | Kablex | 10BW45 | Ruroci¹g | Budowa | Roboty | Krzyszto | Wyspa | PM000 | Zespó³-K | Blok | Wysoki | Pakiet | L2 |  |
|  | SEKCJA 10 | **Sekcja 10** |  | 2026-03-20 | 2026-06-22 |  |  |  |  |  |  |  |  |  |  |  |  |  |  |  |  |  |  |  |  |
| 10BW45-068 |  | Prefabrykacja ruroci¹gów – Sekcja 10 | 7.6d | 2026-03-20 A | 2026-03-31 A | 10BW45-012, 10BW45-063 SS+5d | 100% | 2026-03-19 | 2026-03-27 |  | Rev C | Kablex | 10BW45 | Ruroci¹g | Budowa | Roboty | Krzyszto | Wyspa | PM000 | Zespó³-I | Blok | Niski | Pakiet | L2 |  |
| 10BW45-069 |  | Monta¿ ruroci¹gów – Sekcja 10 | 21.5d | 2026-05-07 A | 2026-06-09 A | 10BW45-068, 10BW45-014 SS+8d | 100% | 2026-05-06 | 2026-06-03 |  | Rev C | Kablex | 10BW45 | Ruroci¹g | Budowa | Roboty | Krzyszto | Wyspa | PM000 | Zespó³-W | Blok | Normalny | Pakiet | L2 |  |
| 10BW45-070 |  | Próba ciœnieniowa – Sekcja 10 | 4d | 2026-06-08 A | 2026-06-16 A | 10BW45-069 | 100% | 2026-06-04 | 2026-06-09 |  |  | Kablex | 10BW45 | Ruroci¹g | Budowa | Roboty | Krzyszto | Wyspa | PM000 | Zespó³-W | Blok | Normalny | Pakiet | L2 | Ryzyko opóŸnienia |
| 10BW45-071 |  | Izolacje – Sekcja 10 | 3d | 2026-06-10 A | 2026-06-15 A | 10BW45-070 | 100% | 2026-06-10 | 2026-06-12 |  | Rev C | Kablex | 10BW45 | Ruroci¹g | Budowa | Roboty | Krzyszto | Wyspa | PM000 | Zespó³-W | Blok | Normalny | Pakiet | L2 |  |
| 10BW45-072 |  | Malowanie i oznakowanie – Sekcja 10 | 2d | 2026-06-16 A | 2026-06-22 A | 10BW45-071 FF+2d | 100% | 2026-06-15 | 2026-06-16 |  |  | Kablex | 10BW45 | Ruroci¹g | Budowa | Roboty | Krzyszto | Wyspa | PM000 | Zespó³-W | Blok | Wysoki | Pakiet | L2 |  |
|  | SEKCJA 11 | **Sekcja 11** |  | 2026-03-26 | 2026-06-15 |  |  |  |  |  |  |  |  |  |  |  |  |  |  |  |  |  |  |  |  |
| 10BW45-075 |  | Prefabrykacja ruroci¹gów – Sekcja 11 | 6.2d | 2026-03-26 A | 2026-04-06 A | 10BW45-012, 10BW45-068 SS+5d | 100% | 2026-03-26 | 2026-04-02 |  |  | Kablex | 10BW45 | Ruroci¹g | Budowa | Roboty | Krzyszto | Wyspa | PM300 | Zespó³-E | Blok | Normalny | Pakiet | L2 | Bez uwag |
| 10BW45-076 |  | Monta¿ ruroci¹gów – Sekcja 11 | 10.5d | 2026-05-08 A | 2026-05-25 A | 10BW45-075, 10BW45-014 SS+10d | 100% | 2026-05-08 | 2026-05-21 |  |  | Kablex | 10BW45 | Ruroci¹g | Budowa | Roboty | Krzyszto | Wyspa | PM000 | Zespó³-W | Blok | Normalny | Pakiet | L2 |  |
| 10BW45-077 |  | Próba ciœnieniowa – Sekcja 11 | 2d | 2026-05-21 A | 2026-05-27 A | 10BW45-076 | 100% | 2026-05-22 | 2026-05-25 |  |  | Kablex | 10BW45 | Ruroci¹g | Budowa | Roboty | Krzyszto | Wyspa | PM000 | Zespó³-K | Blok | Wysoki | Pakiet | L2 |  |
| 10BW45-078 |  | Izolacje – Sekcja 11 | 8d | 2026-05-28 A | 2026-06-09 A | 10BW45-077 | 100% | 2026-05-26 | 2026-06-04 |  | Rev B | Kablex | 10BW45 | Ruroci¹g | Budowa | Roboty | Krzyszto | Wyspa | PM000 | Zespó³-K | Blok | Normalny | Pakiet | L2 | Do weryfikacji z wykonawc¹ |
| 10BW45-079 |  | Malowanie i oznakowanie – Sekcja 11 | 2d | 2026-06-10 A | 2026-06-15 A | 10BW45-078 FF+2d | 100% | 2026-06-05 | 2026-06-08 |  |  | Kablex | 10BW45 | Ruroci¹g | Budowa | Roboty | Krzyszto | Wyspa | PM000 | Zespó³-W | Blok | Normalny | Pakiet | L2 |  |

| ID | WBS | Activity | Type | Duration | Start | Finish | Predecessors | Complete | Actual start | Actual finish | Planned start | Planned finish | Calendar | AC_Wykonawca | AC_Obiekt | AC_Dyscyplina | AC_Faza | AC_Zakres | AC_Opiekun | AC_Obszar | AC_PP_PM | AC_Zespol | AC_Blok | AC_Priorytet | AC_Pakiet | AC_Poziom | Uwagi harmonogramisty | Rewizja dokumentu |
| --- | --- | --- | --- | --- | --- | --- | --- | --- | --- | --- | --- | --- | --- | --- | --- | --- | --- | --- | --- | --- | --- | --- | --- | --- | --- | --- | --- | --- |
|  | SEKCJA 12 | **Sekcja 12** |  |  | 2026-04-01 | 2026-06-29 |  |  |  |  |  |  |  |  |  |  |  |  |  |  |  |  |  |  |  |  |  |  |
|  | PODSEKCJA | **Podsekcja 12.A** |  |  | 2026-04-01 | 2026-06-29 |  |  |  |  |  |  |  |  |  |  |  |  |  |  |  |  |  |  |  |  |  |  |
| 10BW45-080 |  | Prefabrykacja ruroci¹gów – Sekcja 12 |  | 11.7d | 2026-04-01 A | 2026-04-15 A | 10BW45-012, 10BW45-075 SS+5d | 100% |  |  | 2026-04-02 | 2026-04-16 |  | Kablex | 10BW45 | Ruroci¹g | Budowa | Roboty | Krzyszto | Wyspa | PM000 | Zespó³-K | Blok | Normalny | Pakiet | L2 |  |  |
| 10BW45-081 |  | Monta¿ ruroci¹gów – Sekcja 12 |  | 25d | 2026-05-06 A | 2026-06-10 A | 10BW45-080, 10BW45-014 SS+7d | 100% |  |  | 2026-05-05 | 2026-06-08 |  | Kablex | 10BW45 | Ruroci¹g | Budowa | Roboty | Krzyszto | Wyspa | PM000 | Zespó³-W | Blok | Normalny | Pakiet | L2 |  |  |
| 10BW45-082 |  | Próba ciœnieniowa – Sekcja 12 |  | 5d | 2026-06-08 A | 2026-06-15 A | 10BW45-081 | 100% |  |  | 2026-06-09 | 2026-06-15 |  | Kablex | 10BW45 | Ruroci¹g | Budowa | Roboty | Krzyszto | Wyspa | PM000 | Zespó³-W | Blok | Normalny | Pakiet | L2 | Ryzyko opóŸnienia |  |
| 10BW45-083 |  | Izolacje – Sekcja 12 |  | 5d | 2026-06-17 A | 2026-06-25 A | 10BW45-082 | 100% |  |  | 2026-06-16 | 2026-06-22 |  | Kablex | 10BW45 | Ruroci¹g | Budowa | Roboty | Krzyszto | Wyspa | PM000 | Zespó³-W | Blok | Wysoki | Pakiet | L2 |  |  |
| 10BW45-084 |  | Malowanie i oznakowanie – Sekcja 12 |  | 3d | 2026-06-24 A | 2026-06-29 A | 10BW45-083 FF+2d | 100% |  |  | 2026-06-22 | 2026-06-24 |  | Kablex | 10BW45 | Ruroci¹g | Budowa | Roboty | Krzyszto | Wyspa | PM000 | Zespó³-W | Blok | Normalny | Pakiet | L2 |  |  |
|  | SEKCJA 13 | **Sekcja 13** |  |  | 2026-04-08 | 2026-06-11 |  |  |  |  |  |  |  |  |  |  |  |  |  |  |  |  |  |  |  |  |  |  |
| 10BW45-087 |  | Prefabrykacja ruroci¹gów – Sekcja 13 |  | 7d | 2026-04-08 A | 2026-04-17 A | 10BW45-012, 10BW45-080 SS+5d | 100% |  |  | 2026-04-09 | 2026-04-17 |  | Kablex | 10BW45 | Ruroci¹g | Budowa | Roboty | Krzyszto | Wyspa | PM000 | Zespó³-K | Blok | Normalny | Pakiet | L2 | Uzgodnione na koordynacji |  |
| 10BW45-088 |  | Monta¿ ruroci¹gów – Sekcja 13 |  | 14.3d | 2026-05-05 A | 2026-05-22 A | 10BW45-087, 10BW45-014 SS+6d | 100% |  |  | 2026-05-04 | 2026-05-21 |  | Kablex | 10BW45 | Ruroci¹g | Budowa | Roboty | Krzyszto | Wyspa | PM200 | Zespó³-I | Blok | Normalny | Pakiet | L2 | Czeka na dostawê | Rev A |
| 10BW45-089 |  | Próba ciœnieniowa – Sekcja 13 |  | 2d | 2026-05-25 A | 2026-05-26 A | 10BW45-088 | 100% |  |  | 2026-05-22 | 2026-05-25 |  | Kablex | 10BW45 | Ruroci¹g | Budowa | Roboty | Krzyszto | Wyspa | PM000 | Zespó³-K | Blok | Normalny | Pakiet | L2 |  | Rev A |
| 10BW45-090 |  | Izolacje – Sekcja 13 |  | 9d | 2026-05-25 A | 2026-06-05 A | 10BW45-089 | 100% |  |  | 2026-05-26 | 2026-06-05 |  | Kablex | 10BW45 | Ruroci¹g | Budowa | Roboty | Krzyszto | Wyspa | PM000 | Zespó³-W | Blok | Normalny | Pakiet | L2 |  |  |
| 10BW45-091 |  | Malowanie i oznakowanie – Sekcja 13 |  | 6d | 2026-06-02 A | 2026-06-11 A | 10BW45-090 FF+2d | 100% |  |  | 2026-06-02 | 2026-06-09 |  | Kablex | 10BW45 | Ruroci¹g | Budowa | Roboty | Krzyszto | Wyspa | PM000 | Zespó³-W | Blok | Normalny | Pakiet | L2 |  |  |
|  | PROJ | **Projektowanie** |  |  | 2025-04-02 | 2025-09-25 |  |  |  |  |  |  |  |  |  |  |  |  |  |  |  |  |  |  |  |  |  |  |
|  | DOKUMENTAC | **Dokumentacja** |  |  | 2025-04-02 | 2025-09-25 |  |  |  |  |  |  |  |  |  |  |  |  |  |  |  |  |  |  |  |  |  |  |
| 10BW45-001 |  | Projekt wykonawczy – Generator |  | 93d | 2025-04-02 A | 2025-08-13 A |  | 100% |  |  | 2025-04-03 | 2025-08-11 | Kalendarz 6-dniowy | Kablex | 10BW45 | Budowlan | Projekto | Projekt | Krzyszto | Wyspa | PM000 | Zespó³-K | Blok | Niski | Pakiet | L2 |  | Rev C |
| 10BW45-002 |  | Uzgodnienie dokumentacji z Inwestorem |  | 19d | 2025-08-12 A | 2025-09-09 A | 10BW45-001 | 100% |  |  | 2025-08-12 | 2025-09-05 |  | Kablex | 10BW45 | Budowlan | Projekto | Projekt | Krzyszto | Wyspa | PM000 | Zespó³-W | Blok | Normalny | Pakiet | L2 | Ryzyko opóŸnienia |  |
| 10BW45-003 |  | Zatwierdzenie dokumentacji do realizacji |  | 9d | 2025-09-11 A | 2025-09-25 A | 10BW45-002 | 100% |  |  | 2025-09-08 | 2025-09-18 |  | Kablex | 10BW45 | Budowlan | Projekto | Projekt | Krzyszto | Wyspa | PM000 | Zespó³-W | Blok | Normalny | Pakiet | L2 |  |  |
| 10BW45-004 |  | KM: Dokumentacja zatwierdzona – Generator | milestone | 0d | 2025-09-23 A | 2025-09-23 | 10BW45-003 | 100% |  | 2025-09-22 | 2025-09-19 | 2025-09-19 |  | Kablex | 10BW45 | Budowlan | Projekto | Kamieñ | Krzyszto | Wyspa | PM000 | Zespó³-W | Blok | Krytyczn | Pakiet | L1 |  |  |
|  | ROZR | **Rozruch** |  |  | 2026-07-22 | 2026-09-15 |  |  |  |  |  |  |  |  |  |  |  |  |  |  |  |  |  |  |  |  |  |  |
|  | ROZRUCH | **Rozruch** |  |  | 2026-07-22 | 2026-09-15 |  |  |  |  |  |  |  |  |  |  |  |  |  |  |  |  |  |  |  |  |  |  |
| 10BW45-094 |  | Przegl¹d gotowoœci do rozruchu |  | 3d | 2026-07-22 A | 2026-07-24 A | 10BW45-093, 10BW45-019, 10BW45-024, 10BW45-026 | 100% |  |  | 2026-07-23 | 2026-07-27 | Kalendarz 6-dniowy | Kablex | 10BW45 | Rozruch | Rozruch | Rozruch | Krzyszto | Wyspa | PM000 | Zespó³-W | Blok | Normalny | Pakiet | L2 |  | Rev C |
| 10BW45-095 |  | Rozruch na zimno |  | 15d | 2026-07-29 A | 2026-08-18 A | 10BW45-094 | 100% |  |  | 2026-07-28 | 2026-08-17 | Kalendarz 6-dniowy | Kablex | 10BW45 | Rozruch | Rozruch | Rozruch | Krzyszto | Wyspa | PM000 | Zespó³-K | Blok | Normalny | Pakiet | L2 |  |  |
| 10BW45-096 |  | Rozruch na gor¹co / próby ruchowe |  | 21d | 2026-08-17 A | 2026-09-14 A | 10BW45-095 | 100% |  |  | 2026-08-18 | 2026-09-15 |  | Kablex | 10BW45 | Rozruch | Rozruch | Rozruch | Krzyszto | Wyspa | PM000 | Zespó³-W | Blok | Normalny | Pakiet | L2 |  |  |
| 10BW45-097 |  | KM: Odbiór koñcowy – Generator | milestone | 0d | 2026-09-15 | 2026-09-15 A | 10BW45-096 | 100% | 2026-09-16 |  | 2026-09-16 | 2026-09-16 |  | Kablex | 10BW45 | Rozruch | Rozruch | Kamieñ | Krzyszto | Wyspa | PM000 | Zespó³-W | Blok | Normalny | Pakiet | L1 |  |  |

| ID | WBS | Activity | Type | Duration | Start | Finish | Predecessors | Complete | Remaining | Actual finish | Planned start | Planned finish | Total float | Free float | Calendar | AC_Wykonawca | AC_Obiekt | AC_Dyscyplina | AC_Faza | AC_Zakres | AC_Opiekun | AC_Obszar | AC_PP_PM | AC_Zespol | AC_Blok | AC_Priorytet | AC_Pakiet | AC_Poziom | Rewizja dokumentu | Uwagi harmonogramisty |
| --- | --- | --- | --- | --- | --- | --- | --- | --- | --- | --- | --- | --- | --- | --- | --- | --- | --- | --- | --- | --- | --- | --- | --- | --- | --- | --- | --- | --- | --- | --- |
|  | ZAKU | **Zakupy** |  |  | 2025-05-01 | 2026-04-30 |  |  |  |  |  |  |  |  |  |  |  |  |  |  |  |  |  |  |  |  |  |  |  |  |
|  | DOSTAWY | **Dostawy** |  |  | 2025-11-03 | 2026-04-30 |  |  |  |  |  |  |  |  |  |  |  |  |  |  |  |  |  |  |  |  |  |  |  |  |
| 10BW45-008 |  | Produkcja u dostawcy |  | 97d | 2025-11-03 A | 2026-03-18 A | 10BW45-007 | 100% |  |  | 2025-11-03 | 2026-03-17 |  |  |  | Kablex | 10BW45 | Mechanic | Zakupy | Dostawa | Krzyszto | Wyspa | PM000 | Zespó³-W | Blok | Normalny | Pakiet | L2 |  |  |
| 10BW45-009 |  | Testy FAT |  | 10d | 2026-03-19 A | 2026-04-03 A | 10BW45-008 | 100% |  |  | 2026-03-18 | 2026-03-31 |  |  |  | Kablex | 10BW45 | Mechanic | Zakupy | Dostawa | Krzyszto | Wyspa | PM000 | Zespó³-E | Blok | Normalny | Pakiet | L2 | Rev B |  |
| 10BW45-010 |  | Transport i dostawa na plac budowy |  | 17d | 2026-04-03 A | 2026-04-30 A | 10BW45-009 | 100% |  |  | 2026-04-01 | 2026-04-23 |  |  |  | Kablex | 10BW45 | Mechanic | Zakupy | Dostawa | Krzyszto | Wyspa | PM000 | Zespó³-W | Blok | Normalny | Pakiet | L2 |  | Czeka na dostawê |
| 10BW45-011 |  | KM: Dostawa na budowê – Generator | milestone | 0d | 2026-04-27 A | 2026-04-27 | 10BW45-010 | 100% |  | 2026-04-24 | 2026-04-24 | 2026-04-24 |  |  |  | Kablex | 10BW45 | Mechanic | Zakupy | Kamieñ | Krzyszto | Wyspa | PM000 | Zespó³-K | Blok | Normalny | Pakiet | L1 | Rev B |  |
|  | ZAMÓWIENIA | **Zamówienia** |  |  | 2025-05-01 | 2025-11-10 |  |  |  |  |  |  |  |  |  |  |  |  |  |  |  |  |  |  |  |  |  |  |  |  |
| 10BW45-005 |  | Zapytanie ofertowe |  | 24d | 2025-05-01 A | 2025-06-04 A | 10BW45-001 SS+20d | 100% |  |  | 2025-05-01 | 2025-06-03 |  |  |  | Kablex | 10BW45 | Mechanic | Zakupy | Dostawa | Krzyszto | Wyspa | PM000 | Zespó³-W | Blok | Normalny | Pakiet | L2 | Rev B |  |
| 10BW45-006 |  | Analiza i wybór ofert |  | 13d | 2025-06-03 A | 2025-06-20 A | 10BW45-005 | 100% |  |  | 2025-06-04 | 2025-06-20 |  |  |  | Kablex | 10BW45 | Mechanic | Zakupy | Dostawa | Krzyszto | Wyspa | PM000 | Zespó³-W | Blok | Normalny | Pakiet | L2 | Rev B | Ryzyko opóŸnienia |
| 10BW45-007 |  | Zawarcie umowy / zamówienie |  | 9d | 2025-10-24 A | 2025-11-10 A | 10BW45-006, 10BW45-004 SS, 24PY38-004 FS+11d | 100% |  |  | 2025-10-21 | 2025-10-31 |  |  |  | Kablex | 10BW45 | Mechanic | Zakupy | Dostawa | Krzyszto | Wyspa | PM000 | Zespó³-W | Blok | Wysoki | Pakiet | L1 | Rev C |  |
|  | 10TM34 | **10TM34 – Hala maszyn** |  |  | 2025-01-16 | 2026-12-24 |  |  |  |  |  |  |  |  |  |  |  |  |  |  |  |  |  |  |  |  |  |  |  |  |
|  | BUDO | **Budowa** |  |  | 2025-09-25 | 2026-11-25 |  |  |  |  |  |  |  |  |  |  |  |  |  |  |  |  |  |  |  |  |  |  |  |  |
|  | AKPIA | **AKPiA** |  |  | 2026-09-22 | 2026-10-15 |  |  |  |  |  |  |  |  |  |  |  |  |  |  |  |  |  |  |  |  |  |  |  |  |
| 10TM34-075 |  | Monta¿ uk³adów AKPiA |  | 31d | 2026-09-22 A | 2026-10-15 | 10TM34-014 SS+5d | 76% | 7.3d |  | 2026-09-22 | 2026-11-03 | 352.6d | 0d |  | HydroIns | 10TM34 | AKPiA | Budowa | Roboty | Magdalen | Wyspa | PM000 | Zespó³-W | Blok | Wysoki | Pakiet | L2 | Rev C |  |
|  | ELEKTRYKA | **Elektryka** |  |  | 2026-09-28 | 2026-10-29 |  |  |  |  |  |  |  |  |  |  |  |  |  |  |  |  |  |  |  |  |  |  |  |  |
| 10TM34-062 |  | Pod³¹czenia i pomiary – trasa 08 |  | 9d | 2026-09-28 A | 2026-10-15 | 10TM34-061 FF | 21% | 7.1d |  | 2026-09-25 | 2026-10-07 | 401.6d | 0d |  | HydroIns | 10TM34 | Elektryc | Budowa | Roboty | Magdalen | Wyspa | PM000 | Zespó³-W | Blok | Normalny | Pakiet | L2 |  | Bez uwag |
| 10TM34-050 |  | Pod³¹czenia i pomiary – trasa 06 |  | 10d | 2026-09-30 A | 2026-10-08 | 10TM34-049 FF | 73% | 2.7d |  | 2026-09-30 | 2026-10-13 | 398.6d | 0d |  | HydroIns | 10TM34 | Elektryc | Budowa | Roboty | Magdalen | Wyspa | PM000 | Zespó³-K | Blok | Wysoki | Pakiet | L2 |  | Ryzyko opóŸnienia |
| 10TM34-025 |  | Uk³adanie kabli – trasa 02 |  | 19d | 2026-10-02 A | 2026-10-29 | 10TM34-014 SS+10d | 11% | 17d |  | 2026-09-29 | 2026-10-23 | 356.6d | 0d |  | HydroIns | 10TM34 | Elektryc | Budowa | Roboty | Magdalen | Wyspa | PM000 | Zespó³-W | Blok | Normalny | Pakiet | L2 |  |  |
| 10TM34-049 |  | Uk³adanie kabli – trasa 06 |  | 11d | 2026-10-02 A | 2026-10-19 | 10TM34-014 SS+10d | 16% | 9.2d |  | 2026-09-29 | 2026-10-13 | 395.6d | 0d |  | HydroIns | 10TM34 | Elektryc | Budowa | Roboty | Magdalen | Wyspa | PM000 | Zespó³-W | Blok | Normalny | Pakiet | L2 | Rev A |  |
| 10TM34-061 |  | Uk³adanie kabli – trasa 08 |  | 7d | 2026-10-05 A | 2026-10-07 | 10TM34-014 SS+10d | 74% | 1.8d |  | 2026-09-29 | 2026-10-07 | 398.6d | 0d |  | HydroIns | 10TM34 | Elektryc | Budowa | Roboty | Magdalen | Wyspa | PM000 | Zespó³-K | Blok | Normalny | Pakiet | L2 | Rev C |  |
| 10TM34-073 |  | Uk³adanie kabli – trasa 10 |  | 10d | 2026-10-05 A | 2026-10-07 | 10TM34-014 SS+10d | 81% | 1.9d |  | 2026-09-29 | 2026-10-12 | 364.6d | 0d |  | HydroIns | 10TM34 | Elektryc | Budowa | Roboty | Magdalen | Wyspa | PM000 | Zespó³-K | Blok | Normalny | Pakiet | L2 | Rev B |  |
| 10TM34-074 |  | Pod³¹czenia i pomiary – trasa 10 |  | 8d | 2026-10-05 A | 2026-10-08 | 10TM34-073 FF | 72% | 2.2d |  | 2026-10-01 | 2026-10-12 | 366.6d | 0d |  | HydroIns | 10TM34 | Elektryc | Budowa | Roboty | Magdalen | Wyspa | PM000 | Zespó³-W | Blok | Normalny | Pakiet | L2 |  |  |
| 10TM34-037 |  | Uk³adanie kabli – trasa 04 |  | 11d | 2026-10-07 | 2026-10-21 | 10TM34-014 SS+10d |  |  |  | 2026-09-29 | 2026-10-13 | 392.6d | 0d |  | HydroIns | 10TM34 | Elektryc | Budowa | Roboty | Magdalen | Wyspa | PM000 | Zespó³-W | Blok | Normalny | Pakiet | L2 | Rev A |  |
| 10TM34-038 |  | Pod³¹czenia i pomiary – trasa 04 |  | 8d | 2026-10-07 A | 2026-10-08 | 10TM34-037 FF | 75% | 2d |  | 2026-10-02 | 2026-10-13 | 395.6d | 0d |  | HydroIns | 10TM34 | Elektryc | Budowa | Roboty | Magdalen | Wyspa | PM000 | Zespó³-W | Blok | Normalny | Pakiet | L2 |  |  |
| 10TM34-026 |  | Pod³¹czenia i pomiary – trasa 02 |  | 3d | 2026-10-27 | 2026-10-29 | 10TM34-025 FF |  |  |  | 2026-10-21 | 2026-10-23 | 355.6d | 0d | Kalendarz 6-dniowy | HydroIns | 10TM34 | Elektryc | Budowa | Roboty | Magdalen | Wyspa | PM000 | Zespó³-W | Blok | Normalny | Pakiet | L2 |  | Bez uwag |

| ID | WBS | Activity | Type | Duration | Start | Finish | Predecessors | Complete | Remaining | Planned start | Planned finish | Total float | Free float | Calendar | Rewizja dokumentu | AC_Wykonawca | AC_Obiekt | AC_Dyscyplina | AC_Faza | AC_Zakres | AC_Opiekun | AC_Obszar | AC_PP_PM | AC_Zespol | AC_Blok | AC_Priorytet | AC_Pakiet | AC_Poziom | Uwagi harmonogramisty |
| --- | --- | --- | --- | --- | --- | --- | --- | --- | --- | --- | --- | --- | --- | --- | --- | --- | --- | --- | --- | --- | --- | --- | --- | --- | --- | --- | --- | --- | --- |
|  | MONTA¯ | **Monta¿** |  |  | 2025-11-06 | 2026-11-25 |  |  |  |  |  |  |  |  |  |  |  |  |  |  |  |  |  |  |  |  |  |  |  |
| 10TM34-013 |  | Monta¿ konstrukcji stalowych |  | 38d | 2025-11-06 A | 2025-12-29 A | 10TM34-012 | 100% |  |  |  |  |  |  | Rev B | HydroIns | 10TM34 | Mechanic | Budowa | Roboty | Magdalen | Wyspa | PM000 | Zespó³-W | Blok | Normalny | Pakiet | L2 |  |
| 10TM34-014 |  | Monta¿ urz¹dzeñ g³ównych |  | 52d | 2026-09-21 A | 2026-10-22 | 10TM34-013, 10TM34-011 | 76% | 12.7d | 2026-09-15 | 2026-11-25 | 332.6d | 0d |  |  | HydroIns | 10TM34 | Mechanic | Budowa | Roboty | Magdalen | Wyspa | PM000 | Zespó³-K | Blok | Wysoki | Pakiet | L2 |  |
| 10TM34-076 |  | KM: Zakoñczenie monta¿u – Hala maszyn | milestone | 0d | 2026-11-25 | 2026-11-25 | 10TM34-067, 10TM34-072, 10TM34-074, 10TM34-075, 10TM34-014 |  |  | 2026-11-26 | 2026-11-26 | 337.6d | 0d |  | Rev A | HydroIns | 10TM34 | Mechanic | Budowa | Kamieñ | Magdalen | Wyspa | PM000 | Zespó³-K | Blok | Niski | Pakiet | L2 |  |
|  | ROBOTY BUD | **Roboty budowlane** |  |  | 2025-09-25 | 2025-11-04 |  |  |  |  |  |  |  |  |  |  |  |  |  |  |  |  |  |  |  |  |  |  |  |
| 10TM34-012 |  | Fundamenty i roboty ziemne |  | 29d | 2025-09-25 A | 2025-11-04 A | 10TM34-007 FS+2d | 100% |  | 2025-09-26 | 2025-11-05 |  |  |  |  | HydroIns | 10TM34 | Budowlan | Budowa | Roboty | Magdalen | Wyspa | PM000 | Zespó³-K | Blok | Normalny | Pakiet | L2 |  |
|  | RUROCI¥GI | **Ruroci¹gi** |  |  | 2025-11-05 | 2026-11-24 |  |  |  |  |  |  |  |  |  |  |  |  |  |  |  |  |  |  |  |  |  |  |  |
|  | SEKCJA 01 | **Sekcja 01** |  |  | 2025-11-05 | 2026-10-14 |  |  |  |  |  |  |  |  |  |  |  |  |  |  |  |  |  |  |  |  |  |  |  |
| 10TM34-015 |  | Prefabrykacja ruroci¹gów – Sekcja 01 |  | 10.4d | 2025-11-05 A | 2025-11-21 A | 10TM34-012 | 100% |  | 2025-11-06 | 2025-11-19 |  |  |  |  | HydroIns | 10TM34 | Ruroci¹g | Budowa | Roboty | Magdalen | Wyspa | PM000 | Zespó³-W | Blok | Krytyczn | Pakiet | L2 |  |
| 10TM34-016 |  | Monta¿ ruroci¹gów – Sekcja 01 |  | 9.4d | 2026-09-21 A | 2026-09-29 A | 10TM34-015, 10TM34-014 SS+2d | 100% |  | 2026-09-17 | 2026-09-29 |  |  |  |  | HydroIns | 10TM34 | Ruroci¹g | Budowa | Roboty | Magdalen | Wyspa | PM000 | Zespó³-W | Blok | Normalny | Pakiet | L2 |  |
| 10TM34-017 |  | Próba ciœnieniowa – Sekcja 01 |  | 3d | 2026-10-05 A | 2026-10-06 A | 10TM34-016 | 100% |  | 2026-09-30 | 2026-10-02 |  |  |  |  | HydroIns | 10TM34 | Ruroci¹g | Budowa | Roboty | Magdalen | Wyspa | PM000 | Zespó³-W | Blok | Wysoki | Pakiet | L2 |  |
| 10TM34-018 |  | Izolacje – Sekcja 01 |  | 12d | 2026-10-07 A | 2026-10-12 | 10TM34-017 | 61% | 4.7d | 2026-10-05 | 2026-10-20 | 358.6d | 0d |  |  | HydroIns | 10TM34 | Ruroci¹g | Budowa | Roboty | Magdalen | Wyspa | PM000 | Zespó³-K | Blok | Normalny | Pakiet | L2 |  |
| 10TM34-019 |  | Malowanie i oznakowanie – Sekcja 01 |  | 2d | 2026-10-13 | 2026-10-14 | 10TM34-018 FF+2d |  |  | 2026-10-21 | 2026-10-22 | 365.9d | 0d |  |  | HydroIns | 10TM34 | Ruroci¹g | Budowa | Roboty | Magdalen | Wyspa | PM000 | Zespó³-W | Blok | Normalny | Pakiet | L2 |  |
|  | SEKCJA 02 | **Sekcja 02** |  |  | 2025-11-12 | 2026-10-26 |  |  |  |  |  |  |  |  |  |  |  |  |  |  |  |  |  |  |  |  |  |  |  |
| 10TM34-020 |  | Prefabrykacja ruroci¹gów – Sekcja 02 |  | 4.3d | 2025-11-12 A | 2025-11-17 A | 10TM34-012, 10TM34-015 SS+5d | 100% |  | 2025-11-13 | 2025-11-18 |  |  |  | Rev A | HydroIns | 10TM34 | Ruroci¹g | Budowa | Roboty | Magdalen | Wyspa | PM000 | Zespó³-K | Blok | Normalny | Pakiet | L2 |  |
| 10TM34-021 |  | Monta¿ ruroci¹gów – Sekcja 02 |  | 20.4d | 2026-09-16 A | 2026-10-08 | 10TM34-020, 10TM34-014 SS | 89% | 2.3d | 2026-09-15 | 2026-10-12 | 355.2d | 0d |  | Rev C | HydroIns | 10TM34 | Ruroci¹g | Budowa | Roboty | Magdalen | Wyspa | PM000 | Zespó³-K | Blok | Normalny | Pakiet | L2 |  |
| 10TM34-022 |  | Próba ciœnieniowa – Sekcja 02 |  | 3d | 2026-10-09 | 2026-10-13 | 10TM34-021 |  |  | 2026-10-13 | 2026-10-15 | 358.3d | 0d |  | Rev C | HydroIns | 10TM34 | Ruroci¹g | Budowa | Roboty | Magdalen | Wyspa | PM000 | Zespó³-W | Blok | Normalny | Pakiet | L2 |  |
| 10TM34-023 |  | Izolacje – Sekcja 02 |  | 7d | 2026-10-14 | 2026-10-22 | 10TM34-022 |  |  | 2026-10-16 | 2026-10-26 | 358.3d | 0d |  |  | HydroIns | 10TM34 | Ruroci¹g | Budowa | Roboty | Magdalen | Wyspa | PM000 | Zespó³-K | Blok | Normalny | Pakiet | L2 |  |
| 10TM34-024 |  | Malowanie i oznakowanie – Sekcja 02 |  | 2d | 2026-10-23 | 2026-10-26 | 10TM34-023 FF+2d |  |  | 2026-10-27 | 2026-10-28 | 358.3d | 0d |  |  | HydroIns | 10TM34 | Ruroci¹g | Budowa | Roboty | Magdalen | Wyspa | PM000 | Zespó³-K | Blok | Normalny | Pakiet | L2 |  |
|  | SEKCJA 03 | **Sekcja 03** |  |  | 2025-11-21 | 2026-11-18 |  |  |  |  |  |  |  |  |  |  |  |  |  |  |  |  |  |  |  |  |  |  |  |
|  | PODSEKCJA | **Podsekcja 03.A** |  |  | 2025-11-21 | 2026-11-18 |  |  |  |  |  |  |  |  |  |  |  |  |  |  |  |  |  |  |  |  |  |  |  |
| 10TM34-027 |  | Prefabrykacja ruroci¹gów – Sekcja 03 |  | 10.3d | 2025-11-21 A | 2025-12-04 A | 10TM34-012, 10TM34-020 SS+5d | 100% |  | 2025-11-20 | 2025-12-03 |  |  | Kalendarz 6-dniowy | Rev C | HydroIns | 10TM34 | Ruroci¹g | Budowa | Roboty | Magdalen | Wyspa | PM000 | Zespó³-W | Blok | Normalny | Pakiet | L2 |  |
| 10TM34-028 |  | Monta¿ ruroci¹gów – Sekcja 03 |  | 24.1d | 2026-09-21 A | 2026-10-26 | 10TM34-027, 10TM34-014 SS+1d | 41% | 14.3d | 2026-09-16 | 2026-10-19 | 375.5d | 0d |  |  | HydroIns | 10TM34 | Ruroci¹g | Budowa | Roboty | Magdalen | Wyspa | PM000 | Zespó³-W | Blok | Normalny | Pakiet | L2 |  |
| 10TM34-029 |  | Próba ciœnieniowa – Sekcja 03 |  | 5d | 2026-10-27 | 2026-11-02 | 10TM34-028 |  |  | 2026-10-20 | 2026-10-26 | 373.3d | 0d |  |  | HydroIns | 10TM34 | Ruroci¹g | Budowa | Roboty | Magdalen | Wyspa | PM000 | Zespó³-W | Blok | Niski | Pakiet | L2 |  |
| 10TM34-030 |  | Izolacje – Sekcja 03 |  | 9d | 2026-11-04 | 2026-11-16 | 10TM34-029 |  |  | 2026-10-27 | 2026-11-06 | 372.6d | 0d |  |  | HydroIns | 10TM34 | Ruroci¹g | Budowa | Roboty | Magdalen | Wyspa | PM000 | Zespó³-E | Blok | Normalny | Pakiet | L2 | Czeka na dostawê |
| 10TM34-031 |  | Malowanie i oznakowanie – Sekcja 03 |  | 4d | 2026-11-13 | 2026-11-18 | 10TM34-030 FF+2d |  |  | 2026-11-05 | 2026-11-10 | 372.6d | 0d |  |  | HydroIns | 10TM34 | Ruroci¹g | Budowa | Roboty | Magdalen | Wyspa | PM000 | Zespó³-W | Blok | Normalny | Pakiet | L2 |  |

| ID | WBS | Activity | Duration | Start | Finish | Predecessors | Complete | Remaining | Planned start | Planned finish | Total float | Free float | Calendar | Uwagi harmonogramisty | AC_Wykonawca | AC_Obiekt | AC_Dyscyplina | AC_Faza | AC_Zakres | AC_Opiekun | AC_Obszar | AC_PP_PM | AC_Zespol | AC_Blok | AC_Priorytet | AC_Pakiet | AC_Poziom | Rewizja dokumentu |
| --- | --- | --- | --- | --- | --- | --- | --- | --- | --- | --- | --- | --- | --- | --- | --- | --- | --- | --- | --- | --- | --- | --- | --- | --- | --- | --- | --- | --- |
|  | SEKCJA 04 | **Sekcja 04** |  | 2025-12-02 | 2026-10-23 |  |  |  |  |  |  |  |  |  |  |  |  |  |  |  |  |  |  |  |  |  |  |  |
| 10TM34-032 |  | Prefabrykacja ruroci¹gów – Sekcja 04 | 12.4d | 2025-12-02 A | 2025-12-19 A | 10TM34-012, 10TM34-027 SS+5d | 100% |  | 2025-11-27 | 2025-12-12 |  |  |  | Do weryfikacji z wykonawc¹ | HydroIns | 10TM34 | Ruroci¹g | Budowa | Roboty | Magdalen | Wyspa | PM200 | Zespó³-I | Blok | Normalny | Pakiet | L2 |  |
| 10TM34-033 |  | Monta¿ ruroci¹gów – Sekcja 04 | 9.3d | 2026-09-17 A | 2026-10-02 A | 10TM34-032, 10TM34-014 SS+2d | 100% |  | 2026-09-17 | 2026-09-29 |  |  |  |  | HydroIns | 10TM34 | Ruroci¹g | Budowa | Roboty | Magdalen | Wyspa | PM000 | Zespó³-W | Blok | Normalny | Pakiet | L2 | Rev B |
| 10TM34-034 |  | Próba ciœnieniowa – Sekcja 04 | 6d | 2026-10-05 A | 2026-10-06 A | 10TM34-033 | 100% |  | 2026-09-30 | 2026-10-07 |  |  |  |  | HydroIns | 10TM34 | Ruroci¹g | Budowa | Roboty | Magdalen | Wyspa | PM000 | Zespó³-K | Blok | Normalny | Pakiet | L2 |  |
| 10TM34-035 |  | Izolacje – Sekcja 04 | 11d | 2026-10-07 | 2026-10-21 | 10TM34-034 |  |  | 2026-10-08 | 2026-10-22 | 390.6d | 0d |  |  | HydroIns | 10TM34 | Ruroci¹g | Budowa | Roboty | Magdalen | Wyspa | PM000 | Zespó³-W | Blok | Wysoki | Pakiet | L2 | Rev C |
| 10TM34-036 |  | Malowanie i oznakowanie – Sekcja 04 | 2d | 2026-10-22 | 2026-10-23 | 10TM34-035 FF+2d |  |  | 2026-10-23 | 2026-10-26 | 390.6d | 0d |  |  | HydroIns | 10TM34 | Ruroci¹g | Budowa | Roboty | Magdalen | Wyspa | PM000 | Zespó³-K | Blok | Niski | Pakiet | L2 | Rev C |
|  | SEKCJA 05 | **Sekcja 05** |  | 2025-12-04 | 2026-11-13 |  |  |  |  |  |  |  |  |  |  |  |  |  |  |  |  |  |  |  |  |  |  |  |
| 10TM34-039 |  | Prefabrykacja ruroci¹gów – Sekcja 05 | 14.3d | 2025-12-04 A | 2025-12-24 A | 10TM34-012, 10TM34-032 SS+5d | 100% |  | 2025-12-04 | 2025-12-23 |  |  |  |  | HydroIns | 10TM34 | Ruroci¹g | Budowa | Roboty | Magdalen | Wyspa | PM000 | Zespó³-I | Blok | Normalny | Pakiet | L2 | Rev A |
| 10TM34-040 |  | Monta¿ ruroci¹gów – Sekcja 05 | 17d | 2026-10-05 A | 2026-10-26 | 10TM34-039, 10TM34-014 SS+10d | 17% | 14.1d | 2026-09-29 | 2026-10-21 | 374.6d | 0d |  | Ryzyko opóŸnienia | HydroIns | 10TM34 | Ruroci¹g | Budowa | Roboty | Magdalen | Wyspa | PM000 | Zespó³-W | Blok | Normalny | Pakiet | L2 |  |
| 10TM34-041 |  | Próba ciœnieniowa – Sekcja 05 | 4d | 2026-10-27 | 2026-10-30 | 10TM34-040 |  |  | 2026-10-22 | 2026-10-27 | 375.5d | 0d | Kalendarz 6-dniowy |  | HydroIns | 10TM34 | Ruroci¹g | Budowa | Roboty | Magdalen | Wyspa | PM000 | Zespó³-W | Blok | Wysoki | Pakiet | L2 | Rev B |
| 10TM34-042 |  | Izolacje – Sekcja 05 | 8d | 2026-11-02 | 2026-11-11 | 10TM34-041 |  |  | 2026-10-28 | 2026-11-06 | 375.5d | 0d |  |  | HydroIns | 10TM34 | Ruroci¹g | Budowa | Roboty | Magdalen | Wyspa | PM000 | Zespó³-W | Blok | Normalny | Pakiet | L2 |  |
| 10TM34-043 |  | Malowanie i oznakowanie – Sekcja 05 | 4d | 2026-11-10 | 2026-11-13 | 10TM34-042 FF+2d |  |  | 2026-11-05 | 2026-11-10 | 375.5d | 0d |  |  | HydroIns | 10TM34 | Ruroci¹g | Budowa | Roboty | Magdalen | Wyspa | PM100 | Zespó³-I | Blok | Normalny | Pakiet | L2 |  |
|  | SEKCJA 06 | **Sekcja 06** |  | 2025-12-11 | 2026-11-16 |  |  |  |  |  |  |  |  |  |  |  |  |  |  |  |  |  |  |  |  |  |  |  |
|  | PODSEKCJA | **Podsekcja 06.A** |  | 2025-12-11 | 2026-11-16 |  |  |  |  |  |  |  |  |  |  |  |  |  |  |  |  |  |  |  |  |  |  |  |
| 10TM34-044 |  | Prefabrykacja ruroci¹gów – Sekcja 06 | 3.6d | 2025-12-11 A | 2025-12-17 A | 10TM34-012, 10TM34-039 SS+5d | 100% |  | 2025-12-11 | 2025-12-15 |  |  |  |  | HydroIns | 10TM34 | Ruroci¹g | Budowa | Roboty | Magdalen | Wyspa | PM000 | Zespó³-W | Blok | Wysoki | Pakiet | L2 | Rev A |
| 10TM34-045 |  | Monta¿ ruroci¹gów – Sekcja 06 | 21.2d | 2026-10-05 A | 2026-10-29 | 10TM34-044, 10TM34-014 SS+10d | 17% | 17.5d | 2026-09-29 | 2026-10-27 | 372.4d | 0d |  |  | HydroIns | 10TM34 | Ruroci¹g | Budowa | Roboty | Magdalen | Wyspa | PM000 | Zespó³-W | Blok | Wysoki | Pakiet | L2 | Rev B |
| 10TM34-046 |  | Próba ciœnieniowa – Sekcja 06 | 3d | 2026-10-30 | 2026-11-03 | 10TM34-045 |  |  | 2026-10-28 | 2026-10-30 | 374.1d | 0d |  |  | HydroIns | 10TM34 | Ruroci¹g | Budowa | Roboty | Magdalen | Wyspa | PM000 | Zespó³-K | Blok | Normalny | Pakiet | L2 |  |
| 10TM34-047 |  | Izolacje – Sekcja 06 | 7d | 2026-11-04 | 2026-11-12 | 10TM34-046 |  |  | 2026-11-02 | 2026-11-10 | 374.1d | 0d |  | Bez uwag | HydroIns | 10TM34 | Ruroci¹g | Budowa | Roboty | Magdalen | Wyspa | PM000 | Zespó³-W | Blok | Normalny | Pakiet | L2 | Rev B |
| 10TM34-048 |  | Malowanie i oznakowanie – Sekcja 06 | 8d | 2026-11-05 | 2026-11-16 | 10TM34-047 FF+2d |  |  | 2026-11-03 | 2026-11-12 | 374.1d | 0d |  |  | HydroIns | 10TM34 | Ruroci¹g | Budowa | Roboty | Magdalen | Wyspa | PM000 | Zespó³-W | Blok | Normalny | Pakiet | L2 |  |
|  | SEKCJA 07 | **Sekcja 07** |  | 2025-12-17 | 2026-10-23 |  |  |  |  |  |  |  |  |  |  |  |  |  |  |  |  |  |  |  |  |  |  |  |
| 10TM34-051 |  | Prefabrykacja ruroci¹gów – Sekcja 07 | 8.9d | 2025-12-17 A | 2025-12-29 A | 10TM34-012, 10TM34-044 SS+5d | 100% |  | 2025-12-18 | 2025-12-29 |  |  |  |  | HydroIns | 10TM34 | Ruroci¹g | Budowa | Roboty | Magdalen | Wyspa | PM000 | Zespó³-K | Blok | Wysoki | Pakiet | L2 |  |
| 10TM34-052 |  | Monta¿ ruroci¹gów – Sekcja 07 | 13.7d | 2026-09-23 A | 2026-10-06 A | 10TM34-051, 10TM34-014 SS+4d | 100% |  | 2026-09-21 | 2026-10-07 |  |  |  |  | HydroIns | 10TM34 | Ruroci¹g | Budowa | Roboty | Magdalen | Wyspa | PM000 | Zespó³-W | Blok | Wysoki | Pakiet | L2 | Rev B |
| 10TM34-053 |  | Próba ciœnieniowa – Sekcja 07 | 4d | 2026-10-07 | 2026-10-12 | 10TM34-052 |  |  | 2026-10-08 | 2026-10-13 | 390.6d | 0d |  |  | HydroIns | 10TM34 | Ruroci¹g | Budowa | Roboty | Magdalen | Wyspa | PM000 | Zespó³-K | Blok | Wysoki | Pakiet | L2 | Rev A |
| 10TM34-054 |  | Izolacje – Sekcja 07 | 7d | 2026-10-13 | 2026-10-21 | 10TM34-053 |  |  | 2026-10-14 | 2026-10-22 | 390.6d | 0d |  |  | HydroIns | 10TM34 | Ruroci¹g | Budowa | Roboty | Magdalen | Wyspa | PM000 | Zespó³-W | Blok | Normalny | Pakiet | L2 | Rev C |
| 10TM34-055 |  | Malowanie i oznakowanie – Sekcja 07 | 3d | 2026-10-21 | 2026-10-23 | 10TM34-054 FF+2d |  |  | 2026-10-22 | 2026-10-26 | 390.6d | 0d |  |  | HydroIns | 10TM34 | Ruroci¹g | Budowa | Roboty | Magdalen | Wyspa | PM000 | Zespó³-W | Blok | Normalny | Pakiet | L2 |  |

| ID | WBS | Activity | Type | Duration | Start | Finish | Predecessors | Complete | Remaining | Actual finish | Planned start | Planned finish | Total float | Free float | Calendar | Rewizja dokumentu | AC_Wykonawca | AC_Obiekt | AC_Dyscyplina | AC_Faza | AC_Zakres | AC_Opiekun | AC_Obszar | AC_PP_PM | AC_Zespol | AC_Blok | AC_Priorytet | AC_Pakiet | AC_Poziom | Uwagi harmonogramisty |
| --- | --- | --- | --- | --- | --- | --- | --- | --- | --- | --- | --- | --- | --- | --- | --- | --- | --- | --- | --- | --- | --- | --- | --- | --- | --- | --- | --- | --- | --- | --- |
|  | SEKCJA 08 | **Sekcja 08** |  |  | 2025-12-25 | 2026-10-23 |  |  |  |  |  |  |  |  |  |  |  |  |  |  |  |  |  |  |  |  |  |  |  |  |
| 10TM34-056 |  | Prefabrykacja ruroci¹gów – Sekcja 08 |  | 6.6d | 2025-12-25 A | 2026-01-02 A | 10TM34-012, 10TM34-051 SS+5d | 100% |  |  | 2025-12-25 | 2026-01-01 |  |  |  | Rev B | HydroIns | 10TM34 | Ruroci¹g | Budowa | Roboty | Magdalen | Wyspa | PM000 | Zespó³-K | Blok | Normalny | Pakiet | L2 |  |
| 10TM34-057 |  | Monta¿ ruroci¹gów – Sekcja 08 |  | 9.3d | 2026-09-23 A | 2026-10-06 A | 10TM34-056, 10TM34-014 SS+3d | 100% |  |  | 2026-09-18 | 2026-09-30 |  |  |  |  | HydroIns | 10TM34 | Ruroci¹g | Budowa | Roboty | Magdalen | Wyspa | PM000 | Zespó³-W | Blok | Krytyczn | Pakiet | L2 | Uzgodnione na koordynacji |
| 10TM34-058 |  | Próba ciœnieniowa – Sekcja 08 |  | 2d | 2026-09-30 A | 2026-10-06 A | 10TM34-057 | 100% |  |  | 2026-10-01 | 2026-10-02 |  |  |  |  | HydroIns | 10TM34 | Ruroci¹g | Budowa | Roboty | Magdalen | Wyspa | PM000 | Zespó³-W | Blok | Normalny | Pakiet | L2 | Ryzyko opóŸnienia |
| 10TM34-059 |  | Izolacje – Sekcja 08 |  | 11d | 2026-10-07 | 2026-10-21 | 10TM34-058 |  |  |  | 2026-10-05 | 2026-10-19 | 390.6d | 0d |  |  | HydroIns | 10TM34 | Ruroci¹g | Budowa | Roboty | Magdalen | Wyspa | PM300 | Zespó³-E | Blok | Normalny | Pakiet | L2 |  |
| 10TM34-060 |  | Malowanie i oznakowanie – Sekcja 08 |  | 7d | 2026-10-15 | 2026-10-23 | 10TM34-059 FF+2d |  |  |  | 2026-10-13 | 2026-10-21 | 390.6d | 0d |  | Rev A | HydroIns | 10TM34 | Ruroci¹g | Budowa | Roboty | Magdalen | Wyspa | PM000 | Zespó³-K | Blok | Normalny | Pakiet | L2 |  |
|  | SEKCJA 09 | **Sekcja 09** |  |  | 2026-01-05 | 2026-11-06 |  |  |  |  |  |  |  |  |  |  |  |  |  |  |  |  |  |  |  |  |  |  |  |  |
|  | PODSEKCJA | **Podsekcja 09.A** |  |  | 2026-01-05 | 2026-11-06 |  |  |  |  |  |  |  |  |  |  |  |  |  |  |  |  |  |  |  |  |  |  |  |  |
| 10TM34-063 |  | Prefabrykacja ruroci¹gów – Sekcja 09 |  | 11.8d | 2026-01-05 A | 2026-01-21 A | 10TM34-012, 10TM34-056 SS+5d | 100% |  |  | 2026-01-01 | 2026-01-15 |  |  |  |  | HydroIns | 10TM34 | Ruroci¹g | Budowa | Roboty | Magdalen | Wyspa | PM000 | Zespó³-W | Blok | Krytyczn | Pakiet | L2 |  |
| 10TM34-064 |  | Monta¿ ruroci¹gów – Sekcja 09 |  | 18.1d | 2026-09-17 A | 2026-10-13 | 10TM34-063, 10TM34-014 SS+1d | 67% | 5.9d |  | 2026-09-16 | 2026-10-09 | 350.5d | 0d |  |  | HydroIns | 10TM34 | Ruroci¹g | Budowa | Roboty | Magdalen | Wyspa | PM000 | Zespó³-W | Blok | Wysoki | Pakiet | L2 |  |
| 10TM34-065 |  | Próba ciœnieniowa – Sekcja 09 |  | 6d | 2026-10-14 | 2026-10-21 | 10TM34-064 |  |  |  | 2026-10-12 | 2026-10-19 | 348.7d | 0d |  |  | HydroIns | 10TM34 | Ruroci¹g | Budowa | Roboty | Magdalen | Wyspa | PM000 | Zespó³-W | Blok | Normalny | Pakiet | L2 |  |
| 10TM34-066 |  | Izolacje – Sekcja 09 |  | 10d | 2026-10-22 | 2026-11-04 | 10TM34-065 |  |  |  | 2026-10-20 | 2026-11-02 | 348.7d | 0d |  | Rev C | HydroIns | 10TM34 | Ruroci¹g | Budowa | Roboty | Magdalen | Wyspa | PM000 | Zespó³-K | Blok | Normalny | Pakiet | L2 |  |
| 10TM34-067 |  | Malowanie i oznakowanie – Sekcja 09 |  | 5d | 2026-11-02 | 2026-11-06 | 10TM34-066 FF+2d |  |  |  | 2026-10-29 | 2026-11-04 | 348.7d | 0d |  |  | HydroIns | 10TM34 | Ruroci¹g | Budowa | Roboty | Magdalen | Wyspa | PM000 | Zespó³-K | Blok | Normalny | Pakiet | L2 | Czeka na dostawê |
|  | SEKCJA 10 | **Sekcja 10** |  |  | 2026-01-13 | 2026-11-24 |  |  |  |  |  |  |  |  |  |  |  |  |  |  |  |  |  |  |  |  |  |  |  |  |
| 10TM34-068 |  | Prefabrykacja ruroci¹gów – Sekcja 10 |  | 12.4d | 2026-01-13 A | 2026-02-02 A | 10TM34-012, 10TM34-063 SS+5d | 100% |  |  | 2026-01-08 | 2026-01-23 |  |  |  |  | HydroIns | 10TM34 | Ruroci¹g | Budowa | Roboty | Magdalen | Wyspa | PM000 | Zespó³-K | Blok | Wysoki | Pakiet | L2 |  |
| 10TM34-069 |  | Monta¿ ruroci¹gów – Sekcja 10 |  | 14.8d | 2026-09-25 A | 2026-10-08 | 10TM34-068, 10TM34-014 SS+5d | 80% | 2.9d |  | 2026-09-22 | 2026-10-09 | 349.8d | 0d |  | Rev C | HydroIns | 10TM34 | Ruroci¹g | Budowa | Roboty | Magdalen | Wyspa | PM000 | Zespó³-K | Blok | Normalny | Pakiet | L2 |  |
| 10TM34-070 |  | Próba ciœnieniowa – Sekcja 10 |  | 4d | 2026-10-09 | 2026-10-14 | 10TM34-069 |  |  |  | 2026-10-12 | 2026-10-15 | 353.7d | 0d |  |  | HydroIns | 10TM34 | Ruroci¹g | Budowa | Roboty | Magdalen | Wyspa | PM000 | Zespó³-W | Blok | Wysoki | Pakiet | L2 |  |
| 10TM34-071 |  | Izolacje – Sekcja 10 |  | 10d | 2026-10-15 | 2026-10-28 | 10TM34-070 |  |  |  | 2026-10-16 | 2026-10-29 | 353.7d | 0d |  |  | HydroIns | 10TM34 | Ruroci¹g | Budowa | Roboty | Magdalen | Wyspa | PM000 | Zespó³-W | Blok | Normalny | Pakiet | L2 | Czeka na dostawê |
| 10TM34-072 |  | Malowanie i oznakowanie – Sekcja 10 |  | 8d | 2026-11-13 | 2026-11-24 | 10TM34-071 FF+2d |  |  |  | 2026-10-22 | 2026-11-02 | 337.6d | 0d |  |  | HydroIns | 10TM34 | Ruroci¹g | Budowa | Roboty | Magdalen | Wyspa | PM000 | Zespó³-I | Blok | Niski | Pakiet | L2 |  |
|  | PROJ | **Projektowanie** |  |  | 2025-01-16 | 2025-05-23 |  |  |  |  |  |  |  |  |  |  |  |  |  |  |  |  |  |  |  |  |  |  |  |  |
|  | DOKUMENTAC | **Dokumentacja** |  |  | 2025-01-16 | 2025-05-23 |  |  |  |  |  |  |  |  |  |  |  |  |  |  |  |  |  |  |  |  |  |  |  |  |
| 10TM34-001 |  | Projekt wykonawczy – Hala maszyn |  | 52d | 2025-01-16 A | 2025-04-01 A |  | 100% |  |  | 2025-01-16 | 2025-03-28 |  |  |  |  | HydroIns | 10TM34 | Budowlan | Projekto | Projekt | Magdalen | Wyspa | PM000 | Zespó³-W | Blok | Krytyczn | Pakiet | L2 |  |
| 10TM34-002 |  | Uzgodnienie dokumentacji z Inwestorem |  | 25d | 2025-04-01 A | 2025-05-05 A | 10TM34-001 | 100% |  |  | 2025-03-31 | 2025-05-02 |  |  |  |  | HydroIns | 10TM34 | Budowlan | Projekto | Projekt | Magdalen | Wyspa | PM000 | Zespó³-K | Blok | Normalny | Pakiet | L2 |  |
| 10TM34-003 |  | Zatwierdzenie dokumentacji do realizacji |  | 12d | 2025-05-05 A | 2025-05-20 A | 10TM34-002 | 100% |  |  |  |  |  |  |  | Rev A | HydroIns | 10TM34 | Budowlan | Projekto | Projekt | Magdalen | Wyspa | PM000 | Zespó³-W | Blok | Normalny | Pakiet | L2 |  |
| 10TM34-004 |  | KM: Dokumentacja zatwierdzona – Hala maszyn | milestone | 0d | 2025-05-23 A | 2025-05-23 | 10TM34-003 | 100% |  | 2025-05-22 | 2025-05-21 | 2025-05-21 |  |  | Kalendarz 6-dniowy |  | HydroIns | 10TM34 | Budowlan | Projekto | Kamieñ | Magdalen | Wyspa | PM000 | Zespó³-W | Blok | Normalny | Pakiet | L1 |  |

| ID | WBS | Activity | Type | Duration | Start | Finish | Predecessors | Complete | Actual finish | Planned start | Planned finish | Total float | Free float | Calendar | Rewizja dokumentu | AC_Wykonawca | AC_Obiekt | AC_Dyscyplina | AC_Faza | AC_Zakres | AC_Opiekun | AC_Obszar | AC_PP_PM | AC_Zespol | AC_Blok | AC_Priorytet | AC_Pakiet | AC_Poziom | Uwagi harmonogramisty |
| --- | --- | --- | --- | --- | --- | --- | --- | --- | --- | --- | --- | --- | --- | --- | --- | --- | --- | --- | --- | --- | --- | --- | --- | --- | --- | --- | --- | --- | --- |
|  | ROZR | **Rozruch** |  |  | 2026-11-25 | 2026-12-24 |  |  |  |  |  |  |  |  |  |  |  |  |  |  |  |  |  |  |  |  |  |  |  |
|  | ROZRUCH | **Rozruch** |  |  | 2026-11-25 | 2026-12-24 |  |  |  |  |  |  |  |  |  |  |  |  |  |  |  |  |  |  |  |  |  |  |  |
| 10TM34-077 |  | Przegl¹d gotowoœci do rozruchu |  | 6d | 2026-11-25 | 2026-12-02 | 10TM34-076, 10TM34-019, 10TM34-024, 10TM34-026 |  |  | 2026-11-26 | 2026-12-03 | 337.6d | 0d |  | Rev C | HydroIns | 10TM34 | Rozruch | Rozruch | Rozruch | Magdalen | Wyspa | PM000 | Zespó³-W | Blok | Normalny | Pakiet | L2 |  |
| 10TM34-078 |  | Rozruch na zimno |  | 5d | 2026-12-03 | 2026-12-09 | 10TM34-077 |  |  | 2026-12-04 | 2026-12-10 | 337.6d | 0d | Kalendarz 6-dniowy | Rev A | HydroIns | 10TM34 | Rozruch | Rozruch | Rozruch | Magdalen | Wyspa | PM000 | Zespó³-K | Blok | Wysoki | Pakiet | L2 |  |
| 10TM34-079 |  | Rozruch na gor¹co / próby ruchowe |  | 10d | 2026-12-10 | 2026-12-23 | 10TM34-078 |  |  | 2026-12-11 | 2026-12-24 | 337.6d | 0d |  |  | HydroIns | 10TM34 | Rozruch | Rozruch | Rozruch | Magdalen | Wyspa | PM000 | Zespó³-K | Blok | Normalny | Pakiet | L2 | Czeka na dostawê |
| 10TM34-080 |  | KM: Odbiór koñcowy – Hala maszyn | milestone | 0d | 2026-12-24 | 2026-12-24 | 10TM34-079 |  |  | 2026-12-25 | 2026-12-25 | 337.6d | 0d | Kalendarz 6-dniowy |  | HydroIns | 10TM34 | Rozruch | Rozruch | Kamieñ | Magdalen | Wyspa | PM000 | Zespó³-W | Blok | Normalny | Pakiet | L1 |  |
|  | ZAKU | **Zakupy** |  |  | 2025-02-18 | 2026-09-15 |  |  |  |  |  |  |  |  |  |  |  |  |  |  |  |  |  |  |  |  |  |  |  |
|  | DOSTAWY | **Dostawy** |  |  | 2025-09-24 | 2026-09-15 |  |  |  |  |  |  |  |  |  |  |  |  |  |  |  |  |  |  |  |  |  |  |  |
| 10TM34-008 |  | Produkcja u dostawcy |  | 232d | 2025-09-24 A | 2026-08-13 A | 10TM34-007 | 100% |  |  |  |  |  |  |  | HydroIns | 10TM34 | Mechanic | Zakupy | Dostawa | Magdalen | Wyspa | PM000 | Zespó³-W | Blok | Normalny | Pakiet | L2 |  |
| 10TM34-009 |  | Testy FAT |  | 5d | 2026-08-14 A | 2026-08-21 A | 10TM34-008 | 100% |  | 2026-08-14 | 2026-08-20 |  |  |  | Rev B | HydroIns | 10TM34 | Mechanic | Zakupy | Dostawa | Magdalen | Wyspa | PM000 | Zespó³-K | Blok | Normalny | Pakiet | L2 |  |
| 10TM34-010 |  | Transport i dostawa na plac budowy |  | 17d | 2026-08-24 A | 2026-09-15 A | 10TM34-009 | 100% |  | 2026-08-21 | 2026-09-14 |  |  |  |  | HydroIns | 10TM34 | Mechanic | Zakupy | Dostawa | Magdalen | Wyspa | PM300 | Zespó³-I | Blok | Normalny | Pakiet | L2 |  |
| 10TM34-011 |  | KM: Dostawa na budowê – Hala maszyn | milestone | 0d | 2026-09-15 A | 2026-09-15 | 10TM34-010 | 100% | 2026-09-14 |  |  |  |  |  |  | HydroIns | 10TM34 | Mechanic | Zakupy | Kamieñ | Magdalen | Wyspa | PM000 | Zespó³-W | Blok | Krytyczn | Pakiet | L1 |  |
|  | ZAMÓWIENIA | **Zamówienia** |  |  | 2025-02-18 | 2025-09-22 |  |  |  |  |  |  |  |  |  |  |  |  |  |  |  |  |  |  |  |  |  |  |  |
| 10TM34-005 |  | Zapytanie ofertowe |  | 28d | 2025-02-18 A | 2025-04-01 A | 10TM34-001 SS+20d | 100% |  | 2025-02-13 | 2025-03-24 |  |  |  |  | HydroIns | 10TM34 | Mechanic | Zakupy | Dostawa | Magdalen | Wyspa | PM000 | Zespó³-K | Blok | Normalny | Pakiet | L2 | Bez uwag |
| 10TM34-006 |  | Analiza i wybór ofert |  | 17d | 2025-03-28 A | 2025-04-22 A | 10TM34-005 | 100% |  | 2025-03-25 | 2025-04-16 |  |  |  |  | HydroIns | 10TM34 | Mechanic | Zakupy | Dostawa | Magdalen | Wyspa | PM100 | Zespó³-I | Blok | Niski | Pakiet | L2 |  |
| 10TM34-007 |  | Zawarcie umowy / zamówienie |  | 6d | 2025-09-15 A | 2025-09-22 A | 10TM34-006, 10TM34-004 SS, 15BP15-004 SS+14d, 15BP15-004 SS+7d | 100% |  | 2025-09-16 | 2025-09-23 |  |  |  |  | HydroIns | 10TM34 | Mechanic | Zakupy | Dostawa | Magdalen | Wyspa | PM000 | Zespó³-W | Blok | Wysoki | Pakiet | L1 |  |
|  | 12FX78 | **12FX78 – Turbina parowa** |  |  | 2025-05-27 | 2026-10-09 |  |  |  |  |  |  |  |  |  |  |  |  |  |  |  |  |  |  |  |  |  |  |  |
|  | BUDO | **Budowa** |  |  | 2025-10-22 | 2026-09-15 |  |  |  |  |  |  |  |  |  |  |  |  |  |  |  |  |  |  |  |  |  |  |  |
|  | AKPIA | **AKPiA** |  |  | 2026-07-10 | 2026-08-11 |  |  |  |  |  |  |  |  |  |  |  |  |  |  |  |  |  |  |  |  |  |  |  |
| 12FX78-099 |  | Monta¿ uk³adów AKPiA |  | 22d | 2026-07-10 A | 2026-08-11 A | 12FX78-014 SS+5d | 100% |  | 2026-07-13 | 2026-08-11 |  |  |  |  | HydroIns | 12FX78 | AKPiA | Budowa | Roboty | Marek | Wyspa | PM000 | Zespó³-K | Wspólne | Normalny | Pakiet | L2 |  |
|  | ELEKTRYKA | **Elektryka** |  |  | 2026-07-16 | 2026-08-11 |  |  |  |  |  |  |  |  |  |  |  |  |  |  |  |  |  |  |  |  |  |  |  |
| 12FX78-098 |  | Pod³¹czenia i pomiary – trasa 14 |  | 5d | 2026-07-16 A | 2026-07-24 A | 12FX78-097 FF | 100% |  | 2026-07-17 | 2026-07-23 |  |  |  |  | HydroIns | 12FX78 | Elektryc | Budowa | Roboty | Marek | Wyspa | PM000 | Zespó³-K | Wspólne | Normalny | Pakiet | L2 |  |
| 12FX78-050 |  | Pod³¹czenia i pomiary – trasa 06 |  | 10d | 2026-07-17 A | 2026-07-30 A | 12FX78-049 FF | 100% |  |  |  |  |  |  |  | HydroIns | 12FX78 | Elektryc | Budowa | Roboty | Marek | Wyspa | PM000 | Zespó³-K | Wspólne | Normalny | Pakiet | L2 |  |
| 12FX78-061 |  | Uk³adanie kabli – trasa 08 |  | 9d | 2026-07-17 A | 2026-07-31 A | 12FX78-014 SS+10d | 100% |  | 2026-07-20 | 2026-07-30 |  |  |  | Rev C | HydroIns | 12FX78 | Elektryc | Budowa | Roboty | Marek | Wyspa | PM000 | Zespó³-W | Wspólne | Normalny | Pakiet | L2 |  |
| 12FX78-074 |  | Pod³¹czenia i pomiary – trasa 10 |  | 9d | 2026-07-17 A | 2026-07-29 A | 12FX78-073 FF | 100% |  |  |  |  |  |  | Rev B | HydroIns | 12FX78 | Elektryc | Budowa | Roboty | Marek | Wyspa | PM100 | Zespó³-E | Wspólne | Wysoki | Pakiet | L2 |  |
| 12FX78-085 |  | Uk³adanie kabli – trasa 12 |  | 14d | 2026-07-17 A | 2026-08-10 A | 12FX78-014 SS+10d | 100% |  | 2026-07-20 | 2026-08-06 |  |  |  |  | HydroIns | 12FX78 | Elektryc | Budowa | Roboty | Marek | Wyspa | PM000 | Zespó³-W | Wspólne | Normalny | Pakiet | L2 |  |
| 12FX78-037 |  | Uk³adanie kabli – trasa 04 |  | 6d | 2026-07-20 A | 2026-07-30 A | 12FX78-014 SS+10d | 100% |  | 2026-07-20 | 2026-07-27 |  |  |  | Rev B | HydroIns | 12FX78 | Elektryc | Budowa | Roboty | Marek | Wyspa | PM000 | Zespó³-K | Wspólne | Normalny | Pakiet | L2 |  |
| 12FX78-073 |  | Uk³adanie kabli – trasa 10 |  | 8d | 2026-07-20 A | 2026-07-29 A | 12FX78-014 SS+10d | 100% |  |  |  |  |  |  |  | HydroIns | 12FX78 | Elektryc | Budowa | Roboty | Marek | Wyspa | PM000 | Zespó³-W | Wspólne | Normalny | Pakiet | L2 |  |
| 12FX78-025 |  | Uk³adanie kabli – trasa 02 |  | 12d | 2026-07-21 A | 2026-08-07 A | 12FX78-014 SS+10d | 100% |  | 2026-07-20 | 2026-08-04 |  |  |  |  | HydroIns | 12FX78 | Elektryc | Budowa | Roboty | Marek | Wyspa | PM000 | Zespó³-K | Wspólne | Normalny | Pakiet | L2 |  |
| 12FX78-097 |  | Uk³adanie kabli – trasa 14 |  | 4d | 2026-07-22 A | 2026-07-28 A | 12FX78-014 SS+10d | 100% |  | 2026-07-20 | 2026-07-23 |  |  |  |  | HydroIns | 12FX78 | Elektryc | Budowa | Roboty | Marek | Wyspa | PM000 | Zespó³-K | Wspólne | Normalny | Pakiet | L2 |  |
| 12FX78-049 |  | Uk³adanie kabli – trasa 06 |  | 9d | 2026-07-23 A | 2026-08-05 A | 12FX78-014 SS+10d | 100% |  | 2026-07-20 | 2026-07-30 |  |  |  |  | HydroIns | 12FX78 | Elektryc | Budowa | Roboty | Marek | Wyspa | PM000 | Zespó³-W | Wspólne | Normalny | Pakiet | L2 | Bez uwag |
| 12FX78-062 |  | Pod³¹czenia i pomiary – trasa 08 |  | 8d | 2026-07-23 A | 2026-08-05 A | 12FX78-061 FF | 100% |  | 2026-07-21 | 2026-07-30 |  |  |  |  | HydroIns | 12FX78 | Elektryc | Budowa | Roboty | Marek | Wyspa | PM100 | Zespó³-I | Wspólne | Krytyczn | Pakiet | L2 |  |
| 12FX78-038 |  | Pod³¹czenia i pomiary – trasa 04 |  | 3d | 2026-07-27 A | 2026-07-30 A | 12FX78-037 FF | 100% |  | 2026-07-23 | 2026-07-27 |  |  |  | Rev B | HydroIns | 12FX78 | Elektryc | Budowa | Roboty | Marek | Wyspa | PM200 | Zespó³-I | Wspólne | Normalny | Pakiet | L2 |  |
| 12FX78-086 |  | Pod³¹czenia i pomiary – trasa 12 |  | 6d | 2026-07-29 A | 2026-08-06 A | 12FX78-085 FF | 100% |  | 2026-07-30 | 2026-08-06 |  |  |  |  | HydroIns | 12FX78 | Elektryc | Budowa | Roboty | Marek | Wyspa | PM000 | Zespó³-K | Wspólne | Normalny | Pakiet | L2 | Ryzyko opóŸnienia |
| 12FX78-026 |  | Pod³¹czenia i pomiary – trasa 02 |  | 4d | 2026-08-03 A | 2026-08-11 A | 12FX78-025 FF | 100% |  | 2026-07-30 | 2026-08-04 |  |  |  |  | HydroIns | 12FX78 | Elektryc | Budowa | Roboty | Marek | Wyspa | PM000 | Zespó³-W | Wspólne | Normalny | Pakiet | L2 |  |

| ID | WBS | Activity | Type | Duration | Start | Finish | Predecessors | Complete | Actual finish | Planned start | Planned finish | Calendar | Uwagi harmonogramisty | AC_Wykonawca | AC_Obiekt | AC_Dyscyplina | AC_Faza | AC_Zakres | AC_Opiekun | AC_Obszar | AC_PP_PM | AC_Zespol | AC_Blok | AC_Priorytet | AC_Pakiet | AC_Poziom | Rewizja dokumentu |
| --- | --- | --- | --- | --- | --- | --- | --- | --- | --- | --- | --- | --- | --- | --- | --- | --- | --- | --- | --- | --- | --- | --- | --- | --- | --- | --- | --- |
|  | MONTA¯ | **Monta¿** |  |  | 2025-12-31 | 2026-09-08 |  |  |  |  |  |  |  |  |  |  |  |  |  |  |  |  |  |  |  |  |  |
| 12FX78-013 |  | Monta¿ konstrukcji stalowych |  | 49d | 2025-12-31 A | 2026-03-10 A | 12FX78-012 | 100% |  | 2025-12-31 | 2026-03-09 |  | Do weryfikacji z wykonawc¹ | HydroIns | 12FX78 | Mechanic | Budowa | Roboty | Marek | Wyspa | PM000 | Zespó³-K | Wspólne | Krytyczn | Pakiet | L2 |  |
| 12FX78-014 |  | Monta¿ urz¹dzeñ g³ównych |  | 45d | 2026-07-06 A | 2026-09-08 A | 12FX78-013, 12FX78-011 | 100% |  | 2026-07-06 | 2026-09-04 |  |  | HydroIns | 12FX78 | Mechanic | Budowa | Roboty | Marek | Wyspa | PM000 | Zespó³-W | Wspólne | Normalny | Pakiet | L2 |  |
| 12FX78-100 |  | KM: Zakoñczenie monta¿u – Turbina parowa | milestone | 0d | 2026-09-08 A | 2026-09-08 | 12FX78-091, 12FX78-096, 12FX78-098, 12FX78-099, 12FX78-014 | 100% | 2026-09-07 | 2026-09-07 | 2026-09-07 |  |  | HydroIns | 12FX78 | Mechanic | Budowa | Kamieñ | Marek | Wyspa | PM000 | Zespó³-K | Wspólne | Niski | Pakiet | L2 |  |
|  | ROBOTY BUD | **Roboty budowlane** |  |  | 2025-10-22 | 2026-01-06 |  |  |  |  |  |  |  |  |  |  |  |  |  |  |  |  |  |  |  |  |  |
| 12FX78-012 |  | Fundamenty i roboty ziemne |  | 52d | 2025-10-22 A | 2026-01-06 A | 12FX78-007 | 100% |  | 2025-10-20 | 2025-12-30 |  |  | HydroIns | 12FX78 | Budowlan | Budowa | Roboty | Marek | Wyspa | PM100 | Zespó³-I | Wspólne | Normalny | Pakiet | L2 |  |
|  | RUROCI¥GI | **Ruroci¹gi** |  |  | 2026-01-02 | 2026-09-15 |  |  |  |  |  |  |  |  |  |  |  |  |  |  |  |  |  |  |  |  |  |
|  | SEKCJA 01 | **Sekcja 01** |  |  | 2026-01-02 | 2026-08-07 |  |  |  |  |  |  |  |  |  |  |  |  |  |  |  |  |  |  |  |  |  |
| 12FX78-015 |  | Prefabrykacja ruroci¹gów – Sekcja 01 |  | 6.8d | 2026-01-02 A | 2026-01-14 A | 12FX78-012 | 100% |  | 2025-12-31 | 2026-01-07 |  |  | HydroIns | 12FX78 | Ruroci¹g | Budowa | Roboty | Marek | Wyspa | PM000 | Zespó³-W | Wspólne | Normalny | Pakiet | L2 |  |
| 12FX78-016 |  | Monta¿ ruroci¹gów – Sekcja 01 |  | 10.5d | 2026-07-14 A | 2026-07-27 A | 12FX78-015, 12FX78-014 SS+6d | 100% |  |  |  |  |  | HydroIns | 12FX78 | Ruroci¹g | Budowa | Roboty | Marek | Wyspa | PM000 | Zespó³-K | Wspólne | Normalny | Pakiet | L2 | Rev B |
| 12FX78-017 |  | Próba ciœnieniowa – Sekcja 01 |  | 2d | 2026-07-29 A | 2026-07-31 A | 12FX78-016 | 100% |  | 2026-07-28 | 2026-07-29 |  |  | HydroIns | 12FX78 | Ruroci¹g | Budowa | Roboty | Marek | Wyspa | PM000 | Zespó³-K | Wspólne | Wysoki | Pakiet | L2 |  |
| 12FX78-018 |  | Izolacje – Sekcja 01 |  | 3d | 2026-07-31 A | 2026-08-07 A | 12FX78-017 | 100% |  | 2026-07-30 | 2026-08-03 |  |  | HydroIns | 12FX78 | Ruroci¹g | Budowa | Roboty | Marek | Wyspa | PM000 | Zespó³-W | Wspólne | Wysoki | Pakiet | L2 |  |
| 12FX78-019 |  | Malowanie i oznakowanie – Sekcja 01 |  | 4d | 2026-08-03 A | 2026-08-07 A | 12FX78-018 FF+2d | 100% |  | 2026-07-31 | 2026-08-05 |  |  | HydroIns | 12FX78 | Ruroci¹g | Budowa | Roboty | Marek | Wyspa | PM000 | Zespó³-W | Wspólne | Normalny | Pakiet | L2 |  |
|  | SEKCJA 02 | **Sekcja 02** |  |  | 2026-01-06 | 2026-09-07 |  |  |  |  |  |  |  |  |  |  |  |  |  |  |  |  |  |  |  |  |  |
| 12FX78-020 |  | Prefabrykacja ruroci¹gów – Sekcja 02 |  | 6.1d | 2026-01-06 A | 2026-01-13 A | 12FX78-012, 12FX78-015 SS+5d | 100% |  | 2026-01-07 | 2026-01-14 |  |  | HydroIns | 12FX78 | Ruroci¹g | Budowa | Roboty | Marek | Wyspa | PM000 | Zespó³-W | Wspólne | Normalny | Pakiet | L2 |  |
| 12FX78-021 |  | Monta¿ ruroci¹gów – Sekcja 02 |  | 20.6d | 2026-07-14 A | 2026-08-11 A | 12FX78-020, 12FX78-014 SS+7d | 100% |  | 2026-07-15 | 2026-08-11 |  |  | HydroIns | 12FX78 | Ruroci¹g | Budowa | Roboty | Marek | Wyspa | PM000 | Zespó³-K | Wspólne | Normalny | Pakiet | L2 |  |
| 12FX78-023 |  | Izolacje – Sekcja 02 |  | 10d | 2026-08-14 A | 2026-08-28 A | 12FX78-022 | 100% |  | 2026-08-17 | 2026-08-28 |  | Czeka na dostawê | HydroIns | 12FX78 | Ruroci¹g | Budowa | Roboty | Marek | Wyspa | PM000 | Zespó³-E | Wspólne | Normalny | Pakiet | L2 |  |
| 12FX78-022 |  | Próba ciœnieniowa – Sekcja 02 |  | 3d | 2026-08-17 A | 2026-08-19 A | 12FX78-021 | 100% |  | 2026-08-12 | 2026-08-14 |  |  | HydroIns | 12FX78 | Ruroci¹g | Budowa | Roboty | Marek | Wyspa | PM000 | Zespó³-W | Wspólne | Wysoki | Pakiet | L2 |  |
| 12FX78-024 |  | Malowanie i oznakowanie – Sekcja 02 |  | 8d | 2026-08-25 A | 2026-09-07 A | 12FX78-023 FF+2d | 100% |  | 2026-08-21 | 2026-09-01 |  | Uzgodnione na koordynacji | HydroIns | 12FX78 | Ruroci¹g | Budowa | Roboty | Marek | Wyspa | PM000 | Zespó³-I | Wspólne | Niski | Pakiet | L2 |  |
|  | SEKCJA 03 | **Sekcja 03** |  |  | 2026-01-15 | 2026-08-18 |  |  |  |  |  |  |  |  |  |  |  |  |  |  |  |  |  |  |  |  |  |
|  | PODSEKCJA | **Podsekcja 03.A** |  |  | 2026-01-15 | 2026-08-18 |  |  |  |  |  |  |  |  |  |  |  |  |  |  |  |  |  |  |  |  |  |
| 12FX78-027 |  | Prefabrykacja ruroci¹gów – Sekcja 03 |  | 9d | 2026-01-15 A | 2026-01-27 A | 12FX78-012, 12FX78-020 SS+5d | 100% |  | 2026-01-14 | 2026-01-26 |  | Bez uwag | HydroIns | 12FX78 | Ruroci¹g | Budowa | Roboty | Marek | Wyspa | PM000 | Zespó³-K | Wspólne | Wysoki | Pakiet | L2 |  |
| 12FX78-028 |  | Monta¿ ruroci¹gów – Sekcja 03 |  | 13.5d | 2026-07-06 A | 2026-07-27 A | 12FX78-027, 12FX78-014 SS | 100% |  | 2026-07-06 | 2026-07-22 | Kalendarz 6-dniowy |  | HydroIns | 12FX78 | Ruroci¹g | Budowa | Roboty | Marek | Wyspa | PM000 | Zespó³-W | Wspólne | Normalny | Pakiet | L2 | Rev C |
| 12FX78-029 |  | Próba ciœnieniowa – Sekcja 03 |  | 6d | 2026-07-23 A | 2026-08-03 A | 12FX78-028 | 100% |  | 2026-07-23 | 2026-07-30 |  |  | HydroIns | 12FX78 | Ruroci¹g | Budowa | Roboty | Marek | Wyspa | PM000 | Zespó³-W | Wspólne | Normalny | Pakiet | L2 |  |
| 12FX78-030 |  | Izolacje – Sekcja 03 |  | 7d | 2026-08-04 A | 2026-08-17 A | 12FX78-029 | 100% |  | 2026-07-31 | 2026-08-10 |  |  | HydroIns | 12FX78 | Ruroci¹g | Budowa | Roboty | Marek | Wyspa | PM000 | Zespó³-W | Wspólne | Normalny | Pakiet | L2 |  |
| 12FX78-031 |  | Malowanie i oznakowanie – Sekcja 03 |  | 4d | 2026-08-12 A | 2026-08-18 A | 12FX78-030 FF+2d | 100% |  | 2026-08-07 | 2026-08-12 |  |  | HydroIns | 12FX78 | Ruroci¹g | Budowa | Roboty | Marek | Wyspa | PM000 | Zespó³-W | Wspólne | Normalny | Pakiet | L2 | Rev B |

| ID | WBS | Activity | Duration | Start | Finish | Predecessors | Complete | Planned start | Planned finish | Uwagi harmonogramisty | AC_Wykonawca | AC_Obiekt | AC_Dyscyplina | AC_Faza | AC_Zakres | AC_Opiekun | AC_Obszar | AC_PP_PM | AC_Zespol | AC_Blok | AC_Priorytet | AC_Pakiet | AC_Poziom | Rewizja dokumentu |
| --- | --- | --- | --- | --- | --- | --- | --- | --- | --- | --- | --- | --- | --- | --- | --- | --- | --- | --- | --- | --- | --- | --- | --- | --- |
|  | SEKCJA 04 | **Sekcja 04** |  | 2026-01-22 | 2026-08-12 |  |  |  |  |  |  |  |  |  |  |  |  |  |  |  |  |  |  |  |
| 12FX78-032 |  | Prefabrykacja ruroci¹gów – Sekcja 04 | 4d | 2026-01-22 A | 2026-01-30 A | 12FX78-012, 12FX78-027 SS+5d | 100% | 2026-01-21 | 2026-01-26 | Do weryfikacji z wykonawc¹ | HydroIns | 12FX78 | Ruroci¹g | Budowa | Roboty | Marek | Wyspa | PM000 | Zespó³-K | Wspólne | Krytyczn | Pakiet | L2 |  |
| 12FX78-033 |  | Monta¿ ruroci¹gów – Sekcja 04 | 11.5d | 2026-07-08 A | 2026-07-22 A | 12FX78-032, 12FX78-014 SS+2d | 100% |  |  |  | HydroIns | 12FX78 | Ruroci¹g | Budowa | Roboty | Marek | Wyspa | PM000 | Zespó³-W | Wspólne | Krytyczn | Pakiet | L2 |  |
| 12FX78-034 |  | Próba ciœnieniowa – Sekcja 04 | 2d | 2026-07-22 A | 2026-07-28 A | 12FX78-033 | 100% | 2026-07-23 | 2026-07-24 |  | HydroIns | 12FX78 | Ruroci¹g | Budowa | Roboty | Marek | Wyspa | PM000 | Zespó³-W | Wspólne | Normalny | Pakiet | L2 | Rev A |
| 12FX78-035 |  | Izolacje – Sekcja 04 | 5d | 2026-07-27 A | 2026-08-03 A | 12FX78-034 | 100% | 2026-07-27 | 2026-07-31 |  | HydroIns | 12FX78 | Ruroci¹g | Budowa | Roboty | Marek | Wyspa | PM000 | Zespó³-K | Wspólne | Normalny | Pakiet | L2 |  |
| 12FX78-036 |  | Malowanie i oznakowanie – Sekcja 04 | 2d | 2026-08-06 A | 2026-08-12 A | 12FX78-035 FF+2d | 100% | 2026-08-03 | 2026-08-04 |  | HydroIns | 12FX78 | Ruroci¹g | Budowa | Roboty | Marek | Wyspa | PM000 | Zespó³-W | Wspólne | Normalny | Pakiet | L2 |  |
|  | SEKCJA 05 | **Sekcja 05** |  | 2026-01-28 | 2026-08-10 |  |  |  |  |  |  |  |  |  |  |  |  |  |  |  |  |  |  |  |
| 12FX78-039 |  | Prefabrykacja ruroci¹gów – Sekcja 05 | 6.3d | 2026-01-28 A | 2026-02-09 A | 12FX78-012, 12FX78-032 SS+5d | 100% | 2026-01-28 | 2026-02-04 | Ryzyko opóŸnienia | HydroIns | 12FX78 | Ruroci¹g | Budowa | Roboty | Marek | Wyspa | PM000 | Zespó³-K | Wspólne | Normalny | Pakiet | L2 | Rev C |
| 12FX78-040 |  | Monta¿ ruroci¹gów – Sekcja 05 | 5.9d | 2026-07-07 A | 2026-07-15 A | 12FX78-039, 12FX78-014 SS+1d | 100% | 2026-07-07 | 2026-07-13 |  | HydroIns | 12FX78 | Ruroci¹g | Budowa | Roboty | Marek | Wyspa | PM000 | Zespó³-W | Wspólne | Normalny | Pakiet | L2 |  |
| 12FX78-041 |  | Próba ciœnieniowa – Sekcja 05 | 5d | 2026-07-17 A | 2026-07-23 A | 12FX78-040 | 100% | 2026-07-14 | 2026-07-20 |  | HydroIns | 12FX78 | Ruroci¹g | Budowa | Roboty | Marek | Wyspa | PM000 | Zespó³-K | Wspólne | Normalny | Pakiet | L2 |  |
| 12FX78-042 |  | Izolacje – Sekcja 05 | 9d | 2026-07-23 A | 2026-08-05 A | 12FX78-041 | 100% | 2026-07-21 | 2026-07-31 |  | HydroIns | 12FX78 | Ruroci¹g | Budowa | Roboty | Marek | Wyspa | PM000 | Zespó³-K | Wspólne | Normalny | Pakiet | L2 | Rev B |
| 12FX78-043 |  | Malowanie i oznakowanie – Sekcja 05 | 6d | 2026-07-30 A | 2026-08-10 A | 12FX78-042 FF+2d | 100% | 2026-07-28 | 2026-08-04 |  | HydroIns | 12FX78 | Ruroci¹g | Budowa | Roboty | Marek | Wyspa | PM000 | Zespó³-W | Wspólne | Normalny | Pakiet | L2 |  |
|  | SEKCJA 06 | **Sekcja 06** |  | 2026-02-04 | 2026-08-26 |  |  |  |  |  |  |  |  |  |  |  |  |  |  |  |  |  |  |  |
|  | PODSEKCJA | **Podsekcja 06.A** |  | 2026-02-04 | 2026-08-26 |  |  |  |  |  |  |  |  |  |  |  |  |  |  |  |  |  |  |  |
| 12FX78-044 |  | Prefabrykacja ruroci¹gów – Sekcja 06 | 11d | 2026-02-04 A | 2026-02-23 A | 12FX78-012, 12FX78-039 SS+5d | 100% | 2026-02-04 | 2026-02-18 |  | HydroIns | 12FX78 | Ruroci¹g | Budowa | Roboty | Marek | Wyspa | PM000 | Zespó³-W | Wspólne | Normalny | Pakiet | L2 |  |
| 12FX78-045 |  | Monta¿ ruroci¹gów – Sekcja 06 | 20.1d | 2026-07-08 A | 2026-08-04 A | 12FX78-044, 12FX78-014 SS+2d | 100% |  |  | Uzgodnione na koordynacji | HydroIns | 12FX78 | Ruroci¹g | Budowa | Roboty | Marek | Wyspa | PM000 | Zespó³-K | Wspólne | Niski | Pakiet | L2 | Rev C |
| 12FX78-046 |  | Próba ciœnieniowa – Sekcja 06 | 3d | 2026-08-05 A | 2026-08-11 A | 12FX78-045 | 100% | 2026-08-05 | 2026-08-07 | Czeka na dostawê | HydroIns | 12FX78 | Ruroci¹g | Budowa | Roboty | Marek | Wyspa | PM000 | Zespó³-W | Wspólne | Normalny | Pakiet | L2 |  |
| 12FX78-047 |  | Izolacje – Sekcja 06 | 5d | 2026-08-13 A | 2026-08-24 A | 12FX78-046 | 100% | 2026-08-10 | 2026-08-14 |  | HydroIns | 12FX78 | Ruroci¹g | Budowa | Roboty | Marek | Wyspa | PM000 | Zespó³-W | Wspólne | Niski | Pakiet | L2 |  |
| 12FX78-048 |  | Malowanie i oznakowanie – Sekcja 06 | 5d | 2026-08-17 A | 2026-08-26 A | 12FX78-047 FF+2d | 100% | 2026-08-12 | 2026-08-18 |  | HydroIns | 12FX78 | Ruroci¹g | Budowa | Roboty | Marek | Wyspa | PM000 | Zespó³-W | Wspólne | Normalny | Pakiet | L2 |  |
|  | SEKCJA 07 | **Sekcja 07** |  | 2026-02-12 | 2026-08-20 |  |  |  |  |  |  |  |  |  |  |  |  |  |  |  |  |  |  |  |
| 12FX78-051 |  | Prefabrykacja ruroci¹gów – Sekcja 07 | 9d | 2026-02-12 A | 2026-02-25 A | 12FX78-012, 12FX78-044 SS+5d | 100% | 2026-02-11 | 2026-02-23 |  | HydroIns | 12FX78 | Ruroci¹g | Budowa | Roboty | Marek | Wyspa | PM000 | Zespó³-K | Wspólne | Normalny | Pakiet | L2 |  |
| 12FX78-052 |  | Monta¿ ruroci¹gów – Sekcja 07 | 11.2d | 2026-07-20 A | 2026-08-03 A | 12FX78-051, 12FX78-014 SS+7d | 100% | 2026-07-15 | 2026-07-29 |  | HydroIns | 12FX78 | Ruroci¹g | Budowa | Roboty | Marek | Wyspa | PM300 | Zespó³-I | Wspólne | Normalny | Pakiet | L2 | Rev B |
| 12FX78-053 |  | Próba ciœnieniowa – Sekcja 07 | 6d | 2026-07-31 A | 2026-08-10 A | 12FX78-052 | 100% | 2026-07-30 | 2026-08-06 |  | HydroIns | 12FX78 | Ruroci¹g | Budowa | Roboty | Marek | Wyspa | PM000 | Zespó³-W | Wspólne | Normalny | Pakiet | L2 |  |
| 12FX78-054 |  | Izolacje – Sekcja 07 | 7d | 2026-08-07 A | 2026-08-18 A | 12FX78-053 | 100% | 2026-08-07 | 2026-08-17 |  | HydroIns | 12FX78 | Ruroci¹g | Budowa | Roboty | Marek | Wyspa | PM100 | Zespó³-I | Wspólne | Wysoki | Pakiet | L2 | Rev A |
| 12FX78-055 |  | Malowanie i oznakowanie – Sekcja 07 | 4d | 2026-08-17 A | 2026-08-20 A | 12FX78-054 FF+2d | 100% | 2026-08-14 | 2026-08-19 |  | HydroIns | 12FX78 | Ruroci¹g | Budowa | Roboty | Marek | Wyspa | PM000 | Zespó³-K | Wspólne | Normalny | Pakiet | L2 |  |

| ID | WBS | Activity | Duration | Start | Finish | Predecessors | Complete | Planned start | Planned finish | Calendar | AC_Wykonawca | AC_Obiekt | AC_Dyscyplina | AC_Faza | AC_Zakres | AC_Opiekun | AC_Obszar | AC_PP_PM | AC_Zespol | AC_Blok | AC_Priorytet | AC_Pakiet | AC_Poziom | Uwagi harmonogramisty | Rewizja dokumentu |
| --- | --- | --- | --- | --- | --- | --- | --- | --- | --- | --- | --- | --- | --- | --- | --- | --- | --- | --- | --- | --- | --- | --- | --- | --- | --- |
|  | SEKCJA 08 | **Sekcja 08** |  | 2026-02-19 | 2026-08-24 |  |  |  |  |  |  |  |  |  |  |  |  |  |  |  |  |  |  |  |  |
| 12FX78-056 |  | Prefabrykacja ruroci¹gów – Sekcja 08 | 11d | 2026-02-19 A | 2026-03-05 A | 12FX78-012, 12FX78-051 SS+5d | 100% | 2026-02-18 | 2026-03-04 | Kalendarz 6-dniowy | HydroIns | 12FX78 | Ruroci¹g | Budowa | Roboty | Marek | Wyspa | PM000 | Zespó³-W | Wspólne | Normalny | Pakiet | L2 |  |  |
| 12FX78-057 |  | Monta¿ ruroci¹gów – Sekcja 08 | 15.1d | 2026-07-16 A | 2026-08-07 A | 12FX78-056, 12FX78-014 SS+5d | 100% | 2026-07-13 | 2026-07-31 |  | HydroIns | 12FX78 | Ruroci¹g | Budowa | Roboty | Marek | Wyspa | PM000 | Zespó³-W | Wspólne | Normalny | Pakiet | L2 |  |  |
| 12FX78-058 |  | Próba ciœnieniowa – Sekcja 08 | 6d | 2026-08-03 A | 2026-08-10 A | 12FX78-057 | 100% |  |  |  | HydroIns | 12FX78 | Ruroci¹g | Budowa | Roboty | Marek | Wyspa | PM000 | Zespó³-K | Wspólne | Normalny | Pakiet | L2 |  |  |
| 12FX78-059 |  | Izolacje – Sekcja 08 | 8d | 2026-08-10 A | 2026-08-21 A | 12FX78-058 | 100% | 2026-08-11 | 2026-08-20 |  | HydroIns | 12FX78 | Ruroci¹g | Budowa | Roboty | Marek | Wyspa | PM000 | Zespó³-K | Wspólne | Wysoki | Pakiet | L2 | Uzgodnione na koordynacji |  |
| 12FX78-060 |  | Malowanie i oznakowanie – Sekcja 08 | 4d | 2026-08-19 A | 2026-08-24 A | 12FX78-059 FF+2d | 100% |  |  |  | HydroIns | 12FX78 | Ruroci¹g | Budowa | Roboty | Marek | Wyspa | PM000 | Zespó³-K | Wspólne | Wysoki | Pakiet | L2 |  |  |
|  | SEKCJA 09 | **Sekcja 09** |  | 2026-02-24 | 2026-09-15 |  |  |  |  |  |  |  |  |  |  |  |  |  |  |  |  |  |  |  |  |
|  | PODSEKCJA | **Podsekcja 09.A** |  | 2026-02-24 | 2026-09-15 |  |  |  |  |  |  |  |  |  |  |  |  |  |  |  |  |  |  |  |  |
| 12FX78-063 |  | Prefabrykacja ruroci¹gów – Sekcja 09 | 4.1d | 2026-02-24 A | 2026-03-02 A | 12FX78-012, 12FX78-056 SS+5d | 100% | 2026-02-25 | 2026-03-02 |  | HydroIns | 12FX78 | Ruroci¹g | Budowa | Roboty | Marek | Wyspa | PM000 | Zespó³-W | Wspólne | Wysoki | Pakiet | L2 | Do weryfikacji z wykonawc¹ |  |
| 12FX78-064 |  | Monta¿ ruroci¹gów – Sekcja 09 | 21.6d | 2026-07-15 A | 2026-08-12 A | 12FX78-063, 12FX78-014 SS+8d | 100% | 2026-07-16 | 2026-08-13 |  | HydroIns | 12FX78 | Ruroci¹g | Budowa | Roboty | Marek | Wyspa | PM000 | Zespó³-W | Wspólne | Normalny | Pakiet | L2 |  |  |
| 12FX78-065 |  | Próba ciœnieniowa – Sekcja 09 | 6d | 2026-08-18 A | 2026-08-25 A | 12FX78-064 | 100% | 2026-08-14 | 2026-08-21 | Kalendarz 6-dniowy | HydroIns | 12FX78 | Ruroci¹g | Budowa | Roboty | Marek | Wyspa | PM000 | Zespó³-W | Wspólne | Normalny | Pakiet | L2 |  |  |
| 12FX78-066 |  | Izolacje – Sekcja 09 | 12d | 2026-08-21 A | 2026-09-08 A | 12FX78-065 | 100% | 2026-08-24 | 2026-09-08 | Kalendarz 6-dniowy | HydroIns | 12FX78 | Ruroci¹g | Budowa | Roboty | Marek | Wyspa | PM000 | Zespó³-K | Wspólne | Normalny | Pakiet | L2 |  | Rev A |
| 12FX78-067 |  | Malowanie i oznakowanie – Sekcja 09 | 2d | 2026-09-14 A | 2026-09-15 A | 12FX78-066 FF+2d | 100% | 2026-09-09 | 2026-09-10 |  | HydroIns | 12FX78 | Ruroci¹g | Budowa | Roboty | Marek | Wyspa | PM000 | Zespó³-W | Wspólne | Normalny | Pakiet | L2 |  |  |
|  | SEKCJA 10 | **Sekcja 10** |  | 2026-03-05 | 2026-08-17 |  |  |  |  |  |  |  |  |  |  |  |  |  |  |  |  |  |  |  |  |
| 12FX78-068 |  | Prefabrykacja ruroci¹gów – Sekcja 10 | 14.6d | 2026-03-05 A | 2026-03-26 A | 12FX78-012, 12FX78-063 SS+5d | 100% | 2026-03-04 | 2026-03-23 |  | HydroIns | 12FX78 | Ruroci¹g | Budowa | Roboty | Marek | Wyspa | PM000 | Zespó³-K | Wspólne | Normalny | Pakiet | L2 | Do weryfikacji z wykonawc¹ |  |
| 12FX78-069 |  | Monta¿ ruroci¹gów – Sekcja 10 | 14.6d | 2026-07-09 A | 2026-07-28 A | 12FX78-068, 12FX78-014 SS+1d | 100% | 2026-07-07 | 2026-07-24 |  | HydroIns | 12FX78 | Ruroci¹g | Budowa | Roboty | Marek | Wyspa | PM000 | Zespó³-W | Wspólne | Normalny | Pakiet | L2 |  | Rev C |
| 12FX78-070 |  | Próba ciœnieniowa – Sekcja 10 | 4d | 2026-07-29 A | 2026-08-03 A | 12FX78-069 | 100% | 2026-07-27 | 2026-07-30 |  | HydroIns | 12FX78 | Ruroci¹g | Budowa | Roboty | Marek | Wyspa | PM000 | Zespó³-W | Wspólne | Normalny | Pakiet | L2 | Czeka na dostawê |  |
| 12FX78-071 |  | Izolacje – Sekcja 10 | 9d | 2026-08-04 A | 2026-08-14 A | 12FX78-070 | 100% | 2026-07-31 | 2026-08-12 |  | HydroIns | 12FX78 | Ruroci¹g | Budowa | Roboty | Marek | Wyspa | PM000 | Zespó³-W | Wspólne | Normalny | Pakiet | L2 |  |  |
| 12FX78-072 |  | Malowanie i oznakowanie – Sekcja 10 | 6d | 2026-08-07 A | 2026-08-17 A | 12FX78-071 FF+2d | 100% | 2026-08-07 | 2026-08-14 |  | HydroIns | 12FX78 | Ruroci¹g | Budowa | Roboty | Marek | Wyspa | PM000 | Zespó³-W | Wspólne | Normalny | Pakiet | L2 | Czeka na dostawê |  |
|  | SEKCJA 11 | **Sekcja 11** |  | 2026-03-16 | 2026-08-03 |  |  |  |  |  |  |  |  |  |  |  |  |  |  |  |  |  |  |  |  |
| 12FX78-075 |  | Prefabrykacja ruroci¹gów – Sekcja 11 | 6.4d | 2026-03-16 A | 2026-03-25 A | 12FX78-012, 12FX78-068 SS+5d | 100% | 2026-03-11 | 2026-03-18 |  | HydroIns | 12FX78 | Ruroci¹g | Budowa | Roboty | Marek | Wyspa | PM000 | Zespó³-W | Wspólne | Normalny | Pakiet | L2 |  |  |
| 12FX78-076 |  | Monta¿ ruroci¹gów – Sekcja 11 | 5.6d | 2026-07-20 A | 2026-07-27 A | 12FX78-075, 12FX78-014 SS+7d | 100% | 2026-07-15 | 2026-07-21 |  | HydroIns | 12FX78 | Ruroci¹g | Budowa | Roboty | Marek | Wyspa | PM000 | Zespó³-K | Wspólne | Niski | Pakiet | L2 |  | Rev B |
| 12FX78-077 |  | Próba ciœnieniowa – Sekcja 11 | 2d | 2026-07-22 A | 2026-07-27 A | 12FX78-076 | 100% | 2026-07-22 | 2026-07-23 |  | HydroIns | 12FX78 | Ruroci¹g | Budowa | Roboty | Marek | Wyspa | PM000 | Zespó³-W | Wspólne | Normalny | Pakiet | L2 |  | Rev A |
| 12FX78-078 |  | Izolacje – Sekcja 11 | 3d | 2026-07-24 A | 2026-07-29 A | 12FX78-077 | 100% | 2026-07-24 | 2026-07-28 |  | HydroIns | 12FX78 | Ruroci¹g | Budowa | Roboty | Marek | Wyspa | PM000 | Zespó³-W | Wspólne | Normalny | Pakiet | L2 |  |  |
| 12FX78-079 |  | Malowanie i oznakowanie – Sekcja 11 | 2d | 2026-07-30 A | 2026-08-03 A | 12FX78-078 FF+2d | 100% | 2026-07-29 | 2026-07-30 |  | HydroIns | 12FX78 | Ruroci¹g | Budowa | Roboty | Marek | Wyspa | PM000 | Zespó³-K | Wspólne | Normalny | Pakiet | L2 |  |  |

| ID | WBS | Activity | Type | Duration | Start | Finish | Predecessors | Complete | Actual finish | Planned start | Planned finish | AC_Wykonawca | AC_Obiekt | AC_Dyscyplina | AC_Faza | AC_Zakres | AC_Opiekun | AC_Obszar | AC_PP_PM | AC_Zespol | AC_Blok | AC_Priorytet | AC_Pakiet | AC_Poziom | Rewizja dokumentu | Uwagi harmonogramisty |
| --- | --- | --- | --- | --- | --- | --- | --- | --- | --- | --- | --- | --- | --- | --- | --- | --- | --- | --- | --- | --- | --- | --- | --- | --- | --- | --- |
|  | SEKCJA 12 | **Sekcja 12** |  |  | 2026-03-17 | 2026-08-25 |  |  |  |  |  |  |  |  |  |  |  |  |  |  |  |  |  |  |  |  |
|  | PODSEKCJA | **Podsekcja 12.A** |  |  | 2026-03-17 | 2026-08-25 |  |  |  |  |  |  |  |  |  |  |  |  |  |  |  |  |  |  |  |  |
| 12FX78-080 |  | Prefabrykacja ruroci¹gów – Sekcja 12 |  | 4.5d | 2026-03-17 A | 2026-03-24 A | 12FX78-012, 12FX78-075 SS+5d | 100% |  | 2026-03-18 | 2026-03-23 | HydroIns | 12FX78 | Ruroci¹g | Budowa | Roboty | Marek | Wyspa | PM000 | Zespó³-W | Wspólne | Normalny | Pakiet | L2 |  |  |
| 12FX78-081 |  | Monta¿ ruroci¹gów – Sekcja 12 |  | 16.2d | 2026-07-14 A | 2026-08-06 A | 12FX78-080, 12FX78-014 SS+5d | 100% |  | 2026-07-13 | 2026-08-03 | HydroIns | 12FX78 | Ruroci¹g | Budowa | Roboty | Marek | Wyspa | PM000 | Zespó³-K | Wspólne | Normalny | Pakiet | L2 | Rev A |  |
| 12FX78-082 |  | Próba ciœnieniowa – Sekcja 12 |  | 6d | 2026-08-04 A | 2026-08-12 A | 12FX78-081 | 100% |  | 2026-08-04 | 2026-08-11 | HydroIns | 12FX78 | Ruroci¹g | Budowa | Roboty | Marek | Wyspa | PM300 | Zespó³-E | Wspólne | Wysoki | Pakiet | L2 |  |  |
| 12FX78-083 |  | Izolacje – Sekcja 12 |  | 5d | 2026-08-12 A | 2026-08-21 A | 12FX78-082 | 100% |  | 2026-08-12 | 2026-08-18 | HydroIns | 12FX78 | Ruroci¹g | Budowa | Roboty | Marek | Wyspa | PM000 | Zespó³-W | Wspólne | Normalny | Pakiet | L2 |  |  |
| 12FX78-084 |  | Malowanie i oznakowanie – Sekcja 12 |  | 6d | 2026-08-18 A | 2026-08-25 A | 12FX78-083 FF+2d | 100% |  | 2026-08-13 | 2026-08-20 | HydroIns | 12FX78 | Ruroci¹g | Budowa | Roboty | Marek | Wyspa | PM000 | Zespó³-W | Wspólne | Normalny | Pakiet | L2 |  |  |
|  | SEKCJA 13 | **Sekcja 13** |  |  | 2026-03-24 | 2026-08-14 |  |  |  |  |  |  |  |  |  |  |  |  |  |  |  |  |  |  |  |  |
| 12FX78-087 |  | Prefabrykacja ruroci¹gów – Sekcja 13 |  | 8.8d | 2026-03-24 A | 2026-04-06 A | 12FX78-012, 12FX78-080 SS+5d | 100% |  | 2026-03-25 | 2026-04-03 | HydroIns | 12FX78 | Ruroci¹g | Budowa | Roboty | Marek | Wyspa | PM000 | Zespó³-E | Wspólne | Niski | Pakiet | L2 | Rev B |  |
| 12FX78-088 |  | Monta¿ ruroci¹gów – Sekcja 13 |  | 15.7d | 2026-07-13 A | 2026-08-04 A | 12FX78-087, 12FX78-014 SS+3d | 100% |  | 2026-07-09 | 2026-07-29 | HydroIns | 12FX78 | Ruroci¹g | Budowa | Roboty | Marek | Wyspa | PM000 | Zespó³-K | Wspólne | Niski | Pakiet | L2 | Rev B | Bez uwag |
| 12FX78-089 |  | Próba ciœnieniowa – Sekcja 13 |  | 5d | 2026-08-03 A | 2026-08-10 A | 12FX78-088 | 100% |  | 2026-07-30 | 2026-08-05 | HydroIns | 12FX78 | Ruroci¹g | Budowa | Roboty | Marek | Wyspa | PM000 | Zespó³-W | Wspólne | Normalny | Pakiet | L2 |  |  |
| 12FX78-091 |  | Malowanie i oznakowanie – Sekcja 13 |  | 7d | 2026-08-05 A | 2026-08-13 A | 12FX78-090 FF+2d | 100% |  |  |  | HydroIns | 12FX78 | Ruroci¹g | Budowa | Roboty | Marek | Wyspa | PM000 | Zespó³-K | Wspólne | Niski | Pakiet | L2 | Rev A | Czeka na dostawê |
| 12FX78-090 |  | Izolacje – Sekcja 13 |  | 4d | 2026-08-07 A | 2026-08-14 A | 12FX78-089 | 100% |  | 2026-08-06 | 2026-08-11 | HydroIns | 12FX78 | Ruroci¹g | Budowa | Roboty | Marek | Wyspa | PM000 | Zespó³-K | Wspólne | Normalny | Pakiet | L2 |  | Czeka na dostawê |
|  | SEKCJA 14 | **Sekcja 14** |  |  | 2026-04-02 | 2026-08-21 |  |  |  |  |  |  |  |  |  |  |  |  |  |  |  |  |  |  |  |  |
| 12FX78-092 |  | Prefabrykacja ruroci¹gów – Sekcja 14 |  | 3.1d | 2026-04-02 A | 2026-04-08 A | 12FX78-012, 12FX78-087 SS+5d | 100% |  | 2026-04-01 | 2026-04-03 | HydroIns | 12FX78 | Ruroci¹g | Budowa | Roboty | Marek | Wyspa | PM000 | Zespó³-W | Wspólne | Normalny | Pakiet | L2 |  |  |
| 12FX78-093 |  | Monta¿ ruroci¹gów – Sekcja 14 |  | 13.4d | 2026-07-10 A | 2026-07-28 A | 12FX78-092, 12FX78-014 SS+1d | 100% |  | 2026-07-07 | 2026-07-23 | HydroIns | 12FX78 | Ruroci¹g | Budowa | Roboty | Marek | Wyspa | PM000 | Zespó³-W | Wspólne | Krytyczn | Pakiet | L2 | Rev A | Do weryfikacji z wykonawc¹ |
| 12FX78-094 |  | Próba ciœnieniowa – Sekcja 14 |  | 3d | 2026-07-27 A | 2026-07-30 A | 12FX78-093 | 100% |  | 2026-07-24 | 2026-07-28 | HydroIns | 12FX78 | Ruroci¹g | Budowa | Roboty | Marek | Wyspa | PM000 | Zespó³-W | Wspólne | Niski | Pakiet | L2 |  | Czeka na dostawê |
| 12FX78-095 |  | Izolacje – Sekcja 14 |  | 12d | 2026-08-03 A | 2026-08-21 A | 12FX78-094 | 100% |  | 2026-07-29 | 2026-08-13 | HydroIns | 12FX78 | Ruroci¹g | Budowa | Roboty | Marek | Wyspa | PM000 | Zespó³-K | Wspólne | Normalny | Pakiet | L2 |  | Uzgodnione na koordynacji |
| 12FX78-096 |  | Malowanie i oznakowanie – Sekcja 14 |  | 6d | 2026-08-10 A | 2026-08-18 A | 12FX78-095 FF+2d | 100% |  | 2026-08-10 | 2026-08-17 | HydroIns | 12FX78 | Ruroci¹g | Budowa | Roboty | Marek | Wyspa | PM000 | Zespó³-W | Wspólne | Normalny | Pakiet | L2 | Rev B |  |
|  | PROJ | **Projektowanie** |  |  | 2025-05-27 | 2025-09-22 |  |  |  |  |  |  |  |  |  |  |  |  |  |  |  |  |  |  |  |  |
|  | DOKUMENTAC | **Dokumentacja** |  |  | 2025-05-27 | 2025-09-22 |  |  |  |  |  |  |  |  |  |  |  |  |  |  |  |  |  |  |  |  |
| 12FX78-001 |  | Projekt wykonawczy – Turbina parowa |  | 53d | 2025-05-27 A | 2025-08-07 A |  | 100% |  |  |  | HydroIns | 12FX78 | Budowlan | Projekto | Projekt | Marek | Wyspa | PM300 | Zespó³-E | Wspólne | Wysoki | Pakiet | L2 | Rev A | Bez uwag |
| 12FX78-002 |  | Uzgodnienie dokumentacji z Inwestorem |  | 15d | 2025-08-11 A | 2025-09-02 A | 12FX78-001 | 100% |  | 2025-08-08 | 2025-08-28 | HydroIns | 12FX78 | Budowlan | Projekto | Projekt | Marek | Wyspa | PM000 | Zespó³-W | Wspólne | Normalny | Pakiet | L2 | Rev C | Do weryfikacji z wykonawc¹ |
| 12FX78-003 |  | Zatwierdzenie dokumentacji do realizacji |  | 12d | 2025-09-02 A | 2025-09-22 A | 12FX78-002 | 100% |  | 2025-08-29 | 2025-09-15 | HydroIns | 12FX78 | Budowlan | Projekto | Projekt | Marek | Wyspa | PM000 | Zespó³-I | Wspólne | Normalny | Pakiet | L2 | Rev B | Uzgodnione na koordynacji |
| 12FX78-004 |  | KM: Dokumentacja zatwierdzona – Turbina parowa | milestone | 0d | 2025-09-16 A | 2025-09-16 | 12FX78-003 | 100% | 2025-09-15 |  |  | HydroIns | 12FX78 | Budowlan | Projekto | Kamieñ | Marek | Wyspa | PM000 | Zespó³-W | Wspólne | Normalny | Pakiet | L1 | Rev C |  |

| ID | WBS | Activity | Type | Duration | Start | Finish | Predecessors | Complete | Remaining | Actual finish | Planned start | Planned finish | Total float | Free float | Calendar | Rewizja dokumentu | AC_Wykonawca | AC_Obiekt | AC_Dyscyplina | AC_Faza | AC_Zakres | AC_Opiekun | AC_Obszar | AC_PP_PM | AC_Zespol | AC_Blok | AC_Priorytet | AC_Pakiet | AC_Poziom | Uwagi harmonogramisty |
| --- | --- | --- | --- | --- | --- | --- | --- | --- | --- | --- | --- | --- | --- | --- | --- | --- | --- | --- | --- | --- | --- | --- | --- | --- | --- | --- | --- | --- | --- | --- |
|  | ROZR | **Rozruch** |  |  | 2026-09-08 | 2026-10-09 |  |  |  |  |  |  |  |  |  |  |  |  |  |  |  |  |  |  |  |  |  |  |  |  |
|  | ROZRUCH | **Rozruch** |  |  | 2026-09-08 | 2026-10-09 |  |  |  |  |  |  |  |  |  |  |  |  |  |  |  |  |  |  |  |  |  |  |  |  |
| 12FX78-101 |  | Przegl¹d gotowoœci do rozruchu |  | 5d | 2026-09-08 A | 2026-09-16 A | 12FX78-100, 12FX78-019, 12FX78-024, 12FX78-026 | 100% |  |  | 2026-09-07 | 2026-09-11 |  |  |  | Rev C | HydroIns | 12FX78 | Rozruch | Rozruch | Rozruch | Marek | Wyspa | PM000 | Zespó³-K | Wspólne | Normalny | Pakiet | L2 |  |
| 12FX78-102 |  | Rozruch na zimno |  | 7d | 2026-09-15 A | 2026-09-25 A | 12FX78-101 | 100% |  |  | 2026-09-14 | 2026-09-22 |  |  |  | Rev A | HydroIns | 12FX78 | Rozruch | Rozruch | Rozruch | Marek | Wyspa | PM000 | Zespó³-K | Wspólne | Normalny | Pakiet | L2 | Czeka na dostawê |
| 12FX78-103 |  | Rozruch na gor¹co / próby ruchowe |  | 18d | 2026-09-24 A | 2026-10-08 | 12FX78-102 | 85% | 2.7d |  | 2026-09-23 | 2026-10-16 | 384.6d | 0d |  |  | HydroIns | 12FX78 | Rozruch | Rozruch | Rozruch | Marek | Wyspa | PM000 | Zespó³-W | Wspólne | Normalny | Pakiet | L2 |  |
| 12FX78-104 |  | KM: Odbiór koñcowy – Turbina parowa | milestone | 0d | 2026-10-09 | 2026-10-09 | 12FX78-103 |  |  |  | 2026-10-19 | 2026-10-19 | 390.9d | 0d |  |  | HydroIns | 12FX78 | Rozruch | Rozruch | Kamieñ | Marek | Wyspa | PM000 | Zespó³-W | Wspólne | Krytyczn | Pakiet | L1 |  |
|  | ZAKU | **Zakupy** |  |  | 2025-06-23 | 2026-07-13 |  |  |  |  |  |  |  |  |  |  |  |  |  |  |  |  |  |  |  |  |  |  |  |  |
|  | DOSTAWY | **Dostawy** |  |  | 2025-10-22 | 2026-07-13 |  |  |  |  |  |  |  |  |  |  |  |  |  |  |  |  |  |  |  |  |  |  |  |  |
| 12FX78-008 |  | Produkcja u dostawcy |  | 150d | 2025-10-22 A | 2026-05-22 A | 12FX78-007 | 100% |  |  | 2025-10-20 | 2026-05-15 |  |  |  |  | HydroIns | 12FX78 | Mechanic | Zakupy | Dostawa | Marek | Wyspa | PM000 | Zespó³-K | Wspólne | Normalny | Pakiet | L2 |  |
| 12FX78-009 |  | Testy FAT |  | 10d | 2026-05-15 A | 2026-05-28 A | 12FX78-008 | 100% |  |  | 2026-05-18 | 2026-05-29 |  |  |  |  | HydroIns | 12FX78 | Mechanic | Zakupy | Dostawa | Marek | Wyspa | PM000 | Zespó³-W | Wspólne | Niski | Pakiet | L2 |  |
| 12FX78-010 |  | Transport i dostawa na plac budowy |  | 25d | 2026-06-04 A | 2026-07-13 A | 12FX78-009 | 100% |  |  | 2026-06-01 | 2026-07-03 |  |  |  |  | HydroIns | 12FX78 | Mechanic | Zakupy | Dostawa | Marek | Wyspa | PM000 | Zespó³-K | Wspólne | Normalny | Pakiet | L2 |  |
| 12FX78-011 |  | KM: Dostawa na budowê – Turbina parowa | milestone | 0d | 2026-07-03 A | 2026-07-03 | 12FX78-010 | 100% |  | 2026-07-02 | 2026-07-06 | 2026-07-06 |  |  |  |  | HydroIns | 12FX78 | Mechanic | Zakupy | Kamieñ | Marek | Wyspa | PM000 | Zespó³-K | Wspólne | Normalny | Pakiet | L1 |  |
|  | ZAMÓWIENIA | **Zamówienia** |  |  | 2025-06-23 | 2025-10-22 |  |  |  |  |  |  |  |  |  |  |  |  |  |  |  |  |  |  |  |  |  |  |  |  |
| 12FX78-005 |  | Zapytanie ofertowe |  | 29d | 2025-06-23 A | 2025-08-05 A | 12FX78-001 SS+20d | 100% |  |  | 2025-06-24 | 2025-08-01 |  |  |  |  | HydroIns | 12FX78 | Mechanic | Zakupy | Dostawa | Marek | Wyspa | PM000 | Zespó³-W | Wspólne | Normalny | Pakiet | L2 |  |
| 12FX78-006 |  | Analiza i wybór ofert |  | 20d | 2025-08-04 A | 2025-09-02 A | 12FX78-005 | 100% |  |  | 2025-08-04 | 2025-08-29 |  |  |  |  | HydroIns | 12FX78 | Mechanic | Zakupy | Dostawa | Marek | Wyspa | PM000 | Zespó³-K | Wspólne | Niski | Pakiet | L2 | Bez uwag |
| 12FX78-007 |  | Zawarcie umowy / zamówienie |  | 6d | 2025-10-13 A | 2025-10-22 A | 12FX78-006, 12FX78-004 SS, 10BW45-004 SF+9d, 24PY38-004 SS+4d | 100% |  |  | 2025-10-10 | 2025-10-17 |  |  |  | Rev C | HydroIns | 12FX78 | Mechanic | Zakupy | Dostawa | Marek | Wyspa | PM000 | Zespó³-K | Wspólne | Normalny | Pakiet | L1 |  |
|  | 12PB41 | **12PB41 – Skraplacz** |  |  | 2025-02-13 | 2026-10-28 |  |  |  |  |  |  |  |  |  |  |  |  |  |  |  |  |  |  |  |  |  |  |  |  |
|  | BUDO | **Budowa** |  |  | 2025-11-14 | 2026-08-25 |  |  |  |  |  |  |  |  |  |  |  |  |  |  |  |  |  |  |  |  |  |  |  |  |
|  | AKPIA | **AKPiA** |  |  | 2026-04-01 | 2026-05-25 |  |  |  |  |  |  |  |  |  |  |  |  |  |  |  |  |  |  |  |  |  |  |  |  |
| 12PB41-183 |  | Monta¿ uk³adów AKPiA |  | 38d | 2026-04-01 A | 2026-05-25 A | 12PB41-014 SS+5d | 100% |  |  | 2026-03-30 | 2026-05-20 |  |  |  | Rev C | BudMar | 12PB41 | AKPiA | Budowa | Roboty | Agnieszk | Wyspa | PM000 | Zespó³-W | Blok | Wysoki | Pakiet | L2 |  |
|  | ELEKTRYKA | **Elektryka** |  |  | 2026-03-30 | 2026-05-06 |  |  |  |  |  |  |  |  |  |  |  |  |  |  |  |  |  |  |  |  |  |  |  |  |
| 12PB41-074 |  | Pod³¹czenia i pomiary – trasa 10 |  | 10d | 2026-03-30 A | 2026-04-10 A | 12PB41-073 FF | 100% |  |  | 2026-03-31 | 2026-04-13 |  |  |  |  | BudMar | 12PB41 | Elektryc | Budowa | Roboty | Agnieszk | Wyspa | PM000 | Zespó³-W | Blok | Wysoki | Pakiet | L2 |  |
| 12PB41-122 |  | Pod³¹czenia i pomiary – trasa 18 |  | 10d | 2026-03-31 A | 2026-04-16 A | 12PB41-121 FF | 100% |  |  | 2026-03-31 | 2026-04-13 |  |  |  |  | BudMar | 12PB41 | Elektryc | Budowa | Roboty | Agnieszk | Wyspa | PM000 | Zespó³-W | Blok | Niski | Pakiet | L2 |  |
| 12PB41-049 |  | Uk³adanie kabli – trasa 06 |  | 9d | 2026-04-03 A | 2026-04-20 A | 12PB41-014 SS+10d | 100% |  |  | 2026-04-06 | 2026-04-16 |  |  |  |  | BudMar | 12PB41 | Elektryc | Budowa | Roboty | Agnieszk | Wyspa | PM000 | Zespó³-K | Blok | Normalny | Pakiet | L2 |  |
| 12PB41-061 |  | Uk³adanie kabli – trasa 08 |  | 15d | 2026-04-03 A | 2026-04-23 A | 12PB41-014 SS+10d | 100% |  |  | 2026-04-06 | 2026-04-24 |  |  |  |  | BudMar | 12PB41 | Elektryc | Budowa | Roboty | Agnieszk | Wyspa | PM000 | Zespó³-W | Blok | Normalny | Pakiet | L2 |  |
| 12PB41-085 |  | Uk³adanie kabli – trasa 12 |  | 13d | 2026-04-03 A | 2026-04-21 A | 12PB41-014 SS+10d | 100% |  |  | 2026-04-06 | 2026-04-22 |  |  |  |  | BudMar | 12PB41 | Elektryc | Budowa | Roboty | Agnieszk | Wyspa | PM000 | Zespó³-W | Blok | Normalny | Pakiet | L2 |  |
| 12PB41-181 |  | Uk³adanie kabli – trasa 28 |  | 20d | 2026-04-03 A | 2026-05-01 A | 12PB41-014 SS+10d | 100% |  |  | 2026-04-06 | 2026-05-01 |  |  |  |  | BudMar | 12PB41 | Elektryc | Budowa | Roboty | Agnieszk | Wyspa | PM000 | Zespó³-W | Blok | Normalny | Pakiet | L2 | Ryzyko opóŸnienia |
| 12PB41-133 |  | Uk³adanie kabli – trasa 20 |  | 16d | 2026-04-06 A | 2026-04-27 A | 12PB41-014 SS+10d | 100% |  |  |  |  |  |  |  |  | BudMar | 12PB41 | Elektryc | Budowa | Roboty | Agnieszk | Wyspa | PM000 | Zespó³-K | Blok | Wysoki | Pakiet | L2 |  |
| 12PB41-037 |  | Uk³adanie kabli – trasa 04 |  | 17d | 2026-04-07 A | 2026-04-30 A | 12PB41-014 SS+10d | 100% |  |  | 2026-04-06 | 2026-04-28 |  |  |  |  | BudMar | 12PB41 | Elektryc | Budowa | Roboty | Agnieszk | Wyspa | PM000 | Zespó³-K | Blok | Normalny | Pakiet | L2 | Bez uwag |
| 12PB41-073 |  | Uk³adanie kabli – trasa 10 |  | 6d | 2026-04-07 A | 2026-04-16 A | 12PB41-014 SS+10d | 100% |  |  | 2026-04-06 | 2026-04-13 |  |  |  |  | BudMar | 12PB41 | Elektryc | Budowa | Roboty | Agnieszk | Wyspa | PM000 | Zespó³-W | Blok | Normalny | Pakiet | L2 |  |
| 12PB41-097 |  | Uk³adanie kabli – trasa 14 |  | 12d | 2026-04-07 A | 2026-04-23 A | 12PB41-014 SS+10d | 100% |  |  | 2026-04-06 | 2026-04-21 |  |  |  | Rev A | BudMar | 12PB41 | Elektryc | Budowa | Roboty | Agnieszk | Wyspa | PM000 | Zespó³-K | Blok | Niski | Pakiet | L2 |  |
| 12PB41-169 |  | Uk³adanie kabli – trasa 26 |  | 8d | 2026-04-07 A | 2026-04-21 A | 12PB41-014 SS+10d | 100% |  |  | 2026-04-06 | 2026-04-15 |  |  |  | Rev A | BudMar | 12PB41 | Elektryc | Budowa | Roboty | Agnieszk | Wyspa | PM000 | Zespó³-I | Blok | Normalny | Pakiet | L2 | Uzgodnione na koordynacji |
| 12PB41-109 |  | Uk³adanie kabli – trasa 16 |  | 11d | 2026-04-08 A | 2026-04-23 A | 12PB41-014 SS+10d | 100% |  |  | 2026-04-06 | 2026-04-20 |  |  |  |  | BudMar | 12PB41 | Elektryc | Budowa | Roboty | Agnieszk | Wyspa | PM000 | Zespó³-W | Blok | Niski | Pakiet | L2 |  |
| 12PB41-121 |  | Uk³adanie kabli – trasa 18 |  | 6d | 2026-04-08 A | 2026-04-15 A | 12PB41-014 SS+10d | 100% |  |  | 2026-04-06 | 2026-04-13 |  |  |  | Rev C | BudMar | 12PB41 | Elektryc | Budowa | Roboty | Agnieszk | Wyspa | PM000 | Zespó³-K | Blok | Normalny | Pakiet | L2 |  |
| 12PB41-145 |  | Uk³adanie kabli – trasa 22 |  | 18d | 2026-04-08 A | 2026-05-01 A | 12PB41-014 SS+10d | 100% |  |  | 2026-04-06 | 2026-04-29 |  |  |  | Rev A | BudMar | 12PB41 | Elektryc | Budowa | Roboty | Agnieszk | Wyspa | PM000 | Zespó³-K | Blok | Normalny | Pakiet | L2 |  |
| 12PB41-157 |  | Uk³adanie kabli – trasa 24 |  | 14d | 2026-04-08 A | 2026-04-30 A | 12PB41-014 SS+10d | 100% |  |  | 2026-04-06 | 2026-04-23 |  |  |  | Rev C | BudMar | 12PB41 | Elektryc | Budowa | Roboty | Agnieszk | Wyspa | PM000 | Zespó³-W | Blok | Normalny | Pakiet | L2 |  |
| 12PB41-025 |  | Uk³adanie kabli – trasa 02 |  | 13d | 2026-04-09 A | 2026-04-29 A | 12PB41-014 SS+10d | 100% |  |  | 2026-04-06 | 2026-04-22 |  |  | Kalendarz 6-dniowy | Rev B | BudMar | 12PB41 | Elektryc | Budowa | Roboty | Agnieszk | Wyspa | PM000 | Zespó³-W | Blok | Normalny | Pakiet | L2 |  |
| 12PB41-050 |  | Pod³¹czenia i pomiary – trasa 06 |  | 6d | 2026-04-09 A | 2026-04-16 A | 12PB41-049 FF | 100% |  |  |  |  |  |  | Kalendarz 6-dniowy |  | BudMar | 12PB41 | Elektryc | Budowa | Roboty | Agnieszk | Wyspa | PM000 | Zespó³-K | Blok | Normalny | Pakiet | L2 |  |
| 12PB41-062 |  | Pod³¹czenia i pomiary – trasa 08 |  | 8d | 2026-04-14 A | 2026-04-28 A | 12PB41-061 FF | 100% |  |  | 2026-04-15 | 2026-04-24 |  |  |  |  | BudMar | 12PB41 | Elektryc | Budowa | Roboty | Agnieszk | Wyspa | PM000 | Zespó³-K | Blok | Normalny | Pakiet | L2 |  |
| 12PB41-086 |  | Pod³¹czenia i pomiary – trasa 12 |  | 8d | 2026-04-14 A | 2026-04-28 A | 12PB41-085 FF | 100% |  |  | 2026-04-13 | 2026-04-22 |  |  |  |  | BudMar | 12PB41 | Elektryc | Budowa | Roboty | Agnieszk | Wyspa | PM000 | Zespó³-W | Blok | Normalny | Pakiet | L2 |  |
| 12PB41-170 |  | Pod³¹czenia i pomiary – trasa 26 |  | 3d | 2026-04-15 A | 2026-04-17 A | 12PB41-169 FF | 100% |  |  | 2026-04-13 | 2026-04-15 |  |  |  |  | BudMar | 12PB41 | Elektryc | Budowa | Roboty | Agnieszk | Wyspa | PM000 | Zespó³-K | Blok | Normalny | Pakiet | L2 | Uzgodnione na koordynacji |
| 12PB41-038 |  | Pod³¹czenia i pomiary – trasa 04 |  | 10d | 2026-04-16 A | 2026-04-29 A | 12PB41-037 FF | 100% |  |  | 2026-04-15 | 2026-04-28 |  |  |  |  | BudMar | 12PB41 | Elektryc | Budowa | Roboty | Agnieszk | Wyspa | PM000 | Zespó³-K | Blok | Wysoki | Pakiet | L2 |  |
| 12PB41-098 |  | Pod³¹czenia i pomiary – trasa 14 |  | 5d | 2026-04-17 A | 2026-04-27 A | 12PB41-097 FF | 100% |  |  | 2026-04-15 | 2026-04-21 |  |  |  |  | BudMar | 12PB41 | Elektryc | Budowa | Roboty | Agnieszk | Wyspa | PM000 | Zespó³-K | Blok | Normalny | Pakiet | L2 |  |
| 12PB41-110 |  | Pod³¹czenia i pomiary – trasa 16 |  | 4d | 2026-04-20 A | 2026-04-23 A | 12PB41-109 FF | 100% |  |  | 2026-04-15 | 2026-04-20 |  |  |  |  | BudMar | 12PB41 | Elektryc | Budowa | Roboty | Agnieszk | Wyspa | PM000 | Zespó³-W | Blok | Normalny | Pakiet | L2 |  |
| 12PB41-146 |  | Pod³¹czenia i pomiary – trasa 22 |  | 7d | 2026-04-21 A | 2026-04-30 A | 12PB41-145 FF | 100% |  |  | 2026-04-21 | 2026-04-29 |  |  |  |  | BudMar | 12PB41 | Elektryc | Budowa | Roboty | Agnieszk | Wyspa | PM000 | Zespó³-W | Blok | Normalny | Pakiet | L2 |  |
| 12PB41-026 |  | Pod³¹czenia i pomiary – trasa 02 |  | 4d | 2026-04-22 A | 2026-04-30 A | 12PB41-025 FF | 100% |  |  | 2026-04-17 | 2026-04-22 |  |  |  |  | BudMar | 12PB41 | Elektryc | Budowa | Roboty | Agnieszk | Wyspa | PM000 | Zespó³-W | Blok | Normalny | Pakiet | L2 |  |
| 12PB41-158 |  | Pod³¹czenia i pomiary – trasa 24 |  | 4d | 2026-04-22 A | 2026-04-29 A | 12PB41-157 FF | 100% |  |  | 2026-04-20 | 2026-04-23 |  |  |  |  | BudMar | 12PB41 | Elektryc | Budowa | Roboty | Agnieszk | Wyspa | PM000 | Zespó³-W | Blok | Normalny | Pakiet | L2 |  |
| 12PB41-182 |  | Pod³¹czenia i pomiary – trasa 28 |  | 10d | 2026-04-22 A | 2026-05-06 A | 12PB41-181 FF | 100% |  |  | 2026-04-20 | 2026-05-01 |  |  |  |  | BudMar | 12PB41 | Elektryc | Budowa | Roboty | Agnieszk | Wyspa | PM000 | Zespó³-W | Blok | Normalny | Pakiet | L2 |  |
| 12PB41-134 |  | Pod³¹czenia i pomiary – trasa 20 |  | 3d | 2026-04-27 A | 2026-04-29 A | 12PB41-133 FF | 100% |  |  | 2026-04-23 | 2026-04-27 |  |  |  |  | BudMar | 12PB41 | Elektryc | Budowa | Roboty | Agnieszk | Wyspa | PM000 | Zespó³-E | Blok | Normalny | Pakiet | L2 |  |

| ID | WBS | Activity | Type | Duration | Start | Finish | Predecessors | Complete | Actual finish | Planned start | Planned finish | Calendar | AC_Wykonawca | AC_Obiekt | AC_Dyscyplina | AC_Faza | AC_Zakres | AC_Opiekun | AC_Obszar | AC_PP_PM | AC_Zespol | AC_Blok | AC_Priorytet | AC_Pakiet | AC_Poziom | Uwagi harmonogramisty | Rewizja dokumentu |
| --- | --- | --- | --- | --- | --- | --- | --- | --- | --- | --- | --- | --- | --- | --- | --- | --- | --- | --- | --- | --- | --- | --- | --- | --- | --- | --- | --- |
|  | MONTA¯ | **Monta¿** |  |  | 2025-12-22 | 2026-08-25 |  |  |  |  |  |  |  |  |  |  |  |  |  |  |  |  |  |  |  |  |  |
| 12PB41-013 |  | Monta¿ konstrukcji stalowych |  | 39d | 2025-12-22 A | 2026-02-17 A | 12PB41-012 | 100% |  | 2025-12-17 | 2026-02-09 |  | BudMar | 12PB41 | Mechanic | Budowa | Roboty | Agnieszk | Wyspa | PM000 | Zespó³-W | Blok | Normalny | Pakiet | L2 |  |  |
| 12PB41-014 |  | Monta¿ urz¹dzeñ g³ównych |  | 50d | 2026-03-24 A | 2026-06-02 A | 12PB41-013, 12PB41-011 | 100% |  | 2026-03-23 | 2026-05-29 | Kalendarz 6-dniowy | BudMar | 12PB41 | Mechanic | Budowa | Roboty | Agnieszk | Wyspa | PM000 | Zespó³-K | Blok | Wysoki | Pakiet | L2 |  |  |
| 12PB41-184 |  | KM: Zakoñczenie monta¿u – Skraplacz | milestone | 0d | 2026-08-25 A | 2026-08-25 | 12PB41-175, 12PB41-180, 12PB41-182, 12PB41-183, 12PB41-014 | 100% | 2026-08-24 | 2026-08-20 | 2026-08-20 |  | BudMar | 12PB41 | Mechanic | Budowa | Kamieñ | Agnieszk | Wyspa | PM000 | Zespó³-K | Blok | Normalny | Pakiet | L2 | Ryzyko opóŸnienia |  |
|  | ROBOTY BUD | **Roboty budowlane** |  |  | 2025-11-14 | 2025-12-23 |  |  |  |  |  |  |  |  |  |  |  |  |  |  |  |  |  |  |  |  |  |
| 12PB41-012 |  | Fundamenty i roboty ziemne |  | 25d | 2025-11-14 A | 2025-12-23 A | 12PB41-007 FS+11d | 100% |  | 2025-11-12 | 2025-12-16 |  | BudMar | 12PB41 | Budowlan | Budowa | Roboty | Agnieszk | Wyspa | PM000 | Zespó³-W | Blok | Normalny | Pakiet | L2 |  | Rev B |
|  | RUROCI¥GI | **Ruroci¹gi** |  |  | 2025-12-22 | 2026-08-25 |  |  |  |  |  |  |  |  |  |  |  |  |  |  |  |  |  |  |  |  |  |
|  | SEKCJA 01 | **Sekcja 01** |  |  | 2025-12-22 | 2026-05-13 |  |  |  |  |  |  |  |  |  |  |  |  |  |  |  |  |  |  |  |  |  |
| 12PB41-015 |  | Prefabrykacja ruroci¹gów – Sekcja 01 |  | 4.1d | 2025-12-22 A | 2025-12-29 A | 12PB41-012 | 100% |  | 2025-12-17 | 2025-12-22 |  | BudMar | 12PB41 | Ruroci¹g | Budowa | Roboty | Agnieszk | Wyspa | PM000 | Zespó³-W | Blok | Normalny | Pakiet | L2 |  |  |
| 12PB41-016 |  | Monta¿ ruroci¹gów – Sekcja 01 |  | 18.5d | 2026-04-06 A | 2026-05-01 A | 12PB41-015, 12PB41-014 SS+7d | 100% |  | 2026-04-01 | 2026-04-24 |  | BudMar | 12PB41 | Ruroci¹g | Budowa | Roboty | Agnieszk | Wyspa | PM000 | Zespó³-W | Blok | Normalny | Pakiet | L2 |  |  |
| 12PB41-017 |  | Próba ciœnieniowa – Sekcja 01 |  | 4d | 2026-04-29 A | 2026-05-07 A | 12PB41-016 | 100% |  | 2026-04-27 | 2026-04-30 |  | BudMar | 12PB41 | Ruroci¹g | Budowa | Roboty | Agnieszk | Wyspa | PM100 | Zespó³-E | Blok | Normalny | Pakiet | L2 |  |  |
| 12PB41-018 |  | Izolacje – Sekcja 01 |  | 4d | 2026-04-30 A | 2026-05-05 A | 12PB41-017 | 100% |  | 2026-05-01 | 2026-05-06 |  | BudMar | 12PB41 | Ruroci¹g | Budowa | Roboty | Agnieszk | Wyspa | PM100 | Zespó³-E | Blok | Krytyczn | Pakiet | L2 |  | Rev A |
| 12PB41-019 |  | Malowanie i oznakowanie – Sekcja 01 |  | 8d | 2026-05-01 A | 2026-05-13 A | 12PB41-018 FF+2d | 100% |  | 2026-04-29 | 2026-05-08 |  | BudMar | 12PB41 | Ruroci¹g | Budowa | Roboty | Agnieszk | Wyspa | PM000 | Zespó³-W | Blok | Normalny | Pakiet | L2 |  |  |
|  | SEKCJA 02 | **Sekcja 02** |  |  | 2025-12-29 | 2026-05-11 |  |  |  |  |  |  |  |  |  |  |  |  |  |  |  |  |  |  |  |  |  |
| 12PB41-020 |  | Prefabrykacja ruroci¹gów – Sekcja 02 |  | 11.1d | 2025-12-29 A | 2026-01-13 A | 12PB41-012, 12PB41-015 SS+5d | 100% |  | 2025-12-24 | 2026-01-07 |  | BudMar | 12PB41 | Ruroci¹g | Budowa | Roboty | Agnieszk | Wyspa | PM000 | Zespó³-W | Blok | Wysoki | Pakiet | L2 |  | Rev B |
| 12PB41-021 |  | Monta¿ ruroci¹gów – Sekcja 02 |  | 12.2d | 2026-04-01 A | 2026-04-17 A | 12PB41-020, 12PB41-014 SS+5d | 100% |  | 2026-03-30 | 2026-04-14 |  | BudMar | 12PB41 | Ruroci¹g | Budowa | Roboty | Agnieszk | Wyspa | PM000 | Zespó³-W | Blok | Normalny | Pakiet | L2 |  |  |
| 12PB41-022 |  | Próba ciœnieniowa – Sekcja 02 |  | 6d | 2026-04-14 A | 2026-04-23 A | 12PB41-021 | 100% |  | 2026-04-15 | 2026-04-22 |  | BudMar | 12PB41 | Ruroci¹g | Budowa | Roboty | Agnieszk | Wyspa | PM000 | Zespó³-K | Blok | Wysoki | Pakiet | L2 | Uzgodnione na koordynacji |  |
| 12PB41-023 |  | Izolacje – Sekcja 02 |  | 10d | 2026-04-23 A | 2026-05-07 A | 12PB41-022 | 100% |  | 2026-04-23 | 2026-05-06 |  | BudMar | 12PB41 | Ruroci¹g | Budowa | Roboty | Agnieszk | Wyspa | PM000 | Zespó³-W | Blok | Normalny | Pakiet | L2 |  |  |
| 12PB41-024 |  | Malowanie i oznakowanie – Sekcja 02 |  | 6d | 2026-05-04 A | 2026-05-11 A | 12PB41-023 FF+2d | 100% |  | 2026-05-01 | 2026-05-08 |  | BudMar | 12PB41 | Ruroci¹g | Budowa | Roboty | Agnieszk | Wyspa | PM000 | Zespó³-W | Blok | Wysoki | Pakiet | L2 | Czeka na dostawê |  |
|  | SEKCJA 03 | **Sekcja 03** |  |  | 2025-12-31 | 2026-05-29 |  |  |  |  |  |  |  |  |  |  |  |  |  |  |  |  |  |  |  |  |  |
|  | PODSEKCJA | **Podsekcja 03.A** |  |  | 2025-12-31 | 2026-05-29 |  |  |  |  |  |  |  |  |  |  |  |  |  |  |  |  |  |  |  |  |  |
| 12PB41-027 |  | Prefabrykacja ruroci¹gów – Sekcja 03 |  | 9.3d | 2025-12-31 A | 2026-01-13 A | 12PB41-012, 12PB41-020 SS+5d | 100% |  | 2025-12-31 | 2026-01-12 |  | BudMar | 12PB41 | Ruroci¹g | Budowa | Roboty | Agnieszk | Wyspa | PM000 | Zespó³-W | Blok | Normalny | Pakiet | L2 |  |  |
| 12PB41-028 |  | Monta¿ ruroci¹gów – Sekcja 03 |  | 21d | 2026-04-03 A | 2026-05-05 A | 12PB41-027, 12PB41-014 SS+10d | 100% |  | 2026-04-06 | 2026-05-04 |  | BudMar | 12PB41 | Ruroci¹g | Budowa | Roboty | Agnieszk | Wyspa | PM000 | Zespó³-K | Blok | Normalny | Pakiet | L2 | Do weryfikacji z wykonawc¹ |  |
| 12PB41-029 |  | Próba ciœnieniowa – Sekcja 03 |  | 3d | 2026-05-06 A | 2026-05-11 A | 12PB41-028 | 100% |  | 2026-05-05 | 2026-05-07 |  | BudMar | 12PB41 | Ruroci¹g | Budowa | Roboty | Agnieszk | Wyspa | PM000 | Zespó³-K | Blok | Normalny | Pakiet | L2 | Bez uwag |  |
| 12PB41-030 |  | Izolacje – Sekcja 03 |  | 10d | 2026-05-08 A | 2026-05-25 A | 12PB41-029 | 100% |  | 2026-05-08 | 2026-05-21 |  | BudMar | 12PB41 | Ruroci¹g | Budowa | Roboty | Agnieszk | Wyspa | PM000 | Zespó³-W | Blok | Niski | Pakiet | L2 |  | Rev A |
| 12PB41-031 |  | Malowanie i oznakowanie – Sekcja 03 |  | 5d | 2026-05-22 A | 2026-05-29 A | 12PB41-030 FF+2d | 100% |  | 2026-05-19 | 2026-05-25 |  | BudMar | 12PB41 | Ruroci¹g | Budowa | Roboty | Agnieszk | Wyspa | PM000 | Zespó³-K | Blok | Normalny | Pakiet | L2 |  |  |

| ID | WBS | Activity | Duration | Start | Finish | Predecessors | Complete | Planned start | Planned finish | Calendar | AC_Wykonawca | AC_Obiekt | AC_Dyscyplina | AC_Faza | AC_Zakres | AC_Opiekun | AC_Obszar | AC_PP_PM | AC_Zespol | AC_Blok | AC_Priorytet | AC_Pakiet | AC_Poziom | Rewizja dokumentu | Uwagi harmonogramisty |
| --- | --- | --- | --- | --- | --- | --- | --- | --- | --- | --- | --- | --- | --- | --- | --- | --- | --- | --- | --- | --- | --- | --- | --- | --- | --- |
|  | SEKCJA 04 | **Sekcja 04** |  | 2026-01-07 | 2026-05-21 |  |  |  |  |  |  |  |  |  |  |  |  |  |  |  |  |  |  |  |  |
| 12PB41-032 |  | Prefabrykacja ruroci¹gów – Sekcja 04 | 3.3d | 2026-01-07 A | 2026-01-12 A | 12PB41-012, 12PB41-027 SS+5d | 100% | 2026-01-07 | 2026-01-09 |  | BudMar | 12PB41 | Ruroci¹g | Budowa | Roboty | Agnieszk | Wyspa | PM000 | Zespó³-K | Blok | Wysoki | Pakiet | L2 |  |  |
| 12PB41-033 |  | Monta¿ ruroci¹gów – Sekcja 04 | 21d | 2026-03-25 A | 2026-04-22 A | 12PB41-032, 12PB41-014 SS | 100% | 2026-03-23 | 2026-04-20 | Kalendarz 6-dniowy | BudMar | 12PB41 | Ruroci¹g | Budowa | Roboty | Agnieszk | Wyspa | PM000 | Zespó³-K | Blok | Normalny | Pakiet | L2 | Rev C |  |
| 12PB41-034 |  | Próba ciœnieniowa – Sekcja 04 | 5d | 2026-04-24 A | 2026-04-30 A | 12PB41-033 | 100% | 2026-04-21 | 2026-04-27 |  | BudMar | 12PB41 | Ruroci¹g | Budowa | Roboty | Agnieszk | Wyspa | PM000 | Zespó³-K | Blok | Normalny | Pakiet | L2 |  | Do weryfikacji z wykonawc¹ |
| 12PB41-035 |  | Izolacje – Sekcja 04 | 12d | 2026-04-29 A | 2026-05-14 A | 12PB41-034 | 100% | 2026-04-28 | 2026-05-13 |  | BudMar | 12PB41 | Ruroci¹g | Budowa | Roboty | Agnieszk | Wyspa | PM000 | Zespó³-K | Blok | Normalny | Pakiet | L2 |  |  |
| 12PB41-036 |  | Malowanie i oznakowanie – Sekcja 04 | 2d | 2026-05-19 A | 2026-05-21 A | 12PB41-035 FF+2d | 100% | 2026-05-14 | 2026-05-15 |  | BudMar | 12PB41 | Ruroci¹g | Budowa | Roboty | Agnieszk | Wyspa | PM000 | Zespó³-K | Blok | Normalny | Pakiet | L2 |  |  |
|  | SEKCJA 05 | **Sekcja 05** |  | 2026-01-16 | 2026-04-29 |  |  |  |  |  |  |  |  |  |  |  |  |  |  |  |  |  |  |  |  |
| 12PB41-039 |  | Prefabrykacja ruroci¹gów – Sekcja 05 | 11.2d | 2026-01-16 A | 2026-02-04 A | 12PB41-012, 12PB41-032 SS+5d | 100% | 2026-01-14 | 2026-01-28 |  | BudMar | 12PB41 | Ruroci¹g | Budowa | Roboty | Agnieszk | Wyspa | PM000 | Zespó³-K | Blok | Normalny | Pakiet | L2 | Rev C |  |
| 12PB41-040 |  | Monta¿ ruroci¹gów – Sekcja 05 | 10.3d | 2026-03-25 A | 2026-04-07 A | 12PB41-039, 12PB41-014 SS+3d | 100% | 2026-03-26 | 2026-04-08 |  | BudMar | 12PB41 | Ruroci¹g | Budowa | Roboty | Agnieszk | Wyspa | PM000 | Zespó³-K | Blok | Normalny | Pakiet | L2 |  |  |
| 12PB41-041 |  | Próba ciœnieniowa – Sekcja 05 | 6d | 2026-04-09 A | 2026-04-16 A | 12PB41-040 | 100% |  |  |  | BudMar | 12PB41 | Ruroci¹g | Budowa | Roboty | Agnieszk | Wyspa | PM000 | Zespó³-W | Blok | Normalny | Pakiet | L2 |  |  |
| 12PB41-043 |  | Malowanie i oznakowanie – Sekcja 05 | 6d | 2026-04-20 A | 2026-04-29 A | 12PB41-042 FF+2d | 100% | 2026-04-20 | 2026-04-27 |  | BudMar | 12PB41 | Ruroci¹g | Budowa | Roboty | Agnieszk | Wyspa | PM000 | Zespó³-K | Blok | Normalny | Pakiet | L2 |  |  |
| 12PB41-042 |  | Izolacje – Sekcja 05 | 5d | 2026-04-21 A | 2026-04-29 A | 12PB41-041 | 100% | 2026-04-17 | 2026-04-23 |  | BudMar | 12PB41 | Ruroci¹g | Budowa | Roboty | Agnieszk | Wyspa | PM000 | Zespó³-K | Blok | Normalny | Pakiet | L2 | Rev A |  |
|  | SEKCJA 06 | **Sekcja 06** |  | 2026-01-23 | 2026-05-20 |  |  |  |  |  |  |  |  |  |  |  |  |  |  |  |  |  |  |  |  |
|  | PODSEKCJA | **Podsekcja 06.A** |  | 2026-01-23 | 2026-05-20 |  |  |  |  |  |  |  |  |  |  |  |  |  |  |  |  |  |  |  |  |
| 12PB41-044 |  | Prefabrykacja ruroci¹gów – Sekcja 06 | 12.1d | 2026-01-23 A | 2026-02-11 A | 12PB41-012, 12PB41-039 SS+5d | 100% | 2026-01-21 | 2026-02-05 |  | BudMar | 12PB41 | Ruroci¹g | Budowa | Roboty | Agnieszk | Wyspa | PM000 | Zespó³-K | Blok | Niski | Pakiet | L2 |  | Czeka na dostawê |
| 12PB41-045 |  | Monta¿ ruroci¹gów – Sekcja 06 | 16.6d | 2026-04-03 A | 2026-04-27 A | 12PB41-044, 12PB41-014 SS+7d | 100% | 2026-04-01 | 2026-04-22 |  | BudMar | 12PB41 | Ruroci¹g | Budowa | Roboty | Agnieszk | Wyspa | PM000 | Zespó³-W | Blok | Normalny | Pakiet | L2 |  |  |
| 12PB41-046 |  | Próba ciœnieniowa – Sekcja 06 | 6d | 2026-04-24 A | 2026-05-06 A | 12PB41-045 | 100% | 2026-04-23 | 2026-04-30 |  | BudMar | 12PB41 | Ruroci¹g | Budowa | Roboty | Agnieszk | Wyspa | PM000 | Zespó³-K | Blok | Normalny | Pakiet | L2 |  | Ryzyko opóŸnienia |
| 12PB41-047 |  | Izolacje – Sekcja 06 | 9d | 2026-05-01 A | 2026-05-18 A | 12PB41-046 | 100% | 2026-05-01 | 2026-05-13 | Kalendarz 6-dniowy | BudMar | 12PB41 | Ruroci¹g | Budowa | Roboty | Agnieszk | Wyspa | PM100 | Zespó³-I | Blok | Normalny | Pakiet | L2 |  |  |
| 12PB41-048 |  | Malowanie i oznakowanie – Sekcja 06 | 4d | 2026-05-13 A | 2026-05-20 A | 12PB41-047 FF+2d | 100% | 2026-05-12 | 2026-05-15 |  | BudMar | 12PB41 | Ruroci¹g | Budowa | Roboty | Agnieszk | Wyspa | PM000 | Zespó³-W | Blok | Normalny | Pakiet | L2 |  |  |
|  | SEKCJA 07 | **Sekcja 07** |  | 2026-01-28 | 2026-05-21 |  |  |  |  |  |  |  |  |  |  |  |  |  |  |  |  |  |  |  |  |
| 12PB41-051 |  | Prefabrykacja ruroci¹gów – Sekcja 07 | 3.2d | 2026-01-28 A | 2026-02-03 A | 12PB41-012, 12PB41-044 SS+5d | 100% | 2026-01-28 | 2026-01-30 |  | BudMar | 12PB41 | Ruroci¹g | Budowa | Roboty | Agnieszk | Wyspa | PM000 | Zespó³-W | Blok | Normalny | Pakiet | L2 |  |  |
| 12PB41-052 |  | Monta¿ ruroci¹gów – Sekcja 07 | 24.9d | 2026-03-30 A | 2026-05-05 A | 12PB41-051, 12PB41-014 SS+2d | 100% | 2026-03-25 | 2026-04-27 |  | BudMar | 12PB41 | Ruroci¹g | Budowa | Roboty | Agnieszk | Wyspa | PM000 | Zespó³-K | Blok | Normalny | Pakiet | L2 | Rev B |  |
| 12PB41-053 |  | Próba ciœnieniowa – Sekcja 07 | 5d | 2026-04-30 A | 2026-05-06 A | 12PB41-052 | 100% | 2026-04-28 | 2026-05-04 |  | BudMar | 12PB41 | Ruroci¹g | Budowa | Roboty | Agnieszk | Wyspa | PM000 | Zespó³-W | Blok | Normalny | Pakiet | L2 |  |  |
| 12PB41-054 |  | Izolacje – Sekcja 07 | 8d | 2026-05-05 A | 2026-05-14 A | 12PB41-053 | 100% |  |  |  | BudMar | 12PB41 | Ruroci¹g | Budowa | Roboty | Agnieszk | Wyspa | PM000 | Zespó³-K | Blok | Normalny | Pakiet | L2 | Rev C | Bez uwag |
| 12PB41-055 |  | Malowanie i oznakowanie – Sekcja 07 | 4d | 2026-05-14 A | 2026-05-21 A | 12PB41-054 FF+2d | 100% | 2026-05-13 | 2026-05-18 |  | BudMar | 12PB41 | Ruroci¹g | Budowa | Roboty | Agnieszk | Wyspa | PM000 | Zespó³-W | Blok | Normalny | Pakiet | L2 |  | Do weryfikacji z wykonawc¹ |

| ID | WBS | Activity | Duration | Start | Finish | Predecessors | Complete | Planned start | Planned finish | Calendar | AC_Wykonawca | AC_Obiekt | AC_Dyscyplina | AC_Faza | AC_Zakres | AC_Opiekun | AC_Obszar | AC_PP_PM | AC_Zespol | AC_Blok | AC_Priorytet | AC_Pakiet | AC_Poziom | Uwagi harmonogramisty | Rewizja dokumentu |
| --- | --- | --- | --- | --- | --- | --- | --- | --- | --- | --- | --- | --- | --- | --- | --- | --- | --- | --- | --- | --- | --- | --- | --- | --- | --- |
|  | SEKCJA 08 | **Sekcja 08** |  | 2026-02-03 | 2026-05-11 |  |  |  |  |  |  |  |  |  |  |  |  |  |  |  |  |  |  |  |  |
| 12PB41-056 |  | Prefabrykacja ruroci¹gów – Sekcja 08 | 5.4d | 2026-02-03 A | 2026-02-09 A | 12PB41-012, 12PB41-051 SS+5d | 100% | 2026-02-04 | 2026-02-10 |  | BudMar | 12PB41 | Ruroci¹g | Budowa | Roboty | Agnieszk | Wyspa | PM000 | Zespó³-K | Blok | Krytyczn | Pakiet | L2 |  |  |
| 12PB41-057 |  | Monta¿ ruroci¹gów – Sekcja 08 | 14.8d | 2026-03-30 A | 2026-04-17 A | 12PB41-056, 12PB41-014 SS+4d | 100% | 2026-03-27 | 2026-04-15 |  | BudMar | 12PB41 | Ruroci¹g | Budowa | Roboty | Agnieszk | Wyspa | PM000 | Zespó³-K | Blok | Normalny | Pakiet | L2 |  |  |
| 12PB41-058 |  | Próba ciœnieniowa – Sekcja 08 | 5d | 2026-04-15 A | 2026-04-24 A | 12PB41-057 | 100% | 2026-04-16 | 2026-04-22 |  | BudMar | 12PB41 | Ruroci¹g | Budowa | Roboty | Agnieszk | Wyspa | PM000 | Zespó³-I | Blok | Normalny | Pakiet | L2 |  |  |
| 12PB41-059 |  | Izolacje – Sekcja 08 | 8d | 2026-04-22 A | 2026-05-05 A | 12PB41-058 | 100% | 2026-04-23 | 2026-05-04 |  | BudMar | 12PB41 | Ruroci¹g | Budowa | Roboty | Agnieszk | Wyspa | PM000 | Zespó³-K | Blok | Normalny | Pakiet | L2 | Uzgodnione na koordynacji | Rev A |
| 12PB41-060 |  | Malowanie i oznakowanie – Sekcja 08 | 4d | 2026-05-01 A | 2026-05-11 A | 12PB41-059 FF+2d | 100% | 2026-05-01 | 2026-05-06 |  | BudMar | 12PB41 | Ruroci¹g | Budowa | Roboty | Agnieszk | Wyspa | PM000 | Zespó³-K | Blok | Niski | Pakiet | L2 |  |  |
|  | SEKCJA 09 | **Sekcja 09** |  | 2026-02-13 | 2026-05-26 |  |  |  |  |  |  |  |  |  |  |  |  |  |  |  |  |  |  |  |  |
|  | PODSEKCJA | **Podsekcja 09.A** |  | 2026-02-13 | 2026-05-26 |  |  |  |  |  |  |  |  |  |  |  |  |  |  |  |  |  |  |  |  |
| 12PB41-063 |  | Prefabrykacja ruroci¹gów – Sekcja 09 | 14.2d | 2026-02-13 A | 2026-03-05 A | 12PB41-012, 12PB41-056 SS+5d | 100% | 2026-02-11 | 2026-03-02 |  | BudMar | 12PB41 | Ruroci¹g | Budowa | Roboty | Agnieszk | Wyspa | PM000 | Zespó³-W | Blok | Normalny | Pakiet | L2 | Bez uwag |  |
| 12PB41-064 |  | Monta¿ ruroci¹gów – Sekcja 09 | 20.5d | 2026-04-09 A | 2026-05-07 A | 12PB41-063, 12PB41-014 SS+10d | 100% | 2026-04-06 | 2026-05-01 |  | BudMar | 12PB41 | Ruroci¹g | Budowa | Roboty | Agnieszk | Wyspa | PM000 | Zespó³-K | Blok | Wysoki | Pakiet | L2 |  |  |
| 12PB41-065 |  | Próba ciœnieniowa – Sekcja 09 | 5d | 2026-05-06 A | 2026-05-13 A | 12PB41-064 | 100% | 2026-05-04 | 2026-05-08 |  | BudMar | 12PB41 | Ruroci¹g | Budowa | Roboty | Agnieszk | Wyspa | PM000 | Zespó³-W | Blok | Krytyczn | Pakiet | L2 |  |  |
| 12PB41-066 |  | Izolacje – Sekcja 09 | 6d | 2026-05-14 A | 2026-05-21 A | 12PB41-065 | 100% | 2026-05-11 | 2026-05-18 |  | BudMar | 12PB41 | Ruroci¹g | Budowa | Roboty | Agnieszk | Wyspa | PM000 | Zespó³-W | Blok | Niski | Pakiet | L2 |  | Rev A |
| 12PB41-067 |  | Malowanie i oznakowanie – Sekcja 09 | 2d | 2026-05-22 A | 2026-05-26 A | 12PB41-066 FF+2d | 100% | 2026-05-19 | 2026-05-20 |  | BudMar | 12PB41 | Ruroci¹g | Budowa | Roboty | Agnieszk | Wyspa | PM000 | Zespó³-W | Blok | Niski | Pakiet | L2 | Uzgodnione na koordynacji |  |
|  | SEKCJA 10 | **Sekcja 10** |  | 2026-02-23 | 2026-05-25 |  |  |  |  |  |  |  |  |  |  |  |  |  |  |  |  |  |  |  |  |
| 12PB41-068 |  | Prefabrykacja ruroci¹gów – Sekcja 10 | 13.7d | 2026-02-23 A | 2026-03-16 A | 12PB41-012, 12PB41-063 SS+5d | 100% | 2026-02-18 | 2026-03-06 |  | BudMar | 12PB41 | Ruroci¹g | Budowa | Roboty | Agnieszk | Wyspa | PM000 | Zespó³-W | Blok | Normalny | Pakiet | L2 | Bez uwag |  |
| 12PB41-069 |  | Monta¿ ruroci¹gów – Sekcja 10 | 24.5d | 2026-04-01 A | 2026-05-05 A | 12PB41-068, 12PB41-014 SS+6d | 100% | 2026-03-31 | 2026-05-01 |  | BudMar | 12PB41 | Ruroci¹g | Budowa | Roboty | Agnieszk | Wyspa | PM000 | Zespó³-K | Blok | Normalny | Pakiet | L2 |  |  |
| 12PB41-070 |  | Próba ciœnieniowa – Sekcja 10 | 5d | 2026-05-06 A | 2026-05-14 A | 12PB41-069 | 100% | 2026-05-04 | 2026-05-08 | Kalendarz 6-dniowy | BudMar | 12PB41 | Ruroci¹g | Budowa | Roboty | Agnieszk | Wyspa | PM000 | Zespó³-W | Blok | Normalny | Pakiet | L2 | Ryzyko opóŸnienia |  |
| 12PB41-071 |  | Izolacje – Sekcja 10 | 6d | 2026-05-11 A | 2026-05-21 A | 12PB41-070 | 100% | 2026-05-11 | 2026-05-18 |  | BudMar | 12PB41 | Ruroci¹g | Budowa | Roboty | Agnieszk | Wyspa | PM000 | Zespó³-K | Blok | Normalny | Pakiet | L2 |  |  |
| 12PB41-072 |  | Malowanie i oznakowanie – Sekcja 10 | 2d | 2026-05-22 A | 2026-05-25 A | 12PB41-071 FF+2d | 100% | 2026-05-19 | 2026-05-20 |  | BudMar | 12PB41 | Ruroci¹g | Budowa | Roboty | Agnieszk | Wyspa | PM000 | Zespó³-W | Blok | Normalny | Pakiet | L2 |  | Rev A |
|  | SEKCJA 11 | **Sekcja 11** |  | 2026-02-24 | 2026-05-21 |  |  |  |  |  |  |  |  |  |  |  |  |  |  |  |  |  |  |  |  |
| 12PB41-075 |  | Prefabrykacja ruroci¹gów – Sekcja 11 | 9.3d | 2026-02-24 A | 2026-03-09 A | 12PB41-012, 12PB41-068 SS+5d | 100% | 2026-02-25 | 2026-03-09 |  | BudMar | 12PB41 | Ruroci¹g | Budowa | Roboty | Agnieszk | Wyspa | PM000 | Zespó³-W | Blok | Normalny | Pakiet | L2 | Ryzyko opóŸnienia |  |
| 12PB41-076 |  | Monta¿ ruroci¹gów – Sekcja 11 | 15.8d | 2026-04-09 A | 2026-04-29 A | 12PB41-075, 12PB41-014 SS+10d | 100% | 2026-04-06 | 2026-04-24 |  | BudMar | 12PB41 | Ruroci¹g | Budowa | Roboty | Agnieszk | Wyspa | PM000 | Zespó³-K | Blok | Normalny | Pakiet | L2 |  |  |
| 12PB41-077 |  | Próba ciœnieniowa – Sekcja 11 | 6d | 2026-04-24 A | 2026-05-01 A | 12PB41-076 | 100% | 2026-04-27 | 2026-05-04 |  | BudMar | 12PB41 | Ruroci¹g | Budowa | Roboty | Agnieszk | Wyspa | PM000 | Zespó³-W | Blok | Niski | Pakiet | L2 |  |  |
| 12PB41-078 |  | Izolacje – Sekcja 11 | 7d | 2026-05-04 A | 2026-05-13 A | 12PB41-077 | 100% | 2026-05-05 | 2026-05-13 |  | BudMar | 12PB41 | Ruroci¹g | Budowa | Roboty | Agnieszk | Wyspa | PM000 | Zespó³-K | Blok | Normalny | Pakiet | L2 | Do weryfikacji z wykonawc¹ |  |
| 12PB41-079 |  | Malowanie i oznakowanie – Sekcja 11 | 4d | 2026-05-15 A | 2026-05-21 A | 12PB41-078 FF+2d | 100% | 2026-05-12 | 2026-05-15 |  | BudMar | 12PB41 | Ruroci¹g | Budowa | Roboty | Agnieszk | Wyspa | PM000 | Zespó³-W | Blok | Normalny | Pakiet | L2 |  |  |

| ID | WBS | Activity | Duration | Start | Finish | Predecessors | Complete | Planned start | Planned finish | Calendar | AC_Wykonawca | AC_Obiekt | AC_Dyscyplina | AC_Faza | AC_Zakres | AC_Opiekun | AC_Obszar | AC_PP_PM | AC_Zespol | AC_Blok | AC_Priorytet | AC_Pakiet | AC_Poziom | Rewizja dokumentu | Uwagi harmonogramisty |
| --- | --- | --- | --- | --- | --- | --- | --- | --- | --- | --- | --- | --- | --- | --- | --- | --- | --- | --- | --- | --- | --- | --- | --- | --- | --- |
|  | SEKCJA 12 | **Sekcja 12** |  | 2026-03-06 | 2026-05-15 |  |  |  |  |  |  |  |  |  |  |  |  |  |  |  |  |  |  |  |  |
|  | PODSEKCJA | **Podsekcja 12.A** |  | 2026-03-06 | 2026-05-15 |  |  |  |  |  |  |  |  |  |  |  |  |  |  |  |  |  |  |  |  |
| 12PB41-080 |  | Prefabrykacja ruroci¹gów – Sekcja 12 | 3.7d | 2026-03-06 A | 2026-03-12 A | 12PB41-012, 12PB41-075 SS+5d | 100% | 2026-03-04 | 2026-03-06 |  | BudMar | 12PB41 | Ruroci¹g | Budowa | Roboty | Agnieszk | Wyspa | PM000 | Zespó³-K | Blok | Normalny | Pakiet | L2 |  |  |
| 12PB41-081 |  | Monta¿ ruroci¹gów – Sekcja 12 | 14.7d | 2026-04-06 A | 2026-04-28 A | 12PB41-080, 12PB41-014 SS+9d | 100% | 2026-04-03 | 2026-04-22 |  | BudMar | 12PB41 | Ruroci¹g | Budowa | Roboty | Agnieszk | Wyspa | PM000 | Zespó³-K | Blok | Normalny | Pakiet | L2 | Rev A |  |
| 12PB41-082 |  | Próba ciœnieniowa – Sekcja 12 | 3d | 2026-04-24 A | 2026-04-28 A | 12PB41-081 | 100% | 2026-04-23 | 2026-04-27 |  | BudMar | 12PB41 | Ruroci¹g | Budowa | Roboty | Agnieszk | Wyspa | PM000 | Zespó³-W | Blok | Normalny | Pakiet | L2 |  |  |
| 12PB41-083 |  | Izolacje – Sekcja 12 | 11d | 2026-04-27 A | 2026-05-11 A | 12PB41-082 | 100% | 2026-04-28 | 2026-05-12 |  | BudMar | 12PB41 | Ruroci¹g | Budowa | Roboty | Agnieszk | Wyspa | PM000 | Zespó³-K | Blok | Normalny | Pakiet | L2 |  | Do weryfikacji z wykonawc¹ |
| 12PB41-084 |  | Malowanie i oznakowanie – Sekcja 12 | 6d | 2026-05-07 A | 2026-05-15 A | 12PB41-083 FF+2d | 100% | 2026-05-07 | 2026-05-14 |  | BudMar | 12PB41 | Ruroci¹g | Budowa | Roboty | Agnieszk | Wyspa | PM000 | Zespó³-E | Blok | Niski | Pakiet | L2 |  |  |
|  | SEKCJA 13 | **Sekcja 13** |  | 2026-03-12 | 2026-05-05 |  |  |  |  |  |  |  |  |  |  |  |  |  |  |  |  |  |  |  |  |
| 12PB41-087 |  | Prefabrykacja ruroci¹gów – Sekcja 13 | 4.4d | 2026-03-12 A | 2026-03-17 A | 12PB41-012, 12PB41-080 SS+5d | 100% | 2026-03-11 | 2026-03-16 |  | BudMar | 12PB41 | Ruroci¹g | Budowa | Roboty | Agnieszk | Wyspa | PM000 | Zespó³-K | Blok | Normalny | Pakiet | L2 |  |  |
| 12PB41-088 |  | Monta¿ ruroci¹gów – Sekcja 13 | 10.3d | 2026-04-01 A | 2026-04-16 A | 12PB41-087, 12PB41-014 SS+4d | 100% | 2026-03-27 | 2026-04-09 |  | BudMar | 12PB41 | Ruroci¹g | Budowa | Roboty | Agnieszk | Wyspa | PM000 | Zespó³-W | Blok | Normalny | Pakiet | L2 |  |  |
| 12PB41-089 |  | Próba ciœnieniowa – Sekcja 13 | 4d | 2026-04-09 A | 2026-04-14 A | 12PB41-088 | 100% | 2026-04-10 | 2026-04-15 |  | BudMar | 12PB41 | Ruroci¹g | Budowa | Roboty | Agnieszk | Wyspa | PM000 | Zespó³-W | Blok | Normalny | Pakiet | L2 | Rev B |  |
| 12PB41-090 |  | Izolacje – Sekcja 13 | 9d | 2026-04-20 A | 2026-05-05 A | 12PB41-089 | 100% | 2026-04-16 | 2026-04-28 |  | BudMar | 12PB41 | Ruroci¹g | Budowa | Roboty | Agnieszk | Wyspa | PM000 | Zespó³-E | Blok | Normalny | Pakiet | L2 | Rev C |  |
| 12PB41-091 |  | Malowanie i oznakowanie – Sekcja 13 | 5d | 2026-04-28 A | 2026-05-05 A | 12PB41-090 FF+2d | 100% | 2026-04-24 | 2026-04-30 |  | BudMar | 12PB41 | Ruroci¹g | Budowa | Roboty | Agnieszk | Wyspa | PM000 | Zespó³-K | Blok | Normalny | Pakiet | L2 |  |  |
|  | SEKCJA 14 | **Sekcja 14** |  | 2026-03-20 | 2026-05-13 |  |  |  |  |  |  |  |  |  |  |  |  |  |  |  |  |  |  |  |  |
| 12PB41-092 |  | Prefabrykacja ruroci¹gów – Sekcja 14 | 9.5d | 2026-03-20 A | 2026-04-02 A | 12PB41-012, 12PB41-087 SS+5d | 100% | 2026-03-18 | 2026-03-30 | Kalendarz 6-dniowy | BudMar | 12PB41 | Ruroci¹g | Budowa | Roboty | Agnieszk | Wyspa | PM000 | Zespó³-W | Blok | Niski | Pakiet | L2 |  |  |
| 12PB41-093 |  | Monta¿ ruroci¹gów – Sekcja 14 | 13.8d | 2026-04-02 A | 2026-04-22 A | 12PB41-092, 12PB41-014 SS+9d | 100% | 2026-04-03 | 2026-04-21 | Kalendarz 6-dniowy | BudMar | 12PB41 | Ruroci¹g | Budowa | Roboty | Agnieszk | Wyspa | PM000 | Zespó³-K | Blok | Niski | Pakiet | L2 |  |  |
| 12PB41-094 |  | Próba ciœnieniowa – Sekcja 14 | 3d | 2026-04-22 A | 2026-04-27 A | 12PB41-093 | 100% | 2026-04-22 | 2026-04-24 |  | BudMar | 12PB41 | Ruroci¹g | Budowa | Roboty | Agnieszk | Wyspa | PM000 | Zespó³-E | Blok | Normalny | Pakiet | L2 |  |  |
| 12PB41-095 |  | Izolacje – Sekcja 14 | 9d | 2026-04-28 A | 2026-05-08 A | 12PB41-094 | 100% | 2026-04-27 | 2026-05-07 |  | BudMar | 12PB41 | Ruroci¹g | Budowa | Roboty | Agnieszk | Wyspa | PM000 | Zespó³-W | Blok | Normalny | Pakiet | L2 |  | Do weryfikacji z wykonawc¹ |
| 12PB41-096 |  | Malowanie i oznakowanie – Sekcja 14 | 4d | 2026-05-06 A | 2026-05-13 A | 12PB41-095 FF+2d | 100% | 2026-05-06 | 2026-05-11 |  | BudMar | 12PB41 | Ruroci¹g | Budowa | Roboty | Agnieszk | Wyspa | PM000 | Zespó³-W | Blok | Normalny | Pakiet | L2 |  | Do weryfikacji z wykonawc¹ |
|  | SEKCJA 15 | **Sekcja 15** |  | 2026-03-26 | 2026-05-25 |  |  |  |  |  |  |  |  |  |  |  |  |  |  |  |  |  |  |  |  |
|  | PODSEKCJA | **Podsekcja 15.A** |  | 2026-03-26 | 2026-05-25 |  |  |  |  |  |  |  |  |  |  |  |  |  |  |  |  |  |  |  |  |
| 12PB41-099 |  | Prefabrykacja ruroci¹gów – Sekcja 15 | 11.9d | 2026-03-26 A | 2026-04-10 A | 12PB41-012, 12PB41-092 SS+5d | 100% | 2026-03-25 | 2026-04-08 |  | BudMar | 12PB41 | Ruroci¹g | Budowa | Roboty | Agnieszk | Wyspa | PM300 | Zespó³-E | Blok | Normalny | Pakiet | L2 |  |  |
| 12PB41-100 |  | Monta¿ ruroci¹gów – Sekcja 15 | 12.1d | 2026-04-14 A | 2026-05-04 A | 12PB41-099, 12PB41-014 SS+8d | 100% | 2026-04-09 | 2026-04-27 | Kalendarz 6-dniowy | BudMar | 12PB41 | Ruroci¹g | Budowa | Roboty | Agnieszk | Wyspa | PM000 | Zespó³-W | Blok | Normalny | Pakiet | L2 |  |  |
| 12PB41-102 |  | Izolacje – Sekcja 15 | 12d | 2026-04-30 A | 2026-05-20 A | 12PB41-101 | 100% | 2026-04-30 | 2026-05-15 |  | BudMar | 12PB41 | Ruroci¹g | Budowa | Roboty | Agnieszk | Wyspa | PM000 | Zespó³-K | Blok | Normalny | Pakiet | L2 |  |  |
| 12PB41-101 |  | Próba ciœnieniowa – Sekcja 15 | 2d | 2026-05-01 A | 2026-05-06 A | 12PB41-100 | 100% | 2026-04-28 | 2026-04-29 |  | BudMar | 12PB41 | Ruroci¹g | Budowa | Roboty | Agnieszk | Wyspa | PM000 | Zespó³-W | Blok | Normalny | Pakiet | L2 |  |  |
| 12PB41-103 |  | Malowanie i oznakowanie – Sekcja 15 | 5d | 2026-05-18 A | 2026-05-25 A | 12PB41-102 FF+2d | 100% | 2026-05-13 | 2026-05-19 |  | BudMar | 12PB41 | Ruroci¹g | Budowa | Roboty | Agnieszk | Wyspa | PM000 | Zespó³-K | Blok | Normalny | Pakiet | L2 |  |  |

| ID | WBS | Activity | Duration | Start | Finish | Predecessors | Complete | Planned start | Planned finish | Calendar | Uwagi harmonogramisty | AC_Wykonawca | AC_Obiekt | AC_Dyscyplina | AC_Faza | AC_Zakres | AC_Opiekun | AC_Obszar | AC_PP_PM | AC_Zespol | AC_Blok | AC_Priorytet | AC_Pakiet | AC_Poziom | Rewizja dokumentu |
| --- | --- | --- | --- | --- | --- | --- | --- | --- | --- | --- | --- | --- | --- | --- | --- | --- | --- | --- | --- | --- | --- | --- | --- | --- | --- |
|  | SEKCJA 16 | **Sekcja 16** |  | 2026-04-01 | 2026-05-22 |  |  |  |  |  |  |  |  |  |  |  |  |  |  |  |  |  |  |  |  |
| 12PB41-104 |  | Prefabrykacja ruroci¹gów – Sekcja 16 | 4.4d | 2026-04-01 A | 2026-04-08 A | 12PB41-012, 12PB41-099 SS+5d | 100% | 2026-04-01 | 2026-04-06 |  | Do weryfikacji z wykonawc¹ | BudMar | 12PB41 | Ruroci¹g | Budowa | Roboty | Agnieszk | Wyspa | PM000 | Zespó³-W | Blok | Normalny | Pakiet | L2 |  |
| 12PB41-105 |  | Monta¿ ruroci¹gów – Sekcja 16 | 11.2d | 2026-04-09 A | 2026-04-28 A | 12PB41-104, 12PB41-014 SS+8d | 100% | 2026-04-07 | 2026-04-21 |  |  | BudMar | 12PB41 | Ruroci¹g | Budowa | Roboty | Agnieszk | Wyspa | PM000 | Zespó³-W | Blok | Niski | Pakiet | L2 |  |
| 12PB41-106 |  | Próba ciœnieniowa – Sekcja 16 | 6d | 2026-04-24 A | 2026-05-05 A | 12PB41-105 | 100% | 2026-04-22 | 2026-04-29 |  |  | BudMar | 12PB41 | Ruroci¹g | Budowa | Roboty | Agnieszk | Wyspa | PM000 | Zespó³-K | Blok | Normalny | Pakiet | L2 |  |
| 12PB41-107 |  | Izolacje – Sekcja 16 | 10d | 2026-04-30 A | 2026-05-18 A | 12PB41-106 | 100% | 2026-04-30 | 2026-05-13 |  | Do weryfikacji z wykonawc¹ | BudMar | 12PB41 | Ruroci¹g | Budowa | Roboty | Agnieszk | Wyspa | PM000 | Zespó³-W | Blok | Normalny | Pakiet | L2 |  |
| 12PB41-108 |  | Malowanie i oznakowanie – Sekcja 16 | 8d | 2026-05-11 A | 2026-05-22 A | 12PB41-107 FF+2d | 100% | 2026-05-06 | 2026-05-15 |  |  | BudMar | 12PB41 | Ruroci¹g | Budowa | Roboty | Agnieszk | Wyspa | PM000 | Zespó³-K | Blok | Normalny | Pakiet | L2 | Rev C |
|  | SEKCJA 17 | **Sekcja 17** |  | 2026-04-09 | 2026-06-01 |  |  |  |  |  |  |  |  |  |  |  |  |  |  |  |  |  |  |  |  |
| 12PB41-111 |  | Prefabrykacja ruroci¹gów – Sekcja 17 | 13d | 2026-04-09 A | 2026-04-27 A | 12PB41-012, 12PB41-104 SS+5d | 100% | 2026-04-08 | 2026-04-24 |  |  | BudMar | 12PB41 | Ruroci¹g | Budowa | Roboty | Agnieszk | Wyspa | PM000 | Zespó³-W | Blok | Normalny | Pakiet | L2 |  |
| 12PB41-112 |  | Monta¿ ruroci¹gów – Sekcja 17 | 11d | 2026-04-24 A | 2026-05-11 A | 12PB41-111, 12PB41-014 SS+4d | 100% | 2026-04-27 | 2026-05-11 |  |  | BudMar | 12PB41 | Ruroci¹g | Budowa | Roboty | Agnieszk | Wyspa | PM000 | Zespó³-I | Blok | Normalny | Pakiet | L2 |  |
| 12PB41-113 |  | Próba ciœnieniowa – Sekcja 17 | 3d | 2026-05-11 A | 2026-05-13 A | 12PB41-112 | 100% | 2026-05-12 | 2026-05-14 |  |  | BudMar | 12PB41 | Ruroci¹g | Budowa | Roboty | Agnieszk | Wyspa | PM000 | Zespó³-W | Blok | Wysoki | Pakiet | L2 |  |
| 12PB41-114 |  | Izolacje – Sekcja 17 | 8d | 2026-05-18 A | 2026-06-01 A | 12PB41-113 | 100% | 2026-05-15 | 2026-05-26 |  |  | BudMar | 12PB41 | Ruroci¹g | Budowa | Roboty | Agnieszk | Wyspa | PM000 | Zespó³-W | Blok | Normalny | Pakiet | L2 |  |
| 12PB41-115 |  | Malowanie i oznakowanie – Sekcja 17 | 7d | 2026-05-19 A | 2026-06-01 A | 12PB41-114 FF+2d | 100% | 2026-05-20 | 2026-05-28 |  |  | BudMar | 12PB41 | Ruroci¹g | Budowa | Roboty | Agnieszk | Wyspa | PM000 | Zespó³-W | Blok | Wysoki | Pakiet | L2 |  |
|  | SEKCJA 18 | **Sekcja 18** |  | 2026-04-15 | 2026-06-02 |  |  |  |  |  |  |  |  |  |  |  |  |  |  |  |  |  |  |  |  |
|  | PODSEKCJA | **Podsekcja 18.A** |  | 2026-04-15 | 2026-06-02 |  |  |  |  |  |  |  |  |  |  |  |  |  |  |  |  |  |  |  |  |
| 12PB41-116 |  | Prefabrykacja ruroci¹gów – Sekcja 18 | 3.5d | 2026-04-15 A | 2026-04-17 A | 12PB41-012, 12PB41-111 SS+5d | 100% |  |  |  |  | BudMar | 12PB41 | Ruroci¹g | Budowa | Roboty | Agnieszk | Wyspa | PM300 | Zespó³-I | Blok | Normalny | Pakiet | L2 |  |
| 12PB41-117 |  | Monta¿ ruroci¹gów – Sekcja 18 | 10d | 2026-04-23 A | 2026-05-07 A | 12PB41-116, 12PB41-014 SS+9d | 100% | 2026-04-20 | 2026-05-01 | Kalendarz 6-dniowy |  | BudMar | 12PB41 | Ruroci¹g | Budowa | Roboty | Agnieszk | Wyspa | PM000 | Zespó³-W | Blok | Normalny | Pakiet | L2 |  |
| 12PB41-118 |  | Próba ciœnieniowa – Sekcja 18 | 4d | 2026-05-05 A | 2026-05-12 A | 12PB41-117 | 100% | 2026-05-04 | 2026-05-07 | Kalendarz 6-dniowy |  | BudMar | 12PB41 | Ruroci¹g | Budowa | Roboty | Agnieszk | Wyspa | PM000 | Zespó³-K | Blok | Wysoki | Pakiet | L2 |  |
| 12PB41-119 |  | Izolacje – Sekcja 18 | 11d | 2026-05-07 A | 2026-05-21 A | 12PB41-118 | 100% | 2026-05-08 | 2026-05-22 |  |  | BudMar | 12PB41 | Ruroci¹g | Budowa | Roboty | Agnieszk | Wyspa | PM000 | Zespó³-W | Blok | Wysoki | Pakiet | L2 |  |
| 12PB41-120 |  | Malowanie i oznakowanie – Sekcja 18 | 6d | 2026-05-21 A | 2026-06-02 A | 12PB41-119 FF+2d | 100% | 2026-05-19 | 2026-05-26 |  | Czeka na dostawê | BudMar | 12PB41 | Ruroci¹g | Budowa | Roboty | Agnieszk | Wyspa | PM100 | Zespó³-I | Blok | Normalny | Pakiet | L2 |  |
|  | SEKCJA 19 | **Sekcja 19** |  | 2026-04-22 | 2026-06-19 |  |  |  |  |  |  |  |  |  |  |  |  |  |  |  |  |  |  |  |  |
| 12PB41-123 |  | Prefabrykacja ruroci¹gów – Sekcja 19 | 5.9d | 2026-04-22 A | 2026-04-28 A | 12PB41-012, 12PB41-116 SS+5d | 100% |  |  |  |  | BudMar | 12PB41 | Ruroci¹g | Budowa | Roboty | Agnieszk | Wyspa | PM000 | Zespó³-W | Blok | Wysoki | Pakiet | L2 | Rev C |
| 12PB41-124 |  | Monta¿ ruroci¹gów – Sekcja 19 | 20.7d | 2026-04-28 A | 2026-05-28 A | 12PB41-123, 12PB41-014 SS+8d | 100% | 2026-04-29 | 2026-05-27 |  |  | BudMar | 12PB41 | Ruroci¹g | Budowa | Roboty | Agnieszk | Wyspa | PM000 | Zespó³-W | Blok | Normalny | Pakiet | L2 | Rev C |
| 12PB41-125 |  | Próba ciœnieniowa – Sekcja 19 | 6d | 2026-05-29 A | 2026-06-09 A | 12PB41-124 | 100% | 2026-05-28 | 2026-06-04 |  |  | BudMar | 12PB41 | Ruroci¹g | Budowa | Roboty | Agnieszk | Wyspa | PM000 | Zespó³-I | Blok | Wysoki | Pakiet | L2 |  |
| 12PB41-126 |  | Izolacje – Sekcja 19 | 5d | 2026-06-09 A | 2026-06-17 A | 12PB41-125 | 100% | 2026-06-05 | 2026-06-11 |  | Bez uwag | BudMar | 12PB41 | Ruroci¹g | Budowa | Roboty | Agnieszk | Wyspa | PM000 | Zespó³-K | Blok | Normalny | Pakiet | L2 | Rev A |
| 12PB41-127 |  | Malowanie i oznakowanie – Sekcja 19 | 2d | 2026-06-17 A | 2026-06-19 A | 12PB41-126 FF+2d | 100% | 2026-06-12 | 2026-06-15 |  |  | BudMar | 12PB41 | Ruroci¹g | Budowa | Roboty | Agnieszk | Wyspa | PM000 | Zespó³-K | Blok | Normalny | Pakiet | L2 |  |

| ID | WBS | Activity | Duration | Start | Finish | Predecessors | Complete | Planned start | Planned finish | Calendar | AC_Wykonawca | AC_Obiekt | AC_Dyscyplina | AC_Faza | AC_Zakres | AC_Opiekun | AC_Obszar | AC_PP_PM | AC_Zespol | AC_Blok | AC_Priorytet | AC_Pakiet | AC_Poziom | Rewizja dokumentu | Uwagi harmonogramisty |
| --- | --- | --- | --- | --- | --- | --- | --- | --- | --- | --- | --- | --- | --- | --- | --- | --- | --- | --- | --- | --- | --- | --- | --- | --- | --- |
|  | SEKCJA 20 | **Sekcja 20** |  | 2026-05-01 | 2026-06-22 |  |  |  |  |  |  |  |  |  |  |  |  |  |  |  |  |  |  |  |  |
| 12PB41-128 |  | Prefabrykacja ruroci¹gów – Sekcja 20 | 5.7d | 2026-05-01 A | 2026-05-11 A | 12PB41-012, 12PB41-123 SS+5d | 100% | 2026-04-29 | 2026-05-05 |  | BudMar | 12PB41 | Ruroci¹g | Budowa | Roboty | Agnieszk | Wyspa | PM000 | Zespó³-W | Blok | Normalny | Pakiet | L2 |  |  |
| 12PB41-129 |  | Monta¿ ruroci¹gów – Sekcja 20 | 15.2d | 2026-05-11 A | 2026-05-29 A | 12PB41-128, 12PB41-014 SS+9d | 100% | 2026-05-06 | 2026-05-26 |  | BudMar | 12PB41 | Ruroci¹g | Budowa | Roboty | Agnieszk | Wyspa | PM000 | Zespó³-K | Blok | Wysoki | Pakiet | L2 | Rev B |  |
| 12PB41-130 |  | Próba ciœnieniowa – Sekcja 20 | 5d | 2026-05-27 A | 2026-06-04 A | 12PB41-129 | 100% | 2026-05-27 | 2026-06-02 |  | BudMar | 12PB41 | Ruroci¹g | Budowa | Roboty | Agnieszk | Wyspa | PM000 | Zespó³-W | Blok | Normalny | Pakiet | L2 | Rev B |  |
| 12PB41-131 |  | Izolacje – Sekcja 20 | 6d | 2026-06-05 A | 2026-06-15 A | 12PB41-130 | 100% | 2026-06-03 | 2026-06-10 |  | BudMar | 12PB41 | Ruroci¹g | Budowa | Roboty | Agnieszk | Wyspa | PM000 | Zespó³-W | Blok | Niski | Pakiet | L2 |  | Czeka na dostawê |
| 12PB41-132 |  | Malowanie i oznakowanie – Sekcja 20 | 7d | 2026-06-09 A | 2026-06-22 A | 12PB41-131 FF+2d | 100% | 2026-06-04 | 2026-06-12 |  | BudMar | 12PB41 | Ruroci¹g | Budowa | Roboty | Agnieszk | Wyspa | PM000 | Zespó³-W | Blok | Normalny | Pakiet | L2 |  |  |
|  | SEKCJA 21 | **Sekcja 21** |  | 2026-05-05 | 2026-06-30 |  |  |  |  |  |  |  |  |  |  |  |  |  |  |  |  |  |  |  |  |
|  | PODSEKCJA | **Podsekcja 21.A** |  | 2026-05-05 | 2026-06-30 |  |  |  |  |  |  |  |  |  |  |  |  |  |  |  |  |  |  |  |  |
| 12PB41-135 |  | Prefabrykacja ruroci¹gów – Sekcja 21 | 9.3d | 2026-05-05 A | 2026-05-19 A | 12PB41-012, 12PB41-128 SS+5d | 100% | 2026-05-06 | 2026-05-18 |  | BudMar | 12PB41 | Ruroci¹g | Budowa | Roboty | Agnieszk | Wyspa | PM000 | Zespó³-K | Blok | Normalny | Pakiet | L2 |  | Czeka na dostawê |
| 12PB41-136 |  | Monta¿ ruroci¹gów – Sekcja 21 | 21.1d | 2026-05-22 A | 2026-06-24 A | 12PB41-135, 12PB41-014 SS+5d | 100% | 2026-05-19 | 2026-06-16 |  | BudMar | 12PB41 | Ruroci¹g | Budowa | Roboty | Agnieszk | Wyspa | PM000 | Zespó³-K | Blok | Normalny | Pakiet | L2 |  |  |
| 12PB41-137 |  | Próba ciœnieniowa – Sekcja 21 | 2d | 2026-06-19 A | 2026-06-24 A | 12PB41-136 | 100% | 2026-06-17 | 2026-06-18 |  | BudMar | 12PB41 | Ruroci¹g | Budowa | Roboty | Agnieszk | Wyspa | PM200 | Zespó³-I | Blok | Normalny | Pakiet | L2 |  |  |
| 12PB41-139 |  | Malowanie i oznakowanie – Sekcja 21 | 5d | 2026-06-19 A | 2026-06-30 A | 12PB41-138 FF+2d | 100% | 2026-06-19 | 2026-06-25 |  | BudMar | 12PB41 | Ruroci¹g | Budowa | Roboty | Agnieszk | Wyspa | PM000 | Zespó³-W | Blok | Normalny | Pakiet | L2 |  | Uzgodnione na koordynacji |
| 12PB41-138 |  | Izolacje – Sekcja 21 | 3d | 2026-06-23 A | 2026-06-26 A | 12PB41-137 | 100% | 2026-06-19 | 2026-06-23 |  | BudMar | 12PB41 | Ruroci¹g | Budowa | Roboty | Agnieszk | Wyspa | PM000 | Zespó³-W | Blok | Wysoki | Pakiet | L2 |  |  |
|  | SEKCJA 22 | **Sekcja 22** |  | 2026-05-14 | 2026-07-07 |  |  |  |  |  |  |  |  |  |  |  |  |  |  |  |  |  |  |  |  |
| 12PB41-140 |  | Prefabrykacja ruroci¹gów – Sekcja 22 | 11d | 2026-05-14 A | 2026-06-02 A | 12PB41-012, 12PB41-135 SS+5d | 100% | 2026-05-13 | 2026-05-27 |  | BudMar | 12PB41 | Ruroci¹g | Budowa | Roboty | Agnieszk | Wyspa | PM000 | Zespó³-W | Blok | Normalny | Pakiet | L2 |  |  |
| 12PB41-141 |  | Monta¿ ruroci¹gów – Sekcja 22 | 18d | 2026-06-01 A | 2026-06-25 A | 12PB41-140, 12PB41-014 SS+10d | 100% | 2026-05-28 | 2026-06-22 | Kalendarz 6-dniowy | BudMar | 12PB41 | Ruroci¹g | Budowa | Roboty | Agnieszk | Wyspa | PM000 | Zespó³-K | Blok | Normalny | Pakiet | L2 |  |  |
| 12PB41-142 |  | Próba ciœnieniowa – Sekcja 22 | 3d | 2026-06-22 A | 2026-06-25 A | 12PB41-141 | 100% | 2026-06-23 | 2026-06-25 |  | BudMar | 12PB41 | Ruroci¹g | Budowa | Roboty | Agnieszk | Wyspa | PM000 | Zespó³-K | Blok | Normalny | Pakiet | L2 |  | Bez uwag |
| 12PB41-144 |  | Malowanie i oznakowanie – Sekcja 22 | 6d | 2026-06-24 A | 2026-07-06 A | 12PB41-143 FF+2d | 100% | 2026-06-25 | 2026-07-02 |  | BudMar | 12PB41 | Ruroci¹g | Budowa | Roboty | Agnieszk | Wyspa | PM000 | Zespó³-W | Blok | Normalny | Pakiet | L2 |  | Uzgodnione na koordynacji |
| 12PB41-143 |  | Izolacje – Sekcja 22 | 3d | 2026-07-01 A | 2026-07-07 A | 12PB41-142 | 100% | 2026-06-26 | 2026-06-30 |  | BudMar | 12PB41 | Ruroci¹g | Budowa | Roboty | Agnieszk | Wyspa | PM000 | Zespó³-W | Blok | Wysoki | Pakiet | L2 | Rev A |  |
|  | SEKCJA 23 | **Sekcja 23** |  | 2026-05-19 | 2026-07-16 |  |  |  |  |  |  |  |  |  |  |  |  |  |  |  |  |  |  |  |  |
| 12PB41-147 |  | Prefabrykacja ruroci¹gów – Sekcja 23 | 6.8d | 2026-05-19 A | 2026-05-26 A | 12PB41-012, 12PB41-140 SS+5d | 100% | 2026-05-20 | 2026-05-27 | Kalendarz 6-dniowy | BudMar | 12PB41 | Ruroci¹g | Budowa | Roboty | Agnieszk | Wyspa | PM000 | Zespó³-K | Blok | Krytyczn | Pakiet | L2 |  |  |
| 12PB41-148 |  | Monta¿ ruroci¹gów – Sekcja 23 | 22.7d | 2026-05-28 A | 2026-07-01 A | 12PB41-147, 12PB41-014 SS+3d | 100% | 2026-05-28 | 2026-06-29 |  | BudMar | 12PB41 | Ruroci¹g | Budowa | Roboty | Agnieszk | Wyspa | PM000 | Zespó³-W | Blok | Normalny | Pakiet | L2 |  |  |
| 12PB41-149 |  | Próba ciœnieniowa – Sekcja 23 | 6d | 2026-07-03 A | 2026-07-13 A | 12PB41-148 | 100% | 2026-06-30 | 2026-07-07 |  | BudMar | 12PB41 | Ruroci¹g | Budowa | Roboty | Agnieszk | Wyspa | PM000 | Zespó³-K | Blok | Wysoki | Pakiet | L2 |  |  |
| 12PB41-150 |  | Izolacje – Sekcja 23 | 5d | 2026-07-08 A | 2026-07-14 A | 12PB41-149 | 100% |  |  |  | BudMar | 12PB41 | Ruroci¹g | Budowa | Roboty | Agnieszk | Wyspa | PM000 | Zespó³-K | Blok | Normalny | Pakiet | L2 |  | Bez uwag |
| 12PB41-151 |  | Malowanie i oznakowanie – Sekcja 23 | 6d | 2026-07-08 A | 2026-07-16 A | 12PB41-150 FF+2d | 100% | 2026-07-09 | 2026-07-16 |  | BudMar | 12PB41 | Ruroci¹g | Budowa | Roboty | Agnieszk | Wyspa | PM100 | Zespó³-I | Blok | Wysoki | Pakiet | L2 |  | Do weryfikacji z wykonawc¹ |

| ID | WBS | Activity | Duration | Start | Finish | Predecessors | Complete | Planned start | Planned finish | Calendar | AC_Wykonawca | AC_Obiekt | AC_Dyscyplina | AC_Faza | AC_Zakres | AC_Opiekun | AC_Obszar | AC_PP_PM | AC_Zespol | AC_Blok | AC_Priorytet | AC_Pakiet | AC_Poziom | Uwagi harmonogramisty | Rewizja dokumentu |
| --- | --- | --- | --- | --- | --- | --- | --- | --- | --- | --- | --- | --- | --- | --- | --- | --- | --- | --- | --- | --- | --- | --- | --- | --- | --- |
|  | SEKCJA 24 | **Sekcja 24** |  | 2026-05-27 | 2026-07-13 |  |  |  |  |  |  |  |  |  |  |  |  |  |  |  |  |  |  |  |  |
|  | PODSEKCJA | **Podsekcja 24.A** |  | 2026-05-27 | 2026-07-13 |  |  |  |  |  |  |  |  |  |  |  |  |  |  |  |  |  |  |  |  |
| 12PB41-152 |  | Prefabrykacja ruroci¹gów – Sekcja 24 | 12.7d | 2026-05-27 A | 2026-06-16 A | 12PB41-012, 12PB41-147 SS+5d | 100% | 2026-05-27 | 2026-06-11 | Kalendarz 6-dniowy | BudMar | 12PB41 | Ruroci¹g | Budowa | Roboty | Agnieszk | Wyspa | PM000 | Zespó³-W | Blok | Normalny | Pakiet | L2 |  |  |
| 12PB41-153 |  | Monta¿ ruroci¹gów – Sekcja 24 | 8.6d | 2026-06-16 A | 2026-06-29 A | 12PB41-152, 12PB41-014 SS+3d | 100% | 2026-06-12 | 2026-06-24 |  | BudMar | 12PB41 | Ruroci¹g | Budowa | Roboty | Agnieszk | Wyspa | PM000 | Zespó³-W | Blok | Normalny | Pakiet | L2 |  |  |
| 12PB41-154 |  | Próba ciœnieniowa – Sekcja 24 | 4d | 2026-06-24 A | 2026-07-01 A | 12PB41-153 | 100% | 2026-06-25 | 2026-06-30 |  | BudMar | 12PB41 | Ruroci¹g | Budowa | Roboty | Agnieszk | Wyspa | PM000 | Zespó³-E | Blok | Normalny | Pakiet | L2 |  |  |
| 12PB41-156 |  | Malowanie i oznakowanie – Sekcja 24 | 5d | 2026-07-02 A | 2026-07-13 A | 12PB41-155 FF+2d | 100% | 2026-07-01 | 2026-07-07 |  | BudMar | 12PB41 | Ruroci¹g | Budowa | Roboty | Agnieszk | Wyspa | PM000 | Zespó³-K | Blok | Normalny | Pakiet | L2 | Czeka na dostawê |  |
| 12PB41-155 |  | Izolacje – Sekcja 24 | 3d | 2026-07-03 A | 2026-07-10 A | 12PB41-154 | 100% | 2026-07-01 | 2026-07-03 |  | BudMar | 12PB41 | Ruroci¹g | Budowa | Roboty | Agnieszk | Wyspa | PM000 | Zespó³-K | Blok | Wysoki | Pakiet | L2 |  | Rev C |
|  | SEKCJA 25 | **Sekcja 25** |  | 2026-06-05 | 2026-08-13 |  |  |  |  |  |  |  |  |  |  |  |  |  |  |  |  |  |  |  |  |
| 12PB41-159 |  | Prefabrykacja ruroci¹gów – Sekcja 25 | 12.6d | 2026-06-05 A | 2026-06-25 A | 12PB41-012, 12PB41-152 SS+5d | 100% | 2026-06-03 | 2026-06-18 |  | BudMar | 12PB41 | Ruroci¹g | Budowa | Roboty | Agnieszk | Wyspa | PM000 | Zespó³-K | Blok | Normalny | Pakiet | L2 | Czeka na dostawê |  |
| 12PB41-160 |  | Monta¿ ruroci¹gów – Sekcja 25 | 20d | 2026-06-24 A | 2026-07-22 A | 12PB41-159, 12PB41-014 SS+2d | 100% | 2026-06-19 | 2026-07-16 |  | BudMar | 12PB41 | Ruroci¹g | Budowa | Roboty | Agnieszk | Wyspa | PM000 | Zespó³-K | Blok | Normalny | Pakiet | L2 |  |  |
| 12PB41-161 |  | Próba ciœnieniowa – Sekcja 25 | 5d | 2026-07-20 A | 2026-07-24 A | 12PB41-160 | 100% | 2026-07-17 | 2026-07-23 |  | BudMar | 12PB41 | Ruroci¹g | Budowa | Roboty | Agnieszk | Wyspa | PM000 | Zespó³-W | Blok | Normalny | Pakiet | L2 |  |  |
| 12PB41-162 |  | Izolacje – Sekcja 25 | 10d | 2026-07-24 A | 2026-08-10 A | 12PB41-161 | 100% | 2026-07-24 | 2026-08-06 |  | BudMar | 12PB41 | Ruroci¹g | Budowa | Roboty | Agnieszk | Wyspa | PM000 | Zespó³-W | Blok | Normalny | Pakiet | L2 |  |  |
| 12PB41-163 |  | Malowanie i oznakowanie – Sekcja 25 | 2d | 2026-08-10 A | 2026-08-13 A | 12PB41-162 FF+2d | 100% | 2026-08-07 | 2026-08-10 |  | BudMar | 12PB41 | Ruroci¹g | Budowa | Roboty | Agnieszk | Wyspa | PM000 | Zespó³-K | Blok | Normalny | Pakiet | L2 |  |  |
|  | SEKCJA 26 | **Sekcja 26** |  | 2026-06-09 | 2026-08-20 |  |  |  |  |  |  |  |  |  |  |  |  |  |  |  |  |  |  |  |  |
| 12PB41-164 |  | Prefabrykacja ruroci¹gów – Sekcja 26 | 11.7d | 2026-06-09 A | 2026-06-23 A | 12PB41-012, 12PB41-159 SS+5d | 100% | 2026-06-10 | 2026-06-24 |  | BudMar | 12PB41 | Ruroci¹g | Budowa | Roboty | Agnieszk | Wyspa | PM000 | Zespó³-K | Blok | Normalny | Pakiet | L2 |  | Rev C |
| 12PB41-165 |  | Monta¿ ruroci¹gów – Sekcja 26 | 23.2d | 2026-06-24 A | 2026-07-28 A | 12PB41-164, 12PB41-014 SS+4d | 100% | 2026-06-25 | 2026-07-27 |  | BudMar | 12PB41 | Ruroci¹g | Budowa | Roboty | Agnieszk | Wyspa | PM000 | Zespó³-K | Blok | Normalny | Pakiet | L2 | Do weryfikacji z wykonawc¹ |  |
| 12PB41-166 |  | Próba ciœnieniowa – Sekcja 26 | 5d | 2026-07-29 A | 2026-08-04 A | 12PB41-165 | 100% | 2026-07-28 | 2026-08-03 | Kalendarz 6-dniowy | BudMar | 12PB41 | Ruroci¹g | Budowa | Roboty | Agnieszk | Wyspa | PM000 | Zespó³-K | Blok | Wysoki | Pakiet | L2 | Ryzyko opóŸnienia |  |
| 12PB41-167 |  | Izolacje – Sekcja 26 | 7d | 2026-08-07 A | 2026-08-20 A | 12PB41-166 | 100% | 2026-08-04 | 2026-08-12 |  | BudMar | 12PB41 | Ruroci¹g | Budowa | Roboty | Agnieszk | Wyspa | PM000 | Zespó³-W | Blok | Normalny | Pakiet | L2 |  |  |
| 12PB41-168 |  | Malowanie i oznakowanie – Sekcja 26 | 5d | 2026-08-11 A | 2026-08-17 A | 12PB41-167 FF+2d | 100% | 2026-08-10 | 2026-08-14 |  | BudMar | 12PB41 | Ruroci¹g | Budowa | Roboty | Agnieszk | Wyspa | PM000 | Zespó³-K | Blok | Normalny | Pakiet | L2 |  | Rev B |
|  | SEKCJA 27 | **Sekcja 27** |  | 2026-06-18 | 2026-08-25 |  |  |  |  |  |  |  |  |  |  |  |  |  |  |  |  |  |  |  |  |
|  | PODSEKCJA | **Podsekcja 27.A** |  | 2026-06-18 | 2026-08-25 |  |  |  |  |  |  |  |  |  |  |  |  |  |  |  |  |  |  |  |  |
| 12PB41-171 |  | Prefabrykacja ruroci¹gów – Sekcja 27 | 8.8d | 2026-06-18 A | 2026-07-02 A | 12PB41-012, 12PB41-164 SS+5d | 100% | 2026-06-17 | 2026-06-26 |  | BudMar | 12PB41 | Ruroci¹g | Budowa | Roboty | Agnieszk | Wyspa | PM000 | Zespó³-K | Blok | Normalny | Pakiet | L2 |  | Rev C |
| 12PB41-172 |  | Monta¿ ruroci¹gów – Sekcja 27 | 23.5d | 2026-07-01 A | 2026-08-05 A | 12PB41-171, 12PB41-014 SS+4d | 100% | 2026-06-29 | 2026-07-30 |  | BudMar | 12PB41 | Ruroci¹g | Budowa | Roboty | Agnieszk | Wyspa | PM000 | Zespó³-K | Blok | Normalny | Pakiet | L2 | Ryzyko opóŸnienia |  |
| 12PB41-173 |  | Próba ciœnieniowa – Sekcja 27 | 2d | 2026-08-04 A | 2026-08-05 A | 12PB41-172 | 100% | 2026-07-31 | 2026-08-03 |  | BudMar | 12PB41 | Ruroci¹g | Budowa | Roboty | Agnieszk | Wyspa | PM000 | Zespó³-W | Blok | Normalny | Pakiet | L2 | Uzgodnione na koordynacji |  |
| 12PB41-174 |  | Izolacje – Sekcja 27 | 10d | 2026-08-07 A | 2026-08-24 A | 12PB41-173 | 100% | 2026-08-04 | 2026-08-17 |  | BudMar | 12PB41 | Ruroci¹g | Budowa | Roboty | Agnieszk | Wyspa | PM000 | Zespó³-K | Blok | Normalny | Pakiet | L2 | Bez uwag | Rev C |
| 12PB41-175 |  | Malowanie i oznakowanie – Sekcja 27 | 2d | 2026-08-19 A | 2026-08-25 A | 12PB41-174 FF+2d | 100% | 2026-08-18 | 2026-08-19 |  | BudMar | 12PB41 | Ruroci¹g | Budowa | Roboty | Agnieszk | Wyspa | PM000 | Zespó³-K | Blok | Normalny | Pakiet | L2 |  |  |

| ID | WBS | Activity | Type | Duration | Start | Finish | Predecessors | Complete | Remaining | Actual finish | Planned start | Planned finish | Total float | Free float | AC_Wykonawca | AC_Obiekt | AC_Dyscyplina | AC_Faza | AC_Zakres | AC_Opiekun | AC_Obszar | AC_PP_PM | AC_Zespol | AC_Blok | AC_Priorytet | AC_Pakiet | AC_Poziom | Rewizja dokumentu | Uwagi harmonogramisty |
| --- | --- | --- | --- | --- | --- | --- | --- | --- | --- | --- | --- | --- | --- | --- | --- | --- | --- | --- | --- | --- | --- | --- | --- | --- | --- | --- | --- | --- | --- |
|  | SEKCJA 28 | **Sekcja 28** |  |  | 2026-06-24 | 2026-08-14 |  |  |  |  |  |  |  |  |  |  |  |  |  |  |  |  |  |  |  |  |  |  |  |
| 12PB41-176 |  | Prefabrykacja ruroci¹gów – Sekcja 28 |  | 3.5d | 2026-06-24 A | 2026-06-26 A | 12PB41-012, 12PB41-171 SS+5d | 100% |  |  |  |  |  |  | BudMar | 12PB41 | Ruroci¹g | Budowa | Roboty | Agnieszk | Wyspa | PM000 | Zespó³-W | Blok | Niski | Pakiet | L2 |  |  |
| 12PB41-177 |  | Monta¿ ruroci¹gów – Sekcja 28 |  | 20.3d | 2026-06-30 A | 2026-07-28 A | 12PB41-176, 12PB41-014 SS | 100% |  |  | 2026-06-29 | 2026-07-24 |  |  | BudMar | 12PB41 | Ruroci¹g | Budowa | Roboty | Agnieszk | Wyspa | PM000 | Zespó³-W | Blok | Normalny | Pakiet | L2 | Rev A |  |
| 12PB41-178 |  | Próba ciœnieniowa – Sekcja 28 |  | 4d | 2026-07-29 A | 2026-08-05 A | 12PB41-177 | 100% |  |  | 2026-07-27 | 2026-07-30 |  |  | BudMar | 12PB41 | Ruroci¹g | Budowa | Roboty | Agnieszk | Wyspa | PM000 | Zespó³-K | Blok | Niski | Pakiet | L2 |  |  |
| 12PB41-179 |  | Izolacje – Sekcja 28 |  | 7d | 2026-08-04 A | 2026-08-12 A | 12PB41-178 | 100% |  |  | 2026-07-31 | 2026-08-10 |  |  | BudMar | 12PB41 | Ruroci¹g | Budowa | Roboty | Agnieszk | Wyspa | PM000 | Zespó³-I | Blok | Niski | Pakiet | L2 |  |  |
| 12PB41-180 |  | Malowanie i oznakowanie – Sekcja 28 |  | 2d | 2026-08-12 A | 2026-08-14 A | 12PB41-179 FF+2d | 100% |  |  | 2026-08-11 | 2026-08-12 |  |  | BudMar | 12PB41 | Ruroci¹g | Budowa | Roboty | Agnieszk | Wyspa | PM000 | Zespó³-K | Blok | Normalny | Pakiet | L2 |  | Ryzyko opóŸnienia |
|  | PROJ | **Projektowanie** |  |  | 2025-02-13 | 2025-06-17 |  |  |  |  |  |  |  |  |  |  |  |  |  |  |  |  |  |  |  |  |  |  |  |
|  | DOKUMENTAC | **Dokumentacja** |  |  | 2025-02-13 | 2025-06-17 |  |  |  |  |  |  |  |  |  |  |  |  |  |  |  |  |  |  |  |  |  |  |  |
| 12PB41-001 |  | Projekt wykonawczy – Skraplacz |  | 53d | 2025-02-13 A | 2025-04-30 A |  | 100% |  |  | 2025-02-10 | 2025-04-23 |  |  | BudMar | 12PB41 | Budowlan | Projekto | Projekt | Agnieszk | Wyspa | PM000 | Zespó³-K | Blok | Krytyczn | Pakiet | L2 |  | Do weryfikacji z wykonawc¹ |
| 12PB41-002 |  | Uzgodnienie dokumentacji z Inwestorem |  | 23d | 2025-04-23 A | 2025-05-28 A | 12PB41-001 | 100% |  |  | 2025-04-24 | 2025-05-26 |  |  | BudMar | 12PB41 | Budowlan | Projekto | Projekt | Agnieszk | Wyspa | PM000 | Zespó³-K | Blok | Wysoki | Pakiet | L2 |  |  |
| 12PB41-003 |  | Zatwierdzenie dokumentacji do realizacji |  | 12d | 2025-05-29 A | 2025-06-17 A | 12PB41-002 | 100% |  |  | 2025-05-27 | 2025-06-11 |  |  | BudMar | 12PB41 | Budowlan | Projekto | Projekt | Agnieszk | Wyspa | PM000 | Zespó³-W | Blok | Krytyczn | Pakiet | L2 |  |  |
| 12PB41-004 |  | KM: Dokumentacja zatwierdzona – Skraplacz | milestone | 0d | 2025-06-17 A | 2025-06-17 | 12PB41-003 | 100% |  | 2025-06-16 | 2025-06-12 | 2025-06-12 |  |  | BudMar | 12PB41 | Budowlan | Projekto | Kamieñ | Agnieszk | Wyspa | PM000 | Zespó³-W | Blok | Normalny | Pakiet | L1 |  | Uzgodnione na koordynacji |
|  | ROZR | **Rozruch** |  |  | 2026-08-25 | 2026-10-28 |  |  |  |  |  |  |  |  |  |  |  |  |  |  |  |  |  |  |  |  |  |  |  |
|  | ROZRUCH | **Rozruch** |  |  | 2026-08-25 | 2026-10-28 |  |  |  |  |  |  |  |  |  |  |  |  |  |  |  |  |  |  |  |  |  |  |  |
| 12PB41-185 |  | Przegl¹d gotowoœci do rozruchu |  | 5d | 2026-08-25 A | 2026-09-01 A | 12PB41-184, 12PB41-019, 12PB41-024, 12PB41-026 | 100% |  |  | 2026-08-20 | 2026-08-26 |  |  | BudMar | 12PB41 | Rozruch | Rozruch | Rozruch | Agnieszk | Wyspa | PM000 | Zespó³-K | Blok | Wysoki | Pakiet | L2 | Rev C | Ryzyko opóŸnienia |
| 12PB41-186 |  | Rozruch na zimno |  | 7d | 2026-08-31 A | 2026-09-11 A | 12PB41-185 | 100% |  |  | 2026-08-27 | 2026-09-04 |  |  | BudMar | 12PB41 | Rozruch | Rozruch | Rozruch | Agnieszk | Wyspa | PM000 | Zespó³-W | Blok | Wysoki | Pakiet | L2 |  |  |
| 12PB41-187 |  | Rozruch na gor¹co / próby ruchowe |  | 25d | 2026-09-07 A | 2026-10-27 | 12PB41-186 | 37% | 15.8d |  | 2026-09-07 | 2026-10-09 | 390.3d | 0d | BudMar | 12PB41 | Rozruch | Rozruch | Rozruch | Agnieszk | Wyspa | PM000 | Zespó³-W | Blok | Normalny | Pakiet | L2 |  |  |
| 12PB41-188 |  | KM: Odbiór koñcowy – Skraplacz | milestone | 0d | 2026-10-28 | 2026-10-28 | 12PB41-187 |  |  |  | 2026-10-12 | 2026-10-12 | 377.8d | 0d | BudMar | 12PB41 | Rozruch | Rozruch | Kamieñ | Agnieszk | Wyspa | PM000 | Zespó³-W | Blok | Normalny | Pakiet | L1 | Rev A |  |
|  | ZAKU | **Zakupy** |  |  | 2025-03-11 | 2026-03-24 |  |  |  |  |  |  |  |  |  |  |  |  |  |  |  |  |  |  |  |  |  |  |  |
|  | DOSTAWY | **Dostawy** |  |  | 2025-10-27 | 2026-03-24 |  |  |  |  |  |  |  |  |  |  |  |  |  |  |  |  |  |  |  |  |  |  |  |
| 12PB41-008 |  | Produkcja u dostawcy |  | 83d | 2025-10-27 A | 2026-02-23 A | 12PB41-007 | 100% |  |  | 2025-10-28 | 2026-02-19 |  |  | BudMar | 12PB41 | Mechanic | Zakupy | Dostawa | Agnieszk | Wyspa | PM000 | Zespó³-W | Blok | Normalny | Pakiet | L2 |  |  |
| 12PB41-009 |  | Testy FAT |  | 4d | 2026-02-25 A | 2026-03-03 A | 12PB41-008 | 100% |  |  | 2026-02-20 | 2026-02-25 |  |  | BudMar | 12PB41 | Mechanic | Zakupy | Dostawa | Agnieszk | Wyspa | PM000 | Zespó³-W | Blok | Normalny | Pakiet | L2 |  |  |
| 12PB41-010 |  | Transport i dostawa na plac budowy |  | 17d | 2026-03-02 A | 2026-03-24 A | 12PB41-009 | 100% |  |  | 2026-02-26 | 2026-03-20 |  |  | BudMar | 12PB41 | Mechanic | Zakupy | Dostawa | Agnieszk | Wyspa | PM000 | Zespó³-K | Blok | Normalny | Pakiet | L2 |  |  |
| 12PB41-011 |  | KM: Dostawa na budowê – Skraplacz | milestone | 0d | 2026-03-20 A | 2026-03-20 | 12PB41-010 | 100% |  | 2026-03-19 | 2026-03-23 | 2026-03-23 |  |  | BudMar | 12PB41 | Mechanic | Zakupy | Kamieñ | Agnieszk | Wyspa | PM000 | Zespó³-K | Blok | Wysoki | Pakiet | L1 |  |  |

| ID | WBS | Activity | Duration | Start | Finish | Predecessors | Complete | Planned start | Planned finish | Calendar | Rewizja dokumentu | AC_Wykonawca | AC_Obiekt | AC_Dyscyplina | AC_Faza | AC_Zakres | AC_Opiekun | AC_Obszar | AC_PP_PM | AC_Zespol | AC_Blok | AC_Priorytet | AC_Pakiet | AC_Poziom | Uwagi harmonogramisty |
| --- | --- | --- | --- | --- | --- | --- | --- | --- | --- | --- | --- | --- | --- | --- | --- | --- | --- | --- | --- | --- | --- | --- | --- | --- | --- |
|  | ZAMÓWIENIA | **Zamówienia** |  | 2025-03-11 | 2025-10-29 |  |  |  |  |  |  |  |  |  |  |  |  |  |  |  |  |  |  |  |  |
| 12PB41-005 |  | Zapytanie ofertowe | 24d | 2025-03-11 A | 2025-04-14 A | 12PB41-001 SS+20d | 100% | 2025-03-10 | 2025-04-10 | Kalendarz 6-dniowy | Rev A | BudMar | 12PB41 | Mechanic | Zakupy | Dostawa | Agnieszk | Wyspa | PM000 | Zespó³-W | Blok | Normalny | Pakiet | L2 |  |
| 12PB41-006 |  | Analiza i wybór ofert | 14d | 2025-04-15 A | 2025-05-06 A | 12PB41-005 | 100% | 2025-04-11 | 2025-04-30 |  |  | BudMar | 12PB41 | Mechanic | Zakupy | Dostawa | Agnieszk | Wyspa | PM000 | Zespó³-K | Blok | Normalny | Pakiet | L2 |  |
| 12PB41-007 |  | Zawarcie umowy / zamówienie | 8d | 2025-10-17 A | 2025-10-29 A | 12PB41-006, 12PB41-004 SS, 24PY38-004 SS+8d | 100% | 2025-10-16 | 2025-10-27 |  |  | BudMar | 12PB41 | Mechanic | Zakupy | Dostawa | Agnieszk | Wyspa | PM000 | Zespó³-K | Blok | Normalny | Pakiet | L1 |  |
|  | 14NX42 | **14NX42 – Uk³ad paliwa gazowego** |  | 2025-04-04 | 2026-09-09 |  |  |  |  |  |  |  |  |  |  |  |  |  |  |  |  |  |  |  |  |
|  | BUDO | **Budowa** |  | 2025-09-17 | 2026-07-27 |  |  |  |  |  |  |  |  |  |  |  |  |  |  |  |  |  |  |  |  |
|  | AKPIA | **AKPiA** |  | 2026-04-10 | 2026-05-12 |  |  |  |  |  |  |  |  |  |  |  |  |  |  |  |  |  |  |  |  |
| 14NX42-176 |  | Monta¿ uk³adów AKPiA | 21d | 2026-04-10 A | 2026-05-12 A | 14NX42-014 SS+5d | 100% | 2026-04-13 | 2026-05-11 |  | Rev A | Automaty | 14NX42 | AKPiA | Budowa | Roboty | Micha³ | Wyspa | PM000 | Zespó³-W | Wspólne | Normalny | Pakiet | L2 |  |
|  | ELEKTRYKA | **Elektryka** |  | 2026-04-16 | 2026-05-25 |  |  |  |  |  |  |  |  |  |  |  |  |  |  |  |  |  |  |  |  |
| 14NX42-170 |  | Pod³¹czenia i pomiary – trasa 26 | 7d | 2026-04-16 A | 2026-04-24 A | 14NX42-169 FF | 100% | 2026-04-15 | 2026-04-23 |  |  | Automaty | 14NX42 | Elektryc | Budowa | Roboty | Micha³ | Wyspa | PM000 | Zespó³-K | Wspólne | Krytyczn | Pakiet | L2 |  |
| 14NX42-037 |  | Uk³adanie kabli – trasa 04 | 15d | 2026-04-17 A | 2026-05-12 A | 14NX42-014 SS+10d | 100% | 2026-04-20 | 2026-05-08 |  |  | Automaty | 14NX42 | Elektryc | Budowa | Roboty | Micha³ | Wyspa | PM000 | Zespó³-W | Wspólne | Normalny | Pakiet | L2 |  |
| 14NX42-061 |  | Uk³adanie kabli – trasa 08 | 17d | 2026-04-17 A | 2026-05-14 A | 14NX42-014 SS+10d | 100% | 2026-04-20 | 2026-05-12 |  |  | Automaty | 14NX42 | Elektryc | Budowa | Roboty | Micha³ | Wyspa | PM000 | Zespó³-K | Wspólne | Wysoki | Pakiet | L2 | Bez uwag |
| 14NX42-085 |  | Uk³adanie kabli – trasa 12 | 13d | 2026-04-17 A | 2026-05-07 A | 14NX42-014 SS+10d | 100% | 2026-04-20 | 2026-05-06 |  |  | Automaty | 14NX42 | Elektryc | Budowa | Roboty | Micha³ | Wyspa | PM000 | Zespó³-I | Wspólne | Niski | Pakiet | L2 |  |
| 14NX42-097 |  | Uk³adanie kabli – trasa 14 | 19d | 2026-04-17 A | 2026-05-15 A | 14NX42-014 SS+10d | 100% | 2026-04-20 | 2026-05-14 |  |  | Automaty | 14NX42 | Elektryc | Budowa | Roboty | Micha³ | Wyspa | PM000 | Zespó³-K | Wspólne | Krytyczn | Pakiet | L2 | Ryzyko opóŸnienia |
| 14NX42-049 |  | Uk³adanie kabli – trasa 06 | 11d | 2026-04-20 A | 2026-05-06 A | 14NX42-014 SS+10d | 100% | 2026-04-20 | 2026-05-04 |  |  | Automaty | 14NX42 | Elektryc | Budowa | Roboty | Micha³ | Wyspa | PM000 | Zespó³-W | Wspólne | Krytyczn | Pakiet | L2 |  |
| 14NX42-146 |  | Pod³¹czenia i pomiary – trasa 22 | 6d | 2026-04-20 A | 2026-04-28 A | 14NX42-145 FF | 100% | 2026-04-17 | 2026-04-24 |  |  | Automaty | 14NX42 | Elektryc | Budowa | Roboty | Micha³ | Wyspa | PM200 | Zespó³-I | Wspólne | Normalny | Pakiet | L2 | Czeka na dostawê |
| 14NX42-073 |  | Uk³adanie kabli – trasa 10 | 8d | 2026-04-21 A | 2026-04-30 A | 14NX42-014 SS+10d | 100% | 2026-04-20 | 2026-04-29 |  |  | Automaty | 14NX42 | Elektryc | Budowa | Roboty | Micha³ | Wyspa | PM000 | Zespó³-W | Wspólne | Normalny | Pakiet | L2 |  |
| 14NX42-133 |  | Uk³adanie kabli – trasa 20 | 15d | 2026-04-21 A | 2026-05-13 A | 14NX42-014 SS+10d | 100% | 2026-04-20 | 2026-05-08 |  |  | Automaty | 14NX42 | Elektryc | Budowa | Roboty | Micha³ | Wyspa | PM300 | Zespó³-I | Wspólne | Wysoki | Pakiet | L2 |  |
| 14NX42-121 |  | Uk³adanie kabli – trasa 18 | 16d | 2026-04-22 A | 2026-05-14 A | 14NX42-014 SS+10d | 100% | 2026-04-20 | 2026-05-11 |  |  | Automaty | 14NX42 | Elektryc | Budowa | Roboty | Micha³ | Wyspa | PM000 | Zespó³-W | Wspólne | Normalny | Pakiet | L2 |  |
| 14NX42-025 |  | Uk³adanie kabli – trasa 02 | 11d | 2026-04-23 A | 2026-05-11 A | 14NX42-014 SS+10d | 100% | 2026-04-20 | 2026-05-04 |  |  | Automaty | 14NX42 | Elektryc | Budowa | Roboty | Micha³ | Wyspa | PM000 | Zespó³-W | Wspólne | Normalny | Pakiet | L2 | Bez uwag |
| 14NX42-074 |  | Pod³¹czenia i pomiary – trasa 10 | 5d | 2026-04-23 A | 2026-05-01 A | 14NX42-073 FF | 100% | 2026-04-23 | 2026-04-29 |  |  | Automaty | 14NX42 | Elektryc | Budowa | Roboty | Micha³ | Wyspa | PM000 | Zespó³-W | Wspólne | Normalny | Pakiet | L2 | Czeka na dostawê |
| 14NX42-109 |  | Uk³adanie kabli – trasa 16 | 20d | 2026-04-23 A | 2026-05-25 A | 14NX42-014 SS+10d | 100% | 2026-04-20 | 2026-05-15 |  | Rev C | Automaty | 14NX42 | Elektryc | Budowa | Roboty | Micha³ | Wyspa | PM000 | Zespó³-K | Wspólne | Normalny | Pakiet | L2 |  |
| 14NX42-145 |  | Uk³adanie kabli – trasa 22 | 5d | 2026-04-23 A | 2026-04-30 A | 14NX42-014 SS+10d | 100% | 2026-04-20 | 2026-04-24 |  |  | Automaty | 14NX42 | Elektryc | Budowa | Roboty | Micha³ | Wyspa | PM000 | Zespó³-W | Wspólne | Krytyczn | Pakiet | L2 | Uzgodnione na koordynacji |
| 14NX42-157 |  | Uk³adanie kabli – trasa 24 | 20d | 2026-04-23 A | 2026-05-22 A | 14NX42-014 SS+10d | 100% | 2026-04-20 | 2026-05-15 |  |  | Automaty | 14NX42 | Elektryc | Budowa | Roboty | Micha³ | Wyspa | PM000 | Zespó³-W | Wspólne | Normalny | Pakiet | L2 |  |
| 14NX42-169 |  | Uk³adanie kabli – trasa 26 | 4d | 2026-04-23 A | 2026-04-28 A | 14NX42-014 SS+10d | 100% | 2026-04-20 | 2026-04-23 |  |  | Automaty | 14NX42 | Elektryc | Budowa | Roboty | Micha³ | Wyspa | PM000 | Zespó³-W | Wspólne | Wysoki | Pakiet | L2 |  |
| 14NX42-086 |  | Pod³¹czenia i pomiary – trasa 12 | 8d | 2026-04-27 A | 2026-05-07 A | 14NX42-085 FF | 100% | 2026-04-27 | 2026-05-06 |  |  | Automaty | 14NX42 | Elektryc | Budowa | Roboty | Micha³ | Wyspa | PM000 | Zespó³-K | Wspólne | Normalny | Pakiet | L2 |  |
| 14NX42-122 |  | Pod³¹czenia i pomiary – trasa 18 | 10d | 2026-04-29 A | 2026-05-15 A | 14NX42-121 FF | 100% | 2026-04-28 | 2026-05-11 |  |  | Automaty | 14NX42 | Elektryc | Budowa | Roboty | Micha³ | Wyspa | PM000 | Zespó³-K | Wspólne | Normalny | Pakiet | L2 | Uzgodnione na koordynacji |
| 14NX42-026 |  | Pod³¹czenia i pomiary – trasa 02 | 4d | 2026-04-30 A | 2026-05-08 A | 14NX42-025 FF | 100% | 2026-04-29 | 2026-05-04 |  |  | Automaty | 14NX42 | Elektryc | Budowa | Roboty | Micha³ | Wyspa | PM000 | Zespó³-K | Wspólne | Niski | Pakiet | L2 |  |
| 14NX42-050 |  | Pod³¹czenia i pomiary – trasa 06 | 3d | 2026-04-30 A | 2026-05-04 A | 14NX42-049 FF | 100% |  |  |  |  | Automaty | 14NX42 | Elektryc | Budowa | Roboty | Micha³ | Wyspa | PM000 | Zespó³-W | Wspólne | Normalny | Pakiet | L2 |  |
| 14NX42-134 |  | Pod³¹czenia i pomiary – trasa 20 | 4d | 2026-05-04 A | 2026-05-08 A | 14NX42-133 FF | 100% | 2026-05-05 | 2026-05-08 |  |  | Automaty | 14NX42 | Elektryc | Budowa | Roboty | Micha³ | Wyspa | PM000 | Zespó³-K | Wspólne | Normalny | Pakiet | L2 |  |
| 14NX42-062 |  | Pod³¹czenia i pomiary – trasa 08 | 9d | 2026-05-05 A | 2026-05-15 A | 14NX42-061 FF | 100% | 2026-04-30 | 2026-05-12 |  | Rev A | Automaty | 14NX42 | Elektryc | Budowa | Roboty | Micha³ | Wyspa | PM000 | Zespó³-K | Wspólne | Normalny | Pakiet | L2 |  |
| 14NX42-098 |  | Pod³¹czenia i pomiary – trasa 14 | 7d | 2026-05-05 A | 2026-05-13 A | 14NX42-097 FF | 100% | 2026-05-06 | 2026-05-14 |  |  | Automaty | 14NX42 | Elektryc | Budowa | Roboty | Micha³ | Wyspa | PM000 | Zespó³-W | Wspólne | Normalny | Pakiet | L2 |  |
| 14NX42-110 |  | Pod³¹czenia i pomiary – trasa 16 | 9d | 2026-05-08 A | 2026-05-22 A | 14NX42-109 FF | 100% | 2026-05-05 | 2026-05-15 |  |  | Automaty | 14NX42 | Elektryc | Budowa | Roboty | Micha³ | Wyspa | PM200 | Zespó³-E | Wspólne | Normalny | Pakiet | L2 |  |
| 14NX42-038 |  | Pod³¹czenia i pomiary – trasa 04 | 3d | 2026-05-11 A | 2026-05-13 A | 14NX42-037 FF | 100% | 2026-05-06 | 2026-05-08 |  |  | Automaty | 14NX42 | Elektryc | Budowa | Roboty | Micha³ | Wyspa | PM300 | Zespó³-E | Wspólne | Normalny | Pakiet | L2 |  |
| 14NX42-158 |  | Pod³¹czenia i pomiary – trasa 24 | 4d | 2026-05-12 A | 2026-05-18 A | 14NX42-157 FF | 100% | 2026-05-12 | 2026-05-15 |  |  | Automaty | 14NX42 | Elektryc | Budowa | Roboty | Micha³ | Wyspa | PM000 | Zespó³-K | Wspólne | Normalny | Pakiet | L2 | Czeka na dostawê |

| ID | WBS | Activity | Type | Duration | Start | Finish | Predecessors | Complete | Actual finish | Planned start | Planned finish | Calendar | Rewizja dokumentu | AC_Wykonawca | AC_Obiekt | AC_Dyscyplina | AC_Faza | AC_Zakres | AC_Opiekun | AC_Obszar | AC_PP_PM | AC_Zespol | AC_Blok | AC_Priorytet | AC_Pakiet | AC_Poziom | Uwagi harmonogramisty |
| --- | --- | --- | --- | --- | --- | --- | --- | --- | --- | --- | --- | --- | --- | --- | --- | --- | --- | --- | --- | --- | --- | --- | --- | --- | --- | --- | --- |
|  | MONTA¯ | **Monta¿** |  |  | 2025-11-26 | 2026-07-27 |  |  |  |  |  |  |  |  |  |  |  |  |  |  |  |  |  |  |  |  |  |
| 14NX42-013 |  | Monta¿ konstrukcji stalowych |  | 40d | 2025-11-26 A | 2026-01-23 A | 14NX42-012 | 100% |  | 2025-11-27 | 2026-01-21 |  | Rev A | Automaty | 14NX42 | Mechanic | Budowa | Roboty | Micha³ | Wyspa | PM000 | Zespó³-E | Wspólne | Normalny | Pakiet | L2 |  |
| 14NX42-014 |  | Monta¿ urz¹dzeñ g³ównych |  | 68d | 2026-04-08 A | 2026-07-15 A | 14NX42-013, 14NX42-011 | 100% |  | 2026-04-06 | 2026-07-08 |  |  | Automaty | 14NX42 | Mechanic | Budowa | Roboty | Micha³ | Wyspa | PM000 | Zespó³-W | Wspólne | Normalny | Pakiet | L2 |  |
| 14NX42-177 |  | KM: Zakoñczenie monta¿u – Uk³ad paliwa gazowego | milestone | 0d | 2026-07-27 A | 2026-07-27 | 14NX42-168, 14NX42-170, 14NX42-175, 14NX42-176, 14NX42-014 | 100% | 2026-07-24 | 2026-07-24 | 2026-07-24 |  | Rev C | Automaty | 14NX42 | Mechanic | Budowa | Kamieñ | Micha³ | Wyspa | PM000 | Zespó³-W | Wspólne | Normalny | Pakiet | L2 |  |
|  | ROBOTY BUD | **Roboty budowlane** |  |  | 2025-09-17 | 2025-12-01 |  |  |  |  |  |  |  |  |  |  |  |  |  |  |  |  |  |  |  |  |  |
| 14NX42-012 |  | Fundamenty i roboty ziemne |  | 51d | 2025-09-17 A | 2025-12-01 A | 14NX42-007 FS+15d | 100% |  | 2025-09-17 | 2025-11-26 | Kalendarz 6-dniowy |  | Automaty | 14NX42 | Budowlan | Budowa | Roboty | Micha³ | Wyspa | PM000 | Zespó³-W | Wspólne | Normalny | Pakiet | L2 |  |
|  | RUROCI¥GI | **Ruroci¹gi** |  |  | 2025-11-26 | 2026-07-27 |  |  |  |  |  |  |  |  |  |  |  |  |  |  |  |  |  |  |  |  |  |
|  | SEKCJA 01 | **Sekcja 01** |  |  | 2025-11-26 | 2026-05-08 |  |  |  |  |  |  |  |  |  |  |  |  |  |  |  |  |  |  |  |  |  |
| 14NX42-015 |  | Prefabrykacja ruroci¹gów – Sekcja 01 |  | 6.6d | 2025-11-26 A | 2025-12-04 A | 14NX42-012 | 100% |  | 2025-11-27 | 2025-12-04 |  |  | Automaty | 14NX42 | Ruroci¹g | Budowa | Roboty | Micha³ | Wyspa | PM000 | Zespó³-W | Wspólne | Normalny | Pakiet | L2 |  |
| 14NX42-016 |  | Monta¿ ruroci¹gów – Sekcja 01 |  | 5.3d | 2026-04-14 A | 2026-04-20 A | 14NX42-015, 14NX42-014 SS+5d | 100% |  | 2026-04-13 | 2026-04-17 |  |  | Automaty | 14NX42 | Ruroci¹g | Budowa | Roboty | Micha³ | Wyspa | PM000 | Zespó³-K | Wspólne | Normalny | Pakiet | L2 |  |
| 14NX42-017 |  | Próba ciœnieniowa – Sekcja 01 |  | 5d | 2026-04-22 A | 2026-05-01 A | 14NX42-016 | 100% |  | 2026-04-20 | 2026-04-24 |  | Rev C | Automaty | 14NX42 | Ruroci¹g | Budowa | Roboty | Micha³ | Wyspa | PM000 | Zespó³-K | Wspólne | Wysoki | Pakiet | L2 |  |
| 14NX42-019 |  | Malowanie i oznakowanie – Sekcja 01 |  | 8d | 2026-04-27 A | 2026-05-06 A | 14NX42-018 FF+2d | 100% |  |  |  |  |  | Automaty | 14NX42 | Ruroci¹g | Budowa | Roboty | Micha³ | Wyspa | PM000 | Zespó³-K | Wspólne | Normalny | Pakiet | L2 |  |
| 14NX42-018 |  | Izolacje – Sekcja 01 |  | 6d | 2026-04-28 A | 2026-05-08 A | 14NX42-017 | 100% |  | 2026-04-27 | 2026-05-04 |  |  | Automaty | 14NX42 | Ruroci¹g | Budowa | Roboty | Micha³ | Wyspa | PM000 | Zespó³-K | Wspólne | Wysoki | Pakiet | L2 |  |
|  | SEKCJA 02 | **Sekcja 02** |  |  | 2025-12-08 | 2026-06-08 |  |  |  |  |  |  |  |  |  |  |  |  |  |  |  |  |  |  |  |  |  |
| 14NX42-020 |  | Prefabrykacja ruroci¹gów – Sekcja 02 |  | 6.1d | 2025-12-08 A | 2025-12-18 A | 14NX42-012, 14NX42-015 SS+5d | 100% |  | 2025-12-04 | 2025-12-11 |  |  | Automaty | 14NX42 | Ruroci¹g | Budowa | Roboty | Micha³ | Wyspa | PM000 | Zespó³-E | Wspólne | Niski | Pakiet | L2 |  |
| 14NX42-021 |  | Monta¿ ruroci¹gów – Sekcja 02 |  | 20.2d | 2026-04-21 A | 2026-05-21 A | 14NX42-020, 14NX42-014 SS+9d | 100% |  | 2026-04-17 | 2026-05-14 |  |  | Automaty | 14NX42 | Ruroci¹g | Budowa | Roboty | Micha³ | Wyspa | PM000 | Zespó³-W | Wspólne | Normalny | Pakiet | L2 | Uzgodnione na koordynacji |
| 14NX42-022 |  | Próba ciœnieniowa – Sekcja 02 |  | 5d | 2026-05-14 A | 2026-05-25 A | 14NX42-021 | 100% |  | 2026-05-15 | 2026-05-21 |  |  | Automaty | 14NX42 | Ruroci¹g | Budowa | Roboty | Micha³ | Wyspa | PM100 | Zespó³-E | Wspólne | Normalny | Pakiet | L2 |  |
| 14NX42-023 |  | Izolacje – Sekcja 02 |  | 4d | 2026-05-22 A | 2026-05-27 A | 14NX42-022 | 100% |  |  |  |  |  | Automaty | 14NX42 | Ruroci¹g | Budowa | Roboty | Micha³ | Wyspa | PM000 | Zespó³-K | Wspólne | Krytyczn | Pakiet | L2 |  |
| 14NX42-024 |  | Malowanie i oznakowanie – Sekcja 02 |  | 5d | 2026-05-28 A | 2026-06-08 A | 14NX42-023 FF+2d | 100% |  | 2026-05-25 | 2026-05-29 |  |  | Automaty | 14NX42 | Ruroci¹g | Budowa | Roboty | Micha³ | Wyspa | PM000 | Zespó³-K | Wspólne | Krytyczn | Pakiet | L2 | Ryzyko opóŸnienia |
|  | SEKCJA 03 | **Sekcja 03** |  |  | 2025-12-16 | 2026-05-26 |  |  |  |  |  |  |  |  |  |  |  |  |  |  |  |  |  |  |  |  |  |
|  | PODSEKCJA | **Podsekcja 03.A** |  |  | 2025-12-16 | 2026-05-26 |  |  |  |  |  |  |  |  |  |  |  |  |  |  |  |  |  |  |  |  |  |
| 14NX42-027 |  | Prefabrykacja ruroci¹gów – Sekcja 03 |  | 4.8d | 2025-12-16 A | 2025-12-23 A | 14NX42-012, 14NX42-020 SS+5d | 100% |  | 2025-12-11 | 2025-12-16 |  |  | Automaty | 14NX42 | Ruroci¹g | Budowa | Roboty | Micha³ | Wyspa | PM000 | Zespó³-W | Wspólne | Normalny | Pakiet | L2 | Do weryfikacji z wykonawc¹ |
| 14NX42-028 |  | Monta¿ ruroci¹gów – Sekcja 03 |  | 13d | 2026-04-13 A | 2026-05-01 A | 14NX42-027, 14NX42-014 SS+2d | 100% |  | 2026-04-08 | 2026-04-24 |  | Rev C | Automaty | 14NX42 | Ruroci¹g | Budowa | Roboty | Micha³ | Wyspa | PM000 | Zespó³-K | Wspólne | Normalny | Pakiet | L2 | Ryzyko opóŸnienia |
| 14NX42-029 |  | Próba ciœnieniowa – Sekcja 03 |  | 4d | 2026-04-29 A | 2026-05-04 A | 14NX42-028 | 100% |  | 2026-04-27 | 2026-04-30 |  |  | Automaty | 14NX42 | Ruroci¹g | Budowa | Roboty | Micha³ | Wyspa | PM000 | Zespó³-K | Wspólne | Normalny | Pakiet | L2 | Ryzyko opóŸnienia |
| 14NX42-030 |  | Izolacje – Sekcja 03 |  | 12d | 2026-05-01 A | 2026-05-19 A | 14NX42-029 | 100% |  | 2026-05-01 | 2026-05-18 |  |  | Automaty | 14NX42 | Ruroci¹g | Budowa | Roboty | Micha³ | Wyspa | PM000 | Zespó³-W | Wspólne | Normalny | Pakiet | L2 |  |
| 14NX42-031 |  | Malowanie i oznakowanie – Sekcja 03 |  | 7d | 2026-05-13 A | 2026-05-26 A | 14NX42-030 FF+2d | 100% |  | 2026-05-12 | 2026-05-20 |  |  | Automaty | 14NX42 | Ruroci¹g | Budowa | Roboty | Micha³ | Wyspa | PM000 | Zespó³-W | Wspólne | Wysoki | Pakiet | L2 |  |

| ID | WBS | Activity | Duration | Start | Finish | Predecessors | Complete | Planned start | Planned finish | Calendar | Rewizja dokumentu | AC_Wykonawca | AC_Obiekt | AC_Dyscyplina | AC_Faza | AC_Zakres | AC_Opiekun | AC_Obszar | AC_PP_PM | AC_Zespol | AC_Blok | AC_Priorytet | AC_Pakiet | AC_Poziom | Uwagi harmonogramisty |
| --- | --- | --- | --- | --- | --- | --- | --- | --- | --- | --- | --- | --- | --- | --- | --- | --- | --- | --- | --- | --- | --- | --- | --- | --- | --- |
|  | SEKCJA 04 | **Sekcja 04** |  | 2025-12-19 | 2026-06-02 |  |  |  |  |  |  |  |  |  |  |  |  |  |  |  |  |  |  |  |  |
| 14NX42-032 |  | Prefabrykacja ruroci¹gów – Sekcja 04 | 3.5d | 2025-12-19 A | 2025-12-23 A | 14NX42-012, 14NX42-027 SS+5d | 100% | 2025-12-18 | 2025-12-22 |  | Rev A | Automaty | 14NX42 | Ruroci¹g | Budowa | Roboty | Micha³ | Wyspa | PM000 | Zespó³-K | Wspólne | Normalny | Pakiet | L2 |  |
| 14NX42-033 |  | Monta¿ ruroci¹gów – Sekcja 04 | 20.5d | 2026-04-20 A | 2026-05-19 A | 14NX42-032, 14NX42-014 SS+8d | 100% | 2026-04-16 | 2026-05-13 |  |  | Automaty | 14NX42 | Ruroci¹g | Budowa | Roboty | Micha³ | Wyspa | PM000 | Zespó³-K | Wspólne | Normalny | Pakiet | L2 |  |
| 14NX42-034 |  | Próba ciœnieniowa – Sekcja 04 | 5d | 2026-05-19 A | 2026-05-25 A | 14NX42-033 | 100% | 2026-05-14 | 2026-05-20 |  |  | Automaty | 14NX42 | Ruroci¹g | Budowa | Roboty | Micha³ | Wyspa | PM300 | Zespó³-I | Wspólne | Normalny | Pakiet | L2 |  |
| 14NX42-035 |  | Izolacje – Sekcja 04 | 3d | 2026-05-26 A | 2026-05-29 A | 14NX42-034 | 100% | 2026-05-21 | 2026-05-25 |  | Rev B | Automaty | 14NX42 | Ruroci¹g | Budowa | Roboty | Micha³ | Wyspa | PM000 | Zespó³-K | Wspólne | Wysoki | Pakiet | L2 |  |
| 14NX42-036 |  | Malowanie i oznakowanie – Sekcja 04 | 3d | 2026-05-27 A | 2026-06-02 A | 14NX42-035 FF+2d | 100% | 2026-05-25 | 2026-05-27 |  | Rev C | Automaty | 14NX42 | Ruroci¹g | Budowa | Roboty | Micha³ | Wyspa | PM300 | Zespó³-I | Wspólne | Normalny | Pakiet | L2 |  |
|  | SEKCJA 05 | **Sekcja 05** |  | 2025-12-24 | 2026-05-21 |  |  |  |  |  |  |  |  |  |  |  |  |  |  |  |  |  |  |  |  |
| 14NX42-039 |  | Prefabrykacja ruroci¹gów – Sekcja 05 | 11.5d | 2025-12-24 A | 2026-01-07 A | 14NX42-012, 14NX42-032 SS+5d | 100% | 2025-12-25 | 2026-01-08 |  |  | Automaty | 14NX42 | Ruroci¹g | Budowa | Roboty | Micha³ | Wyspa | PM000 | Zespó³-W | Wspólne | Wysoki | Pakiet | L2 |  |
| 14NX42-040 |  | Monta¿ ruroci¹gów – Sekcja 05 | 7.1d | 2026-04-16 A | 2026-04-27 A | 14NX42-039, 14NX42-014 SS+8d | 100% | 2026-04-16 | 2026-04-24 |  |  | Automaty | 14NX42 | Ruroci¹g | Budowa | Roboty | Micha³ | Wyspa | PM200 | Zespó³-E | Wspólne | Normalny | Pakiet | L2 |  |
| 14NX42-041 |  | Próba ciœnieniowa – Sekcja 05 | 4d | 2026-04-27 A | 2026-05-01 A | 14NX42-040 | 100% | 2026-04-27 | 2026-04-30 |  |  | Automaty | 14NX42 | Ruroci¹g | Budowa | Roboty | Micha³ | Wyspa | PM000 | Zespó³-K | Wspólne | Normalny | Pakiet | L2 |  |
| 14NX42-042 |  | Izolacje – Sekcja 05 | 10d | 2026-05-01 A | 2026-05-19 A | 14NX42-041 | 100% | 2026-05-01 | 2026-05-14 |  | Rev C | Automaty | 14NX42 | Ruroci¹g | Budowa | Roboty | Micha³ | Wyspa | PM000 | Zespó³-K | Wspólne | Niski | Pakiet | L2 | Czeka na dostawê |
| 14NX42-043 |  | Malowanie i oznakowanie – Sekcja 05 | 5d | 2026-05-13 A | 2026-05-21 A | 14NX42-042 FF+2d | 100% | 2026-05-12 | 2026-05-18 |  |  | Automaty | 14NX42 | Ruroci¹g | Budowa | Roboty | Micha³ | Wyspa | PM000 | Zespó³-W | Wspólne | Krytyczn | Pakiet | L2 |  |
|  | SEKCJA 06 | **Sekcja 06** |  | 2026-01-06 | 2026-05-29 |  |  |  |  |  |  |  |  |  |  |  |  |  |  |  |  |  |  |  |  |
|  | PODSEKCJA | **Podsekcja 06.A** |  | 2026-01-06 | 2026-05-29 |  |  |  |  |  |  |  |  |  |  |  |  |  |  |  |  |  |  |  |  |
| 14NX42-044 |  | Prefabrykacja ruroci¹gów – Sekcja 06 | 14.8d | 2026-01-06 A | 2026-01-23 A | 14NX42-012, 14NX42-039 SS+5d | 100% | 2026-01-01 | 2026-01-20 | Kalendarz 6-dniowy |  | Automaty | 14NX42 | Ruroci¹g | Budowa | Roboty | Micha³ | Wyspa | PM000 | Zespó³-W | Wspólne | Normalny | Pakiet | L2 |  |
| 14NX42-045 |  | Monta¿ ruroci¹gów – Sekcja 06 | 18.4d | 2026-04-08 A | 2026-05-01 A | 14NX42-044, 14NX42-014 SS+3d | 100% | 2026-04-09 | 2026-05-04 |  |  | Automaty | 14NX42 | Ruroci¹g | Budowa | Roboty | Micha³ | Wyspa | PM000 | Zespó³-K | Wspólne | Normalny | Pakiet | L2 |  |
| 14NX42-046 |  | Próba ciœnieniowa – Sekcja 06 | 6d | 2026-05-05 A | 2026-05-15 A | 14NX42-045 | 100% | 2026-05-05 | 2026-05-12 |  |  | Automaty | 14NX42 | Ruroci¹g | Budowa | Roboty | Micha³ | Wyspa | PM000 | Zespó³-K | Wspólne | Normalny | Pakiet | L2 |  |
| 14NX42-047 |  | Izolacje – Sekcja 06 | 5d | 2026-05-14 A | 2026-05-21 A | 14NX42-046 | 100% | 2026-05-13 | 2026-05-19 |  | Rev B | Automaty | 14NX42 | Ruroci¹g | Budowa | Roboty | Micha³ | Wyspa | PM000 | Zespó³-I | Wspólne | Normalny | Pakiet | L2 |  |
| 14NX42-048 |  | Malowanie i oznakowanie – Sekcja 06 | 6d | 2026-05-19 A | 2026-05-29 A | 14NX42-047 FF+2d | 100% | 2026-05-14 | 2026-05-21 |  |  | Automaty | 14NX42 | Ruroci¹g | Budowa | Roboty | Micha³ | Wyspa | PM000 | Zespó³-K | Wspólne | Normalny | Pakiet | L2 |  |
|  | SEKCJA 07 | **Sekcja 07** |  | 2026-01-13 | 2026-06-01 |  |  |  |  |  |  |  |  |  |  |  |  |  |  |  |  |  |  |  |  |
| 14NX42-051 |  | Prefabrykacja ruroci¹gów – Sekcja 07 | 11.5d | 2026-01-13 A | 2026-01-28 A | 14NX42-012, 14NX42-044 SS+5d | 100% | 2026-01-08 | 2026-01-22 |  | Rev C | Automaty | 14NX42 | Ruroci¹g | Budowa | Roboty | Micha³ | Wyspa | PM000 | Zespó³-W | Wspólne | Wysoki | Pakiet | L2 | Uzgodnione na koordynacji |
| 14NX42-052 |  | Monta¿ ruroci¹gów – Sekcja 07 | 9.3d | 2026-04-20 A | 2026-05-01 A | 14NX42-051, 14NX42-014 SS+10d | 100% | 2026-04-20 | 2026-04-30 |  |  | Automaty | 14NX42 | Ruroci¹g | Budowa | Roboty | Micha³ | Wyspa | PM000 | Zespó³-K | Wspólne | Niski | Pakiet | L2 |  |
| 14NX42-053 |  | Próba ciœnieniowa – Sekcja 07 | 6d | 2026-05-04 A | 2026-05-13 A | 14NX42-052 | 100% | 2026-05-01 | 2026-05-08 |  | Rev A | Automaty | 14NX42 | Ruroci¹g | Budowa | Roboty | Micha³ | Wyspa | PM000 | Zespó³-K | Wspólne | Normalny | Pakiet | L2 | Do weryfikacji z wykonawc¹ |
| 14NX42-054 |  | Izolacje – Sekcja 07 | 11d | 2026-05-13 A | 2026-06-01 A | 14NX42-053 | 100% | 2026-05-11 | 2026-05-25 |  | Rev A | Automaty | 14NX42 | Ruroci¹g | Budowa | Roboty | Micha³ | Wyspa | PM000 | Zespó³-W | Wspólne | Normalny | Pakiet | L2 |  |
| 14NX42-055 |  | Malowanie i oznakowanie – Sekcja 07 | 2d | 2026-05-25 A | 2026-05-29 A | 14NX42-054 FF+2d | 100% | 2026-05-26 | 2026-05-27 |  |  | Automaty | 14NX42 | Ruroci¹g | Budowa | Roboty | Micha³ | Wyspa | PM100 | Zespó³-E | Wspólne | Wysoki | Pakiet | L2 |  |

| ID | WBS | Activity | Duration | Start | Finish | Predecessors | Complete | Planned start | Planned finish | Calendar | AC_Wykonawca | AC_Obiekt | AC_Dyscyplina | AC_Faza | AC_Zakres | AC_Opiekun | AC_Obszar | AC_PP_PM | AC_Zespol | AC_Blok | AC_Priorytet | AC_Pakiet | AC_Poziom | Rewizja dokumentu | Uwagi harmonogramisty |
| --- | --- | --- | --- | --- | --- | --- | --- | --- | --- | --- | --- | --- | --- | --- | --- | --- | --- | --- | --- | --- | --- | --- | --- | --- | --- |
|  | SEKCJA 08 | **Sekcja 08** |  | 2026-01-20 | 2026-06-02 |  |  |  |  |  |  |  |  |  |  |  |  |  |  |  |  |  |  |  |  |
| 14NX42-056 |  | Prefabrykacja ruroci¹gów – Sekcja 08 | 9.6d | 2026-01-20 A | 2026-01-30 A | 14NX42-012, 14NX42-051 SS+5d | 100% | 2026-01-15 | 2026-01-27 |  | Automaty | 14NX42 | Ruroci¹g | Budowa | Roboty | Micha³ | Wyspa | PM000 | Zespó³-K | Wspólne | Normalny | Pakiet | L2 |  |  |
| 14NX42-057 |  | Monta¿ ruroci¹gów – Sekcja 08 | 23.1d | 2026-04-13 A | 2026-05-14 A | 14NX42-056, 14NX42-014 SS+3d | 100% | 2026-04-09 | 2026-05-11 |  | Automaty | 14NX42 | Ruroci¹g | Budowa | Roboty | Micha³ | Wyspa | PM000 | Zespó³-E | Wspólne | Normalny | Pakiet | L2 |  |  |
| 14NX42-058 |  | Próba ciœnieniowa – Sekcja 08 | 6d | 2026-05-13 A | 2026-05-22 A | 14NX42-057 | 100% | 2026-05-12 | 2026-05-19 |  | Automaty | 14NX42 | Ruroci¹g | Budowa | Roboty | Micha³ | Wyspa | PM000 | Zespó³-W | Wspólne | Wysoki | Pakiet | L2 | Rev A |  |
| 14NX42-060 |  | Malowanie i oznakowanie – Sekcja 08 | 5d | 2026-05-20 A | 2026-05-29 A | 14NX42-059 FF+2d | 100% | 2026-05-21 | 2026-05-27 |  | Automaty | 14NX42 | Ruroci¹g | Budowa | Roboty | Micha³ | Wyspa | PM000 | Zespó³-W | Wspólne | Normalny | Pakiet | L2 |  |  |
| 14NX42-059 |  | Izolacje – Sekcja 08 | 4d | 2026-05-25 A | 2026-06-02 A | 14NX42-058 | 100% | 2026-05-20 | 2026-05-25 |  | Automaty | 14NX42 | Ruroci¹g | Budowa | Roboty | Micha³ | Wyspa | PM000 | Zespó³-K | Wspólne | Normalny | Pakiet | L2 | Rev C |  |
|  | SEKCJA 09 | **Sekcja 09** |  | 2026-01-22 | 2026-06-01 |  |  |  |  |  |  |  |  |  |  |  |  |  |  |  |  |  |  |  |  |
|  | PODSEKCJA | **Podsekcja 09.A** |  | 2026-01-22 | 2026-06-01 |  |  |  |  |  |  |  |  |  |  |  |  |  |  |  |  |  |  |  |  |
| 14NX42-063 |  | Prefabrykacja ruroci¹gów – Sekcja 09 | 6.8d | 2026-01-22 A | 2026-01-30 A | 14NX42-012, 14NX42-056 SS+5d | 100% | 2026-01-22 | 2026-01-29 |  | Automaty | 14NX42 | Ruroci¹g | Budowa | Roboty | Micha³ | Wyspa | PM000 | Zespó³-W | Wspólne | Wysoki | Pakiet | L2 |  |  |
| 14NX42-064 |  | Monta¿ ruroci¹gów – Sekcja 09 | 15.3d | 2026-04-17 A | 2026-05-11 A | 14NX42-063, 14NX42-014 SS+8d | 100% | 2026-04-16 | 2026-05-06 |  | Automaty | 14NX42 | Ruroci¹g | Budowa | Roboty | Micha³ | Wyspa | PM200 | Zespó³-I | Wspólne | Niski | Pakiet | L2 | Rev B |  |
| 14NX42-065 |  | Próba ciœnieniowa – Sekcja 09 | 4d | 2026-05-06 A | 2026-05-12 A | 14NX42-064 | 100% | 2026-05-07 | 2026-05-12 |  | Automaty | 14NX42 | Ruroci¹g | Budowa | Roboty | Micha³ | Wyspa | PM000 | Zespó³-K | Wspólne | Wysoki | Pakiet | L2 |  | Uzgodnione na koordynacji |
| 14NX42-066 |  | Izolacje – Sekcja 09 | 11d | 2026-05-14 A | 2026-05-29 A | 14NX42-065 | 100% | 2026-05-13 | 2026-05-27 |  | Automaty | 14NX42 | Ruroci¹g | Budowa | Roboty | Micha³ | Wyspa | PM000 | Zespó³-W | Wspólne | Normalny | Pakiet | L2 |  |  |
| 14NX42-067 |  | Malowanie i oznakowanie – Sekcja 09 | 5d | 2026-05-26 A | 2026-06-01 A | 14NX42-066 FF+2d | 100% | 2026-05-25 | 2026-05-29 |  | Automaty | 14NX42 | Ruroci¹g | Budowa | Roboty | Micha³ | Wyspa | PM000 | Zespó³-K | Wspólne | Normalny | Pakiet | L2 |  |  |
|  | SEKCJA 10 | **Sekcja 10** |  | 2026-01-29 | 2026-05-20 |  |  |  |  |  |  |  |  |  |  |  |  |  |  |  |  |  |  |  |  |
| 14NX42-068 |  | Prefabrykacja ruroci¹gów – Sekcja 10 | 3.1d | 2026-01-29 A | 2026-02-02 A | 14NX42-012, 14NX42-063 SS+5d | 100% |  |  |  | Automaty | 14NX42 | Ruroci¹g | Budowa | Roboty | Micha³ | Wyspa | PM000 | Zespó³-E | Wspólne | Wysoki | Pakiet | L2 |  | Czeka na dostawê |
| 14NX42-069 |  | Monta¿ ruroci¹gów – Sekcja 10 | 13.4d | 2026-04-14 A | 2026-04-30 A | 14NX42-068, 14NX42-014 SS+4d | 100% | 2026-04-10 | 2026-04-28 |  | Automaty | 14NX42 | Ruroci¹g | Budowa | Roboty | Micha³ | Wyspa | PM000 | Zespó³-W | Wspólne | Normalny | Pakiet | L2 |  |  |
| 14NX42-070 |  | Próba ciœnieniowa – Sekcja 10 | 2d | 2026-04-29 A | 2026-05-01 A | 14NX42-069 | 100% | 2026-04-29 | 2026-04-30 |  | Automaty | 14NX42 | Ruroci¹g | Budowa | Roboty | Micha³ | Wyspa | PM000 | Zespó³-W | Wspólne | Normalny | Pakiet | L2 |  |  |
| 14NX42-071 |  | Izolacje – Sekcja 10 | 10d | 2026-04-30 A | 2026-05-18 A | 14NX42-070 | 100% | 2026-05-01 | 2026-05-14 | Kalendarz 6-dniowy | Automaty | 14NX42 | Ruroci¹g | Budowa | Roboty | Micha³ | Wyspa | PM000 | Zespó³-K | Wspólne | Normalny | Pakiet | L2 |  | Uzgodnione na koordynacji |
| 14NX42-072 |  | Malowanie i oznakowanie – Sekcja 10 | 2d | 2026-05-14 A | 2026-05-20 A | 14NX42-071 FF+2d | 100% | 2026-05-15 | 2026-05-18 |  | Automaty | 14NX42 | Ruroci¹g | Budowa | Roboty | Micha³ | Wyspa | PM000 | Zespó³-W | Wspólne | Wysoki | Pakiet | L2 |  |  |
|  | SEKCJA 11 | **Sekcja 11** |  | 2026-02-05 | 2026-06-04 |  |  |  |  |  |  |  |  |  |  |  |  |  |  |  |  |  |  |  |  |
| 14NX42-075 |  | Prefabrykacja ruroci¹gów – Sekcja 11 | 12.8d | 2026-02-05 A | 2026-02-20 A | 14NX42-012, 14NX42-068 SS+5d | 100% |  |  |  | Automaty | 14NX42 | Ruroci¹g | Budowa | Roboty | Micha³ | Wyspa | PM000 | Zespó³-W | Wspólne | Normalny | Pakiet | L2 |  |  |
| 14NX42-076 |  | Monta¿ ruroci¹gów – Sekcja 11 | 18.8d | 2026-04-07 A | 2026-05-05 A | 14NX42-075, 14NX42-014 SS+1d | 100% | 2026-04-07 | 2026-04-30 |  | Automaty | 14NX42 | Ruroci¹g | Budowa | Roboty | Micha³ | Wyspa | PM000 | Zespó³-K | Wspólne | Normalny | Pakiet | L2 |  |  |
| 14NX42-077 |  | Próba ciœnieniowa – Sekcja 11 | 6d | 2026-05-05 A | 2026-05-14 A | 14NX42-076 | 100% | 2026-05-01 | 2026-05-08 |  | Automaty | 14NX42 | Ruroci¹g | Budowa | Roboty | Micha³ | Wyspa | PM000 | Zespó³-W | Wspólne | Niski | Pakiet | L2 |  | Do weryfikacji z wykonawc¹ |
| 14NX42-078 |  | Izolacje – Sekcja 11 | 12d | 2026-05-11 A | 2026-05-28 A | 14NX42-077 | 100% | 2026-05-11 | 2026-05-26 | Kalendarz 6-dniowy | Automaty | 14NX42 | Ruroci¹g | Budowa | Roboty | Micha³ | Wyspa | PM000 | Zespó³-W | Wspólne | Normalny | Pakiet | L2 |  | Do weryfikacji z wykonawc¹ |
| 14NX42-079 |  | Malowanie i oznakowanie – Sekcja 11 | 3d | 2026-05-29 A | 2026-06-04 A | 14NX42-078 FF+2d | 100% | 2026-05-26 | 2026-05-28 |  | Automaty | 14NX42 | Ruroci¹g | Budowa | Roboty | Micha³ | Wyspa | PM000 | Zespó³-K | Wspólne | Normalny | Pakiet | L2 |  |  |

| ID | WBS | Activity | Duration | Start | Finish | Predecessors | Complete | Planned start | Planned finish | Calendar | AC_Wykonawca | AC_Obiekt | AC_Dyscyplina | AC_Faza | AC_Zakres | AC_Opiekun | AC_Obszar | AC_PP_PM | AC_Zespol | AC_Blok | AC_Priorytet | AC_Pakiet | AC_Poziom | Uwagi harmonogramisty | Rewizja dokumentu |
| --- | --- | --- | --- | --- | --- | --- | --- | --- | --- | --- | --- | --- | --- | --- | --- | --- | --- | --- | --- | --- | --- | --- | --- | --- | --- |
|  | SEKCJA 12 | **Sekcja 12** |  | 2026-02-17 | 2026-05-15 |  |  |  |  |  |  |  |  |  |  |  |  |  |  |  |  |  |  |  |  |
|  | PODSEKCJA | **Podsekcja 12.A** |  | 2026-02-17 | 2026-05-15 |  |  |  |  |  |  |  |  |  |  |  |  |  |  |  |  |  |  |  |  |
| 14NX42-080 |  | Prefabrykacja ruroci¹gów – Sekcja 12 | 9.4d | 2026-02-17 A | 2026-03-03 A | 14NX42-012, 14NX42-075 SS+5d | 100% | 2026-02-12 | 2026-02-24 |  | Automaty | 14NX42 | Ruroci¹g | Budowa | Roboty | Micha³ | Wyspa | PM000 | Zespó³-W | Wspólne | Normalny | Pakiet | L2 |  |  |
| 14NX42-081 |  | Monta¿ ruroci¹gów – Sekcja 12 | 9.9d | 2026-04-15 A | 2026-04-29 A | 14NX42-080, 14NX42-014 SS+6d | 100% | 2026-04-14 | 2026-04-24 |  | Automaty | 14NX42 | Ruroci¹g | Budowa | Roboty | Micha³ | Wyspa | PM000 | Zespó³-W | Wspólne | Normalny | Pakiet | L2 | Ryzyko opóŸnienia | Rev C |
| 14NX42-082 |  | Próba ciœnieniowa – Sekcja 12 | 5d | 2026-04-24 A | 2026-05-05 A | 14NX42-081 | 100% | 2026-04-27 | 2026-05-01 |  | Automaty | 14NX42 | Ruroci¹g | Budowa | Roboty | Micha³ | Wyspa | PM000 | Zespó³-W | Wspólne | Normalny | Pakiet | L2 |  |  |
| 14NX42-084 |  | Malowanie i oznakowanie – Sekcja 12 | 8d | 2026-05-01 A | 2026-05-15 A | 14NX42-083 FF+2d | 100% | 2026-05-04 | 2026-05-13 |  | Automaty | 14NX42 | Ruroci¹g | Budowa | Roboty | Micha³ | Wyspa | PM000 | Zespó³-W | Wspólne | Krytyczn | Pakiet | L2 |  |  |
| 14NX42-083 |  | Izolacje – Sekcja 12 | 6d | 2026-05-05 A | 2026-05-13 A | 14NX42-082 | 100% | 2026-05-04 | 2026-05-11 |  | Automaty | 14NX42 | Ruroci¹g | Budowa | Roboty | Micha³ | Wyspa | PM000 | Zespó³-W | Wspólne | Wysoki | Pakiet | L2 |  |  |
|  | SEKCJA 13 | **Sekcja 13** |  | 2026-02-24 | 2026-05-18 |  |  |  |  |  |  |  |  |  |  |  |  |  |  |  |  |  |  |  |  |
| 14NX42-087 |  | Prefabrykacja ruroci¹gów – Sekcja 13 | 7.9d | 2026-02-24 A | 2026-03-04 A | 14NX42-012, 14NX42-080 SS+5d | 100% | 2026-02-19 | 2026-02-27 |  | Automaty | 14NX42 | Ruroci¹g | Budowa | Roboty | Micha³ | Wyspa | PM000 | Zespó³-W | Wspólne | Niski | Pakiet | L2 | Czeka na dostawê |  |
| 14NX42-088 |  | Monta¿ ruroci¹gów – Sekcja 13 | 10.7d | 2026-04-20 A | 2026-05-05 A | 14NX42-087, 14NX42-014 SS+7d | 100% | 2026-04-15 | 2026-04-28 | Kalendarz 6-dniowy | Automaty | 14NX42 | Ruroci¹g | Budowa | Roboty | Micha³ | Wyspa | PM000 | Zespó³-W | Wspólne | Normalny | Pakiet | L2 |  | Rev B |
| 14NX42-089 |  | Próba ciœnieniowa – Sekcja 13 | 5d | 2026-04-29 A | 2026-05-07 A | 14NX42-088 | 100% | 2026-04-29 | 2026-05-05 |  | Automaty | 14NX42 | Ruroci¹g | Budowa | Roboty | Micha³ | Wyspa | PM000 | Zespó³-K | Wspólne | Normalny | Pakiet | L2 |  |  |
| 14NX42-091 |  | Malowanie i oznakowanie – Sekcja 13 | 5d | 2026-05-06 A | 2026-05-12 A | 14NX42-090 FF+2d | 100% |  |  |  | Automaty | 14NX42 | Ruroci¹g | Budowa | Roboty | Micha³ | Wyspa | PM000 | Zespó³-W | Wspólne | Niski | Pakiet | L2 |  |  |
| 14NX42-090 |  | Izolacje – Sekcja 13 | 3d | 2026-05-11 A | 2026-05-18 A | 14NX42-089 | 100% | 2026-05-06 | 2026-05-08 |  | Automaty | 14NX42 | Ruroci¹g | Budowa | Roboty | Micha³ | Wyspa | PM000 | Zespó³-E | Wspólne | Wysoki | Pakiet | L2 |  | Rev B |
|  | SEKCJA 14 | **Sekcja 14** |  | 2026-03-02 | 2026-05-08 |  |  |  |  |  |  |  |  |  |  |  |  |  |  |  |  |  |  |  |  |
| 14NX42-092 |  | Prefabrykacja ruroci¹gów – Sekcja 14 | 11d | 2026-03-02 A | 2026-03-19 A | 14NX42-012, 14NX42-087 SS+5d | 100% | 2026-02-26 | 2026-03-12 |  | Automaty | 14NX42 | Ruroci¹g | Budowa | Roboty | Micha³ | Wyspa | PM000 | Zespó³-W | Wspólne | Normalny | Pakiet | L2 |  |  |
| 14NX42-093 |  | Monta¿ ruroci¹gów – Sekcja 14 | 17.7d | 2026-04-07 A | 2026-05-01 A | 14NX42-092, 14NX42-014 SS | 100% | 2026-04-06 | 2026-04-28 |  | Automaty | 14NX42 | Ruroci¹g | Budowa | Roboty | Micha³ | Wyspa | PM100 | Zespó³-I | Wspólne | Normalny | Pakiet | L2 |  |  |
| 14NX42-096 |  | Malowanie i oznakowanie – Sekcja 14 | 8d | 2026-04-29 A | 2026-05-08 A | 14NX42-095 FF+2d | 100% |  |  |  | Automaty | 14NX42 | Ruroci¹g | Budowa | Roboty | Micha³ | Wyspa | PM000 | Zespó³-W | Wspólne | Normalny | Pakiet | L2 |  |  |
| 14NX42-094 |  | Próba ciœnieniowa – Sekcja 14 | 3d | 2026-04-30 A | 2026-05-06 A | 14NX42-093 | 100% | 2026-04-29 | 2026-05-01 |  | Automaty | 14NX42 | Ruroci¹g | Budowa | Roboty | Micha³ | Wyspa | PM000 | Zespó³-W | Wspólne | Normalny | Pakiet | L2 |  |  |
| 14NX42-095 |  | Izolacje – Sekcja 14 | 3d | 2026-05-01 A | 2026-05-08 A | 14NX42-094 | 100% | 2026-05-04 | 2026-05-06 |  | Automaty | 14NX42 | Ruroci¹g | Budowa | Roboty | Micha³ | Wyspa | PM000 | Zespó³-W | Wspólne | Normalny | Pakiet | L2 |  |  |
|  | SEKCJA 15 | **Sekcja 15** |  | 2026-03-09 | 2026-05-21 |  |  |  |  |  |  |  |  |  |  |  |  |  |  |  |  |  |  |  |  |
|  | PODSEKCJA | **Podsekcja 15.A** |  | 2026-03-09 | 2026-05-21 |  |  |  |  |  |  |  |  |  |  |  |  |  |  |  |  |  |  |  |  |
| 14NX42-099 |  | Prefabrykacja ruroci¹gów – Sekcja 15 | 9.5d | 2026-03-09 A | 2026-03-23 A | 14NX42-012, 14NX42-092 SS+5d | 100% | 2026-03-05 | 2026-03-17 |  | Automaty | 14NX42 | Ruroci¹g | Budowa | Roboty | Micha³ | Wyspa | PM000 | Zespó³-W | Wspólne | Niski | Pakiet | L2 |  |  |
| 14NX42-100 |  | Monta¿ ruroci¹gów – Sekcja 15 | 10.4d | 2026-04-15 A | 2026-04-30 A | 14NX42-099, 14NX42-014 SS+6d | 100% | 2026-04-14 | 2026-04-27 |  | Automaty | 14NX42 | Ruroci¹g | Budowa | Roboty | Micha³ | Wyspa | PM000 | Zespó³-K | Wspólne | Normalny | Pakiet | L2 |  |  |
| 14NX42-101 |  | Próba ciœnieniowa – Sekcja 15 | 5d | 2026-05-01 A | 2026-05-11 A | 14NX42-100 | 100% | 2026-04-28 | 2026-05-04 |  | Automaty | 14NX42 | Ruroci¹g | Budowa | Roboty | Micha³ | Wyspa | PM000 | Zespó³-W | Wspólne | Niski | Pakiet | L2 |  |  |
| 14NX42-102 |  | Izolacje – Sekcja 15 | 10d | 2026-05-04 A | 2026-05-19 A | 14NX42-101 | 100% | 2026-05-05 | 2026-05-18 |  | Automaty | 14NX42 | Ruroci¹g | Budowa | Roboty | Micha³ | Wyspa | PM000 | Zespó³-W | Wspólne | Normalny | Pakiet | L2 |  |  |
| 14NX42-103 |  | Malowanie i oznakowanie – Sekcja 15 | 6d | 2026-05-14 A | 2026-05-21 A | 14NX42-102 FF+2d | 100% | 2026-05-13 | 2026-05-20 | Kalendarz 6-dniowy | Automaty | 14NX42 | Ruroci¹g | Budowa | Roboty | Micha³ | Wyspa | PM000 | Zespó³-K | Wspólne | Wysoki | Pakiet | L2 |  |  |

| ID | WBS | Activity | Duration | Start | Finish | Predecessors | Complete | Planned start | Planned finish | Rewizja dokumentu | AC_Wykonawca | AC_Obiekt | AC_Dyscyplina | AC_Faza | AC_Zakres | AC_Opiekun | AC_Obszar | AC_PP_PM | AC_Zespol | AC_Blok | AC_Priorytet | AC_Pakiet | AC_Poziom | Uwagi harmonogramisty |
| --- | --- | --- | --- | --- | --- | --- | --- | --- | --- | --- | --- | --- | --- | --- | --- | --- | --- | --- | --- | --- | --- | --- | --- | --- |
|  | SEKCJA 16 | **Sekcja 16** |  | 2026-03-11 | 2026-05-15 |  |  |  |  |  |  |  |  |  |  |  |  |  |  |  |  |  |  |  |
| 14NX42-104 |  | Prefabrykacja ruroci¹gów – Sekcja 16 | 5.1d | 2026-03-11 A | 2026-03-19 A | 14NX42-012, 14NX42-099 SS+5d | 100% | 2026-03-12 | 2026-03-18 | Rev A | Automaty | 14NX42 | Ruroci¹g | Budowa | Roboty | Micha³ | Wyspa | PM000 | Zespó³-K | Wspólne | Normalny | Pakiet | L2 |  |
| 14NX42-105 |  | Monta¿ ruroci¹gów – Sekcja 16 | 7.9d | 2026-04-03 A | 2026-04-14 A | 14NX42-104, 14NX42-014 SS | 100% | 2026-04-06 | 2026-04-14 |  | Automaty | 14NX42 | Ruroci¹g | Budowa | Roboty | Micha³ | Wyspa | PM000 | Zespó³-K | Wspólne | Normalny | Pakiet | L2 |  |
| 14NX42-106 |  | Próba ciœnieniowa – Sekcja 16 | 5d | 2026-04-15 A | 2026-04-23 A | 14NX42-105 | 100% | 2026-04-15 | 2026-04-21 | Rev A | Automaty | 14NX42 | Ruroci¹g | Budowa | Roboty | Micha³ | Wyspa | PM300 | Zespó³-E | Wspólne | Normalny | Pakiet | L2 |  |
| 14NX42-107 |  | Izolacje – Sekcja 16 | 12d | 2026-04-27 A | 2026-05-15 A | 14NX42-106 | 100% | 2026-04-22 | 2026-05-07 | Rev A | Automaty | 14NX42 | Ruroci¹g | Budowa | Roboty | Micha³ | Wyspa | PM000 | Zespó³-W | Wspólne | Normalny | Pakiet | L2 |  |
| 14NX42-108 |  | Malowanie i oznakowanie – Sekcja 16 | 5d | 2026-05-05 A | 2026-05-14 A | 14NX42-107 FF+2d | 100% | 2026-05-05 | 2026-05-11 |  | Automaty | 14NX42 | Ruroci¹g | Budowa | Roboty | Micha³ | Wyspa | PM300 | Zespó³-E | Wspólne | Normalny | Pakiet | L2 |  |
|  | SEKCJA 17 | **Sekcja 17** |  | 2026-03-20 | 2026-05-22 |  |  |  |  |  |  |  |  |  |  |  |  |  |  |  |  |  |  |  |
| 14NX42-111 |  | Prefabrykacja ruroci¹gów – Sekcja 17 | 13.2d | 2026-03-20 A | 2026-04-07 A | 14NX42-012, 14NX42-104 SS+5d | 100% | 2026-03-19 | 2026-04-06 | Rev B | Automaty | 14NX42 | Ruroci¹g | Budowa | Roboty | Micha³ | Wyspa | PM000 | Zespó³-W | Wspólne | Normalny | Pakiet | L2 |  |
| 14NX42-112 |  | Monta¿ ruroci¹gów – Sekcja 17 | 16.7d | 2026-04-10 A | 2026-05-05 A | 14NX42-111, 14NX42-014 SS+3d | 100% | 2026-04-09 | 2026-04-30 | Rev B | Automaty | 14NX42 | Ruroci¹g | Budowa | Roboty | Micha³ | Wyspa | PM000 | Zespó³-W | Wspólne | Wysoki | Pakiet | L2 |  |
| 14NX42-114 |  | Izolacje – Sekcja 17 | 11d | 2026-05-04 A | 2026-05-19 A | 14NX42-113 | 100% | 2026-05-05 | 2026-05-19 |  | Automaty | 14NX42 | Ruroci¹g | Budowa | Roboty | Micha³ | Wyspa | PM000 | Zespó³-W | Wspólne | Normalny | Pakiet | L2 |  |
| 14NX42-113 |  | Próba ciœnieniowa – Sekcja 17 | 2d | 2026-05-05 A | 2026-05-08 A | 14NX42-112 | 100% | 2026-05-01 | 2026-05-04 | Rev B | Automaty | 14NX42 | Ruroci¹g | Budowa | Roboty | Micha³ | Wyspa | PM000 | Zespó³-K | Wspólne | Niski | Pakiet | L2 |  |
| 14NX42-115 |  | Malowanie i oznakowanie – Sekcja 17 | 6d | 2026-05-15 A | 2026-05-22 A | 14NX42-114 FF+2d | 100% | 2026-05-14 | 2026-05-21 |  | Automaty | 14NX42 | Ruroci¹g | Budowa | Roboty | Micha³ | Wyspa | PM000 | Zespó³-W | Wspólne | Normalny | Pakiet | L2 |  |
|  | SEKCJA 18 | **Sekcja 18** |  | 2026-03-31 | 2026-05-28 |  |  |  |  |  |  |  |  |  |  |  |  |  |  |  |  |  |  |  |
|  | PODSEKCJA | **Podsekcja 18.A** |  | 2026-03-31 | 2026-05-28 |  |  |  |  |  |  |  |  |  |  |  |  |  |  |  |  |  |  |  |
| 14NX42-116 |  | Prefabrykacja ruroci¹gów – Sekcja 18 | 9.6d | 2026-03-31 A | 2026-04-10 A | 14NX42-012, 14NX42-111 SS+5d | 100% | 2026-03-26 | 2026-04-07 | Rev B | Automaty | 14NX42 | Ruroci¹g | Budowa | Roboty | Micha³ | Wyspa | PM000 | Zespó³-W | Wspólne | Normalny | Pakiet | L2 |  |
| 14NX42-117 |  | Monta¿ ruroci¹gów – Sekcja 18 | 16.1d | 2026-04-17 A | 2026-05-08 A | 14NX42-116, 14NX42-014 SS+6d | 100% | 2026-04-14 | 2026-05-05 | Rev C | Automaty | 14NX42 | Ruroci¹g | Budowa | Roboty | Micha³ | Wyspa | PM000 | Zespó³-K | Wspólne | Normalny | Pakiet | L2 |  |
| 14NX42-119 |  | Izolacje – Sekcja 18 | 9d | 2026-05-08 A | 2026-05-22 A | 14NX42-118 | 100% | 2026-05-08 | 2026-05-20 |  | Automaty | 14NX42 | Ruroci¹g | Budowa | Roboty | Micha³ | Wyspa | PM000 | Zespó³-K | Wspólne | Krytyczn | Pakiet | L2 |  |
| 14NX42-118 |  | Próba ciœnieniowa – Sekcja 18 | 2d | 2026-05-11 A | 2026-05-15 A | 14NX42-117 | 100% | 2026-05-06 | 2026-05-07 | Rev C | Automaty | 14NX42 | Ruroci¹g | Budowa | Roboty | Micha³ | Wyspa | PM000 | Zespó³-W | Wspólne | Normalny | Pakiet | L2 |  |
| 14NX42-120 |  | Malowanie i oznakowanie – Sekcja 18 | 2d | 2026-05-26 A | 2026-05-28 A | 14NX42-119 FF+2d | 100% | 2026-05-21 | 2026-05-22 |  | Automaty | 14NX42 | Ruroci¹g | Budowa | Roboty | Micha³ | Wyspa | PM000 | Zespó³-K | Wspólne | Normalny | Pakiet | L2 | Do weryfikacji z wykonawc¹ |
|  | SEKCJA 19 | **Sekcja 19** |  | 2026-04-06 | 2026-05-18 |  |  |  |  |  |  |  |  |  |  |  |  |  |  |  |  |  |  |  |
| 14NX42-123 |  | Prefabrykacja ruroci¹gów – Sekcja 19 | 7.9d | 2026-04-06 A | 2026-04-16 A | 14NX42-012, 14NX42-116 SS+5d | 100% | 2026-04-02 | 2026-04-10 | Rev A | Automaty | 14NX42 | Ruroci¹g | Budowa | Roboty | Micha³ | Wyspa | PM000 | Zespó³-W | Wspólne | Normalny | Pakiet | L2 | Czeka na dostawê |
| 14NX42-124 |  | Monta¿ ruroci¹gów – Sekcja 19 | 11.3d | 2026-04-15 A | 2026-04-30 A | 14NX42-123, 14NX42-014 SS+4d | 100% | 2026-04-13 | 2026-04-28 |  | Automaty | 14NX42 | Ruroci¹g | Budowa | Roboty | Micha³ | Wyspa | PM000 | Zespó³-W | Wspólne | Normalny | Pakiet | L2 |  |
| 14NX42-125 |  | Próba ciœnieniowa – Sekcja 19 | 5d | 2026-05-01 A | 2026-05-11 A | 14NX42-124 | 100% | 2026-04-29 | 2026-05-05 | Rev A | Automaty | 14NX42 | Ruroci¹g | Budowa | Roboty | Micha³ | Wyspa | PM000 | Zespó³-K | Wspólne | Normalny | Pakiet | L2 |  |
| 14NX42-126 |  | Izolacje – Sekcja 19 | 5d | 2026-05-05 A | 2026-05-12 A | 14NX42-125 | 100% | 2026-05-06 | 2026-05-12 |  | Automaty | 14NX42 | Ruroci¹g | Budowa | Roboty | Micha³ | Wyspa | PM000 | Zespó³-K | Wspólne | Normalny | Pakiet | L2 |  |
| 14NX42-127 |  | Malowanie i oznakowanie – Sekcja 19 | 3d | 2026-05-12 A | 2026-05-18 A | 14NX42-126 FF+2d | 100% | 2026-05-12 | 2026-05-14 |  | Automaty | 14NX42 | Ruroci¹g | Budowa | Roboty | Micha³ | Wyspa | PM000 | Zespó³-W | Wspólne | Normalny | Pakiet | L2 |  |

| ID | WBS | Activity | Duration | Start | Finish | Predecessors | Complete | Planned start | Planned finish | Calendar | AC_Wykonawca | AC_Obiekt | AC_Dyscyplina | AC_Faza | AC_Zakres | AC_Opiekun | AC_Obszar | AC_PP_PM | AC_Zespol | AC_Blok | AC_Priorytet | AC_Pakiet | AC_Poziom | Rewizja dokumentu | Uwagi harmonogramisty |
| --- | --- | --- | --- | --- | --- | --- | --- | --- | --- | --- | --- | --- | --- | --- | --- | --- | --- | --- | --- | --- | --- | --- | --- | --- | --- |
|  | SEKCJA 20 | **Sekcja 20** |  | 2026-04-09 | 2026-06-19 |  |  |  |  |  |  |  |  |  |  |  |  |  |  |  |  |  |  |  |  |
| 14NX42-128 |  | Prefabrykacja ruroci¹gów – Sekcja 20 | 11.1d | 2026-04-09 A | 2026-04-23 A | 14NX42-012, 14NX42-123 SS+5d | 100% |  |  |  | Automaty | 14NX42 | Ruroci¹g | Budowa | Roboty | Micha³ | Wyspa | PM000 | Zespó³-K | Wspólne | Normalny | Pakiet | L2 |  |  |
| 14NX42-129 |  | Monta¿ ruroci¹gów – Sekcja 20 | 22.7d | 2026-04-29 A | 2026-05-29 A | 14NX42-128, 14NX42-014 SS+2d | 100% | 2026-04-24 | 2026-05-25 |  | Automaty | 14NX42 | Ruroci¹g | Budowa | Roboty | Micha³ | Wyspa | PM000 | Zespó³-W | Wspólne | Normalny | Pakiet | L2 |  |  |
| 14NX42-130 |  | Próba ciœnieniowa – Sekcja 20 | 2d | 2026-05-28 A | 2026-06-03 A | 14NX42-129 | 100% | 2026-05-26 | 2026-05-27 |  | Automaty | 14NX42 | Ruroci¹g | Budowa | Roboty | Micha³ | Wyspa | PM000 | Zespó³-I | Wspólne | Normalny | Pakiet | L2 |  |  |
| 14NX42-131 |  | Izolacje – Sekcja 20 | 10d | 2026-05-28 A | 2026-06-10 A | 14NX42-130 | 100% |  |  |  | Automaty | 14NX42 | Ruroci¹g | Budowa | Roboty | Micha³ | Wyspa | PM000 | Zespó³-K | Wspólne | Normalny | Pakiet | L2 | Rev C |  |
| 14NX42-132 |  | Malowanie i oznakowanie – Sekcja 20 | 4d | 2026-06-12 A | 2026-06-19 A | 14NX42-131 FF+2d | 100% | 2026-06-09 | 2026-06-12 |  | Automaty | 14NX42 | Ruroci¹g | Budowa | Roboty | Micha³ | Wyspa | PM000 | Zespó³-K | Wspólne | Normalny | Pakiet | L2 |  |  |
|  | SEKCJA 21 | **Sekcja 21** |  | 2026-04-20 | 2026-06-12 |  |  |  |  |  |  |  |  |  |  |  |  |  |  |  |  |  |  |  |  |
|  | PODSEKCJA | **Podsekcja 21.A** |  | 2026-04-20 | 2026-06-12 |  |  |  |  |  |  |  |  |  |  |  |  |  |  |  |  |  |  |  |  |
| 14NX42-135 |  | Prefabrykacja ruroci¹gów – Sekcja 21 | 11.8d | 2026-04-20 A | 2026-05-06 A | 14NX42-012, 14NX42-128 SS+5d | 100% | 2026-04-16 | 2026-04-30 |  | Automaty | 14NX42 | Ruroci¹g | Budowa | Roboty | Micha³ | Wyspa | PM000 | Zespó³-W | Wspólne | Normalny | Pakiet | L2 |  |  |
| 14NX42-136 |  | Monta¿ ruroci¹gów – Sekcja 21 | 18.2d | 2026-04-30 A | 2026-05-28 A | 14NX42-135, 14NX42-014 SS+1d | 100% | 2026-05-01 | 2026-05-27 |  | Automaty | 14NX42 | Ruroci¹g | Budowa | Roboty | Micha³ | Wyspa | PM000 | Zespó³-W | Wspólne | Normalny | Pakiet | L2 | Rev C |  |
| 14NX42-137 |  | Próba ciœnieniowa – Sekcja 21 | 4d | 2026-05-27 A | 2026-06-04 A | 14NX42-136 | 100% | 2026-05-28 | 2026-06-02 |  | Automaty | 14NX42 | Ruroci¹g | Budowa | Roboty | Micha³ | Wyspa | PM000 | Zespó³-E | Wspólne | Normalny | Pakiet | L2 | Rev B | Bez uwag |
| 14NX42-139 |  | Malowanie i oznakowanie – Sekcja 21 | 7d | 2026-05-29 A | 2026-06-10 A | 14NX42-138 FF+2d | 100% | 2026-06-01 | 2026-06-09 |  | Automaty | 14NX42 | Ruroci¹g | Budowa | Roboty | Micha³ | Wyspa | PM000 | Zespó³-K | Wspólne | Normalny | Pakiet | L2 |  | Uzgodnione na koordynacji |
| 14NX42-138 |  | Izolacje – Sekcja 21 | 3d | 2026-06-08 A | 2026-06-12 A | 14NX42-137 | 100% | 2026-06-03 | 2026-06-05 |  | Automaty | 14NX42 | Ruroci¹g | Budowa | Roboty | Micha³ | Wyspa | PM000 | Zespó³-W | Wspólne | Normalny | Pakiet | L2 |  |  |
|  | SEKCJA 22 | **Sekcja 22** |  | 2026-04-24 | 2026-06-04 |  |  |  |  |  |  |  |  |  |  |  |  |  |  |  |  |  |  |  |  |
| 14NX42-140 |  | Prefabrykacja ruroci¹gów – Sekcja 22 | 4.8d | 2026-04-24 A | 2026-05-04 A | 14NX42-012, 14NX42-135 SS+5d | 100% | 2026-04-23 | 2026-04-28 |  | Automaty | 14NX42 | Ruroci¹g | Budowa | Roboty | Micha³ | Wyspa | PM000 | Zespó³-K | Wspólne | Normalny | Pakiet | L2 |  |  |
| 14NX42-141 |  | Monta¿ ruroci¹gów – Sekcja 22 | 8.7d | 2026-04-29 A | 2026-05-14 A | 14NX42-140, 14NX42-014 SS | 100% | 2026-04-29 | 2026-05-11 |  | Automaty | 14NX42 | Ruroci¹g | Budowa | Roboty | Micha³ | Wyspa | PM000 | Zespó³-W | Wspólne | Normalny | Pakiet | L2 |  |  |
| 14NX42-142 |  | Próba ciœnieniowa – Sekcja 22 | 2d | 2026-05-15 A | 2026-05-18 A | 14NX42-141 | 100% | 2026-05-12 | 2026-05-13 |  | Automaty | 14NX42 | Ruroci¹g | Budowa | Roboty | Micha³ | Wyspa | PM000 | Zespó³-W | Wspólne | Normalny | Pakiet | L2 |  | Uzgodnione na koordynacji |
| 14NX42-143 |  | Izolacje – Sekcja 22 | 10d | 2026-05-15 A | 2026-06-01 A | 14NX42-142 | 100% | 2026-05-14 | 2026-05-27 |  | Automaty | 14NX42 | Ruroci¹g | Budowa | Roboty | Micha³ | Wyspa | PM000 | Zespó³-W | Wspólne | Normalny | Pakiet | L2 |  |  |
| 14NX42-144 |  | Malowanie i oznakowanie – Sekcja 22 | 8d | 2026-05-21 A | 2026-06-04 A | 14NX42-143 FF+2d | 100% | 2026-05-20 | 2026-05-29 |  | Automaty | 14NX42 | Ruroci¹g | Budowa | Roboty | Micha³ | Wyspa | PM000 | Zespó³-W | Wspólne | Niski | Pakiet | L2 | Rev B |  |
|  | SEKCJA 23 | **Sekcja 23** |  | 2026-04-30 | 2026-06-24 |  |  |  |  |  |  |  |  |  |  |  |  |  |  |  |  |  |  |  |  |
| 14NX42-147 |  | Prefabrykacja ruroci¹gów – Sekcja 23 | 6.3d | 2026-04-30 A | 2026-05-08 A | 14NX42-012, 14NX42-140 SS+5d | 100% | 2026-04-30 | 2026-05-07 | Kalendarz 6-dniowy | Automaty | 14NX42 | Ruroci¹g | Budowa | Roboty | Micha³ | Wyspa | PM000 | Zespó³-W | Wspólne | Krytyczn | Pakiet | L2 |  |  |
| 14NX42-148 |  | Monta¿ ruroci¹gów – Sekcja 23 | 18.9d | 2026-05-13 A | 2026-06-10 A | 14NX42-147, 14NX42-014 SS+7d | 100% | 2026-05-08 | 2026-06-03 | Kalendarz 6-dniowy | Automaty | 14NX42 | Ruroci¹g | Budowa | Roboty | Micha³ | Wyspa | PM000 | Zespó³-K | Wspólne | Normalny | Pakiet | L2 |  | Bez uwag |
| 14NX42-149 |  | Próba ciœnieniowa – Sekcja 23 | 6d | 2026-06-03 A | 2026-06-12 A | 14NX42-148 | 100% | 2026-06-04 | 2026-06-11 |  | Automaty | 14NX42 | Ruroci¹g | Budowa | Roboty | Micha³ | Wyspa | PM000 | Zespó³-I | Wspólne | Niski | Pakiet | L2 |  |  |
| 14NX42-151 |  | Malowanie i oznakowanie – Sekcja 23 | 5d | 2026-06-15 A | 2026-06-23 A | 14NX42-150 FF+2d | 100% | 2026-06-16 | 2026-06-22 |  | Automaty | 14NX42 | Ruroci¹g | Budowa | Roboty | Micha³ | Wyspa | PM000 | Zespó³-W | Wspólne | Normalny | Pakiet | L2 | Rev C |  |
| 14NX42-150 |  | Izolacje – Sekcja 23 | 5d | 2026-06-17 A | 2026-06-24 A | 14NX42-149 | 100% | 2026-06-12 | 2026-06-18 |  | Automaty | 14NX42 | Ruroci¹g | Budowa | Roboty | Micha³ | Wyspa | PM000 | Zespó³-W | Wspólne | Normalny | Pakiet | L2 | Rev A |  |

| ID | WBS | Activity | Duration | Start | Finish | Predecessors | Complete | Planned start | Planned finish | Calendar | AC_Wykonawca | AC_Obiekt | AC_Dyscyplina | AC_Faza | AC_Zakres | AC_Opiekun | AC_Obszar | AC_PP_PM | AC_Zespol | AC_Blok | AC_Priorytet | AC_Pakiet | AC_Poziom | Rewizja dokumentu | Uwagi harmonogramisty |
| --- | --- | --- | --- | --- | --- | --- | --- | --- | --- | --- | --- | --- | --- | --- | --- | --- | --- | --- | --- | --- | --- | --- | --- | --- | --- |
|  | SEKCJA 24 | **Sekcja 24** |  | 2026-05-06 | 2026-07-10 |  |  |  |  |  |  |  |  |  |  |  |  |  |  |  |  |  |  |  |  |
|  | PODSEKCJA | **Podsekcja 24.A** |  | 2026-05-06 | 2026-07-10 |  |  |  |  |  |  |  |  |  |  |  |  |  |  |  |  |  |  |  |  |
| 14NX42-152 |  | Prefabrykacja ruroci¹gów – Sekcja 24 | 9.4d | 2026-05-06 A | 2026-05-20 A | 14NX42-012, 14NX42-147 SS+5d | 100% | 2026-05-07 | 2026-05-19 | Kalendarz 6-dniowy | Automaty | 14NX42 | Ruroci¹g | Budowa | Roboty | Micha³ | Wyspa | PM000 | Zespó³-K | Wspólne | Normalny | Pakiet | L2 |  |  |
| 14NX42-153 |  | Monta¿ ruroci¹gów – Sekcja 24 | 24.6d | 2026-05-20 A | 2026-06-24 A | 14NX42-152, 14NX42-014 SS+4d | 100% | 2026-05-20 | 2026-06-23 |  | Automaty | 14NX42 | Ruroci¹g | Budowa | Roboty | Micha³ | Wyspa | PM000 | Zespó³-K | Wspólne | Normalny | Pakiet | L2 |  |  |
| 14NX42-154 |  | Próba ciœnieniowa – Sekcja 24 | 2d | 2026-06-25 A | 2026-06-26 A | 14NX42-153 | 100% | 2026-06-24 | 2026-06-25 |  | Automaty | 14NX42 | Ruroci¹g | Budowa | Roboty | Micha³ | Wyspa | PM000 | Zespó³-K | Wspólne | Normalny | Pakiet | L2 |  |  |
| 14NX42-155 |  | Izolacje – Sekcja 24 | 6d | 2026-06-30 A | 2026-07-07 A | 14NX42-154 | 100% | 2026-06-26 | 2026-07-03 |  | Automaty | 14NX42 | Ruroci¹g | Budowa | Roboty | Micha³ | Wyspa | PM000 | Zespó³-K | Wspólne | Niski | Pakiet | L2 | Rev C |  |
| 14NX42-156 |  | Malowanie i oznakowanie – Sekcja 24 | 7d | 2026-07-01 A | 2026-07-10 A | 14NX42-155 FF+2d | 100% | 2026-06-29 | 2026-07-07 |  | Automaty | 14NX42 | Ruroci¹g | Budowa | Roboty | Micha³ | Wyspa | PM000 | Zespó³-K | Wspólne | Normalny | Pakiet | L2 |  | Bez uwag |
|  | SEKCJA 25 | **Sekcja 25** |  | 2026-05-19 | 2026-06-29 |  |  |  |  |  |  |  |  |  |  |  |  |  |  |  |  |  |  |  |  |
| 14NX42-159 |  | Prefabrykacja ruroci¹gów – Sekcja 25 | 6.1d | 2026-05-19 A | 2026-05-29 A | 14NX42-012, 14NX42-152 SS+5d | 100% | 2026-05-14 | 2026-05-21 |  | Automaty | 14NX42 | Ruroci¹g | Budowa | Roboty | Micha³ | Wyspa | PM000 | Zespó³-W | Wspólne | Normalny | Pakiet | L2 |  |  |
| 14NX42-160 |  | Monta¿ ruroci¹gów – Sekcja 25 | 10.7d | 2026-05-21 A | 2026-06-03 A | 14NX42-159, 14NX42-014 SS+10d | 100% | 2026-05-22 | 2026-06-04 |  | Automaty | 14NX42 | Ruroci¹g | Budowa | Roboty | Micha³ | Wyspa | PM000 | Zespó³-K | Wspólne | Normalny | Pakiet | L2 | Rev C |  |
| 14NX42-161 |  | Próba ciœnieniowa – Sekcja 25 | 5d | 2026-06-10 A | 2026-06-16 A | 14NX42-160 | 100% | 2026-06-05 | 2026-06-11 |  | Automaty | 14NX42 | Ruroci¹g | Budowa | Roboty | Micha³ | Wyspa | PM000 | Zespó³-K | Wspólne | Niski | Pakiet | L2 |  |  |
| 14NX42-162 |  | Izolacje – Sekcja 25 | 10d | 2026-06-12 A | 2026-06-26 A | 14NX42-161 | 100% | 2026-06-12 | 2026-06-25 |  | Automaty | 14NX42 | Ruroci¹g | Budowa | Roboty | Micha³ | Wyspa | PM000 | Zespó³-K | Wspólne | Normalny | Pakiet | L2 |  |  |
| 14NX42-163 |  | Malowanie i oznakowanie – Sekcja 25 | 4d | 2026-06-23 A | 2026-06-29 A | 14NX42-162 FF+2d | 100% | 2026-06-24 | 2026-06-29 |  | Automaty | 14NX42 | Ruroci¹g | Budowa | Roboty | Micha³ | Wyspa | PM000 | Zespó³-W | Wspólne | Normalny | Pakiet | L2 | Rev A |  |
|  | SEKCJA 26 | **Sekcja 26** |  | 2026-05-26 | 2026-07-27 |  |  |  |  |  |  |  |  |  |  |  |  |  |  |  |  |  |  |  |  |
| 14NX42-164 |  | Prefabrykacja ruroci¹gów – Sekcja 26 | 11.6d | 2026-05-26 A | 2026-06-10 A | 14NX42-012, 14NX42-159 SS+5d | 100% | 2026-05-21 | 2026-06-04 |  | Automaty | 14NX42 | Ruroci¹g | Budowa | Roboty | Micha³ | Wyspa | PM300 | Zespó³-E | Wspólne | Normalny | Pakiet | L2 |  |  |
| 14NX42-165 |  | Monta¿ ruroci¹gów – Sekcja 26 | 20.5d | 2026-06-09 A | 2026-07-09 A | 14NX42-164, 14NX42-014 SS+3d | 100% | 2026-06-05 | 2026-07-03 |  | Automaty | 14NX42 | Ruroci¹g | Budowa | Roboty | Micha³ | Wyspa | PM000 | Zespó³-K | Wspólne | Normalny | Pakiet | L2 |  |  |
| 14NX42-166 |  | Próba ciœnieniowa – Sekcja 26 | 4d | 2026-07-09 A | 2026-07-15 A | 14NX42-165 | 100% | 2026-07-06 | 2026-07-09 |  | Automaty | 14NX42 | Ruroci¹g | Budowa | Roboty | Micha³ | Wyspa | PM000 | Zespó³-W | Wspólne | Wysoki | Pakiet | L2 |  |  |
| 14NX42-167 |  | Izolacje – Sekcja 26 | 8d | 2026-07-09 A | 2026-07-21 A | 14NX42-166 | 100% | 2026-07-10 | 2026-07-21 | Kalendarz 6-dniowy | Automaty | 14NX42 | Ruroci¹g | Budowa | Roboty | Micha³ | Wyspa | PM000 | Zespó³-W | Wspólne | Normalny | Pakiet | L2 | Rev C |  |
| 14NX42-168 |  | Malowanie i oznakowanie – Sekcja 26 | 6d | 2026-07-16 A | 2026-07-27 A | 14NX42-167 FF+2d | 100% | 2026-07-16 | 2026-07-23 |  | Automaty | 14NX42 | Ruroci¹g | Budowa | Roboty | Micha³ | Wyspa | PM000 | Zespó³-W | Wspólne | Normalny | Pakiet | L2 | Rev A |  |
|  | SEKCJA 27 | **Sekcja 27** |  | 2026-05-27 | 2026-07-13 |  |  |  |  |  |  |  |  |  |  |  |  |  |  |  |  |  |  |  |  |
|  | PODSEKCJA | **Podsekcja 27.A** |  | 2026-05-27 | 2026-07-13 |  |  |  |  |  |  |  |  |  |  |  |  |  |  |  |  |  |  |  |  |
| 14NX42-171 |  | Prefabrykacja ruroci¹gów – Sekcja 27 | 5.5d | 2026-05-27 A | 2026-06-05 A | 14NX42-012, 14NX42-164 SS+5d | 100% | 2026-05-28 | 2026-06-03 |  | Automaty | 14NX42 | Ruroci¹g | Budowa | Roboty | Micha³ | Wyspa | PM100 | Zespó³-E | Wspólne | Normalny | Pakiet | L2 |  |  |
| 14NX42-172 |  | Monta¿ ruroci¹gów – Sekcja 27 | 14.5d | 2026-06-05 A | 2026-06-30 A | 14NX42-171, 14NX42-014 SS | 100% | 2026-06-04 | 2026-06-24 |  | Automaty | 14NX42 | Ruroci¹g | Budowa | Roboty | Micha³ | Wyspa | PM000 | Zespó³-K | Wspólne | Normalny | Pakiet | L2 |  |  |
| 14NX42-173 |  | Próba ciœnieniowa – Sekcja 27 | 3d | 2026-06-25 A | 2026-06-30 A | 14NX42-172 | 100% | 2026-06-25 | 2026-06-29 |  | Automaty | 14NX42 | Ruroci¹g | Budowa | Roboty | Micha³ | Wyspa | PM000 | Zespó³-K | Wspólne | Normalny | Pakiet | L2 | Rev C | Ryzyko opóŸnienia |
| 14NX42-174 |  | Izolacje – Sekcja 27 | 5d | 2026-07-01 A | 2026-07-09 A | 14NX42-173 | 100% | 2026-06-30 | 2026-07-06 |  | Automaty | 14NX42 | Ruroci¹g | Budowa | Roboty | Micha³ | Wyspa | PM000 | Zespó³-W | Wspólne | Normalny | Pakiet | L2 | Rev B |  |
| 14NX42-175 |  | Malowanie i oznakowanie – Sekcja 27 | 3d | 2026-07-06 A | 2026-07-13 A | 14NX42-174 FF+2d | 100% | 2026-07-06 | 2026-07-08 |  | Automaty | 14NX42 | Ruroci¹g | Budowa | Roboty | Micha³ | Wyspa | PM200 | Zespó³-E | Wspólne | Normalny | Pakiet | L2 |  |  |

| ID | WBS | Activity | Type | Duration | Start | Finish | Predecessors | Complete | Actual start | Actual finish | Planned start | Planned finish | Calendar | AC_Wykonawca | AC_Obiekt | AC_Dyscyplina | AC_Faza | AC_Zakres | AC_Opiekun | AC_Obszar | AC_PP_PM | AC_Zespol | AC_Blok | AC_Priorytet | AC_Pakiet | AC_Poziom | Rewizja dokumentu | Uwagi harmonogramisty |
| --- | --- | --- | --- | --- | --- | --- | --- | --- | --- | --- | --- | --- | --- | --- | --- | --- | --- | --- | --- | --- | --- | --- | --- | --- | --- | --- | --- | --- |
|  | PROJ | **Projektowanie** |  |  | 2025-04-04 | 2025-08-22 |  |  |  |  |  |  |  |  |  |  |  |  |  |  |  |  |  |  |  |  |  |  |
|  | DOKUMENTAC | **Dokumentacja** |  |  | 2025-04-04 | 2025-08-22 |  |  |  |  |  |  |  |  |  |  |  |  |  |  |  |  |  |  |  |  |  |  |
| 14NX42-001 |  | Projekt wykonawczy – Uk³ad paliwa gazowego |  | 63d | 2025-04-04 A | 2025-07-04 A |  | 100% |  |  | 2025-04-01 | 2025-06-26 |  | Automaty | 14NX42 | Budowlan | Projekto | Projekt | Micha³ | Wyspa | PM000 | Zespó³-I | Wspólne | Wysoki | Pakiet | L2 |  |  |
| 14NX42-002 |  | Uzgodnienie dokumentacji z Inwestorem |  | 28d | 2025-06-30 A | 2025-08-07 A | 14NX42-001 | 100% |  |  | 2025-06-27 | 2025-08-05 |  | Automaty | 14NX42 | Budowlan | Projekto | Projekt | Micha³ | Wyspa | PM000 | Zespó³-K | Wspólne | Niski | Pakiet | L2 |  |  |
| 14NX42-003 |  | Zatwierdzenie dokumentacji do realizacji |  | 9d | 2025-08-08 A | 2025-08-21 A | 14NX42-002 | 100% |  |  | 2025-08-06 | 2025-08-18 |  | Automaty | 14NX42 | Budowlan | Projekto | Projekt | Micha³ | Wyspa | PM000 | Zespó³-W | Wspólne | Niski | Pakiet | L2 |  |  |
| 14NX42-004 |  | KM: Dokumentacja zatwierdzona – Uk³ad paliwa gazowego | milestone | 0d | 2025-08-22 A | 2025-08-22 | 14NX42-003 | 100% |  | 2025-08-21 | 2025-08-19 | 2025-08-19 |  | Automaty | 14NX42 | Budowlan | Projekto | Kamieñ | Micha³ | Wyspa | PM000 | Zespó³-E | Wspólne | Normalny | Pakiet | L1 | Rev A |  |
|  | ROZR | **Rozruch** |  |  | 2026-07-23 | 2026-09-09 |  |  |  |  |  |  |  |  |  |  |  |  |  |  |  |  |  |  |  |  |  |  |
|  | ROZRUCH | **Rozruch** |  |  | 2026-07-23 | 2026-09-09 |  |  |  |  |  |  |  |  |  |  |  |  |  |  |  |  |  |  |  |  |  |  |
| 14NX42-178 |  | Przegl¹d gotowoœci do rozruchu |  | 6d | 2026-07-23 A | 2026-08-04 A | 14NX42-177, 14NX42-019, 14NX42-024, 14NX42-026 | 100% |  |  | 2026-07-24 | 2026-07-31 |  | Automaty | 14NX42 | Rozruch | Rozruch | Rozruch | Micha³ | Wyspa | PM000 | Zespó³-W | Wspólne | Normalny | Pakiet | L2 | Rev C | Czeka na dostawê |
| 14NX42-179 |  | Rozruch na zimno |  | 14d | 2026-08-04 A | 2026-08-21 A | 14NX42-178 | 100% |  |  | 2026-08-03 | 2026-08-20 |  | Automaty | 14NX42 | Rozruch | Rozruch | Rozruch | Micha³ | Wyspa | PM000 | Zespó³-W | Wspólne | Wysoki | Pakiet | L2 | Rev C |  |
| 14NX42-180 |  | Rozruch na gor¹co / próby ruchowe |  | 11d | 2026-08-26 A | 2026-09-09 A | 14NX42-179 | 100% |  |  | 2026-08-21 | 2026-09-04 |  | Automaty | 14NX42 | Rozruch | Rozruch | Rozruch | Micha³ | Wyspa | PM000 | Zespó³-W | Wspólne | Normalny | Pakiet | L2 |  |  |
| 14NX42-181 |  | KM: Odbiór koñcowy – Uk³ad paliwa gazowego | milestone | 0d | 2026-09-04 | 2026-09-04 A | 14NX42-180 | 100% | 2026-09-07 |  | 2026-09-07 | 2026-09-07 |  | Automaty | 14NX42 | Rozruch | Rozruch | Kamieñ | Micha³ | Wyspa | PM000 | Zespó³-K | Wspólne | Normalny | Pakiet | L1 |  | Bez uwag |
|  | ZAKU | **Zakupy** |  |  | 2025-05-02 | 2026-04-07 |  |  |  |  |  |  |  |  |  |  |  |  |  |  |  |  |  |  |  |  |  |  |
|  | DOSTAWY | **Dostawy** |  |  | 2025-08-29 | 2026-04-07 |  |  |  |  |  |  |  |  |  |  |  |  |  |  |  |  |  |  |  |  |  |  |
| 14NX42-008 |  | Produkcja u dostawcy |  | 123d | 2025-08-29 A | 2026-02-20 A | 14NX42-007 | 100% |  |  | 2025-08-27 | 2026-02-13 |  | Automaty | 14NX42 | Mechanic | Zakupy | Dostawa | Micha³ | Wyspa | PM000 | Zespó³-W | Wspólne | Normalny | Pakiet | L2 | Rev B |  |
| 14NX42-009 |  | Testy FAT |  | 7d | 2026-02-19 A | 2026-03-04 A | 14NX42-008 | 100% |  |  | 2026-02-16 | 2026-02-24 |  | Automaty | 14NX42 | Mechanic | Zakupy | Dostawa | Micha³ | Wyspa | PM000 | Zespó³-W | Wspólne | Normalny | Pakiet | L2 |  |  |
| 14NX42-010 |  | Transport i dostawa na plac budowy |  | 28d | 2026-02-25 A | 2026-04-07 A | 14NX42-009 | 100% |  |  | 2026-02-25 | 2026-04-03 |  | Automaty | 14NX42 | Mechanic | Zakupy | Dostawa | Micha³ | Wyspa | PM000 | Zespó³-W | Wspólne | Krytyczn | Pakiet | L2 |  | Czeka na dostawê |
| 14NX42-011 |  | KM: Dostawa na budowê – Uk³ad paliwa gazowego | milestone | 0d | 2026-04-07 A | 2026-04-07 | 14NX42-010 | 100% |  | 2026-04-06 | 2026-04-06 | 2026-04-06 |  | Automaty | 14NX42 | Mechanic | Zakupy | Kamieñ | Micha³ | Wyspa | PM000 | Zespó³-W | Wspólne | Normalny | Pakiet | L1 |  |  |
|  | ZAMÓWIENIA | **Zamówienia** |  |  | 2025-05-02 | 2025-09-02 |  |  |  |  |  |  |  |  |  |  |  |  |  |  |  |  |  |  |  |  |  |  |
| 14NX42-005 |  | Zapytanie ofertowe |  | 27d | 2025-05-02 A | 2025-06-09 A | 14NX42-001 SS+20d | 100% |  |  | 2025-04-29 | 2025-06-04 | Kalendarz 6-dniowy | Automaty | 14NX42 | Mechanic | Zakupy | Dostawa | Micha³ | Wyspa | PM000 | Zespó³-W | Wspólne | Normalny | Pakiet | L2 |  |  |
| 14NX42-006 |  | Analiza i wybór ofert |  | 11d | 2025-06-09 A | 2025-06-24 A | 14NX42-005 | 100% |  |  | 2025-06-05 | 2025-06-19 |  | Automaty | 14NX42 | Mechanic | Zakupy | Dostawa | Micha³ | Wyspa | PM000 | Zespó³-K | Wspólne | Normalny | Pakiet | L2 |  |  |
| 14NX42-007 |  | Zawarcie umowy / zamówienie |  | 6d | 2025-08-22 A | 2025-09-02 A | 14NX42-006, 14NX42-004 SS, 29UF44-004 SS+9d | 100% |  |  | 2025-08-19 | 2025-08-26 |  | Automaty | 14NX42 | Mechanic | Zakupy | Dostawa | Micha³ | Wyspa | PM000 | Zespó³-I | Wspólne | Niski | Pakiet | L1 |  |  |
|  | 15BP15 | **15BP15 – Uk³ad oleju smarnego** |  |  | 2025-02-24 | 2026-11-27 |  |  |  |  |  |  |  |  |  |  |  |  |  |  |  |  |  |  |  |  |  |  |
|  | BUDO | **Budowa** |  |  | 2025-10-31 | 2026-10-07 |  |  |  |  |  |  |  |  |  |  |  |  |  |  |  |  |  |  |  |  |  |  |
|  | AKPIA | **AKPiA** |  |  | 2026-08-21 | 2026-09-14 |  |  |  |  |  |  |  |  |  |  |  |  |  |  |  |  |  |  |  |  |  |  |
| 15BP15-068 |  | Monta¿ uk³adów AKPiA |  | 17d | 2026-08-21 A | 2026-09-14 A | 15BP15-014 SS+5d | 100% |  |  | 2026-08-18 | 2026-09-09 |  | Kablex | 15BP15 | AKPiA | Budowa | Roboty | Magdalen | Wyspa | PM000 | Zespó³-K | Blok | Normalny | Pakiet | L2 |  | Bez uwag |

| ID | WBS | Activity | Type | Duration | Start | Finish | Predecessors | Complete | Remaining | Actual finish | Planned start | Planned finish | Total float | Free float | Calendar | Rewizja dokumentu | AC_Wykonawca | AC_Obiekt | AC_Dyscyplina | AC_Faza | AC_Zakres | AC_Opiekun | AC_Obszar | AC_PP_PM | AC_Zespol | AC_Blok | AC_Priorytet | AC_Pakiet | AC_Poziom | Uwagi harmonogramisty |
| --- | --- | --- | --- | --- | --- | --- | --- | --- | --- | --- | --- | --- | --- | --- | --- | --- | --- | --- | --- | --- | --- | --- | --- | --- | --- | --- | --- | --- | --- | --- |
|  | ELEKTRYKA | **Elektryka** |  |  | 2026-08-24 | 2026-09-24 |  |  |  |  |  |  |  |  |  |  |  |  |  |  |  |  |  |  |  |  |  |  |  |  |
| 15BP15-025 |  | Uk³adanie kabli – trasa 02 |  | 5d | 2026-08-24 A | 2026-09-02 A | 15BP15-014 SS+10d | 100% |  |  | 2026-08-25 | 2026-08-31 |  |  |  | Rev B | Kablex | 15BP15 | Elektryc | Budowa | Roboty | Magdalen | Wyspa | PM000 | Zespó³-W | Blok | Normalny | Pakiet | L2 |  |
| 15BP15-049 |  | Uk³adanie kabli – trasa 06 |  | 20d | 2026-08-25 A | 2026-09-24 A | 15BP15-014 SS+10d | 100% |  |  | 2026-08-25 | 2026-09-21 |  |  |  |  | Kablex | 15BP15 | Elektryc | Budowa | Roboty | Magdalen | Wyspa | PM000 | Zespó³-K | Blok | Normalny | Pakiet | L2 |  |
| 15BP15-037 |  | Uk³adanie kabli – trasa 04 |  | 16d | 2026-08-26 A | 2026-09-21 A | 15BP15-014 SS+10d | 100% |  |  | 2026-08-25 | 2026-09-15 |  |  |  | Rev B | Kablex | 15BP15 | Elektryc | Budowa | Roboty | Magdalen | Wyspa | PM000 | Zespó³-W | Blok | Normalny | Pakiet | L2 |  |
| 15BP15-026 |  | Pod³¹czenia i pomiary – trasa 02 |  | 5d | 2026-08-27 A | 2026-09-02 A | 15BP15-025 FF | 100% |  |  | 2026-08-25 | 2026-08-31 |  |  |  |  | Kablex | 15BP15 | Elektryc | Budowa | Roboty | Magdalen | Wyspa | PM000 | Zespó³-W | Blok | Normalny | Pakiet | L2 | Do weryfikacji z wykonawc¹ |
| 15BP15-061 |  | Uk³adanie kabli – trasa 08 |  | 19d | 2026-08-28 A | 2026-09-23 A | 15BP15-014 SS+10d | 100% |  |  | 2026-08-25 | 2026-09-18 |  |  |  |  | Kablex | 15BP15 | Elektryc | Budowa | Roboty | Magdalen | Wyspa | PM000 | Zespó³-K | Blok | Normalny | Pakiet | L2 | Do weryfikacji z wykonawc¹ |
| 15BP15-062 |  | Pod³¹czenia i pomiary – trasa 08 |  | 9d | 2026-09-10 A | 2026-09-24 A | 15BP15-061 FF | 100% |  |  | 2026-09-08 | 2026-09-18 |  |  |  |  | Kablex | 15BP15 | Elektryc | Budowa | Roboty | Magdalen | Wyspa | PM000 | Zespó³-W | Blok | Normalny | Pakiet | L2 |  |
| 15BP15-038 |  | Pod³¹czenia i pomiary – trasa 04 |  | 4d | 2026-09-14 A | 2026-09-18 A | 15BP15-037 FF | 100% |  |  | 2026-09-10 | 2026-09-15 |  |  |  |  | Kablex | 15BP15 | Elektryc | Budowa | Roboty | Magdalen | Wyspa | PM000 | Zespó³-W | Blok | Normalny | Pakiet | L2 |  |
| 15BP15-050 |  | Pod³¹czenia i pomiary – trasa 06 |  | 3d | 2026-09-17 A | 2026-09-23 A | 15BP15-049 FF | 100% |  |  | 2026-09-17 | 2026-09-21 |  |  |  |  | Kablex | 15BP15 | Elektryc | Budowa | Roboty | Magdalen | Wyspa | PM000 | Zespó³-W | Blok | Normalny | Pakiet | L2 | Ryzyko opóŸnienia |
|  | MONTA¯ | **Monta¿** |  |  | 2025-12-03 | 2026-09-22 |  |  |  |  |  |  |  |  |  |  |  |  |  |  |  |  |  |  |  |  |  |  |  |  |
| 15BP15-013 |  | Monta¿ konstrukcji stalowych |  | 38d | 2025-12-03 A | 2026-01-23 A | 15BP15-012 | 100% |  |  | 2025-12-04 | 2026-01-26 |  |  |  |  | Kablex | 15BP15 | Mechanic | Budowa | Roboty | Magdalen | Wyspa | PM000 | Zespó³-W | Blok | Wysoki | Pakiet | L2 |  |
| 15BP15-014 |  | Monta¿ urz¹dzeñ g³ównych |  | 23d | 2026-08-11 A | 2026-09-11 A | 15BP15-013, 15BP15-011 | 100% |  |  | 2026-08-11 | 2026-09-10 |  |  |  |  | Kablex | 15BP15 | Mechanic | Budowa | Roboty | Magdalen | Wyspa | PM000 | Zespó³-W | Blok | Normalny | Pakiet | L2 | Bez uwag |
| 15BP15-069 |  | KM: Zakoñczenie monta¿u – Uk³ad oleju smarnego | milestone | 0d | 2026-09-22 A | 2026-09-22 | 15BP15-060, 15BP15-062, 15BP15-067, 15BP15-068, 15BP15-014 | 100% |  | 2026-09-21 | 2026-09-21 | 2026-09-21 |  |  |  |  | Kablex | 15BP15 | Mechanic | Budowa | Kamieñ | Magdalen | Wyspa | PM000 | Zespó³-W | Blok | Niski | Pakiet | L2 |  |
|  | ROBOTY BUD | **Roboty budowlane** |  |  | 2025-10-31 | 2025-12-10 |  |  |  |  |  |  |  |  |  |  |  |  |  |  |  |  |  |  |  |  |  |  |  |  |
| 15BP15-012 |  | Fundamenty i roboty ziemne |  | 27d | 2025-10-31 A | 2025-12-10 A | 15BP15-007 FS+13d | 100% |  |  | 2025-10-28 | 2025-12-03 |  |  |  |  | Kablex | 15BP15 | Budowlan | Budowa | Roboty | Magdalen | Wyspa | PM000 | Zespó³-W | Blok | Normalny | Pakiet | L2 |  |
|  | RUROCI¥GI | **Ruroci¹gi** |  |  | 2025-12-05 | 2026-10-07 |  |  |  |  |  |  |  |  |  |  |  |  |  |  |  |  |  |  |  |  |  |  |  |  |
|  | SEKCJA 01 | **Sekcja 01** |  |  | 2025-12-05 | 2026-10-07 |  |  |  |  |  |  |  |  |  |  |  |  |  |  |  |  |  |  |  |  |  |  |  |  |
| 15BP15-015 |  | Prefabrykacja ruroci¹gów – Sekcja 01 |  | 8.8d | 2025-12-05 A | 2025-12-16 A | 15BP15-012 | 100% |  |  | 2025-12-04 | 2025-12-15 |  |  |  |  | Kablex | 15BP15 | Ruroci¹g | Budowa | Roboty | Magdalen | Wyspa | PM000 | Zespó³-W | Blok | Normalny | Pakiet | L2 | Ryzyko opóŸnienia |
| 15BP15-016 |  | Monta¿ ruroci¹gów – Sekcja 01 |  | 18.4d | 2026-08-24 A | 2026-09-17 A | 15BP15-015, 15BP15-014 SS+9d | 100% |  |  | 2026-08-24 | 2026-09-16 |  |  |  |  | Kablex | 15BP15 | Ruroci¹g | Budowa | Roboty | Magdalen | Wyspa | PM000 | Zespó³-I | Blok | Normalny | Pakiet | L2 |  |
| 15BP15-017 |  | Próba ciœnieniowa – Sekcja 01 |  | 4d | 2026-09-21 A | 2026-09-24 A | 15BP15-016 | 100% |  |  | 2026-09-17 | 2026-09-22 |  |  |  |  | Kablex | 15BP15 | Ruroci¹g | Budowa | Roboty | Magdalen | Wyspa | PM000 | Zespó³-K | Blok | Normalny | Pakiet | L2 |  |
| 15BP15-018 |  | Izolacje – Sekcja 01 |  | 9d | 2026-09-24 A | 2026-10-06 A | 15BP15-017 | 100% |  |  | 2026-09-23 | 2026-10-05 |  |  | Kalendarz 6-dniowy |  | Kablex | 15BP15 | Ruroci¹g | Budowa | Roboty | Magdalen | Wyspa | PM000 | Zespó³-W | Blok | Normalny | Pakiet | L2 |  |
| 15BP15-019 |  | Malowanie i oznakowanie – Sekcja 01 |  | 4d | 2026-10-06 A | 2026-10-07 | 15BP15-018 FF+2d | 65% | 1.4d |  | 2026-10-02 | 2026-10-07 | 354.2d | 0d |  |  | Kablex | 15BP15 | Ruroci¹g | Budowa | Roboty | Magdalen | Wyspa | PM000 | Zespó³-W | Blok | Normalny | Pakiet | L2 |  |
|  | SEKCJA 02 | **Sekcja 02** |  |  | 2025-12-11 | 2026-10-06 |  |  |  |  |  |  |  |  |  |  |  |  |  |  |  |  |  |  |  |  |  |  |  |  |
| 15BP15-020 |  | Prefabrykacja ruroci¹gów – Sekcja 02 |  | 5.4d | 2025-12-11 A | 2025-12-18 A | 15BP15-012, 15BP15-015 SS+5d | 100% |  |  | 2025-12-11 | 2025-12-17 |  |  |  |  | Kablex | 15BP15 | Ruroci¹g | Budowa | Roboty | Magdalen | Wyspa | PM000 | Zespó³-K | Blok | Normalny | Pakiet | L2 |  |
| 15BP15-021 |  | Monta¿ ruroci¹gów – Sekcja 02 |  | 14.8d | 2026-08-25 A | 2026-09-15 A | 15BP15-020, 15BP15-014 SS+10d | 100% |  |  | 2026-08-25 | 2026-09-11 |  |  |  |  | Kablex | 15BP15 | Ruroci¹g | Budowa | Roboty | Magdalen | Wyspa | PM000 | Zespó³-W | Blok | Niski | Pakiet | L2 |  |
| 15BP15-022 |  | Próba ciœnieniowa – Sekcja 02 |  | 4d | 2026-09-15 A | 2026-09-23 A | 15BP15-021 | 100% |  |  | 2026-09-14 | 2026-09-17 |  |  |  | Rev A | Kablex | 15BP15 | Ruroci¹g | Budowa | Roboty | Magdalen | Wyspa | PM000 | Zespó³-W | Blok | Normalny | Pakiet | L2 |  |
| 15BP15-023 |  | Izolacje – Sekcja 02 |  | 9d | 2026-09-22 A | 2026-10-06 A | 15BP15-022 | 100% |  |  | 2026-09-18 | 2026-09-30 |  |  |  |  | Kablex | 15BP15 | Ruroci¹g | Budowa | Roboty | Magdalen | Wyspa | PM200 | Zespó³-E | Blok | Wysoki | Pakiet | L2 | Ryzyko opóŸnienia |
| 15BP15-024 |  | Malowanie i oznakowanie – Sekcja 02 |  | 5d | 2026-09-29 A | 2026-10-06 A | 15BP15-023 FF+2d | 100% |  |  | 2026-09-28 | 2026-10-02 |  |  |  |  | Kablex | 15BP15 | Ruroci¹g | Budowa | Roboty | Magdalen | Wyspa | PM000 | Zespó³-W | Blok | Normalny | Pakiet | L2 |  |

| ID | WBS | Activity | Duration | Start | Finish | Predecessors | Complete | Planned start | Planned finish | Calendar | Uwagi harmonogramisty | AC_Wykonawca | AC_Obiekt | AC_Dyscyplina | AC_Faza | AC_Zakres | AC_Opiekun | AC_Obszar | AC_PP_PM | AC_Zespol | AC_Blok | AC_Priorytet | AC_Pakiet | AC_Poziom | Rewizja dokumentu |
| --- | --- | --- | --- | --- | --- | --- | --- | --- | --- | --- | --- | --- | --- | --- | --- | --- | --- | --- | --- | --- | --- | --- | --- | --- | --- |
|  | SEKCJA 03 | **Sekcja 03** |  | 2025-12-23 | 2026-09-07 |  |  |  |  |  |  |  |  |  |  |  |  |  |  |  |  |  |  |  |  |
|  | PODSEKCJA | **Podsekcja 03.A** |  | 2025-12-23 | 2026-09-07 |  |  |  |  |  |  |  |  |  |  |  |  |  |  |  |  |  |  |  |  |
| 15BP15-027 |  | Prefabrykacja ruroci¹gów – Sekcja 03 | 8.5d | 2025-12-23 A | 2026-01-02 A | 15BP15-012, 15BP15-020 SS+5d | 100% | 2025-12-18 | 2025-12-29 |  | Uzgodnione na koordynacji | Kablex | 15BP15 | Ruroci¹g | Budowa | Roboty | Magdalen | Wyspa | PM000 | Zespó³-K | Blok | Normalny | Pakiet | L2 |  |
| 15BP15-028 |  | Monta¿ ruroci¹gów – Sekcja 03 | 8.2d | 2026-08-17 A | 2026-08-27 A | 15BP15-027, 15BP15-014 SS+1d | 100% | 2026-08-12 | 2026-08-21 |  |  | Kablex | 15BP15 | Ruroci¹g | Budowa | Roboty | Magdalen | Wyspa | PM000 | Zespó³-K | Blok | Normalny | Pakiet | L2 |  |
| 15BP15-029 |  | Próba ciœnieniowa – Sekcja 03 | 2d | 2026-08-25 A | 2026-08-31 A | 15BP15-028 | 100% | 2026-08-24 | 2026-08-25 |  | Ryzyko opóŸnienia | Kablex | 15BP15 | Ruroci¹g | Budowa | Roboty | Magdalen | Wyspa | PM000 | Zespó³-W | Blok | Normalny | Pakiet | L2 |  |
| 15BP15-030 |  | Izolacje – Sekcja 03 | 6d | 2026-08-27 A | 2026-09-03 A | 15BP15-029 | 100% | 2026-08-26 | 2026-09-02 |  |  | Kablex | 15BP15 | Ruroci¹g | Budowa | Roboty | Magdalen | Wyspa | PM000 | Zespó³-K | Blok | Wysoki | Pakiet | L2 | Rev C |
| 15BP15-031 |  | Malowanie i oznakowanie – Sekcja 03 | 7d | 2026-08-27 A | 2026-09-07 A | 15BP15-030 FF+2d | 100% | 2026-08-27 | 2026-09-04 |  |  | Kablex | 15BP15 | Ruroci¹g | Budowa | Roboty | Magdalen | Wyspa | PM000 | Zespó³-K | Blok | Normalny | Pakiet | L2 |  |
|  | SEKCJA 04 | **Sekcja 04** |  | 2025-12-26 | 2026-09-18 |  |  |  |  |  |  |  |  |  |  |  |  |  |  |  |  |  |  |  |  |
| 15BP15-032 |  | Prefabrykacja ruroci¹gów – Sekcja 04 | 10.4d | 2025-12-26 A | 2026-01-13 A | 15BP15-012, 15BP15-027 SS+5d | 100% | 2025-12-25 | 2026-01-07 | Kalendarz 6-dniowy |  | Kablex | 15BP15 | Ruroci¹g | Budowa | Roboty | Magdalen | Wyspa | PM000 | Zespó³-K | Blok | Normalny | Pakiet | L2 |  |
| 15BP15-033 |  | Monta¿ ruroci¹gów – Sekcja 04 | 11.4d | 2026-08-20 A | 2026-09-04 A | 15BP15-032, 15BP15-014 SS+4d | 100% | 2026-08-17 | 2026-08-31 |  |  | Kablex | 15BP15 | Ruroci¹g | Budowa | Roboty | Magdalen | Wyspa | PM300 | Zespó³-E | Blok | Normalny | Pakiet | L2 |  |
| 15BP15-034 |  | Próba ciœnieniowa – Sekcja 04 | 5d | 2026-09-04 A | 2026-09-14 A | 15BP15-033 | 100% | 2026-09-01 | 2026-09-07 |  | Do weryfikacji z wykonawc¹ | Kablex | 15BP15 | Ruroci¹g | Budowa | Roboty | Magdalen | Wyspa | PM000 | Zespó³-K | Blok | Wysoki | Pakiet | L2 |  |
| 15BP15-035 |  | Izolacje – Sekcja 04 | 4d | 2026-09-09 A | 2026-09-17 A | 15BP15-034 | 100% | 2026-09-08 | 2026-09-11 |  |  | Kablex | 15BP15 | Ruroci¹g | Budowa | Roboty | Magdalen | Wyspa | PM000 | Zespó³-W | Blok | Normalny | Pakiet | L2 |  |
| 15BP15-036 |  | Malowanie i oznakowanie – Sekcja 04 | 5d | 2026-09-14 A | 2026-09-18 A | 15BP15-035 FF+2d | 100% | 2026-09-09 | 2026-09-15 |  |  | Kablex | 15BP15 | Ruroci¹g | Budowa | Roboty | Magdalen | Wyspa | PM000 | Zespó³-I | Blok | Normalny | Pakiet | L2 |  |
|  | SEKCJA 05 | **Sekcja 05** |  | 2026-01-06 | 2026-09-21 |  |  |  |  |  |  |  |  |  |  |  |  |  |  |  |  |  |  |  |  |
| 15BP15-039 |  | Prefabrykacja ruroci¹gów – Sekcja 05 | 13.3d | 2026-01-06 A | 2026-01-27 A | 15BP15-012, 15BP15-032 SS+5d | 100% | 2026-01-01 | 2026-01-19 |  | Ryzyko opóŸnienia | Kablex | 15BP15 | Ruroci¹g | Budowa | Roboty | Magdalen | Wyspa | PM000 | Zespó³-W | Blok | Normalny | Pakiet | L2 |  |
| 15BP15-040 |  | Monta¿ ruroci¹gów – Sekcja 05 | 5.2d | 2026-08-27 A | 2026-09-03 A | 15BP15-039, 15BP15-014 SS+10d | 100% | 2026-08-25 | 2026-08-31 |  |  | Kablex | 15BP15 | Ruroci¹g | Budowa | Roboty | Magdalen | Wyspa | PM000 | Zespó³-K | Blok | Niski | Pakiet | L2 |  |
| 15BP15-041 |  | Próba ciœnieniowa – Sekcja 05 | 3d | 2026-08-31 A | 2026-09-03 A | 15BP15-040 | 100% | 2026-09-01 | 2026-09-03 |  |  | Kablex | 15BP15 | Ruroci¹g | Budowa | Roboty | Magdalen | Wyspa | PM000 | Zespó³-W | Blok | Normalny | Pakiet | L2 |  |
| 15BP15-042 |  | Izolacje – Sekcja 05 | 9d | 2026-09-04 A | 2026-09-18 A | 15BP15-041 | 100% | 2026-09-04 | 2026-09-16 |  | Ryzyko opóŸnienia | Kablex | 15BP15 | Ruroci¹g | Budowa | Roboty | Magdalen | Wyspa | PM000 | Zespó³-K | Blok | Normalny | Pakiet | L2 | Rev B |
| 15BP15-043 |  | Malowanie i oznakowanie – Sekcja 05 | 4d | 2026-09-15 A | 2026-09-21 A | 15BP15-042 FF+2d | 100% | 2026-09-15 | 2026-09-18 |  | Bez uwag | Kablex | 15BP15 | Ruroci¹g | Budowa | Roboty | Magdalen | Wyspa | PM000 | Zespó³-I | Blok | Wysoki | Pakiet | L2 | Rev C |
|  | SEKCJA 06 | **Sekcja 06** |  | 2026-01-09 | 2026-09-09 |  |  |  |  |  |  |  |  |  |  |  |  |  |  |  |  |  |  |  |  |
|  | PODSEKCJA | **Podsekcja 06.A** |  | 2026-01-09 | 2026-09-09 |  |  |  |  |  |  |  |  |  |  |  |  |  |  |  |  |  |  |  |  |
| 15BP15-044 |  | Prefabrykacja ruroci¹gów – Sekcja 06 | 13.3d | 2026-01-09 A | 2026-01-27 A | 15BP15-012, 15BP15-039 SS+5d | 100% | 2026-01-08 | 2026-01-26 | Kalendarz 6-dniowy |  | Kablex | 15BP15 | Ruroci¹g | Budowa | Roboty | Magdalen | Wyspa | PM000 | Zespó³-K | Blok | Normalny | Pakiet | L2 |  |
| 15BP15-045 |  | Monta¿ ruroci¹gów – Sekcja 06 | 10d | 2026-08-12 A | 2026-08-26 A | 15BP15-044, 15BP15-014 SS+1d | 100% | 2026-08-12 | 2026-08-25 | Kalendarz 6-dniowy |  | Kablex | 15BP15 | Ruroci¹g | Budowa | Roboty | Magdalen | Wyspa | PM000 | Zespó³-K | Blok | Normalny | Pakiet | L2 |  |
| 15BP15-046 |  | Próba ciœnieniowa – Sekcja 06 | 3d | 2026-08-27 A | 2026-09-02 A | 15BP15-045 | 100% | 2026-08-26 | 2026-08-28 |  |  | Kablex | 15BP15 | Ruroci¹g | Budowa | Roboty | Magdalen | Wyspa | PM000 | Zespó³-W | Blok | Wysoki | Pakiet | L2 | Rev A |
| 15BP15-047 |  | Izolacje – Sekcja 06 | 4d | 2026-09-01 A | 2026-09-07 A | 15BP15-046 | 100% | 2026-08-31 | 2026-09-03 |  |  | Kablex | 15BP15 | Ruroci¹g | Budowa | Roboty | Magdalen | Wyspa | PM000 | Zespó³-W | Blok | Normalny | Pakiet | L2 |  |
| 15BP15-048 |  | Malowanie i oznakowanie – Sekcja 06 | 2d | 2026-09-07 A | 2026-09-09 A | 15BP15-047 FF+2d | 100% | 2026-09-04 | 2026-09-07 |  |  | Kablex | 15BP15 | Ruroci¹g | Budowa | Roboty | Magdalen | Wyspa | PM200 | Zespó³-E | Blok | Wysoki | Pakiet | L2 | Rev C |

| ID | WBS | Activity | Type | Duration | Start | Finish | Predecessors | Complete | Actual finish | Planned start | Planned finish | Calendar | AC_Wykonawca | AC_Obiekt | AC_Dyscyplina | AC_Faza | AC_Zakres | AC_Opiekun | AC_Obszar | AC_PP_PM | AC_Zespol | AC_Blok | AC_Priorytet | AC_Pakiet | AC_Poziom | Rewizja dokumentu | Uwagi harmonogramisty |
| --- | --- | --- | --- | --- | --- | --- | --- | --- | --- | --- | --- | --- | --- | --- | --- | --- | --- | --- | --- | --- | --- | --- | --- | --- | --- | --- | --- |
|  | SEKCJA 07 | **Sekcja 07** |  |  | 2026-01-20 | 2026-09-16 |  |  |  |  |  |  |  |  |  |  |  |  |  |  |  |  |  |  |  |  |  |
| 15BP15-051 |  | Prefabrykacja ruroci¹gów – Sekcja 07 |  | 6.9d | 2026-01-20 A | 2026-01-30 A | 15BP15-012, 15BP15-044 SS+5d | 100% |  | 2026-01-15 | 2026-01-22 |  | Kablex | 15BP15 | Ruroci¹g | Budowa | Roboty | Magdalen | Wyspa | PM000 | Zespó³-K | Blok | Normalny | Pakiet | L2 |  |  |
| 15BP15-052 |  | Monta¿ ruroci¹gów – Sekcja 07 |  | 10.4d | 2026-08-17 A | 2026-08-31 A | 15BP15-051, 15BP15-014 SS+4d | 100% |  | 2026-08-17 | 2026-08-28 |  | Kablex | 15BP15 | Ruroci¹g | Budowa | Roboty | Magdalen | Wyspa | PM000 | Zespó³-K | Blok | Normalny | Pakiet | L2 |  |  |
| 15BP15-053 |  | Próba ciœnieniowa – Sekcja 07 |  | 5d | 2026-08-28 A | 2026-09-04 A | 15BP15-052 | 100% |  | 2026-08-31 | 2026-09-04 |  | Kablex | 15BP15 | Ruroci¹g | Budowa | Roboty | Magdalen | Wyspa | PM000 | Zespó³-K | Blok | Normalny | Pakiet | L2 |  |  |
| 15BP15-055 |  | Malowanie i oznakowanie – Sekcja 07 |  | 8d | 2026-09-03 A | 2026-09-15 A | 15BP15-054 FF+2d | 100% |  | 2026-09-02 | 2026-09-11 |  | Kablex | 15BP15 | Ruroci¹g | Budowa | Roboty | Magdalen | Wyspa | PM000 | Zespó³-W | Blok | Wysoki | Pakiet | L2 |  |  |
| 15BP15-054 |  | Izolacje – Sekcja 07 |  | 3d | 2026-09-09 A | 2026-09-16 A | 15BP15-053 | 100% |  | 2026-09-07 | 2026-09-09 | Kalendarz 6-dniowy | Kablex | 15BP15 | Ruroci¹g | Budowa | Roboty | Magdalen | Wyspa | PM000 | Zespó³-W | Blok | Normalny | Pakiet | L2 | Rev B |  |
|  | SEKCJA 08 | **Sekcja 08** |  |  | 2026-01-23 | 2026-09-17 |  |  |  |  |  |  |  |  |  |  |  |  |  |  |  |  |  |  |  |  |  |
| 15BP15-056 |  | Prefabrykacja ruroci¹gów – Sekcja 08 |  | 6.9d | 2026-01-23 A | 2026-02-02 A | 15BP15-012, 15BP15-051 SS+5d | 100% |  | 2026-01-22 | 2026-01-29 |  | Kablex | 15BP15 | Ruroci¹g | Budowa | Roboty | Magdalen | Wyspa | PM000 | Zespó³-W | Blok | Niski | Pakiet | L2 |  |  |
| 15BP15-057 |  | Monta¿ ruroci¹gów – Sekcja 08 |  | 9.1d | 2026-08-17 A | 2026-08-27 A | 15BP15-056, 15BP15-014 SS+1d | 100% |  | 2026-08-12 | 2026-08-24 |  | Kablex | 15BP15 | Ruroci¹g | Budowa | Roboty | Magdalen | Wyspa | PM000 | Zespó³-K | Blok | Normalny | Pakiet | L2 | Rev C |  |
| 15BP15-058 |  | Próba ciœnieniowa – Sekcja 08 |  | 4d | 2026-08-24 A | 2026-08-31 A | 15BP15-057 | 100% |  | 2026-08-25 | 2026-08-28 |  | Kablex | 15BP15 | Ruroci¹g | Budowa | Roboty | Magdalen | Wyspa | PM000 | Zespó³-K | Blok | Normalny | Pakiet | L2 | Rev A | Uzgodnione na koordynacji |
| 15BP15-059 |  | Izolacje – Sekcja 08 |  | 7d | 2026-09-02 A | 2026-09-15 A | 15BP15-058 | 100% |  | 2026-08-31 | 2026-09-08 |  | Kablex | 15BP15 | Ruroci¹g | Budowa | Roboty | Magdalen | Wyspa | PM000 | Zespó³-W | Blok | Normalny | Pakiet | L2 |  |  |
| 15BP15-060 |  | Malowanie i oznakowanie – Sekcja 08 |  | 4d | 2026-09-10 A | 2026-09-17 A | 15BP15-059 FF+2d | 100% |  | 2026-09-07 | 2026-09-10 |  | Kablex | 15BP15 | Ruroci¹g | Budowa | Roboty | Magdalen | Wyspa | PM000 | Zespó³-W | Blok | Normalny | Pakiet | L2 |  |  |
|  | SEKCJA 09 | **Sekcja 09** |  |  | 2026-01-30 | 2026-09-08 |  |  |  |  |  |  |  |  |  |  |  |  |  |  |  |  |  |  |  |  |  |
|  | PODSEKCJA | **Podsekcja 09.A** |  |  | 2026-01-30 | 2026-09-08 |  |  |  |  |  |  |  |  |  |  |  |  |  |  |  |  |  |  |  |  |  |
| 15BP15-063 |  | Prefabrykacja ruroci¹gów – Sekcja 09 |  | 6.9d | 2026-01-30 A | 2026-02-09 A | 15BP15-012, 15BP15-056 SS+5d | 100% |  | 2026-01-29 | 2026-02-05 |  | Kablex | 15BP15 | Ruroci¹g | Budowa | Roboty | Magdalen | Wyspa | PM000 | Zespó³-W | Blok | Wysoki | Pakiet | L2 |  |  |
| 15BP15-064 |  | Monta¿ ruroci¹gów – Sekcja 09 |  | 5.1d | 2026-08-12 A | 2026-08-18 A | 15BP15-063, 15BP15-014 SS+1d | 100% |  |  |  | Kalendarz 6-dniowy | Kablex | 15BP15 | Ruroci¹g | Budowa | Roboty | Magdalen | Wyspa | PM000 | Zespó³-W | Blok | Normalny | Pakiet | L2 | Rev B |  |
| 15BP15-065 |  | Próba ciœnieniowa – Sekcja 09 |  | 5d | 2026-08-24 A | 2026-08-31 A | 15BP15-064 | 100% |  | 2026-08-19 | 2026-08-25 |  | Kablex | 15BP15 | Ruroci¹g | Budowa | Roboty | Magdalen | Wyspa | PM000 | Zespó³-K | Blok | Krytyczn | Pakiet | L2 |  |  |
| 15BP15-066 |  | Izolacje – Sekcja 09 |  | 5d | 2026-08-26 A | 2026-09-03 A | 15BP15-065 | 100% |  | 2026-08-26 | 2026-09-01 |  | Kablex | 15BP15 | Ruroci¹g | Budowa | Roboty | Magdalen | Wyspa | PM000 | Zespó³-K | Blok | Normalny | Pakiet | L2 |  | Czeka na dostawê |
| 15BP15-067 |  | Malowanie i oznakowanie – Sekcja 09 |  | 3d | 2026-09-03 A | 2026-09-08 A | 15BP15-066 FF+2d | 100% |  | 2026-09-01 | 2026-09-03 |  | Kablex | 15BP15 | Ruroci¹g | Budowa | Roboty | Magdalen | Wyspa | PM000 | Zespó³-K | Blok | Normalny | Pakiet | L2 | Rev A | Ryzyko opóŸnienia |
|  | PROJ | **Projektowanie** |  |  | 2025-02-24 | 2025-09-02 |  |  |  |  |  |  |  |  |  |  |  |  |  |  |  |  |  |  |  |  |  |
|  | DOKUMENTAC | **Dokumentacja** |  |  | 2025-02-24 | 2025-09-02 |  |  |  |  |  |  |  |  |  |  |  |  |  |  |  |  |  |  |  |  |  |
| 15BP15-001 |  | Projekt wykonawczy – Uk³ad oleju smarnego |  | 105d | 2025-02-24 A | 2025-07-22 A |  | 100% |  | 2025-02-20 | 2025-07-16 |  | Kablex | 15BP15 | Budowlan | Projekto | Projekt | Magdalen | Wyspa | PM000 | Zespó³-K | Blok | Wysoki | Pakiet | L2 |  |  |
| 15BP15-002 |  | Uzgodnienie dokumentacji z Inwestorem |  | 16d | 2025-07-21 A | 2025-08-13 A | 15BP15-001 | 100% |  | 2025-07-17 | 2025-08-07 |  | Kablex | 15BP15 | Budowlan | Projekto | Projekt | Magdalen | Wyspa | PM000 | Zespó³-W | Blok | Normalny | Pakiet | L2 |  | Bez uwag |
| 15BP15-003 |  | Zatwierdzenie dokumentacji do realizacji |  | 13d | 2025-08-12 A | 2025-09-02 A | 15BP15-002 | 100% |  | 2025-08-08 | 2025-08-26 | Kalendarz 6-dniowy | Kablex | 15BP15 | Budowlan | Projekto | Projekt | Magdalen | Wyspa | PM000 | Zespó³-W | Blok | Normalny | Pakiet | L2 | Rev C |  |
| 15BP15-004 |  | KM: Dokumentacja zatwierdzona – Uk³ad oleju smarnego | milestone | 0d | 2025-08-27 A | 2025-08-27 | 15BP15-003 | 100% | 2025-08-26 |  |  |  | Kablex | 15BP15 | Budowlan | Projekto | Kamieñ | Magdalen | Wyspa | PM000 | Zespó³-K | Blok | Normalny | Pakiet | L1 | Rev A |  |

| ID | WBS | Activity | Type | Duration | Start | Finish | Predecessors | Complete | Actual finish | Planned start | Planned finish | Total float | Free float | Calendar | Uwagi harmonogramisty | AC_Wykonawca | AC_Obiekt | AC_Dyscyplina | AC_Faza | AC_Zakres | AC_Opiekun | AC_Obszar | AC_PP_PM | AC_Zespol | AC_Blok | AC_Priorytet | AC_Pakiet | AC_Poziom | Rewizja dokumentu |
| --- | --- | --- | --- | --- | --- | --- | --- | --- | --- | --- | --- | --- | --- | --- | --- | --- | --- | --- | --- | --- | --- | --- | --- | --- | --- | --- | --- | --- | --- |
|  | ROZR | **Rozruch** |  |  | 2026-10-08 | 2026-11-27 |  |  |  |  |  |  |  |  |  |  |  |  |  |  |  |  |  |  |  |  |  |  |  |
|  | ROZRUCH | **Rozruch** |  |  | 2026-10-08 | 2026-11-27 |  |  |  |  |  |  |  |  |  |  |  |  |  |  |  |  |  |  |  |  |  |  |  |
| 15BP15-070 |  | Przegl¹d gotowoœci do rozruchu |  | 7d | 2026-10-08 | 2026-10-16 | 15BP15-069, 15BP15-019, 15BP15-024, 15BP15-026 |  |  |  |  | 356.2d | 0d |  | Ryzyko opóŸnienia | Kablex | 15BP15 | Rozruch | Rozruch | Rozruch | Magdalen | Wyspa | PM000 | Zespó³-W | Blok | Normalny | Pakiet | L2 |  |
| 15BP15-071 |  | Rozruch na zimno |  | 5d | 2026-10-19 | 2026-10-23 | 15BP15-070 |  |  |  |  | 356.2d | 0d | Kalendarz 6-dniowy |  | Kablex | 15BP15 | Rozruch | Rozruch | Rozruch | Magdalen | Wyspa | PM000 | Zespó³-W | Blok | Normalny | Pakiet | L2 |  |
| 15BP15-072 |  | Rozruch na gor¹co / próby ruchowe |  | 24d | 2026-10-26 | 2026-11-26 | 15BP15-071 |  |  |  |  | 356.2d | 0d |  |  | Kablex | 15BP15 | Rozruch | Rozruch | Rozruch | Magdalen | Wyspa | PM000 | Zespó³-W | Blok | Normalny | Pakiet | L2 | Rev C |
| 15BP15-073 |  | KM: Odbiór koñcowy – Uk³ad oleju smarnego | milestone | 0d | 2026-11-27 | 2026-11-27 | 15BP15-072 |  |  |  |  | 356.2d | 0d |  | Bez uwag | Kablex | 15BP15 | Rozruch | Rozruch | Kamieñ | Magdalen | Wyspa | PM000 | Zespó³-K | Blok | Normalny | Pakiet | L1 |  |
|  | ZAKU | **Zakupy** |  |  | 2025-03-20 | 2026-08-12 |  |  |  |  |  |  |  |  |  |  |  |  |  |  |  |  |  |  |  |  |  |  |  |
|  | DOSTAWY | **Dostawy** |  |  | 2025-10-10 | 2026-08-12 |  |  |  |  |  |  |  |  |  |  |  |  |  |  |  |  |  |  |  |  |  |  |  |
| 15BP15-008 |  | Produkcja u dostawcy |  | 203d | 2025-10-10 A | 2026-07-21 A | 15BP15-007 | 100% |  | 2025-10-09 | 2026-07-20 |  |  |  |  | Kablex | 15BP15 | Mechanic | Zakupy | Dostawa | Magdalen | Wyspa | PM000 | Zespó³-W | Blok | Normalny | Pakiet | L2 |  |
| 15BP15-009 |  | Testy FAT |  | 5d | 2026-07-20 A | 2026-07-27 A | 15BP15-008 | 100% |  | 2026-07-21 | 2026-07-27 |  |  |  |  | Kablex | 15BP15 | Mechanic | Zakupy | Dostawa | Magdalen | Wyspa | PM000 | Zespó³-W | Blok | Normalny | Pakiet | L2 |  |
| 15BP15-010 |  | Transport i dostawa na plac budowy |  | 10d | 2026-07-27 A | 2026-08-11 A | 15BP15-009 | 100% |  | 2026-07-28 | 2026-08-10 |  |  |  |  | Kablex | 15BP15 | Mechanic | Zakupy | Dostawa | Magdalen | Wyspa | PM000 | Zespó³-W | Blok | Niski | Pakiet | L2 |  |
| 15BP15-011 |  | KM: Dostawa na budowê – Uk³ad oleju smarnego | milestone | 0d | 2026-08-12 A | 2026-08-12 | 15BP15-010 | 100% | 2026-08-11 | 2026-08-11 | 2026-08-11 |  |  |  |  | Kablex | 15BP15 | Mechanic | Zakupy | Kamieñ | Magdalen | Wyspa | PM000 | Zespó³-K | Blok | Normalny | Pakiet | L1 |  |
|  | ZAMÓWIENIA | **Zamówienia** |  |  | 2025-03-20 | 2025-10-13 |  |  |  |  |  |  |  |  |  |  |  |  |  |  |  |  |  |  |  |  |  |  |  |
| 15BP15-005 |  | Zapytanie ofertowe |  | 17d | 2025-03-20 A | 2025-04-11 A | 15BP15-001 SS+20d | 100% |  |  |  |  |  |  | Uzgodnione na koordynacji | Kablex | 15BP15 | Mechanic | Zakupy | Dostawa | Magdalen | Wyspa | PM000 | Zespó³-K | Blok | Normalny | Pakiet | L2 | Rev C |
| 15BP15-006 |  | Analiza i wybór ofert |  | 15d | 2025-04-15 A | 2025-05-08 A | 15BP15-005 | 100% |  | 2025-04-14 | 2025-05-02 |  |  |  | Uzgodnione na koordynacji | Kablex | 15BP15 | Mechanic | Zakupy | Dostawa | Magdalen | Wyspa | PM000 | Zespó³-K | Blok | Wysoki | Pakiet | L2 | Rev A |
| 15BP15-007 |  | Zawarcie umowy / zamówienie |  | 7d | 2025-10-03 A | 2025-10-13 A | 15BP15-006, 15BP15-004 SS, 12FX78-004 FS+2d, 24PY38-004 SF+3d | 100% |  | 2025-09-30 | 2025-10-08 |  |  | Kalendarz 6-dniowy |  | Kablex | 15BP15 | Mechanic | Zakupy | Dostawa | Magdalen | Wyspa | PM000 | Zespó³-W | Blok | Normalny | Pakiet | L1 |  |
|  | 24PY38 | **24PY38 – Turbina gazowa** |  |  | 2025-06-04 | 2028-04-24 |  |  |  |  |  |  |  |  |  |  |  |  |  |  |  |  |  |  |  |  |  |  |  |
|  | BUDO | **Budowa** |  |  | 2025-10-28 | 2027-01-25 |  |  |  |  |  |  |  |  |  |  |  |  |  |  |  |  |  |  |  |  |  |  |  |
|  | AKPIA | **AKPiA** |  |  | 2026-10-14 | 2026-10-28 |  |  |  |  |  |  |  |  |  |  |  |  |  |  |  |  |  |  |  |  |  |  |  |
| 24PY38-171 |  | Monta¿ uk³adów AKPiA |  | 11d | 2026-10-14 | 2026-10-28 | 24PY38-014 SS+5d |  |  |  |  | 351.6d | 0d |  |  | GdanskSt | 24PY38 | AKPiA | Budowa | Roboty | Magdalen | Wyspa | PM000 | Zespó³-W | Blok | Normalny | Pakiet | L2 |  |
|  | ELEKTRYKA | **Elektryka** |  |  | 2026-10-16 | 2026-11-13 |  |  |  |  |  |  |  |  |  |  |  |  |  |  |  |  |  |  |  |  |  |  |  |
| 24PY38-062 |  | Pod³¹czenia i pomiary – trasa 08 |  | 9d | 2026-10-16 | 2026-10-28 | 24PY38-061 FF |  |  |  |  | 387.6d | 0d |  |  | GdanskSt | 24PY38 | Elektryc | Budowa | Roboty | Magdalen | Wyspa | PM000 | Zespó³-W | Blok | Normalny | Pakiet | L2 |  |
| 24PY38-146 |  | Pod³¹czenia i pomiary – trasa 22 |  | 8d | 2026-10-20 | 2026-10-29 | 24PY38-145 FF |  |  |  |  | 386.6d | 0d |  |  | GdanskSt | 24PY38 | Elektryc | Budowa | Roboty | Magdalen | Wyspa | PM000 | Zespó³-W | Blok | Niski | Pakiet | L2 |  |
| 24PY38-025 |  | Uk³adanie kabli – trasa 02 |  | 5d | 2026-10-21 | 2026-10-27 | 24PY38-014 SS+10d |  |  |  |  | 352.6d | 0d |  |  | GdanskSt | 24PY38 | Elektryc | Budowa | Roboty | Magdalen | Wyspa | PM000 | Zespó³-W | Blok | Normalny | Pakiet | L2 | Rev A |
| 24PY38-037 |  | Uk³adanie kabli – trasa 04 |  | 18d | 2026-10-21 | 2026-11-13 | 24PY38-014 SS+10d |  |  |  |  | 375.6d | 0d |  | Bez uwag | GdanskSt | 24PY38 | Elektryc | Budowa | Roboty | Magdalen | Wyspa | PM000 | Zespó³-W | Blok | Normalny | Pakiet | L2 | Rev A |
| 24PY38-049 |  | Uk³adanie kabli – trasa 06 |  | 7d | 2026-10-21 | 2026-10-29 | 24PY38-014 SS+10d |  |  |  |  | 386.6d | 0d |  | Uzgodnione na koordynacji | GdanskSt | 24PY38 | Elektryc | Budowa | Roboty | Magdalen | Wyspa | PM000 | Zespó³-K | Blok | Wysoki | Pakiet | L2 |  |
| 24PY38-061 |  | Uk³adanie kabli – trasa 08 |  | 6d | 2026-10-21 | 2026-10-28 | 24PY38-014 SS+10d |  |  |  |  | 387.6d | 0d |  |  | GdanskSt | 24PY38 | Elektryc | Budowa | Roboty | Magdalen | Wyspa | PM200 | Zespó³-E | Blok | Normalny | Pakiet | L2 |  |
| 24PY38-073 |  | Uk³adanie kabli – trasa 10 |  | 17d | 2026-10-21 | 2026-11-12 | 24PY38-014 SS+10d |  |  |  |  | 376.6d | 0d |  |  | GdanskSt | 24PY38 | Elektryc | Budowa | Roboty | Magdalen | Wyspa | PM000 | Zespó³-K | Blok | Normalny | Pakiet | L2 |  |
| 24PY38-085 |  | Uk³adanie kabli – trasa 12 |  | 8d | 2026-10-21 | 2026-10-30 | 24PY38-014 SS+10d |  |  |  |  | 385.6d | 0d | Kalendarz 6-dniowy | Ryzyko opóŸnienia | GdanskSt | 24PY38 | Elektryc | Budowa | Roboty | Magdalen | Wyspa | PM000 | Zespó³-K | Blok | Krytyczn | Pakiet | L2 |  |
| 24PY38-097 |  | Uk³adanie kabli – trasa 14 |  | 8d | 2026-10-21 | 2026-10-30 | 24PY38-014 SS+10d |  |  |  |  | 385.6d | 0d | Kalendarz 6-dniowy |  | GdanskSt | 24PY38 | Elektryc | Budowa | Roboty | Magdalen | Wyspa | PM000 | Zespó³-I | Blok | Normalny | Pakiet | L2 |  |
| 24PY38-109 |  | Uk³adanie kabli – trasa 16 |  | 12d | 2026-10-21 | 2026-11-05 | 24PY38-014 SS+10d |  |  |  |  | 381.6d | 0d |  |  | GdanskSt | 24PY38 | Elektryc | Budowa | Roboty | Magdalen | Wyspa | PM000 | Zespó³-W | Blok | Wysoki | Pakiet | L2 | Rev B |
| 24PY38-121 |  | Uk³adanie kabli – trasa 18 |  | 7d | 2026-10-21 | 2026-10-29 | 24PY38-014 SS+10d |  |  |  |  | 386.6d | 0d | Kalendarz 6-dniowy |  | GdanskSt | 24PY38 | Elektryc | Budowa | Roboty | Magdalen | Wyspa | PM000 | Zespó³-W | Blok | Wysoki | Pakiet | L2 | Rev C |
| 24PY38-122 |  | Pod³¹czenia i pomiary – trasa 18 |  | 7d | 2026-10-21 | 2026-10-29 | 24PY38-121 FF |  |  |  |  | 386.6d | 0d |  |  | GdanskSt | 24PY38 | Elektryc | Budowa | Roboty | Magdalen | Wyspa | PM000 | Zespó³-W | Blok | Normalny | Pakiet | L2 |  |
| 24PY38-133 |  | Uk³adanie kabli – trasa 20 |  | 17d | 2026-10-21 | 2026-11-12 | 24PY38-014 SS+10d |  |  |  |  | 376.6d | 0d |  | Uzgodnione na koordynacji | GdanskSt | 24PY38 | Elektryc | Budowa | Roboty | Magdalen | Wyspa | PM000 | Zespó³-K | Blok | Niski | Pakiet | L2 | Rev C |
| 24PY38-145 |  | Uk³adanie kabli – trasa 22 |  | 7d | 2026-10-21 | 2026-10-29 | 24PY38-014 SS+10d |  |  |  |  | 386.6d | 0d |  | Bez uwag | GdanskSt | 24PY38 | Elektryc | Budowa | Roboty | Magdalen | Wyspa | PM000 | Zespó³-K | Blok | Normalny | Pakiet | L2 |  |
| 24PY38-157 |  | Uk³adanie kabli – trasa 24 |  | 17d | 2026-10-21 | 2026-11-12 | 24PY38-014 SS+10d |  |  |  |  | 376.6d | 0d |  |  | GdanskSt | 24PY38 | Elektryc | Budowa | Roboty | Magdalen | Wyspa | PM000 | Zespó³-W | Blok | Wysoki | Pakiet | L2 | Rev B |
| 24PY38-169 |  | Uk³adanie kabli – trasa 26 |  | 10d | 2026-10-21 | 2026-11-03 | 24PY38-014 SS+10d |  |  |  |  | 347.6d | 0d |  | Bez uwag | GdanskSt | 24PY38 | Elektryc | Budowa | Roboty | Magdalen | Wyspa | PM000 | Zespó³-W | Blok | Normalny | Pakiet | L2 | Rev B |
| 24PY38-026 |  | Pod³¹czenia i pomiary – trasa 02 |  | 4d | 2026-10-22 | 2026-10-27 | 24PY38-025 FF |  |  |  |  | 352.6d | 0d |  | Uzgodnione na koordynacji | GdanskSt | 24PY38 | Elektryc | Budowa | Roboty | Magdalen | Wyspa | PM000 | Zespó³-W | Blok | Normalny | Pakiet | L2 |  |
| 24PY38-050 |  | Pod³¹czenia i pomiary – trasa 06 |  | 4d | 2026-10-26 | 2026-10-29 | 24PY38-049 FF |  |  |  |  | 386.6d | 0d | Kalendarz 6-dniowy |  | GdanskSt | 24PY38 | Elektryc | Budowa | Roboty | Magdalen | Wyspa | PM100 | Zespó³-I | Blok | Krytyczn | Pakiet | L2 |  |
| 24PY38-098 |  | Pod³¹czenia i pomiary – trasa 14 |  | 5d | 2026-10-26 | 2026-10-30 | 24PY38-097 FF |  |  |  |  | 385.6d | 0d |  | Uzgodnione na koordynacji | GdanskSt | 24PY38 | Elektryc | Budowa | Roboty | Magdalen | Wyspa | PM000 | Zespó³-W | Blok | Wysoki | Pakiet | L2 | Rev C |
| 24PY38-110 |  | Pod³¹czenia i pomiary – trasa 16 |  | 9d | 2026-10-26 | 2026-11-05 | 24PY38-109 FF |  |  |  |  | 381.6d | 0d |  |  | GdanskSt | 24PY38 | Elektryc | Budowa | Roboty | Magdalen | Wyspa | PM000 | Zespó³-K | Blok | Niski | Pakiet | L2 |  |
| 24PY38-170 |  | Pod³¹czenia i pomiary – trasa 26 |  | 7d | 2026-10-26 | 2026-11-03 | 24PY38-169 FF |  |  |  |  | 347.6d | 0d |  | Bez uwag | GdanskSt | 24PY38 | Elektryc | Budowa | Roboty | Magdalen | Wyspa | PM000 | Zespó³-W | Blok | Wysoki | Pakiet | L2 | Rev A |
| 24PY38-086 |  | Pod³¹czenia i pomiary – trasa 12 |  | 3d | 2026-10-28 | 2026-10-30 | 24PY38-085 FF |  |  |  |  | 385.6d | 0d |  |  | GdanskSt | 24PY38 | Elektryc | Budowa | Roboty | Magdalen | Wyspa | PM000 | Zespó³-K | Blok | Normalny | Pakiet | L2 |  |
| 24PY38-074 |  | Pod³¹czenia i pomiary – trasa 10 |  | 10d | 2026-10-30 | 2026-11-12 | 24PY38-073 FF |  |  |  |  | 376.6d | 0d |  |  | GdanskSt | 24PY38 | Elektryc | Budowa | Roboty | Magdalen | Wyspa | PM000 | Zespó³-K | Blok | Normalny | Pakiet | L2 |  |
| 24PY38-134 |  | Pod³¹czenia i pomiary – trasa 20 |  | 9d | 2026-11-02 | 2026-11-12 | 24PY38-133 FF |  |  |  |  | 376.6d | 0d | Kalendarz 6-dniowy | Do weryfikacji z wykonawc¹ | GdanskSt | 24PY38 | Elektryc | Budowa | Roboty | Magdalen | Wyspa | PM000 | Zespó³-W | Blok | Normalny | Pakiet | L2 |  |
| 24PY38-158 |  | Pod³¹czenia i pomiary – trasa 24 |  | 6d | 2026-11-05 | 2026-11-12 | 24PY38-157 FF |  |  |  |  | 376.6d | 0d |  |  | GdanskSt | 24PY38 | Elektryc | Budowa | Roboty | Magdalen | Wyspa | PM200 | Zespó³-E | Blok | Normalny | Pakiet | L2 |  |
| 24PY38-038 |  | Pod³¹czenia i pomiary – trasa 04 |  | 5d | 2026-11-09 | 2026-11-13 | 24PY38-037 FF |  |  |  |  | 375.6d | 0d |  |  | GdanskSt | 24PY38 | Elektryc | Budowa | Roboty | Magdalen | Wyspa | PM000 | Zespó³-W | Blok | Normalny | Pakiet | L2 |  |

| ID | WBS | Activity | Type | Duration | Start | Finish | Predecessors | Complete | Remaining | Planned start | Planned finish | Total float | Free float | Calendar | AC_Wykonawca | AC_Obiekt | AC_Dyscyplina | AC_Faza | AC_Zakres | AC_Opiekun | AC_Obszar | AC_PP_PM | AC_Zespol | AC_Blok | AC_Priorytet | AC_Pakiet | AC_Poziom | Rewizja dokumentu | Uwagi harmonogramisty |
| --- | --- | --- | --- | --- | --- | --- | --- | --- | --- | --- | --- | --- | --- | --- | --- | --- | --- | --- | --- | --- | --- | --- | --- | --- | --- | --- | --- | --- | --- |
|  | MONTA¯ | **Monta¿** |  |  | 2026-01-09 | 2026-12-09 |  |  |  |  |  |  |  |  |  |  |  |  |  |  |  |  |  |  |  |  |  |  |  |
| 24PY38-013 |  | Monta¿ konstrukcji stalowych |  | 17d | 2026-01-09 A | 2026-02-02 A | 24PY38-012 | 100% |  |  |  |  |  |  | GdanskSt | 24PY38 | Mechanic | Budowa | Roboty | Magdalen | Wyspa | PM000 | Zespó³-W | Blok | Normalny | Pakiet | L2 |  |  |
| 24PY38-014 |  | Monta¿ urz¹dzeñ g³ównych |  | 57d | 2026-10-07 A | 2026-10-30 | 24PY38-013, 24PY38-011 | 68% | 18.2d | 2026-10-07 | 2026-12-24 | 310.6d | 0d |  | GdanskSt | 24PY38 | Mechanic | Budowa | Roboty | Magdalen | Wyspa | PM000 | Zespó³-W | Blok | Normalny | Pakiet | L2 | Rev C |  |
| 24PY38-172 |  | KM: Zakoñczenie monta¿u – Turbina gazowa | milestone | 0d | 2026-12-09 | 2026-12-09 | 24PY38-163, 24PY38-168, 24PY38-170, 24PY38-171, 24PY38-014 |  |  | 2026-12-25 | 2026-12-25 | 322.6d | 0d | Kalendarz 6-dniowy | GdanskSt | 24PY38 | Mechanic | Budowa | Kamieñ | Magdalen | Wyspa | PM000 | Zespó³-K | Blok | Wysoki | Pakiet | L2 | Rev B |  |
|  | ROBOTY BUD | **Roboty budowlane** |  |  | 2025-10-28 | 2026-01-15 |  |  |  |  |  |  |  |  |  |  |  |  |  |  |  |  |  |  |  |  |  |  |  |
| 24PY38-012 |  | Fundamenty i roboty ziemne |  | 56d | 2025-10-28 A | 2026-01-15 A | 24PY38-007 FS+5d | 100% |  | 2025-10-23 | 2026-01-08 |  |  |  | GdanskSt | 24PY38 | Budowlan | Budowa | Roboty | Magdalen | Wyspa | PM000 | Zespó³-K | Blok | Normalny | Pakiet | L2 | Rev B |  |
|  | RUROCI¥GI | **Ruroci¹gi** |  |  | 2026-01-13 | 2027-01-25 |  |  |  |  |  |  |  |  |  |  |  |  |  |  |  |  |  |  |  |  |  |  |  |
|  | SEKCJA 01 | **Sekcja 01** |  |  | 2026-01-13 | 2026-11-30 |  |  |  |  |  |  |  |  |  |  |  |  |  |  |  |  |  |  |  |  |  |  |  |
| 24PY38-015 |  | Prefabrykacja ruroci¹gów – Sekcja 01 |  | 9.6d | 2026-01-13 A | 2026-01-28 A | 24PY38-012 | 100% |  | 2026-01-09 | 2026-01-21 |  |  |  | GdanskSt | 24PY38 | Ruroci¹g | Budowa | Roboty | Magdalen | Wyspa | PM000 | Zespó³-W | Blok | Normalny | Pakiet | L2 |  |  |
| 24PY38-016 |  | Monta¿ ruroci¹gów – Sekcja 01 |  | 19.8d | 2026-10-21 | 2026-11-16 | 24PY38-015, 24PY38-014 SS+10d |  |  |  |  | 327.8d | 0d |  | GdanskSt | 24PY38 | Ruroci¹g | Budowa | Roboty | Magdalen | Wyspa | PM000 | Zespó³-W | Blok | Normalny | Pakiet | L2 |  |  |
| 24PY38-017 |  | Próba ciœnieniowa – Sekcja 01 |  | 5d | 2026-11-17 | 2026-11-23 | 24PY38-016 |  |  |  |  | 327.8d | 0d |  | GdanskSt | 24PY38 | Ruroci¹g | Budowa | Roboty | Magdalen | Wyspa | PM000 | Zespó³-W | Blok | Wysoki | Pakiet | L2 |  |  |
| 24PY38-018 |  | Izolacje – Sekcja 01 |  | 3d | 2026-11-24 | 2026-11-26 | 24PY38-017 |  |  |  |  | 327.8d | 0d |  | GdanskSt | 24PY38 | Ruroci¹g | Budowa | Roboty | Magdalen | Wyspa | PM000 | Zespó³-W | Blok | Normalny | Pakiet | L2 | Rev A |  |
| 24PY38-019 |  | Malowanie i oznakowanie – Sekcja 01 |  | 3d | 2026-11-26 | 2026-11-30 | 24PY38-018 FF+2d |  |  |  |  | 327.8d | 0d |  | GdanskSt | 24PY38 | Ruroci¹g | Budowa | Roboty | Magdalen | Wyspa | PM000 | Zespó³-W | Blok | Krytyczn | Pakiet | L2 |  |  |
|  | SEKCJA 02 | **Sekcja 02** |  |  | 2026-01-21 | 2026-11-30 |  |  |  |  |  |  |  |  |  |  |  |  |  |  |  |  |  |  |  |  |  |  |  |
| 24PY38-020 |  | Prefabrykacja ruroci¹gów – Sekcja 02 |  | 13.4d | 2026-01-21 A | 2026-02-09 A | 24PY38-012, 24PY38-015 SS+5d | 100% |  | 2026-01-16 | 2026-02-03 |  |  |  | GdanskSt | 24PY38 | Ruroci¹g | Budowa | Roboty | Magdalen | Wyspa | PM000 | Zespó³-W | Blok | Normalny | Pakiet | L2 |  |  |
| 24PY38-021 |  | Monta¿ ruroci¹gów – Sekcja 02 |  | 16.7d | 2026-10-16 | 2026-11-06 | 24PY38-020, 24PY38-014 SS+7d |  |  |  |  | 327.9d | 0d |  | GdanskSt | 24PY38 | Ruroci¹g | Budowa | Roboty | Magdalen | Wyspa | PM000 | Zespó³-W | Blok | Wysoki | Pakiet | L2 |  |  |
| 24PY38-022 |  | Próba ciœnieniowa – Sekcja 02 |  | 2d | 2026-11-09 | 2026-11-10 | 24PY38-021 |  |  |  |  | 327.9d | 0d |  | GdanskSt | 24PY38 | Ruroci¹g | Budowa | Roboty | Magdalen | Wyspa | PM000 | Zespó³-W | Blok | Normalny | Pakiet | L2 |  |  |
| 24PY38-023 |  | Izolacje – Sekcja 02 |  | 12d | 2026-11-11 | 2026-11-26 | 24PY38-022 |  |  |  |  | 327.9d | 0d |  | GdanskSt | 24PY38 | Ruroci¹g | Budowa | Roboty | Magdalen | Wyspa | PM000 | Zespó³-W | Blok | Wysoki | Pakiet | L2 |  | Czeka na dostawê |
| 24PY38-024 |  | Malowanie i oznakowanie – Sekcja 02 |  | 8d | 2026-11-19 | 2026-11-30 | 24PY38-023 FF+2d |  |  |  |  | 327.9d | 0d |  | GdanskSt | 24PY38 | Ruroci¹g | Budowa | Roboty | Magdalen | Wyspa | PM000 | Zespó³-K | Blok | Niski | Pakiet | L2 |  | Ryzyko opóŸnienia |
|  | SEKCJA 03 | **Sekcja 03** |  |  | 2026-01-22 | 2026-12-04 |  |  |  |  |  |  |  |  |  |  |  |  |  |  |  |  |  |  |  |  |  |  |  |
|  | PODSEKCJA | **Podsekcja 03.A** |  |  | 2026-01-22 | 2026-12-04 |  |  |  |  |  |  |  |  |  |  |  |  |  |  |  |  |  |  |  |  |  |  |  |
| 24PY38-027 |  | Prefabrykacja ruroci¹gów – Sekcja 03 |  | 6d | 2026-01-22 A | 2026-02-02 A | 24PY38-012, 24PY38-020 SS+5d | 100% |  | 2026-01-23 | 2026-01-30 |  |  | Kalendarz 6-dniowy | GdanskSt | 24PY38 | Ruroci¹g | Budowa | Roboty | Magdalen | Wyspa | PM000 | Zespó³-W | Blok | Normalny | Pakiet | L2 |  |  |
| 24PY38-028 |  | Monta¿ ruroci¹gów – Sekcja 03 |  | 17.2d | 2026-10-21 | 2026-11-12 | 24PY38-027, 24PY38-014 SS+10d |  |  |  |  | 360.4d | 0d |  | GdanskSt | 24PY38 | Ruroci¹g | Budowa | Roboty | Magdalen | Wyspa | PM000 | Zespó³-K | Blok | Normalny | Pakiet | L2 | Rev C |  |
| 24PY38-029 |  | Próba ciœnieniowa – Sekcja 03 |  | 6d | 2026-11-13 | 2026-11-20 | 24PY38-028 |  |  |  |  | 360.4d | 0d | Kalendarz 6-dniowy | GdanskSt | 24PY38 | Ruroci¹g | Budowa | Roboty | Magdalen | Wyspa | PM000 | Zespó³-K | Blok | Normalny | Pakiet | L2 |  |  |
| 24PY38-030 |  | Izolacje – Sekcja 03 |  | 8d | 2026-11-23 | 2026-12-02 | 24PY38-029 |  |  |  |  | 360.4d | 0d |  | GdanskSt | 24PY38 | Ruroci¹g | Budowa | Roboty | Magdalen | Wyspa | PM000 | Zespó³-W | Blok | Normalny | Pakiet | L2 | Rev C |  |
| 24PY38-031 |  | Malowanie i oznakowanie – Sekcja 03 |  | 7d | 2026-11-26 | 2026-12-04 | 24PY38-030 FF+2d |  |  |  |  | 360.4d | 0d |  | GdanskSt | 24PY38 | Ruroci¹g | Budowa | Roboty | Magdalen | Wyspa | PM000 | Zespó³-W | Blok | Normalny | Pakiet | L2 | Rev A | Ryzyko opóŸnienia |

| ID | WBS | Activity | Duration | Start | Finish | Predecessors | Complete | Planned start | Planned finish | Total float | Free float | Calendar | Rewizja dokumentu | AC_Wykonawca | AC_Obiekt | AC_Dyscyplina | AC_Faza | AC_Zakres | AC_Opiekun | AC_Obszar | AC_PP_PM | AC_Zespol | AC_Blok | AC_Priorytet | AC_Pakiet | AC_Poziom | Uwagi harmonogramisty |
| --- | --- | --- | --- | --- | --- | --- | --- | --- | --- | --- | --- | --- | --- | --- | --- | --- | --- | --- | --- | --- | --- | --- | --- | --- | --- | --- | --- |
|  | SEKCJA 04 | **Sekcja 04** |  | 2026-02-02 | 2026-11-03 |  |  |  |  |  |  |  |  |  |  |  |  |  |  |  |  |  |  |  |  |  |  |
| 24PY38-032 |  | Prefabrykacja ruroci¹gów – Sekcja 04 | 10.8d | 2026-02-02 A | 2026-02-17 A | 24PY38-012, 24PY38-027 SS+5d | 100% | 2026-01-30 | 2026-02-12 |  |  |  | Rev C | GdanskSt | 24PY38 | Ruroci¹g | Budowa | Roboty | Magdalen | Wyspa | PM000 | Zespó³-K | Blok | Normalny | Pakiet | L2 |  |
| 24PY38-033 |  | Monta¿ ruroci¹gów – Sekcja 04 | 6.5d | 2026-10-16 | 2026-10-23 | 24PY38-032, 24PY38-014 SS+7d |  |  |  | 383.1d | 0d |  |  | GdanskSt | 24PY38 | Ruroci¹g | Budowa | Roboty | Magdalen | Wyspa | PM000 | Zespó³-K | Blok | Wysoki | Pakiet | L2 | Uzgodnione na koordynacji |
| 24PY38-034 |  | Próba ciœnieniowa – Sekcja 04 | 2d | 2026-10-26 | 2026-10-27 | 24PY38-033 |  |  |  | 383.1d | 0d |  |  | GdanskSt | 24PY38 | Ruroci¹g | Budowa | Roboty | Magdalen | Wyspa | PM000 | Zespó³-K | Blok | Normalny | Pakiet | L2 | Bez uwag |
| 24PY38-036 |  | Malowanie i oznakowanie – Sekcja 04 | 7d | 2026-10-26 | 2026-11-03 | 24PY38-035 FF+2d |  |  |  | 383.1d | 0d |  |  | GdanskSt | 24PY38 | Ruroci¹g | Budowa | Roboty | Magdalen | Wyspa | PM000 | Zespó³-W | Blok | Normalny | Pakiet | L2 |  |
| 24PY38-035 |  | Izolacje – Sekcja 04 | 3d | 2026-10-28 | 2026-10-30 | 24PY38-034 |  |  |  | 383.1d | 0d |  |  | GdanskSt | 24PY38 | Ruroci¹g | Budowa | Roboty | Magdalen | Wyspa | PM000 | Zespó³-W | Blok | Normalny | Pakiet | L2 |  |
|  | SEKCJA 05 | **Sekcja 05** |  | 2026-02-06 | 2026-11-06 |  |  |  |  |  |  |  |  |  |  |  |  |  |  |  |  |  |  |  |  |  |  |
| 24PY38-039 |  | Prefabrykacja ruroci¹gów – Sekcja 05 | 9.1d | 2026-02-06 A | 2026-02-18 A | 24PY38-012, 24PY38-032 SS+5d | 100% |  |  |  |  |  |  | GdanskSt | 24PY38 | Ruroci¹g | Budowa | Roboty | Magdalen | Wyspa | PM000 | Zespó³-W | Blok | Normalny | Pakiet | L2 |  |
| 24PY38-040 |  | Monta¿ ruroci¹gów – Sekcja 05 | 10.1d | 2026-10-12 | 2026-10-23 | 24PY38-039, 24PY38-014 SS+3d |  |  |  | 380.5d | 0d |  |  | GdanskSt | 24PY38 | Ruroci¹g | Budowa | Roboty | Magdalen | Wyspa | PM000 | Zespó³-W | Blok | Normalny | Pakiet | L2 | Uzgodnione na koordynacji |
| 24PY38-041 |  | Próba ciœnieniowa – Sekcja 05 | 2d | 2026-10-26 | 2026-10-27 | 24PY38-040 |  |  |  | 380.5d | 0d |  |  | GdanskSt | 24PY38 | Ruroci¹g | Budowa | Roboty | Magdalen | Wyspa | PM000 | Zespó³-W | Blok | Normalny | Pakiet | L2 | Ryzyko opóŸnienia |
| 24PY38-042 |  | Izolacje – Sekcja 05 | 6d | 2026-10-28 | 2026-11-04 | 24PY38-041 |  |  |  | 380.5d | 0d |  |  | GdanskSt | 24PY38 | Ruroci¹g | Budowa | Roboty | Magdalen | Wyspa | PM000 | Zespó³-I | Blok | Normalny | Pakiet | L2 |  |
| 24PY38-043 |  | Malowanie i oznakowanie – Sekcja 05 | 2d | 2026-11-05 | 2026-11-06 | 24PY38-042 FF+2d |  |  |  | 380.5d | 0d |  |  | GdanskSt | 24PY38 | Ruroci¹g | Budowa | Roboty | Magdalen | Wyspa | PM000 | Zespó³-K | Blok | Wysoki | Pakiet | L2 |  |
|  | SEKCJA 06 | **Sekcja 06** |  | 2026-02-17 | 2026-11-20 |  |  |  |  |  |  |  |  |  |  |  |  |  |  |  |  |  |  |  |  |  |  |
|  | PODSEKCJA | **Podsekcja 06.A** |  | 2026-02-17 | 2026-11-20 |  |  |  |  |  |  |  |  |  |  |  |  |  |  |  |  |  |  |  |  |  |  |
| 24PY38-044 |  | Prefabrykacja ruroci¹gów – Sekcja 06 | 12d | 2026-02-17 A | 2026-03-09 A | 24PY38-012, 24PY38-039 SS+5d | 100% | 2026-02-13 | 2026-03-02 |  |  |  |  | GdanskSt | 24PY38 | Ruroci¹g | Budowa | Roboty | Magdalen | Wyspa | PM000 | Zespó³-K | Blok | Wysoki | Pakiet | L2 |  |
| 24PY38-045 |  | Monta¿ ruroci¹gów – Sekcja 06 | 11.5d | 2026-10-14 | 2026-10-28 | 24PY38-044, 24PY38-014 SS+5d |  |  |  | 370.1d | 0d |  |  | GdanskSt | 24PY38 | Ruroci¹g | Budowa | Roboty | Magdalen | Wyspa | PM000 | Zespó³-I | Blok | Normalny | Pakiet | L2 | Do weryfikacji z wykonawc¹ |
| 24PY38-046 |  | Próba ciœnieniowa – Sekcja 06 | 6d | 2026-10-29 | 2026-11-05 | 24PY38-045 |  |  |  | 370.1d | 0d |  | Rev B | GdanskSt | 24PY38 | Ruroci¹g | Budowa | Roboty | Magdalen | Wyspa | PM000 | Zespó³-E | Blok | Normalny | Pakiet | L2 |  |
| 24PY38-047 |  | Izolacje – Sekcja 06 | 9d | 2026-11-06 | 2026-11-18 | 24PY38-046 |  |  |  | 370.1d | 0d | Kalendarz 6-dniowy | Rev A | GdanskSt | 24PY38 | Ruroci¹g | Budowa | Roboty | Magdalen | Wyspa | PM000 | Zespó³-W | Blok | Normalny | Pakiet | L2 |  |
| 24PY38-048 |  | Malowanie i oznakowanie – Sekcja 06 | 4d | 2026-11-17 | 2026-11-20 | 24PY38-047 FF+2d |  |  |  | 370.1d | 0d |  |  | GdanskSt | 24PY38 | Ruroci¹g | Budowa | Roboty | Magdalen | Wyspa | PM000 | Zespó³-W | Blok | Normalny | Pakiet | L2 |  |
|  | SEKCJA 07 | **Sekcja 07** |  | 2026-02-20 | 2026-12-01 |  |  |  |  |  |  |  |  |  |  |  |  |  |  |  |  |  |  |  |  |  |  |
| 24PY38-051 |  | Prefabrykacja ruroci¹gów – Sekcja 07 | 11.1d | 2026-02-20 A | 2026-03-09 A | 24PY38-012, 24PY38-044 SS+5d | 100% | 2026-02-20 | 2026-03-06 |  |  |  |  | GdanskSt | 24PY38 | Ruroci¹g | Budowa | Roboty | Magdalen | Wyspa | PM000 | Zespó³-W | Blok | Normalny | Pakiet | L2 |  |
| 24PY38-052 |  | Monta¿ ruroci¹gów – Sekcja 07 | 20.8d | 2026-10-21 | 2026-11-17 | 24PY38-051, 24PY38-014 SS+10d |  |  |  | 362.8d | 0d |  |  | GdanskSt | 24PY38 | Ruroci¹g | Budowa | Roboty | Magdalen | Wyspa | PM000 | Zespó³-W | Blok | Wysoki | Pakiet | L2 |  |
| 24PY38-053 |  | Próba ciœnieniowa – Sekcja 07 | 5d | 2026-11-18 | 2026-11-24 | 24PY38-052 |  |  |  | 362.8d | 0d |  |  | GdanskSt | 24PY38 | Ruroci¹g | Budowa | Roboty | Magdalen | Wyspa | PM000 | Zespó³-W | Blok | Niski | Pakiet | L2 |  |
| 24PY38-054 |  | Izolacje – Sekcja 07 | 3d | 2026-11-25 | 2026-11-27 | 24PY38-053 |  |  |  | 362.8d | 0d |  | Rev A | GdanskSt | 24PY38 | Ruroci¹g | Budowa | Roboty | Magdalen | Wyspa | PM000 | Zespó³-W | Blok | Niski | Pakiet | L2 |  |
| 24PY38-055 |  | Malowanie i oznakowanie – Sekcja 07 | 3d | 2026-11-27 | 2026-12-01 | 24PY38-054 FF+2d |  |  |  | 362.8d | 0d |  |  | GdanskSt | 24PY38 | Ruroci¹g | Budowa | Roboty | Magdalen | Wyspa | PM000 | Zespó³-K | Blok | Normalny | Pakiet | L2 |  |

| ID | WBS | Activity | Duration | Start | Finish | Predecessors | Complete | Planned start | Planned finish | Total float | Free float | Calendar | AC_Wykonawca | AC_Obiekt | AC_Dyscyplina | AC_Faza | AC_Zakres | AC_Opiekun | AC_Obszar | AC_PP_PM | AC_Zespol | AC_Blok | AC_Priorytet | AC_Pakiet | AC_Poziom | Uwagi harmonogramisty | Rewizja dokumentu |
| --- | --- | --- | --- | --- | --- | --- | --- | --- | --- | --- | --- | --- | --- | --- | --- | --- | --- | --- | --- | --- | --- | --- | --- | --- | --- | --- | --- |
|  | SEKCJA 08 | **Sekcja 08** |  | 2026-02-26 | 2026-12-03 |  |  |  |  |  |  |  |  |  |  |  |  |  |  |  |  |  |  |  |  |  |  |
| 24PY38-056 |  | Prefabrykacja ruroci¹gów – Sekcja 08 | 6d | 2026-02-26 A | 2026-03-09 A | 24PY38-012, 24PY38-051 SS+5d | 100% | 2026-02-27 | 2026-03-06 |  |  |  | GdanskSt | 24PY38 | Ruroci¹g | Budowa | Roboty | Magdalen | Wyspa | PM000 | Zespó³-W | Blok | Normalny | Pakiet | L2 |  |  |
| 24PY38-057 |  | Monta¿ ruroci¹gów – Sekcja 08 | 17.5d | 2026-10-20 | 2026-11-11 | 24PY38-056, 24PY38-014 SS+9d |  |  |  | 361.1d | 0d |  | GdanskSt | 24PY38 | Ruroci¹g | Budowa | Roboty | Magdalen | Wyspa | PM000 | Zespó³-W | Blok | Wysoki | Pakiet | L2 | Bez uwag |  |
| 24PY38-058 |  | Próba ciœnieniowa – Sekcja 08 | 3d | 2026-11-12 | 2026-11-16 | 24PY38-057 |  |  |  | 361.1d | 0d |  | GdanskSt | 24PY38 | Ruroci¹g | Budowa | Roboty | Magdalen | Wyspa | PM000 | Zespó³-K | Blok | Normalny | Pakiet | L2 |  | Rev B |
| 24PY38-059 |  | Izolacje – Sekcja 08 | 11d | 2026-11-17 | 2026-12-01 | 24PY38-058 |  |  |  | 361.1d | 0d |  | GdanskSt | 24PY38 | Ruroci¹g | Budowa | Roboty | Magdalen | Wyspa | PM000 | Zespó³-W | Blok | Normalny | Pakiet | L2 |  |  |
| 24PY38-060 |  | Malowanie i oznakowanie – Sekcja 08 | 6d | 2026-11-26 | 2026-12-03 | 24PY38-059 FF+2d |  |  |  | 361.1d | 0d |  | GdanskSt | 24PY38 | Ruroci¹g | Budowa | Roboty | Magdalen | Wyspa | PM000 | Zespó³-W | Blok | Wysoki | Pakiet | L2 |  | Rev A |
|  | SEKCJA 09 | **Sekcja 09** |  | 2026-03-11 | 2026-12-14 |  |  |  |  |  |  |  |  |  |  |  |  |  |  |  |  |  |  |  |  |  |  |
|  | PODSEKCJA | **Podsekcja 09.A** |  | 2026-03-11 | 2026-12-14 |  |  |  |  |  |  |  |  |  |  |  |  |  |  |  |  |  |  |  |  |  |  |
| 24PY38-063 |  | Prefabrykacja ruroci¹gów – Sekcja 09 | 10.5d | 2026-03-11 A | 2026-03-25 A | 24PY38-012, 24PY38-056 SS+5d | 100% | 2026-03-06 | 2026-03-19 |  |  |  | GdanskSt | 24PY38 | Ruroci¹g | Budowa | Roboty | Magdalen | Wyspa | PM000 | Zespó³-K | Blok | Normalny | Pakiet | L2 | Ryzyko opóŸnienia | Rev B |
| 24PY38-064 |  | Monta¿ ruroci¹gów – Sekcja 09 | 13.3d | 2026-11-04 | 2026-11-20 | 24PY38-063, 24PY38-014 SS+10d |  | 2026-10-21 | 2026-11-06 | 354.3d | 0d |  | GdanskSt | 24PY38 | Ruroci¹g | Budowa | Roboty | Magdalen | Wyspa | PM000 | Zespó³-W | Blok | Normalny | Pakiet | L2 |  |  |
| 24PY38-065 |  | Próba ciœnieniowa – Sekcja 09 | 5d | 2026-11-23 | 2026-11-27 | 24PY38-064 |  | 2026-11-09 | 2026-11-13 | 354.3d | 0d |  | GdanskSt | 24PY38 | Ruroci¹g | Budowa | Roboty | Magdalen | Wyspa | PM000 | Zespó³-W | Blok | Niski | Pakiet | L2 |  |  |
| 24PY38-066 |  | Izolacje – Sekcja 09 | 9d | 2026-11-30 | 2026-12-10 | 24PY38-065 |  | 2026-11-16 | 2026-11-26 | 354.3d | 0d |  | GdanskSt | 24PY38 | Ruroci¹g | Budowa | Roboty | Magdalen | Wyspa | PM000 | Zespó³-K | Blok | Wysoki | Pakiet | L2 |  |  |
| 24PY38-067 |  | Malowanie i oznakowanie – Sekcja 09 | 6d | 2026-12-07 | 2026-12-14 | 24PY38-066 FF+2d |  | 2026-11-23 | 2026-11-30 | 354.3d | 0d |  | GdanskSt | 24PY38 | Ruroci¹g | Budowa | Roboty | Magdalen | Wyspa | PM000 | Zespó³-W | Blok | Wysoki | Pakiet | L2 |  | Rev B |
|  | SEKCJA 10 | **Sekcja 10** |  | 2026-03-16 | 2026-11-19 |  |  |  |  |  |  |  |  |  |  |  |  |  |  |  |  |  |  |  |  |  |  |
| 24PY38-068 |  | Prefabrykacja ruroci¹gów – Sekcja 10 | 5.7d | 2026-03-16 A | 2026-03-25 A | 24PY38-012, 24PY38-063 SS+5d | 100% | 2026-03-13 | 2026-03-19 |  |  |  | GdanskSt | 24PY38 | Ruroci¹g | Budowa | Roboty | Magdalen | Wyspa | PM000 | Zespó³-W | Blok | Normalny | Pakiet | L2 |  |  |
| 24PY38-069 |  | Monta¿ ruroci¹gów – Sekcja 10 | 10.1d | 2026-10-20 | 2026-11-02 | 24PY38-068, 24PY38-014 SS+9d |  |  |  | 371.5d | 0d |  | GdanskSt | 24PY38 | Ruroci¹g | Budowa | Roboty | Magdalen | Wyspa | PM000 | Zespó³-W | Blok | Normalny | Pakiet | L2 |  |  |
| 24PY38-070 |  | Próba ciœnieniowa – Sekcja 10 | 3d | 2026-11-03 | 2026-11-05 | 24PY38-069 |  |  |  | 371.5d | 0d |  | GdanskSt | 24PY38 | Ruroci¹g | Budowa | Roboty | Magdalen | Wyspa | PM000 | Zespó³-W | Blok | Normalny | Pakiet | L2 |  | Rev A |
| 24PY38-071 |  | Izolacje – Sekcja 10 | 8d | 2026-11-06 | 2026-11-17 | 24PY38-070 |  |  |  | 371.5d | 0d |  | GdanskSt | 24PY38 | Ruroci¹g | Budowa | Roboty | Magdalen | Wyspa | PM000 | Zespó³-W | Blok | Normalny | Pakiet | L2 |  | Rev C |
| 24PY38-072 |  | Malowanie i oznakowanie – Sekcja 10 | 2d | 2026-11-18 | 2026-11-19 | 24PY38-071 FF+2d |  |  |  | 371.5d | 0d | Kalendarz 6-dniowy | GdanskSt | 24PY38 | Ruroci¹g | Budowa | Roboty | Magdalen | Wyspa | PM000 | Zespó³-W | Blok | Normalny | Pakiet | L2 | Bez uwag |  |
|  | SEKCJA 11 | **Sekcja 11** |  | 2026-03-25 | 2026-11-13 |  |  |  |  |  |  |  |  |  |  |  |  |  |  |  |  |  |  |  |  |  |  |
| 24PY38-075 |  | Prefabrykacja ruroci¹gów – Sekcja 11 | 11.8d | 2026-03-25 A | 2026-04-08 A | 24PY38-012, 24PY38-068 SS+5d | 100% | 2026-03-20 | 2026-04-03 |  |  |  | GdanskSt | 24PY38 | Ruroci¹g | Budowa | Roboty | Magdalen | Wyspa | PM000 | Zespó³-W | Blok | Normalny | Pakiet | L2 |  |  |
| 24PY38-076 |  | Monta¿ ruroci¹gów – Sekcja 11 | 7.1d | 2026-10-20 | 2026-10-28 | 24PY38-075, 24PY38-014 SS+9d |  |  |  | 375.5d | 0d | Kalendarz 6-dniowy | GdanskSt | 24PY38 | Ruroci¹g | Budowa | Roboty | Magdalen | Wyspa | PM000 | Zespó³-W | Blok | Normalny | Pakiet | L2 | Do weryfikacji z wykonawc¹ |  |
| 24PY38-077 |  | Próba ciœnieniowa – Sekcja 11 | 6d | 2026-10-29 | 2026-11-05 | 24PY38-076 |  |  |  | 375.5d | 0d |  | GdanskSt | 24PY38 | Ruroci¹g | Budowa | Roboty | Magdalen | Wyspa | PM000 | Zespó³-K | Blok | Normalny | Pakiet | L2 |  |  |
| 24PY38-078 |  | Izolacje – Sekcja 11 | 4d | 2026-11-06 | 2026-11-11 | 24PY38-077 |  |  |  | 375.5d | 0d |  | GdanskSt | 24PY38 | Ruroci¹g | Budowa | Roboty | Magdalen | Wyspa | PM000 | Zespó³-W | Blok | Normalny | Pakiet | L2 |  |  |
| 24PY38-079 |  | Malowanie i oznakowanie – Sekcja 11 | 5d | 2026-11-09 | 2026-11-13 | 24PY38-078 FF+2d |  |  |  | 375.5d | 0d | Kalendarz 6-dniowy | GdanskSt | 24PY38 | Ruroci¹g | Budowa | Roboty | Magdalen | Wyspa | PM000 | Zespó³-K | Blok | Normalny | Pakiet | L2 |  |  |

| ID | WBS | Activity | Duration | Start | Finish | Predecessors | Complete | Planned start | Planned finish | Total float | Free float | Calendar | Rewizja dokumentu | AC_Wykonawca | AC_Obiekt | AC_Dyscyplina | AC_Faza | AC_Zakres | AC_Opiekun | AC_Obszar | AC_PP_PM | AC_Zespol | AC_Blok | AC_Priorytet | AC_Pakiet | AC_Poziom | Uwagi harmonogramisty |
| --- | --- | --- | --- | --- | --- | --- | --- | --- | --- | --- | --- | --- | --- | --- | --- | --- | --- | --- | --- | --- | --- | --- | --- | --- | --- | --- | --- |
|  | SEKCJA 12 | **Sekcja 12** |  | 2026-03-27 | 2026-11-09 |  |  |  |  |  |  |  |  |  |  |  |  |  |  |  |  |  |  |  |  |  |  |
|  | PODSEKCJA | **Podsekcja 12.A** |  | 2026-03-27 | 2026-11-09 |  |  |  |  |  |  |  |  |  |  |  |  |  |  |  |  |  |  |  |  |  |  |
| 24PY38-080 |  | Prefabrykacja ruroci¹gów – Sekcja 12 | 12d | 2026-03-27 A | 2026-04-13 A | 24PY38-012, 24PY38-075 SS+5d | 100% |  |  |  |  |  | Rev C | GdanskSt | 24PY38 | Ruroci¹g | Budowa | Roboty | Magdalen | Wyspa | PM000 | Zespó³-W | Blok | Normalny | Pakiet | L2 |  |
| 24PY38-081 |  | Monta¿ ruroci¹gów – Sekcja 12 | 6.4d | 2026-10-14 | 2026-10-21 | 24PY38-080, 24PY38-014 SS+5d |  |  |  | 379.2d | 0d |  |  | GdanskSt | 24PY38 | Ruroci¹g | Budowa | Roboty | Magdalen | Wyspa | PM000 | Zespó³-K | Blok | Normalny | Pakiet | L2 |  |
| 24PY38-082 |  | Próba ciœnieniowa – Sekcja 12 | 4d | 2026-10-22 | 2026-10-27 | 24PY38-081 |  |  |  | 379.2d | 0d |  |  | GdanskSt | 24PY38 | Ruroci¹g | Budowa | Roboty | Magdalen | Wyspa | PM000 | Zespó³-K | Blok | Wysoki | Pakiet | L2 |  |
| 24PY38-083 |  | Izolacje – Sekcja 12 | 7d | 2026-10-28 | 2026-11-05 | 24PY38-082 |  |  |  | 379.2d | 0d |  |  | GdanskSt | 24PY38 | Ruroci¹g | Budowa | Roboty | Magdalen | Wyspa | PM000 | Zespó³-W | Blok | Wysoki | Pakiet | L2 |  |
| 24PY38-084 |  | Malowanie i oznakowanie – Sekcja 12 | 3d | 2026-11-05 | 2026-11-09 | 24PY38-083 FF+2d |  |  |  | 379.2d | 0d |  | Rev A | GdanskSt | 24PY38 | Ruroci¹g | Budowa | Roboty | Magdalen | Wyspa | PM000 | Zespó³-K | Blok | Normalny | Pakiet | L2 |  |
|  | SEKCJA 13 | **Sekcja 13** |  | 2026-04-06 | 2026-11-26 |  |  |  |  |  |  |  |  |  |  |  |  |  |  |  |  |  |  |  |  |  |  |
| 24PY38-087 |  | Prefabrykacja ruroci¹gów – Sekcja 13 | 7.4d | 2026-04-06 A | 2026-04-15 A | 24PY38-012, 24PY38-080 SS+5d | 100% | 2026-04-03 | 2026-04-13 |  |  |  | Rev C | GdanskSt | 24PY38 | Ruroci¹g | Budowa | Roboty | Magdalen | Wyspa | PM000 | Zespó³-W | Blok | Wysoki | Pakiet | L2 | Czeka na dostawê |
| 24PY38-088 |  | Monta¿ ruroci¹gów – Sekcja 13 | 10.5d | 2026-10-20 | 2026-11-02 | 24PY38-087, 24PY38-014 SS+9d |  |  |  | 366.1d | 0d |  |  | GdanskSt | 24PY38 | Ruroci¹g | Budowa | Roboty | Magdalen | Wyspa | PM000 | Zespó³-K | Blok | Niski | Pakiet | L2 |  |
| 24PY38-089 |  | Próba ciœnieniowa – Sekcja 13 | 4d | 2026-11-03 | 2026-11-06 | 24PY38-088 |  |  |  | 366.1d | 0d |  |  | GdanskSt | 24PY38 | Ruroci¹g | Budowa | Roboty | Magdalen | Wyspa | PM000 | Zespó³-K | Blok | Normalny | Pakiet | L2 | Do weryfikacji z wykonawc¹ |
| 24PY38-090 |  | Izolacje – Sekcja 13 | 12d | 2026-11-09 | 2026-11-24 | 24PY38-089 |  |  |  | 366.1d | 0d |  |  | GdanskSt | 24PY38 | Ruroci¹g | Budowa | Roboty | Magdalen | Wyspa | PM000 | Zespó³-K | Blok | Normalny | Pakiet | L2 |  |
| 24PY38-091 |  | Malowanie i oznakowanie – Sekcja 13 | 8d | 2026-11-17 | 2026-11-26 | 24PY38-090 FF+2d |  |  |  | 366.1d | 0d |  |  | GdanskSt | 24PY38 | Ruroci¹g | Budowa | Roboty | Magdalen | Wyspa | PM000 | Zespó³-W | Blok | Wysoki | Pakiet | L2 |  |
|  | SEKCJA 14 | **Sekcja 14** |  | 2026-04-13 | 2026-12-01 |  |  |  |  |  |  |  |  |  |  |  |  |  |  |  |  |  |  |  |  |  |  |
| 24PY38-092 |  | Prefabrykacja ruroci¹gów – Sekcja 14 | 7.5d | 2026-04-13 A | 2026-04-24 A | 24PY38-012, 24PY38-087 SS+5d | 100% | 2026-04-10 | 2026-04-20 |  |  |  |  | GdanskSt | 24PY38 | Ruroci¹g | Budowa | Roboty | Magdalen | Wyspa | PM000 | Zespó³-K | Blok | Normalny | Pakiet | L2 |  |
| 24PY38-093 |  | Monta¿ ruroci¹gów – Sekcja 14 | 16.4d | 2026-10-16 | 2026-11-06 | 24PY38-092, 24PY38-014 SS+7d |  |  |  | 369.2d | 0d | Kalendarz 6-dniowy |  | GdanskSt | 24PY38 | Ruroci¹g | Budowa | Roboty | Magdalen | Wyspa | PM000 | Zespó³-W | Blok | Normalny | Pakiet | L2 |  |
| 24PY38-094 |  | Próba ciœnieniowa – Sekcja 14 | 3d | 2026-11-09 | 2026-11-11 | 24PY38-093 |  |  |  | 369.2d | 0d |  |  | GdanskSt | 24PY38 | Ruroci¹g | Budowa | Roboty | Magdalen | Wyspa | PM000 | Zespó³-W | Blok | Normalny | Pakiet | L2 |  |
| 24PY38-095 |  | Izolacje – Sekcja 14 | 6d | 2026-11-12 | 2026-11-19 | 24PY38-094 |  |  |  | 369.2d | 0d |  |  | GdanskSt | 24PY38 | Ruroci¹g | Budowa | Roboty | Magdalen | Wyspa | PM000 | Zespó³-W | Blok | Normalny | Pakiet | L2 |  |
| 24PY38-096 |  | Malowanie i oznakowanie – Sekcja 14 | 5d | 2026-11-25 | 2026-12-01 | 24PY38-095 FF+2d |  | 2026-11-17 | 2026-11-23 | 363.6d | 0d |  |  | GdanskSt | 24PY38 | Ruroci¹g | Budowa | Roboty | Magdalen | Wyspa | PM000 | Zespó³-I | Blok | Niski | Pakiet | L2 | Czeka na dostawê |
|  | SEKCJA 15 | **Sekcja 15** |  | 2026-04-20 | 2027-01-25 |  |  |  |  |  |  |  |  |  |  |  |  |  |  |  |  |  |  |  |  |  |  |
|  | PODSEKCJA | **Podsekcja 15.A** |  | 2026-04-20 | 2027-01-25 |  |  |  |  |  |  |  |  |  |  |  |  |  |  |  |  |  |  |  |  |  |  |
| 24PY38-099 |  | Prefabrykacja ruroci¹gów – Sekcja 15 | 10.1d | 2026-04-20 A | 2026-05-04 A | 24PY38-012, 24PY38-092 SS+5d | 100% | 2026-04-17 | 2026-04-30 |  |  |  |  | GdanskSt | 24PY38 | Ruroci¹g | Budowa | Roboty | Magdalen | Wyspa | PM000 | Zespó³-K | Blok | Normalny | Pakiet | L2 |  |
| 24PY38-100 |  | Monta¿ ruroci¹gów – Sekcja 15 | 20.4d | 2026-10-21 | 2026-11-17 | 24PY38-099, 24PY38-014 SS+10d |  |  |  | 356.2d | 0d |  |  | GdanskSt | 24PY38 | Ruroci¹g | Budowa | Roboty | Magdalen | Wyspa | PM000 | Zespó³-W | Blok | Normalny | Pakiet | L2 |  |
| 24PY38-101 |  | Próba ciœnieniowa – Sekcja 15 | 4d | 2026-11-18 | 2026-11-23 | 24PY38-100 |  |  |  | 356.2d | 0d |  | Rev B | GdanskSt | 24PY38 | Ruroci¹g | Budowa | Roboty | Magdalen | Wyspa | PM000 | Zespó³-K | Blok | Wysoki | Pakiet | L2 |  |
| 24PY38-102 |  | Izolacje – Sekcja 15 | 11d | 2026-11-24 | 2026-12-08 | 24PY38-101 |  |  |  | 356.2d | 0d |  |  | GdanskSt | 24PY38 | Ruroci¹g | Budowa | Roboty | Magdalen | Wyspa | PM000 | Zespó³-K | Blok | Normalny | Pakiet | L2 |  |
| 24PY38-103 |  | Malowanie i oznakowanie – Sekcja 15 | 2d | 2027-01-22 | 2027-01-25 | 24PY38-102 FF+2d |  | 2026-12-09 | 2026-12-10 | 324.6d | 0d |  |  | GdanskSt | 24PY38 | Ruroci¹g | Budowa | Roboty | Magdalen | Wyspa | PM000 | Zespó³-E | Blok | Normalny | Pakiet | L2 | Czeka na dostawê |

| ID | WBS | Activity | Duration | Start | Finish | Predecessors | Complete | Planned start | Planned finish | Total float | Free float | Calendar | Uwagi harmonogramisty | AC_Wykonawca | AC_Obiekt | AC_Dyscyplina | AC_Faza | AC_Zakres | AC_Opiekun | AC_Obszar | AC_PP_PM | AC_Zespol | AC_Blok | AC_Priorytet | AC_Pakiet | AC_Poziom | Rewizja dokumentu |
| --- | --- | --- | --- | --- | --- | --- | --- | --- | --- | --- | --- | --- | --- | --- | --- | --- | --- | --- | --- | --- | --- | --- | --- | --- | --- | --- | --- |
|  | SEKCJA 16 | **Sekcja 16** |  | 2026-04-24 | 2026-11-25 |  |  |  |  |  |  |  |  |  |  |  |  |  |  |  |  |  |  |  |  |  |  |
| 24PY38-104 |  | Prefabrykacja ruroci¹gów – Sekcja 16 | 11.6d | 2026-04-24 A | 2026-05-08 A | 24PY38-012, 24PY38-099 SS+5d | 100% |  |  |  |  |  | Czeka na dostawê | GdanskSt | 24PY38 | Ruroci¹g | Budowa | Roboty | Magdalen | Wyspa | PM000 | Zespó³-W | Blok | Normalny | Pakiet | L2 |  |
| 24PY38-105 |  | Monta¿ ruroci¹gów – Sekcja 16 | 11.3d | 2026-10-15 | 2026-10-29 | 24PY38-104, 24PY38-014 SS+6d |  |  |  | 367.3d | 0d |  |  | GdanskSt | 24PY38 | Ruroci¹g | Budowa | Roboty | Magdalen | Wyspa | PM000 | Zespó³-W | Blok | Wysoki | Pakiet | L2 |  |
| 24PY38-106 |  | Próba ciœnieniowa – Sekcja 16 | 6d | 2026-10-30 | 2026-11-06 | 24PY38-105 |  |  |  | 367.3d | 0d |  |  | GdanskSt | 24PY38 | Ruroci¹g | Budowa | Roboty | Magdalen | Wyspa | PM000 | Zespó³-W | Blok | Normalny | Pakiet | L2 |  |
| 24PY38-107 |  | Izolacje – Sekcja 16 | 11d | 2026-11-09 | 2026-11-23 | 24PY38-106 |  |  |  | 367.3d | 0d |  |  | GdanskSt | 24PY38 | Ruroci¹g | Budowa | Roboty | Magdalen | Wyspa | PM000 | Zespó³-K | Blok | Normalny | Pakiet | L2 |  |
| 24PY38-108 |  | Malowanie i oznakowanie – Sekcja 16 | 5d | 2026-11-19 | 2026-11-25 | 24PY38-107 FF+2d |  |  |  | 367.3d | 0d |  | Czeka na dostawê | GdanskSt | 24PY38 | Ruroci¹g | Budowa | Roboty | Magdalen | Wyspa | PM000 | Zespó³-W | Blok | Normalny | Pakiet | L2 |  |
|  | SEKCJA 17 | **Sekcja 17** |  | 2026-05-01 | 2026-11-30 |  |  |  |  |  |  |  |  |  |  |  |  |  |  |  |  |  |  |  |  |  |  |
| 24PY38-111 |  | Prefabrykacja ruroci¹gów – Sekcja 17 | 10.7d | 2026-05-01 A | 2026-05-15 A | 24PY38-012, 24PY38-104 SS+5d | 100% | 2026-05-01 | 2026-05-14 |  |  |  |  | GdanskSt | 24PY38 | Ruroci¹g | Budowa | Roboty | Magdalen | Wyspa | PM000 | Zespó³-W | Blok | Niski | Pakiet | L2 |  |
| 24PY38-112 |  | Monta¿ ruroci¹gów – Sekcja 17 | 13.9d | 2026-10-19 | 2026-11-04 | 24PY38-111, 24PY38-014 SS+8d |  |  |  | 368.7d | 0d |  |  | GdanskSt | 24PY38 | Ruroci¹g | Budowa | Roboty | Magdalen | Wyspa | PM000 | Zespó³-E | Blok | Normalny | Pakiet | L2 |  |
| 24PY38-113 |  | Próba ciœnieniowa – Sekcja 17 | 5d | 2026-11-12 | 2026-11-18 | 24PY38-112 |  | 2026-11-05 | 2026-11-11 | 364.6d | 0d |  |  | GdanskSt | 24PY38 | Ruroci¹g | Budowa | Roboty | Magdalen | Wyspa | PM100 | Zespó³-E | Blok | Normalny | Pakiet | L2 |  |
| 24PY38-114 |  | Izolacje – Sekcja 17 | 6d | 2026-11-19 | 2026-11-26 | 24PY38-113 |  | 2026-11-12 | 2026-11-19 | 364.6d | 0d |  | Bez uwag | GdanskSt | 24PY38 | Ruroci¹g | Budowa | Roboty | Magdalen | Wyspa | PM000 | Zespó³-K | Blok | Niski | Pakiet | L2 |  |
| 24PY38-115 |  | Malowanie i oznakowanie – Sekcja 17 | 8d | 2026-11-19 | 2026-11-30 | 24PY38-114 FF+2d |  | 2026-11-12 | 2026-11-23 | 364.6d | 0d | Kalendarz 6-dniowy |  | GdanskSt | 24PY38 | Ruroci¹g | Budowa | Roboty | Magdalen | Wyspa | PM000 | Zespó³-K | Blok | Normalny | Pakiet | L2 | Rev A |
|  | SEKCJA 18 | **Sekcja 18** |  | 2026-05-11 | 2026-11-25 |  |  |  |  |  |  |  |  |  |  |  |  |  |  |  |  |  |  |  |  |  |  |
|  | PODSEKCJA | **Podsekcja 18.A** |  | 2026-05-11 | 2026-11-25 |  |  |  |  |  |  |  |  |  |  |  |  |  |  |  |  |  |  |  |  |  |  |
| 24PY38-116 |  | Prefabrykacja ruroci¹gów – Sekcja 18 | 7.9d | 2026-05-11 A | 2026-05-21 A | 24PY38-012, 24PY38-111 SS+5d | 100% | 2026-05-08 | 2026-05-18 |  |  |  |  | GdanskSt | 24PY38 | Ruroci¹g | Budowa | Roboty | Magdalen | Wyspa | PM000 | Zespó³-K | Blok | Normalny | Pakiet | L2 | Rev C |
| 24PY38-117 |  | Monta¿ ruroci¹gów – Sekcja 18 | 19.7d | 2026-10-16 | 2026-11-11 | 24PY38-116, 24PY38-014 SS+7d |  |  |  | 366.9d | 0d |  | Ryzyko opóŸnienia | GdanskSt | 24PY38 | Ruroci¹g | Budowa | Roboty | Magdalen | Wyspa | PM000 | Zespó³-W | Blok | Normalny | Pakiet | L2 | Rev B |
| 24PY38-118 |  | Próba ciœnieniowa – Sekcja 18 | 2d | 2026-11-12 | 2026-11-13 | 24PY38-117 |  |  |  | 366.9d | 0d |  |  | GdanskSt | 24PY38 | Ruroci¹g | Budowa | Roboty | Magdalen | Wyspa | PM000 | Zespó³-K | Blok | Krytyczn | Pakiet | L2 |  |
| 24PY38-119 |  | Izolacje – Sekcja 18 | 6d | 2026-11-16 | 2026-11-23 | 24PY38-118 |  |  |  | 366.9d | 0d |  | Do weryfikacji z wykonawc¹ | GdanskSt | 24PY38 | Ruroci¹g | Budowa | Roboty | Magdalen | Wyspa | PM000 | Zespó³-W | Blok | Normalny | Pakiet | L2 |  |
| 24PY38-120 |  | Malowanie i oznakowanie – Sekcja 18 | 4d | 2026-11-20 | 2026-11-25 | 24PY38-119 FF+2d |  |  |  | 366.9d | 0d |  |  | GdanskSt | 24PY38 | Ruroci¹g | Budowa | Roboty | Magdalen | Wyspa | PM000 | Zespó³-K | Blok | Normalny | Pakiet | L2 |  |
|  | SEKCJA 19 | **Sekcja 19** |  | 2026-05-20 | 2026-12-08 |  |  |  |  |  |  |  |  |  |  |  |  |  |  |  |  |  |  |  |  |  |  |
| 24PY38-123 |  | Prefabrykacja ruroci¹gów – Sekcja 19 | 5.6d | 2026-05-20 A | 2026-05-27 A | 24PY38-012, 24PY38-116 SS+5d | 100% | 2026-05-15 | 2026-05-21 |  |  |  |  | GdanskSt | 24PY38 | Ruroci¹g | Budowa | Roboty | Magdalen | Wyspa | PM000 | Zespó³-W | Blok | Niski | Pakiet | L2 |  |
| 24PY38-124 |  | Monta¿ ruroci¹gów – Sekcja 19 | 8.5d | 2026-11-02 | 2026-11-11 | 24PY38-123, 24PY38-014 SS+10d |  | 2026-10-21 | 2026-10-30 | 358.1d | 0d |  |  | GdanskSt | 24PY38 | Ruroci¹g | Budowa | Roboty | Magdalen | Wyspa | PM000 | Zespó³-W | Blok | Normalny | Pakiet | L2 | Rev B |
| 24PY38-125 |  | Próba ciœnieniowa – Sekcja 19 | 5d | 2026-11-12 | 2026-11-18 | 24PY38-124 |  | 2026-11-02 | 2026-11-06 | 358.1d | 0d |  |  | GdanskSt | 24PY38 | Ruroci¹g | Budowa | Roboty | Magdalen | Wyspa | PM000 | Zespó³-W | Blok | Wysoki | Pakiet | L2 |  |
| 24PY38-126 |  | Izolacje – Sekcja 19 | 12d | 2026-11-19 | 2026-12-04 | 24PY38-125 |  | 2026-11-09 | 2026-11-24 | 358.1d | 0d |  |  | GdanskSt | 24PY38 | Ruroci¹g | Budowa | Roboty | Magdalen | Wyspa | PM000 | Zespó³-W | Blok | Normalny | Pakiet | L2 | Rev A |
| 24PY38-127 |  | Malowanie i oznakowanie – Sekcja 19 | 3d | 2026-12-04 | 2026-12-08 | 24PY38-126 FF+2d |  | 2026-11-24 | 2026-11-26 | 358.1d | 0d |  |  | GdanskSt | 24PY38 | Ruroci¹g | Budowa | Roboty | Magdalen | Wyspa | PM000 | Zespó³-K | Blok | Normalny | Pakiet | L2 |  |

| ID | WBS | Activity | Duration | Start | Finish | Predecessors | Complete | Remaining | Planned start | Planned finish | Total float | Free float | Calendar | AC_Wykonawca | AC_Obiekt | AC_Dyscyplina | AC_Faza | AC_Zakres | AC_Opiekun | AC_Obszar | AC_PP_PM | AC_Zespol | AC_Blok | AC_Priorytet | AC_Pakiet | AC_Poziom | Uwagi harmonogramisty | Rewizja dokumentu |
| --- | --- | --- | --- | --- | --- | --- | --- | --- | --- | --- | --- | --- | --- | --- | --- | --- | --- | --- | --- | --- | --- | --- | --- | --- | --- | --- | --- | --- |
|  | SEKCJA 20 | **Sekcja 20** |  | 2026-05-25 | 2026-11-26 |  |  |  |  |  |  |  |  |  |  |  |  |  |  |  |  |  |  |  |  |  |  |  |
| 24PY38-128 |  | Prefabrykacja ruroci¹gów – Sekcja 20 | 9.3d | 2026-05-25 A | 2026-06-09 A | 24PY38-012, 24PY38-123 SS+5d | 100% |  | 2026-05-22 | 2026-06-03 |  |  |  | GdanskSt | 24PY38 | Ruroci¹g | Budowa | Roboty | Magdalen | Wyspa | PM000 | Zespó³-W | Blok | Normalny | Pakiet | L2 |  |  |
| 24PY38-129 |  | Monta¿ ruroci¹gów – Sekcja 20 | 11d | 2026-10-21 | 2026-11-04 | 24PY38-128, 24PY38-014 SS+10d |  |  |  |  | 366.6d | 0d | Kalendarz 6-dniowy | GdanskSt | 24PY38 | Ruroci¹g | Budowa | Roboty | Magdalen | Wyspa | PM000 | Zespó³-W | Blok | Normalny | Pakiet | L2 |  |  |
| 24PY38-130 |  | Próba ciœnieniowa – Sekcja 20 | 6d | 2026-11-05 | 2026-11-12 | 24PY38-129 |  |  |  |  | 366.6d | 0d | Kalendarz 6-dniowy | GdanskSt | 24PY38 | Ruroci¹g | Budowa | Roboty | Magdalen | Wyspa | PM000 | Zespó³-K | Blok | Normalny | Pakiet | L2 | Czeka na dostawê | Rev B |
| 24PY38-131 |  | Izolacje – Sekcja 20 | 8d | 2026-11-13 | 2026-11-24 | 24PY38-130 |  |  |  |  | 366.6d | 0d |  | GdanskSt | 24PY38 | Ruroci¹g | Budowa | Roboty | Magdalen | Wyspa | PM000 | Zespó³-W | Blok | Niski | Pakiet | L2 |  |  |
| 24PY38-132 |  | Malowanie i oznakowanie – Sekcja 20 | 3d | 2026-11-24 | 2026-11-26 | 24PY38-131 FF+2d |  |  |  |  | 366.6d | 0d |  | GdanskSt | 24PY38 | Ruroci¹g | Budowa | Roboty | Magdalen | Wyspa | PM300 | Zespó³-I | Blok | Normalny | Pakiet | L2 |  |  |
|  | SEKCJA 21 | **Sekcja 21** |  | 2026-05-29 | 2026-12-01 |  |  |  |  |  |  |  |  |  |  |  |  |  |  |  |  |  |  |  |  |  |  |  |
|  | PODSEKCJA | **Podsekcja 21.A** |  | 2026-05-29 | 2026-12-01 |  |  |  |  |  |  |  |  |  |  |  |  |  |  |  |  |  |  |  |  |  |  |  |
| 24PY38-135 |  | Prefabrykacja ruroci¹gów – Sekcja 21 | 7.3d | 2026-05-29 A | 2026-06-08 A | 24PY38-012, 24PY38-128 SS+5d | 100% |  |  |  |  |  |  | GdanskSt | 24PY38 | Ruroci¹g | Budowa | Roboty | Magdalen | Wyspa | PM000 | Zespó³-W | Blok | Normalny | Pakiet | L2 | Bez uwag |  |
| 24PY38-136 |  | Monta¿ ruroci¹gów – Sekcja 21 | 17.5d | 2026-10-20 | 2026-11-11 | 24PY38-135, 24PY38-014 SS+9d |  |  |  |  | 363.1d | 0d |  | GdanskSt | 24PY38 | Ruroci¹g | Budowa | Roboty | Magdalen | Wyspa | PM000 | Zespó³-W | Blok | Normalny | Pakiet | L2 | Czeka na dostawê |  |
| 24PY38-137 |  | Próba ciœnieniowa – Sekcja 21 | 5d | 2026-11-12 | 2026-11-18 | 24PY38-136 |  |  |  |  | 363.1d | 0d |  | GdanskSt | 24PY38 | Ruroci¹g | Budowa | Roboty | Magdalen | Wyspa | PM000 | Zespó³-K | Blok | Normalny | Pakiet | L2 |  |  |
| 24PY38-138 |  | Izolacje – Sekcja 21 | 7d | 2026-11-19 | 2026-11-27 | 24PY38-137 |  |  |  |  | 363.1d | 0d |  | GdanskSt | 24PY38 | Ruroci¹g | Budowa | Roboty | Magdalen | Wyspa | PM000 | Zespó³-W | Blok | Normalny | Pakiet | L2 | Do weryfikacji z wykonawc¹ |  |
| 24PY38-139 |  | Malowanie i oznakowanie – Sekcja 21 | 3d | 2026-11-27 | 2026-12-01 | 24PY38-138 FF+2d |  |  |  |  | 363.1d | 0d |  | GdanskSt | 24PY38 | Ruroci¹g | Budowa | Roboty | Magdalen | Wyspa | PM000 | Zespó³-K | Blok | Normalny | Pakiet | L2 |  | Rev C |
|  | SEKCJA 22 | **Sekcja 22** |  | 2026-06-04 | 2026-10-26 |  |  |  |  |  |  |  |  |  |  |  |  |  |  |  |  |  |  |  |  |  |  |  |
| 24PY38-140 |  | Prefabrykacja ruroci¹gów – Sekcja 22 | 11.9d | 2026-06-04 A | 2026-06-18 A | 24PY38-012, 24PY38-135 SS+5d | 100% |  | 2026-06-05 | 2026-06-19 |  |  |  | GdanskSt | 24PY38 | Ruroci¹g | Budowa | Roboty | Magdalen | Wyspa | PM000 | Zespó³-W | Blok | Niski | Pakiet | L2 |  | Rev A |
| 24PY38-141 |  | Monta¿ ruroci¹gów – Sekcja 22 | 6.4d | 2026-10-07 A | 2026-10-09 | 24PY38-140, 24PY38-014 SS | 41% | 3.8d | 2026-10-07 | 2026-10-14 | 386.2d | 0d |  | GdanskSt | 24PY38 | Ruroci¹g | Budowa | Roboty | Magdalen | Wyspa | PM300 | Zespó³-I | Blok | Normalny | Pakiet | L2 | Bez uwag |  |
| 24PY38-142 |  | Próba ciœnieniowa – Sekcja 22 | 3d | 2026-10-12 | 2026-10-14 | 24PY38-141 |  |  | 2026-10-15 | 2026-10-19 | 388.8d | 0d |  | GdanskSt | 24PY38 | Ruroci¹g | Budowa | Roboty | Magdalen | Wyspa | PM000 | Zespó³-W | Blok | Niski | Pakiet | L2 |  |  |
| 24PY38-143 |  | Izolacje – Sekcja 22 | 6d | 2026-10-15 | 2026-10-22 | 24PY38-142 |  |  | 2026-10-20 | 2026-10-27 | 388.8d | 0d |  | GdanskSt | 24PY38 | Ruroci¹g | Budowa | Roboty | Magdalen | Wyspa | PM000 | Zespó³-K | Blok | Normalny | Pakiet | L2 |  |  |
| 24PY38-144 |  | Malowanie i oznakowanie – Sekcja 22 | 2d | 2026-10-23 | 2026-10-26 | 24PY38-143 FF+2d |  |  | 2026-10-28 | 2026-10-29 | 388.8d | 0d |  | GdanskSt | 24PY38 | Ruroci¹g | Budowa | Roboty | Magdalen | Wyspa | PM000 | Zespó³-W | Blok | Normalny | Pakiet | L2 |  | Rev A |
|  | SEKCJA 23 | **Sekcja 23** |  | 2026-06-15 | 2026-12-04 |  |  |  |  |  |  |  |  |  |  |  |  |  |  |  |  |  |  |  |  |  |  |  |
| 24PY38-147 |  | Prefabrykacja ruroci¹gów – Sekcja 23 | 12d | 2026-06-15 A | 2026-07-02 A | 24PY38-012, 24PY38-140 SS+5d | 100% |  | 2026-06-12 | 2026-06-29 |  |  |  | GdanskSt | 24PY38 | Ruroci¹g | Budowa | Roboty | Magdalen | Wyspa | PM000 | Zespó³-W | Blok | Normalny | Pakiet | L2 |  |  |
| 24PY38-148 |  | Monta¿ ruroci¹gów – Sekcja 23 | 10.4d | 2026-10-20 | 2026-11-02 | 24PY38-147, 24PY38-014 SS+9d |  |  |  |  | 366.2d | 0d |  | GdanskSt | 24PY38 | Ruroci¹g | Budowa | Roboty | Magdalen | Wyspa | PM000 | Zespó³-W | Blok | Normalny | Pakiet | L2 |  | Rev B |
| 24PY38-149 |  | Próba ciœnieniowa – Sekcja 23 | 4d | 2026-11-03 | 2026-11-06 | 24PY38-148 |  |  |  |  | 366.2d | 0d |  | GdanskSt | 24PY38 | Ruroci¹g | Budowa | Roboty | Magdalen | Wyspa | PM000 | Zespó³-W | Blok | Wysoki | Pakiet | L2 |  |  |
| 24PY38-150 |  | Izolacje – Sekcja 23 | 12d | 2026-11-17 | 2026-12-02 | 24PY38-149 |  |  | 2026-11-09 | 2026-11-24 | 360.6d | 0d |  | GdanskSt | 24PY38 | Ruroci¹g | Budowa | Roboty | Magdalen | Wyspa | PM100 | Zespó³-I | Blok | Wysoki | Pakiet | L2 |  | Rev B |
| 24PY38-151 |  | Malowanie i oznakowanie – Sekcja 23 | 7d | 2026-11-26 | 2026-12-04 | 24PY38-150 FF+2d |  |  | 2026-11-18 | 2026-11-26 | 360.6d | 0d |  | GdanskSt | 24PY38 | Ruroci¹g | Budowa | Roboty | Magdalen | Wyspa | PM000 | Zespó³-W | Blok | Normalny | Pakiet | L2 | Ryzyko opóŸnienia | Rev A |

| ID | WBS | Activity | Type | Duration | Start | Finish | Predecessors | Complete | Actual finish | Planned start | Planned finish | Total float | Free float | Rewizja dokumentu | AC_Wykonawca | AC_Obiekt | AC_Dyscyplina | AC_Faza | AC_Zakres | AC_Opiekun | AC_Obszar | AC_PP_PM | AC_Zespol | AC_Blok | AC_Priorytet | AC_Pakiet | AC_Poziom | Uwagi harmonogramisty |
| --- | --- | --- | --- | --- | --- | --- | --- | --- | --- | --- | --- | --- | --- | --- | --- | --- | --- | --- | --- | --- | --- | --- | --- | --- | --- | --- | --- | --- |
|  | SEKCJA 24 | **Sekcja 24** |  |  | 2026-06-22 | 2026-11-16 |  |  |  |  |  |  |  |  |  |  |  |  |  |  |  |  |  |  |  |  |  |  |
|  | PODSEKCJA | **Podsekcja 24.A** |  |  | 2026-06-22 | 2026-11-16 |  |  |  |  |  |  |  |  |  |  |  |  |  |  |  |  |  |  |  |  |  |  |
| 24PY38-152 |  | Prefabrykacja ruroci¹gów – Sekcja 24 |  | 13d | 2026-06-22 A | 2026-07-13 A | 24PY38-012, 24PY38-147 SS+5d | 100% |  | 2026-06-19 | 2026-07-07 |  |  | Rev C | GdanskSt | 24PY38 | Ruroci¹g | Budowa | Roboty | Magdalen | Wyspa | PM000 | Zespó³-W | Blok | Normalny | Pakiet | L2 |  |
| 24PY38-153 |  | Monta¿ ruroci¹gów – Sekcja 24 |  | 8d | 2026-10-16 | 2026-10-27 | 24PY38-152, 24PY38-014 SS+7d |  |  |  |  | 374.6d | 0d |  | GdanskSt | 24PY38 | Ruroci¹g | Budowa | Roboty | Magdalen | Wyspa | PM000 | Zespó³-W | Blok | Niski | Pakiet | L2 |  |
| 24PY38-154 |  | Próba ciœnieniowa – Sekcja 24 |  | 5d | 2026-10-28 | 2026-11-03 | 24PY38-153 |  |  |  |  | 374.6d | 0d |  | GdanskSt | 24PY38 | Ruroci¹g | Budowa | Roboty | Magdalen | Wyspa | PM000 | Zespó³-W | Blok | Normalny | Pakiet | L2 |  |
| 24PY38-155 |  | Izolacje – Sekcja 24 |  | 7d | 2026-11-04 | 2026-11-12 | 24PY38-154 |  |  |  |  | 374.6d | 0d | Rev C | GdanskSt | 24PY38 | Ruroci¹g | Budowa | Roboty | Magdalen | Wyspa | PM000 | Zespó³-W | Blok | Normalny | Pakiet | L2 |  |
| 24PY38-156 |  | Malowanie i oznakowanie – Sekcja 24 |  | 2d | 2026-11-13 | 2026-11-16 | 24PY38-155 FF+2d |  |  |  |  | 374.6d | 0d |  | GdanskSt | 24PY38 | Ruroci¹g | Budowa | Roboty | Magdalen | Wyspa | PM000 | Zespó³-W | Blok | Normalny | Pakiet | L2 |  |
|  | SEKCJA 25 | **Sekcja 25** |  |  | 2026-06-26 | 2026-11-24 |  |  |  |  |  |  |  |  |  |  |  |  |  |  |  |  |  |  |  |  |  |  |
| 24PY38-159 |  | Prefabrykacja ruroci¹gów – Sekcja 25 |  | 6.4d | 2026-06-26 A | 2026-07-07 A | 24PY38-012, 24PY38-152 SS+5d | 100% |  | 2026-06-26 | 2026-07-03 |  |  |  | GdanskSt | 24PY38 | Ruroci¹g | Budowa | Roboty | Magdalen | Wyspa | PM000 | Zespó³-K | Blok | Wysoki | Pakiet | L2 | Do weryfikacji z wykonawc¹ |
| 24PY38-160 |  | Monta¿ ruroci¹gów – Sekcja 25 |  | 22.6d | 2026-10-12 | 2026-11-10 | 24PY38-159, 24PY38-014 SS+3d |  |  |  |  | 332d | 0d |  | GdanskSt | 24PY38 | Ruroci¹g | Budowa | Roboty | Magdalen | Wyspa | PM000 | Zespó³-W | Blok | Normalny | Pakiet | L2 | Uzgodnione na koordynacji |
| 24PY38-161 |  | Próba ciœnieniowa – Sekcja 25 |  | 2d | 2026-11-11 | 2026-11-12 | 24PY38-160 |  |  |  |  | 332d | 0d | Rev A | GdanskSt | 24PY38 | Ruroci¹g | Budowa | Roboty | Magdalen | Wyspa | PM000 | Zespó³-K | Blok | Wysoki | Pakiet | L2 |  |
| 24PY38-162 |  | Izolacje – Sekcja 25 |  | 6d | 2026-11-13 | 2026-11-20 | 24PY38-161 |  |  |  |  | 332d | 0d |  | GdanskSt | 24PY38 | Ruroci¹g | Budowa | Roboty | Magdalen | Wyspa | PM000 | Zespó³-K | Blok | Normalny | Pakiet | L2 | Bez uwag |
| 24PY38-163 |  | Malowanie i oznakowanie – Sekcja 25 |  | 5d | 2026-11-18 | 2026-11-24 | 24PY38-162 FF+2d |  |  |  |  | 332d | 0d |  | GdanskSt | 24PY38 | Ruroci¹g | Budowa | Roboty | Magdalen | Wyspa | PM000 | Zespó³-K | Blok | Normalny | Pakiet | L2 |  |
|  | SEKCJA 26 | **Sekcja 26** |  |  | 2026-07-06 | 2026-12-08 |  |  |  |  |  |  |  |  |  |  |  |  |  |  |  |  |  |  |  |  |  |  |
| 24PY38-164 |  | Prefabrykacja ruroci¹gów – Sekcja 26 |  | 11.6d | 2026-07-06 A | 2026-07-23 A | 24PY38-012, 24PY38-159 SS+5d | 100% |  | 2026-07-03 | 2026-07-17 |  |  | Rev A | GdanskSt | 24PY38 | Ruroci¹g | Budowa | Roboty | Magdalen | Wyspa | PM000 | Zespó³-I | Blok | Wysoki | Pakiet | L2 | Bez uwag |
| 24PY38-165 |  | Monta¿ ruroci¹gów – Sekcja 26 |  | 24d | 2026-10-14 | 2026-11-16 | 24PY38-164, 24PY38-014 SS+5d |  |  |  |  | 322.6d | 0d |  | GdanskSt | 24PY38 | Ruroci¹g | Budowa | Roboty | Magdalen | Wyspa | PM000 | Zespó³-K | Blok | Niski | Pakiet | L2 |  |
| 24PY38-166 |  | Próba ciœnieniowa – Sekcja 26 |  | 2d | 2026-11-17 | 2026-11-18 | 24PY38-165 |  |  |  |  | 322.6d | 0d |  | GdanskSt | 24PY38 | Ruroci¹g | Budowa | Roboty | Magdalen | Wyspa | PM000 | Zespó³-K | Blok | Normalny | Pakiet | L2 |  |
| 24PY38-167 |  | Izolacje – Sekcja 26 |  | 12d | 2026-11-19 | 2026-12-04 | 24PY38-166 |  |  |  |  | 322.6d | 0d |  | GdanskSt | 24PY38 | Ruroci¹g | Budowa | Roboty | Magdalen | Wyspa | PM000 | Zespó³-K | Blok | Normalny | Pakiet | L2 |  |
| 24PY38-168 |  | Malowanie i oznakowanie – Sekcja 26 |  | 5d | 2026-12-02 | 2026-12-08 | 24PY38-167 FF+2d |  |  |  |  | 322.6d | 0d | Rev B | GdanskSt | 24PY38 | Ruroci¹g | Budowa | Roboty | Magdalen | Wyspa | PM000 | Zespó³-W | Blok | Normalny | Pakiet | L2 | Bez uwag |
|  | PROJ | **Projektowanie** |  |  | 2025-06-04 | 2025-10-07 |  |  |  |  |  |  |  |  |  |  |  |  |  |  |  |  |  |  |  |  |  |  |
|  | DOKUMENTAC | **Dokumentacja** |  |  | 2025-06-04 | 2025-10-07 |  |  |  |  |  |  |  |  |  |  |  |  |  |  |  |  |  |  |  |  |  |  |
| 24PY38-001 |  | Projekt wykonawczy – Turbina gazowa |  | 72d | 2025-06-04 A | 2025-09-16 A |  | 100% |  | 2025-06-02 | 2025-09-09 |  |  | Rev C | GdanskSt | 24PY38 | Budowlan | Projekto | Projekt | Magdalen | Wyspa | PM000 | Zespó³-K | Blok | Normalny | Pakiet | L2 | Do weryfikacji z wykonawc¹ |
| 24PY38-002 |  | Uzgodnienie dokumentacji z Inwestorem |  | 12d | 2025-09-09 A | 2025-09-24 A | 24PY38-001 | 100% |  | 2025-09-10 | 2025-09-25 |  |  | Rev C | GdanskSt | 24PY38 | Budowlan | Projekto | Projekt | Magdalen | Wyspa | PM000 | Zespó³-W | Blok | Normalny | Pakiet | L2 | Ryzyko opóŸnienia |
| 24PY38-003 |  | Zatwierdzenie dokumentacji do realizacji |  | 6d | 2025-09-29 A | 2025-10-07 A | 24PY38-002 | 100% |  | 2025-09-26 | 2025-10-03 |  |  | Rev A | GdanskSt | 24PY38 | Budowlan | Projekto | Projekt | Magdalen | Wyspa | PM000 | Zespó³-W | Blok | Normalny | Pakiet | L2 | Czeka na dostawê |
| 24PY38-004 |  | KM: Dokumentacja zatwierdzona – Turbina gazowa | milestone | 0d | 2025-10-03 A | 2025-10-03 | 24PY38-003 | 100% | 2025-10-02 | 2025-10-06 | 2025-10-06 |  |  |  | GdanskSt | 24PY38 | Budowlan | Projekto | Kamieñ | Magdalen | Wyspa | PM000 | Zespó³-K | Blok | Normalny | Pakiet | L1 |  |

| ID | WBS | Activity | Type | Duration | Start | Finish | Predecessors | Complete | Remaining | Planned start | Planned finish | Total float | Free float | Calendar | Uwagi harmonogramisty | AC_Wykonawca | AC_Obiekt | AC_Dyscyplina | AC_Faza | AC_Zakres | AC_Opiekun | AC_Obszar | AC_PP_PM | AC_Zespol | AC_Blok | AC_Priorytet | AC_Pakiet | AC_Poziom | Rewizja dokumentu |
| --- | --- | --- | --- | --- | --- | --- | --- | --- | --- | --- | --- | --- | --- | --- | --- | --- | --- | --- | --- | --- | --- | --- | --- | --- | --- | --- | --- | --- | --- |
|  | ROZR | **Rozruch** |  |  | 2026-12-09 | 2028-04-24 |  |  |  |  |  |  |  |  |  |  |  |  |  |  |  |  |  |  |  |  |  |  |  |
|  | KAMIENIE M | **Kamienie milowe** |  |  | 2028-01-24 | 2028-04-24 |  |  |  |  |  |  |  |  |  |  |  |  |  |  |  |  |  |  |  |  |  |  |  |
| 24PY38-177 |  | KM: Zakoñczenie rozruchu – PL5001-SE-01 | milestone | 0d | 2028-01-24 | 2028-01-24 | 24PY38-176, 10BW45-097, 12FX78-104, 12PB41-188, 29UF44-097, 15BP15-073, 10TM34-080, 14NX42-181, 30BU48-152, 19FK60-121, 18CX52-133, 11CP59-145, 28BW90-109, 10YD43-073, 27XT34-145 |  |  | 2027-04-28 | 2027-04-28 | 55.6d | 0d |  | Uzgodnione na koordynacji | GdanskSt | 24PY38 | Rozruch | Rozruch | Kamieñ | Magdalen | Wyspa | PM000 | Zespó³-W | Blok | Normalny | Pakiet | L1 |  |
| 24PY38-178 |  | KM: Synchronizacja bloku z sieci¹ | milestone | 0d | 2028-04-24 | 2028-04-24 | 24PY38-177 FS+10d, 18TY85-074 (other project) FS+10d, 10PQ22-122 (other project) FS+10d |  |  | 2027-07-26 | 2027-07-26 | 0d |  |  | Do weryfikacji z wykonawc¹ | GdanskSt | 24PY38 | Rozruch | Rozruch | Kamieñ | Magdalen | Wyspa | PM000 | Zespó³-K | Blok | Normalny | Pakiet | L1 |  |
|  | ROZRUCH | **Rozruch** |  |  | 2026-12-09 | 2027-01-14 |  |  |  |  |  |  |  |  |  |  |  |  |  |  |  |  |  |  |  |  |  |  |  |
| 24PY38-173 |  | Przegl¹d gotowoœci do rozruchu |  | 3d | 2026-12-09 | 2026-12-11 | 24PY38-172, 24PY38-019, 24PY38-024, 24PY38-026 |  |  | 2026-12-25 | 2026-12-29 | 322.6d | 0d |  |  | GdanskSt | 24PY38 | Rozruch | Rozruch | Rozruch | Magdalen | Wyspa | PM000 | Zespó³-K | Blok | Normalny | Pakiet | L2 | Rev C |
| 24PY38-174 |  | Rozruch na zimno |  | 8d | 2026-12-14 | 2026-12-23 | 24PY38-173 |  |  | 2026-12-30 | 2027-01-08 | 322.6d | 0d |  |  | GdanskSt | 24PY38 | Rozruch | Rozruch | Rozruch | Magdalen | Wyspa | PM000 | Zespó³-W | Blok | Normalny | Pakiet | L2 |  |
| 24PY38-175 |  | Rozruch na gor¹co / próby ruchowe |  | 15d | 2026-12-24 | 2027-01-13 | 24PY38-174 |  |  | 2027-01-11 | 2027-01-29 | 322.6d | 0d |  |  | GdanskSt | 24PY38 | Rozruch | Rozruch | Rozruch | Magdalen | Wyspa | PM000 | Zespó³-K | Blok | Niski | Pakiet | L2 |  |
| 24PY38-176 |  | KM: Odbiór koñcowy – Turbina gazowa | milestone | 0d | 2027-01-14 | 2027-01-14 | 24PY38-175 |  |  | 2027-02-01 | 2027-02-01 | 322.6d | 0d |  |  | GdanskSt | 24PY38 | Rozruch | Rozruch | Kamieñ | Magdalen | Wyspa | PM000 | Zespó³-K | Blok | Normalny | Pakiet | L1 |  |
|  | ZAKU | **Zakupy** |  |  | 2025-07-02 | 2026-10-14 |  |  |  |  |  |  |  |  |  |  |  |  |  |  |  |  |  |  |  |  |  |  |  |
|  | DOSTAWY | **Dostawy** |  |  | 2025-10-21 | 2026-10-14 |  |  |  |  |  |  |  |  |  |  |  |  |  |  |  |  |  |  |  |  |  |  |  |
| 24PY38-008 |  | Produkcja u dostawcy |  | 238d | 2025-10-21 A | 2026-09-22 A | 24PY38-007 | 100% |  | 2025-10-16 | 2026-09-14 |  |  |  |  | GdanskSt | 24PY38 | Mechanic | Zakupy | Dostawa | Magdalen | Wyspa | PM000 | Zespó³-W | Blok | Normalny | Pakiet | L2 |  |
| 24PY38-009 |  | Testy FAT |  | 4d | 2026-09-16 A | 2026-09-22 A | 24PY38-008 | 100% |  | 2026-09-15 | 2026-09-18 |  |  | Kalendarz 6-dniowy | Uzgodnione na koordynacji | GdanskSt | 24PY38 | Mechanic | Zakupy | Dostawa | Magdalen | Wyspa | PM300 | Zespó³-I | Blok | Normalny | Pakiet | L2 |  |
| 24PY38-010 |  | Transport i dostawa na plac budowy |  | 12d | 2026-09-23 A | 2026-10-13 | 24PY38-009 | 58% | 5d | 2026-09-21 | 2026-10-06 | 308.6d | 0d |  |  | GdanskSt | 24PY38 | Mechanic | Zakupy | Dostawa | Magdalen | Wyspa | PM000 | Zespó³-K | Blok | Wysoki | Pakiet | L2 |  |
| 24PY38-011 |  | KM: Dostawa na budowê – Turbina gazowa | milestone | 0d | 2026-10-14 | 2026-10-14 | 24PY38-010 |  |  | 2026-10-07 | 2026-10-07 | 305.6d | 0d | Kalendarz 6-dniowy |  | GdanskSt | 24PY38 | Mechanic | Zakupy | Kamieñ | Magdalen | Wyspa | PM000 | Zespó³-W | Blok | Krytyczn | Pakiet | L1 |  |
|  | ZAMÓWIENIA | **Zamówienia** |  |  | 2025-07-02 | 2025-10-15 |  |  |  |  |  |  |  |  |  |  |  |  |  |  |  |  |  |  |  |  |  |  |  |
| 24PY38-005 |  | Zapytanie ofertowe |  | 24d | 2025-07-02 A | 2025-08-05 A | 24PY38-001 SS+20d | 100% |  | 2025-06-30 | 2025-07-31 |  |  |  |  | GdanskSt | 24PY38 | Mechanic | Zakupy | Dostawa | Magdalen | Wyspa | PM000 | Zespó³-W | Blok | Normalny | Pakiet | L2 | Rev A |
| 24PY38-006 |  | Analiza i wybór ofert |  | 17d | 2025-08-04 A | 2025-08-28 A | 24PY38-005 | 100% |  | 2025-08-01 | 2025-08-25 |  |  |  |  | GdanskSt | 24PY38 | Mechanic | Zakupy | Dostawa | Magdalen | Wyspa | PM000 | Zespó³-W | Blok | Normalny | Pakiet | L2 |  |
| 24PY38-007 |  | Zawarcie umowy / zamówienie |  | 8d | 2025-10-06 A | 2025-10-15 A | 24PY38-006, 24PY38-004 SS | 100% |  |  |  |  |  |  |  | GdanskSt | 24PY38 | Mechanic | Zakupy | Dostawa | Magdalen | Wyspa | PM000 | Zespó³-K | Blok | Normalny | Pakiet | L1 |  |
|  | 29UF44 | **29UF44 – Pompy skroplin** |  |  | 2025-01-31 | 2026-08-27 |  |  |  |  |  |  |  |  |  |  |  |  |  |  |  |  |  |  |  |  |  |  |  |
|  | BUDO | **Budowa** |  |  | 2025-12-08 | 2026-08-04 |  |  |  |  |  |  |  |  |  |  |  |  |  |  |  |  |  |  |  |  |  |  |  |
|  | AKPIA | **AKPiA** |  |  | 2026-05-25 | 2026-07-10 |  |  |  |  |  |  |  |  |  |  |  |  |  |  |  |  |  |  |  |  |  |  |  |
| 29UF44-092 |  | Monta¿ uk³adów AKPiA |  | 32d | 2026-05-25 A | 2026-07-10 A | 29UF44-014 SS+5d | 100% |  | 2026-05-20 | 2026-07-02 |  |  |  | Bez uwag | HydroIns | 29UF44 | AKPiA | Budowa | Roboty | Agnieszk | Wyspa | PM000 | Zespó³-W | Blok | Normalny | Pakiet | L2 |  |
|  | ELEKTRYKA | **Elektryka** |  |  | 2026-05-25 | 2026-06-23 |  |  |  |  |  |  |  |  |  |  |  |  |  |  |  |  |  |  |  |  |  |  |  |
| 29UF44-026 |  | Pod³¹czenia i pomiary – trasa 02 |  | 9d | 2026-05-25 A | 2026-06-09 A | 29UF44-025 FF | 100% |  | 2026-05-21 | 2026-06-02 |  |  |  |  | HydroIns | 29UF44 | Elektryc | Budowa | Roboty | Agnieszk | Wyspa | PM000 | Zespó³-K | Blok | Niski | Pakiet | L2 |  |
| 29UF44-073 |  | Uk³adanie kabli – trasa 10 |  | 9d | 2026-05-27 A | 2026-06-08 A | 29UF44-014 SS+10d | 100% |  |  |  |  |  |  |  | HydroIns | 29UF44 | Elektryc | Budowa | Roboty | Agnieszk | Wyspa | PM000 | Zespó³-K | Blok | Wysoki | Pakiet | L2 |  |
| 29UF44-085 |  | Uk³adanie kabli – trasa 12 |  | 15d | 2026-05-27 A | 2026-06-17 A | 29UF44-014 SS+10d | 100% |  | 2026-05-27 | 2026-06-16 |  |  |  |  | HydroIns | 29UF44 | Elektryc | Budowa | Roboty | Agnieszk | Wyspa | PM000 | Zespó³-K | Blok | Normalny | Pakiet | L2 |  |
| 29UF44-061 |  | Uk³adanie kabli – trasa 08 |  | 15d | 2026-05-28 A | 2026-06-22 A | 29UF44-014 SS+10d | 100% |  | 2026-05-27 | 2026-06-16 |  |  |  |  | HydroIns | 29UF44 | Elektryc | Budowa | Roboty | Agnieszk | Wyspa | PM000 | Zespó³-W | Blok | Wysoki | Pakiet | L2 |  |
| 29UF44-037 |  | Uk³adanie kabli – trasa 04 |  | 6d | 2026-05-29 A | 2026-06-10 A | 29UF44-014 SS+10d | 100% |  | 2026-05-27 | 2026-06-03 |  |  |  |  | HydroIns | 29UF44 | Elektryc | Budowa | Roboty | Agnieszk | Wyspa | PM000 | Zespó³-W | Blok | Normalny | Pakiet | L2 |  |
| 29UF44-025 |  | Uk³adanie kabli – trasa 02 |  | 5d | 2026-06-01 A | 2026-06-09 A | 29UF44-014 SS+10d | 100% |  | 2026-05-27 | 2026-06-02 |  |  |  | Uzgodnione na koordynacji | HydroIns | 29UF44 | Elektryc | Budowa | Roboty | Agnieszk | Wyspa | PM000 | Zespó³-W | Blok | Normalny | Pakiet | L2 | Rev A |
| 29UF44-049 |  | Uk³adanie kabli – trasa 06 |  | 5d | 2026-06-01 A | 2026-06-10 A | 29UF44-014 SS+10d | 100% |  | 2026-05-27 | 2026-06-02 |  |  |  |  | HydroIns | 29UF44 | Elektryc | Budowa | Roboty | Agnieszk | Wyspa | PM000 | Zespó³-K | Blok | Normalny | Pakiet | L2 | Rev C |
| 29UF44-038 |  | Pod³¹czenia i pomiary – trasa 04 |  | 4d | 2026-06-02 A | 2026-06-09 A | 29UF44-037 FF | 100% |  | 2026-05-29 | 2026-06-03 |  |  |  |  | HydroIns | 29UF44 | Elektryc | Budowa | Roboty | Agnieszk | Wyspa | PM000 | Zespó³-W | Blok | Normalny | Pakiet | L2 |  |
| 29UF44-050 |  | Pod³¹czenia i pomiary – trasa 06 |  | 4d | 2026-06-02 A | 2026-06-05 A | 29UF44-049 FF | 100% |  | 2026-05-28 | 2026-06-02 |  |  |  |  | HydroIns | 29UF44 | Elektryc | Budowa | Roboty | Agnieszk | Wyspa | PM000 | Zespó³-W | Blok | Normalny | Pakiet | L2 |  |
| 29UF44-074 |  | Pod³¹czenia i pomiary – trasa 10 |  | 7d | 2026-06-03 A | 2026-06-15 A | 29UF44-073 FF | 100% |  | 2026-05-29 | 2026-06-08 |  |  |  |  | HydroIns | 29UF44 | Elektryc | Budowa | Roboty | Agnieszk | Wyspa | PM000 | Zespó³-W | Blok | Normalny | Pakiet | L2 |  |
| 29UF44-062 |  | Pod³¹czenia i pomiary – trasa 08 |  | 4d | 2026-06-11 A | 2026-06-19 A | 29UF44-061 FF | 100% |  | 2026-06-11 | 2026-06-16 |  |  |  | Uzgodnione na koordynacji | HydroIns | 29UF44 | Elektryc | Budowa | Roboty | Agnieszk | Wyspa | PM000 | Zespó³-W | Blok | Normalny | Pakiet | L2 | Rev C |
| 29UF44-086 |  | Pod³¹czenia i pomiary – trasa 12 |  | 7d | 2026-06-11 A | 2026-06-23 A | 29UF44-085 FF | 100% |  | 2026-06-08 | 2026-06-16 |  |  |  |  | HydroIns | 29UF44 | Elektryc | Budowa | Roboty | Agnieszk | Wyspa | PM000 | Zespó³-I | Blok | Normalny | Pakiet | L2 |  |

| ID | WBS | Activity | Type | Duration | Start | Finish | Predecessors | Complete | Actual finish | Planned start | Planned finish | Rewizja dokumentu | AC_Wykonawca | AC_Obiekt | AC_Dyscyplina | AC_Faza | AC_Zakres | AC_Opiekun | AC_Obszar | AC_PP_PM | AC_Zespol | AC_Blok | AC_Priorytet | AC_Pakiet | AC_Poziom | Uwagi harmonogramisty |
| --- | --- | --- | --- | --- | --- | --- | --- | --- | --- | --- | --- | --- | --- | --- | --- | --- | --- | --- | --- | --- | --- | --- | --- | --- | --- | --- |
|  | MONTA¯ | **Monta¿** |  |  | 2026-02-03 | 2026-08-04 |  |  |  |  |  |  |  |  |  |  |  |  |  |  |  |  |  |  |  |  |
| 29UF44-013 |  | Monta¿ konstrukcji stalowych |  | 29d | 2026-02-03 A | 2026-03-16 A | 29UF44-012 | 100% |  | 2026-01-29 | 2026-03-10 | Rev A | HydroIns | 29UF44 | Mechanic | Budowa | Roboty | Agnieszk | Wyspa | PM000 | Zespó³-W | Blok | Niski | Pakiet | L2 |  |
| 29UF44-014 |  | Monta¿ urz¹dzeñ g³ównych |  | 55d | 2026-05-18 A | 2026-08-04 A | 29UF44-013, 29UF44-011 | 100% |  | 2026-05-13 | 2026-07-28 |  | HydroIns | 29UF44 | Mechanic | Budowa | Roboty | Agnieszk | Wyspa | PM000 | Zespó³-K | Blok | Normalny | Pakiet | L2 |  |
| 29UF44-093 |  | KM: Zakoñczenie monta¿u – Pompy skroplin | milestone | 0d | 2026-07-30 A | 2026-07-30 | 29UF44-084, 29UF44-086, 29UF44-091, 29UF44-092, 29UF44-014 | 100% | 2026-07-29 | 2026-07-29 | 2026-07-29 |  | HydroIns | 29UF44 | Mechanic | Budowa | Kamieñ | Agnieszk | Wyspa | PM000 | Zespó³-W | Blok | Krytyczn | Pakiet | L2 |  |
|  | ROBOTY BUD | **Roboty budowlane** |  |  | 2025-12-08 | 2026-02-05 |  |  |  |  |  |  |  |  |  |  |  |  |  |  |  |  |  |  |  |  |
| 29UF44-012 |  | Fundamenty i roboty ziemne |  | 41d | 2025-12-08 A | 2026-02-05 A | 29UF44-007 FS+18d | 100% |  | 2025-12-03 | 2026-01-28 |  | HydroIns | 29UF44 | Budowlan | Budowa | Roboty | Agnieszk | Wyspa | PM000 | Zespó³-W | Blok | Normalny | Pakiet | L2 | Do weryfikacji z wykonawc¹ |
|  | RUROCI¥GI | **Ruroci¹gi** |  |  | 2026-01-29 | 2026-07-14 |  |  |  |  |  |  |  |  |  |  |  |  |  |  |  |  |  |  |  |  |
|  | SEKCJA 01 | **Sekcja 01** |  |  | 2026-01-29 | 2026-06-29 |  |  |  |  |  |  |  |  |  |  |  |  |  |  |  |  |  |  |  |  |
| 29UF44-015 |  | Prefabrykacja ruroci¹gów – Sekcja 01 |  | 11d | 2026-01-29 A | 2026-02-17 A | 29UF44-012 | 100% |  | 2026-01-29 | 2026-02-12 |  | HydroIns | 29UF44 | Ruroci¹g | Budowa | Roboty | Agnieszk | Wyspa | PM000 | Zespó³-K | Blok | Krytyczn | Pakiet | L2 | Czeka na dostawê |
| 29UF44-016 |  | Monta¿ ruroci¹gów – Sekcja 01 |  | 14.5d | 2026-05-19 A | 2026-06-10 A | 29UF44-015, 29UF44-014 SS+4d | 100% |  | 2026-05-19 | 2026-06-05 |  | HydroIns | 29UF44 | Ruroci¹g | Budowa | Roboty | Agnieszk | Wyspa | PM000 | Zespó³-K | Blok | Normalny | Pakiet | L2 | Do weryfikacji z wykonawc¹ |
| 29UF44-017 |  | Próba ciœnieniowa – Sekcja 01 |  | 4d | 2026-06-11 A | 2026-06-17 A | 29UF44-016 | 100% |  | 2026-06-08 | 2026-06-11 | Rev C | HydroIns | 29UF44 | Ruroci¹g | Budowa | Roboty | Agnieszk | Wyspa | PM000 | Zespó³-W | Blok | Normalny | Pakiet | L2 |  |
| 29UF44-019 |  | Malowanie i oznakowanie – Sekcja 01 |  | 8d | 2026-06-12 A | 2026-06-25 A | 29UF44-018 FF+2d | 100% |  | 2026-06-12 | 2026-06-23 | Rev C | HydroIns | 29UF44 | Ruroci¹g | Budowa | Roboty | Agnieszk | Wyspa | PM000 | Zespó³-E | Blok | Wysoki | Pakiet | L2 |  |
| 29UF44-018 |  | Izolacje – Sekcja 01 |  | 6d | 2026-06-17 A | 2026-06-29 A | 29UF44-017 | 100% |  | 2026-06-12 | 2026-06-19 |  | HydroIns | 29UF44 | Ruroci¹g | Budowa | Roboty | Agnieszk | Wyspa | PM000 | Zespó³-W | Blok | Normalny | Pakiet | L2 |  |
|  | SEKCJA 02 | **Sekcja 02** |  |  | 2026-02-09 | 2026-06-18 |  |  |  |  |  |  |  |  |  |  |  |  |  |  |  |  |  |  |  |  |
| 29UF44-020 |  | Prefabrykacja ruroci¹gów – Sekcja 02 |  | 7.3d | 2026-02-09 A | 2026-02-19 A | 29UF44-012, 29UF44-015 SS+5d | 100% |  | 2026-02-05 | 2026-02-13 |  | HydroIns | 29UF44 | Ruroci¹g | Budowa | Roboty | Agnieszk | Wyspa | PM000 | Zespó³-W | Blok | Wysoki | Pakiet | L2 |  |
| 29UF44-021 |  | Monta¿ ruroci¹gów – Sekcja 02 |  | 7.2d | 2026-05-22 A | 2026-06-04 A | 29UF44-020, 29UF44-014 SS+4d | 100% |  | 2026-05-19 | 2026-05-27 | Rev B | HydroIns | 29UF44 | Ruroci¹g | Budowa | Roboty | Agnieszk | Wyspa | PM000 | Zespó³-W | Blok | Normalny | Pakiet | L2 |  |
| 29UF44-022 |  | Próba ciœnieniowa – Sekcja 02 |  | 2d | 2026-06-02 A | 2026-06-03 A | 29UF44-021 | 100% |  | 2026-05-28 | 2026-05-29 | Rev A | HydroIns | 29UF44 | Ruroci¹g | Budowa | Roboty | Agnieszk | Wyspa | PM000 | Zespó³-K | Blok | Normalny | Pakiet | L2 |  |
| 29UF44-023 |  | Izolacje – Sekcja 02 |  | 9d | 2026-06-02 A | 2026-06-15 A | 29UF44-022 | 100% |  | 2026-06-01 | 2026-06-11 | Rev B | HydroIns | 29UF44 | Ruroci¹g | Budowa | Roboty | Agnieszk | Wyspa | PM000 | Zespó³-W | Blok | Niski | Pakiet | L2 |  |
| 29UF44-024 |  | Malowanie i oznakowanie – Sekcja 02 |  | 5d | 2026-06-11 A | 2026-06-18 A | 29UF44-023 FF+2d | 100% |  | 2026-06-09 | 2026-06-15 | Rev A | HydroIns | 29UF44 | Ruroci¹g | Budowa | Roboty | Agnieszk | Wyspa | PM000 | Zespó³-W | Blok | Normalny | Pakiet | L2 |  |
|  | SEKCJA 03 | **Sekcja 03** |  |  | 2026-02-16 | 2026-06-29 |  |  |  |  |  |  |  |  |  |  |  |  |  |  |  |  |  |  |  |  |
|  | PODSEKCJA | **Podsekcja 03.A** |  |  | 2026-02-16 | 2026-06-29 |  |  |  |  |  |  |  |  |  |  |  |  |  |  |  |  |  |  |  |  |
| 29UF44-027 |  | Prefabrykacja ruroci¹gów – Sekcja 03 |  | 7.8d | 2026-02-16 A | 2026-02-26 A | 29UF44-012, 29UF44-020 SS+5d | 100% |  | 2026-02-12 | 2026-02-20 | Rev B | HydroIns | 29UF44 | Ruroci¹g | Budowa | Roboty | Agnieszk | Wyspa | PM000 | Zespó³-W | Blok | Normalny | Pakiet | L2 |  |
| 29UF44-028 |  | Monta¿ ruroci¹gów – Sekcja 03 |  | 16.8d | 2026-05-22 A | 2026-06-16 A | 29UF44-027, 29UF44-014 SS+6d | 100% |  | 2026-05-21 | 2026-06-11 |  | HydroIns | 29UF44 | Ruroci¹g | Budowa | Roboty | Agnieszk | Wyspa | PM000 | Zespó³-K | Blok | Normalny | Pakiet | L2 | Ryzyko opóŸnienia |
| 29UF44-029 |  | Próba ciœnieniowa – Sekcja 03 |  | 2d | 2026-06-15 A | 2026-06-18 A | 29UF44-028 | 100% |  | 2026-06-12 | 2026-06-15 |  | HydroIns | 29UF44 | Ruroci¹g | Budowa | Roboty | Agnieszk | Wyspa | PM000 | Zespó³-W | Blok | Krytyczn | Pakiet | L2 |  |
| 29UF44-030 |  | Izolacje – Sekcja 03 |  | 7d | 2026-06-17 A | 2026-06-25 A | 29UF44-029 | 100% |  | 2026-06-16 | 2026-06-24 |  | HydroIns | 29UF44 | Ruroci¹g | Budowa | Roboty | Agnieszk | Wyspa | PM300 | Zespó³-E | Blok | Normalny | Pakiet | L2 | Ryzyko opóŸnienia |
| 29UF44-031 |  | Malowanie i oznakowanie – Sekcja 03 |  | 3d | 2026-06-24 A | 2026-06-29 A | 29UF44-030 FF+2d | 100% |  | 2026-06-24 | 2026-06-26 |  | HydroIns | 29UF44 | Ruroci¹g | Budowa | Roboty | Agnieszk | Wyspa | PM000 | Zespó³-K | Blok | Normalny | Pakiet | L2 |  |

| ID | WBS | Activity | Duration | Start | Finish | Predecessors | Complete | Planned start | Planned finish | AC_Wykonawca | AC_Obiekt | AC_Dyscyplina | AC_Faza | AC_Zakres | AC_Opiekun | AC_Obszar | AC_PP_PM | AC_Zespol | AC_Blok | AC_Priorytet | AC_Pakiet | AC_Poziom | Rewizja dokumentu | Uwagi harmonogramisty |
| --- | --- | --- | --- | --- | --- | --- | --- | --- | --- | --- | --- | --- | --- | --- | --- | --- | --- | --- | --- | --- | --- | --- | --- | --- |
|  | SEKCJA 04 | **Sekcja 04** |  | 2026-02-19 | 2026-06-19 |  |  |  |  |  |  |  |  |  |  |  |  |  |  |  |  |  |  |  |
| 29UF44-032 |  | Prefabrykacja ruroci¹gów – Sekcja 04 | 12.5d | 2026-02-19 A | 2026-03-11 A | 29UF44-012, 29UF44-027 SS+5d | 100% | 2026-02-19 | 2026-03-06 | HydroIns | 29UF44 | Ruroci¹g | Budowa | Roboty | Agnieszk | Wyspa | PM000 | Zespó³-K | Blok | Normalny | Pakiet | L2 |  |  |
| 29UF44-033 |  | Monta¿ ruroci¹gów – Sekcja 04 | 12.7d | 2026-05-20 A | 2026-06-05 A | 29UF44-032, 29UF44-014 SS+2d | 100% | 2026-05-15 | 2026-06-01 | HydroIns | 29UF44 | Ruroci¹g | Budowa | Roboty | Agnieszk | Wyspa | PM000 | Zespó³-K | Blok | Normalny | Pakiet | L2 | Rev A |  |
| 29UF44-034 |  | Próba ciœnieniowa – Sekcja 04 | 2d | 2026-06-03 A | 2026-06-08 A | 29UF44-033 | 100% | 2026-06-02 | 2026-06-03 | HydroIns | 29UF44 | Ruroci¹g | Budowa | Roboty | Agnieszk | Wyspa | PM000 | Zespó³-W | Blok | Normalny | Pakiet | L2 |  |  |
| 29UF44-035 |  | Izolacje – Sekcja 04 | 6d | 2026-06-04 A | 2026-06-12 A | 29UF44-034 | 100% | 2026-06-04 | 2026-06-11 | HydroIns | 29UF44 | Ruroci¹g | Budowa | Roboty | Agnieszk | Wyspa | PM000 | Zespó³-K | Blok | Normalny | Pakiet | L2 |  | Czeka na dostawê |
| 29UF44-036 |  | Malowanie i oznakowanie – Sekcja 04 | 8d | 2026-06-05 A | 2026-06-19 A | 29UF44-035 FF+2d | 100% | 2026-06-04 | 2026-06-15 | HydroIns | 29UF44 | Ruroci¹g | Budowa | Roboty | Agnieszk | Wyspa | PM000 | Zespó³-E | Blok | Niski | Pakiet | L2 | Rev C |  |
|  | SEKCJA 05 | **Sekcja 05** |  | 2026-03-03 | 2026-06-23 |  |  |  |  |  |  |  |  |  |  |  |  |  |  |  |  |  |  |  |
| 29UF44-039 |  | Prefabrykacja ruroci¹gów – Sekcja 05 | 10.3d | 2026-03-03 A | 2026-03-19 A | 29UF44-012, 29UF44-032 SS+5d | 100% | 2026-02-26 | 2026-03-11 | HydroIns | 29UF44 | Ruroci¹g | Budowa | Roboty | Agnieszk | Wyspa | PM000 | Zespó³-W | Blok | Wysoki | Pakiet | L2 |  |  |
| 29UF44-040 |  | Monta¿ ruroci¹gów – Sekcja 05 | 9.5d | 2026-05-20 A | 2026-06-03 A | 29UF44-039, 29UF44-014 SS+6d | 100% | 2026-05-21 | 2026-06-02 | HydroIns | 29UF44 | Ruroci¹g | Budowa | Roboty | Agnieszk | Wyspa | PM000 | Zespó³-W | Blok | Normalny | Pakiet | L2 |  | Do weryfikacji z wykonawc¹ |
| 29UF44-041 |  | Próba ciœnieniowa – Sekcja 05 | 2d | 2026-06-03 A | 2026-06-08 A | 29UF44-040 | 100% | 2026-06-03 | 2026-06-04 | HydroIns | 29UF44 | Ruroci¹g | Budowa | Roboty | Agnieszk | Wyspa | PM000 | Zespó³-W | Blok | Niski | Pakiet | L2 |  |  |
| 29UF44-042 |  | Izolacje – Sekcja 05 | 7d | 2026-06-05 A | 2026-06-15 A | 29UF44-041 | 100% |  |  | HydroIns | 29UF44 | Ruroci¹g | Budowa | Roboty | Agnieszk | Wyspa | PM000 | Zespó³-W | Blok | Niski | Pakiet | L2 |  |  |
| 29UF44-043 |  | Malowanie i oznakowanie – Sekcja 05 | 8d | 2026-06-10 A | 2026-06-23 A | 29UF44-042 FF+2d | 100% | 2026-06-08 | 2026-06-17 | HydroIns | 29UF44 | Ruroci¹g | Budowa | Roboty | Agnieszk | Wyspa | PM000 | Zespó³-W | Blok | Normalny | Pakiet | L2 |  |  |
|  | SEKCJA 06 | **Sekcja 06** |  | 2026-03-05 | 2026-06-19 |  |  |  |  |  |  |  |  |  |  |  |  |  |  |  |  |  |  |  |
|  | PODSEKCJA | **Podsekcja 06.A** |  | 2026-03-05 | 2026-06-19 |  |  |  |  |  |  |  |  |  |  |  |  |  |  |  |  |  |  |  |
| 29UF44-044 |  | Prefabrykacja ruroci¹gów – Sekcja 06 | 4d | 2026-03-05 A | 2026-03-11 A | 29UF44-012, 29UF44-039 SS+5d | 100% | 2026-03-05 | 2026-03-10 | HydroIns | 29UF44 | Ruroci¹g | Budowa | Roboty | Agnieszk | Wyspa | PM000 | Zespó³-K | Blok | Krytyczn | Pakiet | L2 |  |  |
| 29UF44-045 |  | Monta¿ ruroci¹gów – Sekcja 06 | 17.7d | 2026-05-15 A | 2026-06-11 A | 29UF44-044, 29UF44-014 SS+2d | 100% | 2026-05-15 | 2026-06-08 | HydroIns | 29UF44 | Ruroci¹g | Budowa | Roboty | Agnieszk | Wyspa | PM000 | Zespó³-W | Blok | Normalny | Pakiet | L2 |  |  |
| 29UF44-047 |  | Izolacje – Sekcja 06 | 4d | 2026-06-10 A | 2026-06-17 A | 29UF44-046 | 100% | 2026-06-11 | 2026-06-16 | HydroIns | 29UF44 | Ruroci¹g | Budowa | Roboty | Agnieszk | Wyspa | PM000 | Zespó³-W | Blok | Normalny | Pakiet | L2 |  |  |
| 29UF44-046 |  | Próba ciœnieniowa – Sekcja 06 | 2d | 2026-06-11 A | 2026-06-12 A | 29UF44-045 | 100% | 2026-06-09 | 2026-06-10 | HydroIns | 29UF44 | Ruroci¹g | Budowa | Roboty | Agnieszk | Wyspa | PM000 | Zespó³-K | Blok | Normalny | Pakiet | L2 |  |  |
| 29UF44-048 |  | Malowanie i oznakowanie – Sekcja 06 | 5d | 2026-06-12 A | 2026-06-19 A | 29UF44-047 FF+2d | 100% | 2026-06-12 | 2026-06-18 | HydroIns | 29UF44 | Ruroci¹g | Budowa | Roboty | Agnieszk | Wyspa | PM200 | Zespó³-E | Blok | Normalny | Pakiet | L2 |  | Ryzyko opóŸnienia |
|  | SEKCJA 07 | **Sekcja 07** |  | 2026-03-13 | 2026-06-22 |  |  |  |  |  |  |  |  |  |  |  |  |  |  |  |  |  |  |  |
| 29UF44-051 |  | Prefabrykacja ruroci¹gów – Sekcja 07 | 13.6d | 2026-03-13 A | 2026-04-02 A | 29UF44-012, 29UF44-044 SS+5d | 100% | 2026-03-12 | 2026-03-30 | HydroIns | 29UF44 | Ruroci¹g | Budowa | Roboty | Agnieszk | Wyspa | PM000 | Zespó³-K | Blok | Wysoki | Pakiet | L2 |  |  |
| 29UF44-052 |  | Monta¿ ruroci¹gów – Sekcja 07 | 11.9d | 2026-05-19 A | 2026-06-05 A | 29UF44-051, 29UF44-014 SS+5d | 100% | 2026-05-20 | 2026-06-03 | HydroIns | 29UF44 | Ruroci¹g | Budowa | Roboty | Agnieszk | Wyspa | PM000 | Zespó³-K | Blok | Normalny | Pakiet | L2 |  | Ryzyko opóŸnienia |
| 29UF44-053 |  | Próba ciœnieniowa – Sekcja 07 | 3d | 2026-06-03 A | 2026-06-08 A | 29UF44-052 | 100% | 2026-06-04 | 2026-06-08 | HydroIns | 29UF44 | Ruroci¹g | Budowa | Roboty | Agnieszk | Wyspa | PM000 | Zespó³-E | Blok | Normalny | Pakiet | L2 |  |  |
| 29UF44-054 |  | Izolacje – Sekcja 07 | 4d | 2026-06-08 A | 2026-06-16 A | 29UF44-053 | 100% | 2026-06-09 | 2026-06-12 | HydroIns | 29UF44 | Ruroci¹g | Budowa | Roboty | Agnieszk | Wyspa | PM000 | Zespó³-W | Blok | Normalny | Pakiet | L2 | Rev C | Uzgodnione na koordynacji |
| 29UF44-055 |  | Malowanie i oznakowanie – Sekcja 07 | 6d | 2026-06-12 A | 2026-06-22 A | 29UF44-054 FF+2d | 100% | 2026-06-09 | 2026-06-16 | HydroIns | 29UF44 | Ruroci¹g | Budowa | Roboty | Agnieszk | Wyspa | PM000 | Zespó³-W | Blok | Normalny | Pakiet | L2 |  |  |

| ID | WBS | Activity | Duration | Start | Finish | Predecessors | Complete | Planned start | Planned finish | Calendar | AC_Wykonawca | AC_Obiekt | AC_Dyscyplina | AC_Faza | AC_Zakres | AC_Opiekun | AC_Obszar | AC_PP_PM | AC_Zespol | AC_Blok | AC_Priorytet | AC_Pakiet | AC_Poziom | Rewizja dokumentu | Uwagi harmonogramisty |
| --- | --- | --- | --- | --- | --- | --- | --- | --- | --- | --- | --- | --- | --- | --- | --- | --- | --- | --- | --- | --- | --- | --- | --- | --- | --- |
|  | SEKCJA 08 | **Sekcja 08** |  | 2026-03-18 | 2026-07-10 |  |  |  |  |  |  |  |  |  |  |  |  |  |  |  |  |  |  |  |  |
| 29UF44-056 |  | Prefabrykacja ruroci¹gów – Sekcja 08 | 10.6d | 2026-03-18 A | 2026-03-31 A | 29UF44-012, 29UF44-051 SS+5d | 100% | 2026-03-19 | 2026-04-01 |  | HydroIns | 29UF44 | Ruroci¹g | Budowa | Roboty | Agnieszk | Wyspa | PM000 | Zespó³-E | Blok | Normalny | Pakiet | L2 |  |  |
| 29UF44-057 |  | Monta¿ ruroci¹gów – Sekcja 08 | 17.6d | 2026-05-25 A | 2026-06-16 A | 29UF44-056, 29UF44-014 SS+8d | 100% |  |  |  | HydroIns | 29UF44 | Ruroci¹g | Budowa | Roboty | Agnieszk | Wyspa | PM000 | Zespó³-K | Blok | Normalny | Pakiet | L2 | Rev B |  |
| 29UF44-058 |  | Próba ciœnieniowa – Sekcja 08 | 3d | 2026-06-19 A | 2026-06-25 A | 29UF44-057 | 100% | 2026-06-17 | 2026-06-19 |  | HydroIns | 29UF44 | Ruroci¹g | Budowa | Roboty | Agnieszk | Wyspa | PM000 | Zespó³-K | Blok | Normalny | Pakiet | L2 |  |  |
| 29UF44-059 |  | Izolacje – Sekcja 08 | 11d | 2026-06-24 A | 2026-07-10 A | 29UF44-058 | 100% | 2026-06-22 | 2026-07-06 |  | HydroIns | 29UF44 | Ruroci¹g | Budowa | Roboty | Agnieszk | Wyspa | PM000 | Zespó³-K | Blok | Normalny | Pakiet | L2 | Rev B | Do weryfikacji z wykonawc¹ |
| 29UF44-060 |  | Malowanie i oznakowanie – Sekcja 08 | 8d | 2026-06-29 A | 2026-07-09 A | 29UF44-059 FF+2d | 100% | 2026-06-29 | 2026-07-08 |  | HydroIns | 29UF44 | Ruroci¹g | Budowa | Roboty | Agnieszk | Wyspa | PM200 | Zespó³-E | Blok | Normalny | Pakiet | L2 |  | Ryzyko opóŸnienia |
|  | SEKCJA 09 | **Sekcja 09** |  | 2026-03-26 | 2026-07-14 |  |  |  |  |  |  |  |  |  |  |  |  |  |  |  |  |  |  |  |  |
|  | PODSEKCJA | **Podsekcja 09.A** |  | 2026-03-26 | 2026-07-14 |  |  |  |  |  |  |  |  |  |  |  |  |  |  |  |  |  |  |  |  |
| 29UF44-063 |  | Prefabrykacja ruroci¹gów – Sekcja 09 | 3.6d | 2026-03-26 A | 2026-04-01 A | 29UF44-012, 29UF44-056 SS+5d | 100% | 2026-03-26 | 2026-03-30 |  | HydroIns | 29UF44 | Ruroci¹g | Budowa | Roboty | Agnieszk | Wyspa | PM000 | Zespó³-W | Blok | Wysoki | Pakiet | L2 |  | Bez uwag |
| 29UF44-064 |  | Monta¿ ruroci¹gów – Sekcja 09 | 22.7d | 2026-05-21 A | 2026-06-23 A | 29UF44-063, 29UF44-014 SS+5d | 100% | 2026-05-20 | 2026-06-18 |  | HydroIns | 29UF44 | Ruroci¹g | Budowa | Roboty | Agnieszk | Wyspa | PM200 | Zespó³-E | Blok | Wysoki | Pakiet | L2 | Rev C |  |
| 29UF44-065 |  | Próba ciœnieniowa – Sekcja 09 | 5d | 2026-06-19 A | 2026-06-26 A | 29UF44-064 | 100% | 2026-06-19 | 2026-06-25 |  | HydroIns | 29UF44 | Ruroci¹g | Budowa | Roboty | Agnieszk | Wyspa | PM000 | Zespó³-W | Blok | Wysoki | Pakiet | L2 |  |  |
| 29UF44-066 |  | Izolacje – Sekcja 09 | 10d | 2026-06-26 A | 2026-07-10 A | 29UF44-065 | 100% | 2026-06-26 | 2026-07-09 |  | HydroIns | 29UF44 | Ruroci¹g | Budowa | Roboty | Agnieszk | Wyspa | PM000 | Zespó³-K | Blok | Normalny | Pakiet | L2 |  |  |
| 29UF44-067 |  | Malowanie i oznakowanie – Sekcja 09 | 5d | 2026-07-07 A | 2026-07-14 A | 29UF44-066 FF+2d | 100% | 2026-07-07 | 2026-07-13 |  | HydroIns | 29UF44 | Ruroci¹g | Budowa | Roboty | Agnieszk | Wyspa | PM000 | Zespó³-W | Blok | Normalny | Pakiet | L2 |  |  |
|  | SEKCJA 10 | **Sekcja 10** |  | 2026-04-01 | 2026-07-09 |  |  |  |  |  |  |  |  |  |  |  |  |  |  |  |  |  |  |  |  |
| 29UF44-068 |  | Prefabrykacja ruroci¹gów – Sekcja 10 | 5.3d | 2026-04-01 A | 2026-04-10 A | 29UF44-012, 29UF44-063 SS+5d | 100% | 2026-04-02 | 2026-04-08 |  | HydroIns | 29UF44 | Ruroci¹g | Budowa | Roboty | Agnieszk | Wyspa | PM000 | Zespó³-K | Blok | Normalny | Pakiet | L2 |  |  |
| 29UF44-069 |  | Monta¿ ruroci¹gów – Sekcja 10 | 18d | 2026-05-18 A | 2026-06-11 A | 29UF44-068, 29UF44-014 SS+2d | 100% | 2026-05-15 | 2026-06-09 |  | HydroIns | 29UF44 | Ruroci¹g | Budowa | Roboty | Agnieszk | Wyspa | PM000 | Zespó³-W | Blok | Normalny | Pakiet | L2 |  | Uzgodnione na koordynacji |
| 29UF44-070 |  | Próba ciœnieniowa – Sekcja 10 | 6d | 2026-06-11 A | 2026-06-18 A | 29UF44-069 | 100% | 2026-06-10 | 2026-06-17 |  | HydroIns | 29UF44 | Ruroci¹g | Budowa | Roboty | Agnieszk | Wyspa | PM000 | Zespó³-K | Blok | Normalny | Pakiet | L2 |  |  |
| 29UF44-071 |  | Izolacje – Sekcja 10 | 12d | 2026-06-18 A | 2026-07-03 A | 29UF44-070 | 100% |  |  |  | HydroIns | 29UF44 | Ruroci¹g | Budowa | Roboty | Agnieszk | Wyspa | PM000 | Zespó³-K | Blok | Krytyczn | Pakiet | L2 |  |  |
| 29UF44-072 |  | Malowanie i oznakowanie – Sekcja 10 | 7d | 2026-06-26 A | 2026-07-09 A | 29UF44-071 FF+2d | 100% | 2026-06-29 | 2026-07-07 |  | HydroIns | 29UF44 | Ruroci¹g | Budowa | Roboty | Agnieszk | Wyspa | PM000 | Zespó³-W | Blok | Normalny | Pakiet | L2 |  |  |
|  | SEKCJA 11 | **Sekcja 11** |  | 2026-04-14 | 2026-06-19 |  |  |  |  |  |  |  |  |  |  |  |  |  |  |  |  |  |  |  |  |
| 29UF44-075 |  | Prefabrykacja ruroci¹gów – Sekcja 11 | 12.5d | 2026-04-14 A | 2026-04-29 A | 29UF44-012, 29UF44-068 SS+5d | 100% | 2026-04-09 | 2026-04-24 |  | HydroIns | 29UF44 | Ruroci¹g | Budowa | Roboty | Agnieszk | Wyspa | PM000 | Zespó³-W | Blok | Normalny | Pakiet | L2 |  |  |
| 29UF44-076 |  | Monta¿ ruroci¹gów – Sekcja 11 | 15.2d | 2026-05-14 A | 2026-06-04 A | 29UF44-075, 29UF44-014 SS+1d | 100% | 2026-05-14 | 2026-06-03 |  | HydroIns | 29UF44 | Ruroci¹g | Budowa | Roboty | Agnieszk | Wyspa | PM000 | Zespó³-K | Blok | Normalny | Pakiet | L2 |  | Uzgodnione na koordynacji |
| 29UF44-077 |  | Próba ciœnieniowa – Sekcja 11 | 4d | 2026-06-05 A | 2026-06-10 A | 29UF44-076 | 100% | 2026-06-04 | 2026-06-09 |  | HydroIns | 29UF44 | Ruroci¹g | Budowa | Roboty | Agnieszk | Wyspa | PM000 | Zespó³-K | Blok | Normalny | Pakiet | L2 | Rev C |  |
| 29UF44-078 |  | Izolacje – Sekcja 11 | 3d | 2026-06-11 A | 2026-06-16 A | 29UF44-077 | 100% | 2026-06-10 | 2026-06-12 |  | HydroIns | 29UF44 | Ruroci¹g | Budowa | Roboty | Agnieszk | Wyspa | PM000 | Zespó³-K | Blok | Normalny | Pakiet | L2 |  |  |
| 29UF44-079 |  | Malowanie i oznakowanie – Sekcja 11 | 5d | 2026-06-12 A | 2026-06-19 A | 29UF44-078 FF+2d | 100% | 2026-06-10 | 2026-06-16 | Kalendarz 6-dniowy | HydroIns | 29UF44 | Ruroci¹g | Budowa | Roboty | Agnieszk | Wyspa | PM000 | Zespó³-W | Blok | Normalny | Pakiet | L2 | Rev B |  |

| ID | WBS | Activity | Type | Duration | Start | Finish | Predecessors | Complete | Actual start | Actual finish | Planned start | Planned finish | Calendar | AC_Wykonawca | AC_Obiekt | AC_Dyscyplina | AC_Faza | AC_Zakres | AC_Opiekun | AC_Obszar | AC_PP_PM | AC_Zespol | AC_Blok | AC_Priorytet | AC_Pakiet | AC_Poziom | Rewizja dokumentu | Uwagi harmonogramisty |
| --- | --- | --- | --- | --- | --- | --- | --- | --- | --- | --- | --- | --- | --- | --- | --- | --- | --- | --- | --- | --- | --- | --- | --- | --- | --- | --- | --- | --- |
|  | SEKCJA 12 | **Sekcja 12** |  |  | 2026-04-17 | 2026-07-10 |  |  |  |  |  |  |  |  |  |  |  |  |  |  |  |  |  |  |  |  |  |  |
|  | PODSEKCJA | **Podsekcja 12.A** |  |  | 2026-04-17 | 2026-07-10 |  |  |  |  |  |  |  |  |  |  |  |  |  |  |  |  |  |  |  |  |  |  |
| 29UF44-080 |  | Prefabrykacja ruroci¹gów – Sekcja 12 |  | 12d | 2026-04-17 A | 2026-05-04 A | 29UF44-012, 29UF44-075 SS+5d | 100% |  |  | 2026-04-16 | 2026-05-01 |  | HydroIns | 29UF44 | Ruroci¹g | Budowa | Roboty | Agnieszk | Wyspa | PM000 | Zespó³-K | Blok | Niski | Pakiet | L2 |  |  |
| 29UF44-081 |  | Monta¿ ruroci¹gów – Sekcja 12 |  | 20.1d | 2026-05-22 A | 2026-06-22 A | 29UF44-080, 29UF44-014 SS+7d | 100% |  |  | 2026-05-22 | 2026-06-18 |  | HydroIns | 29UF44 | Ruroci¹g | Budowa | Roboty | Agnieszk | Wyspa | PM000 | Zespó³-W | Blok | Normalny | Pakiet | L2 | Rev B |  |
| 29UF44-082 |  | Próba ciœnieniowa – Sekcja 12 |  | 2d | 2026-06-23 A | 2026-06-29 A | 29UF44-081 | 100% |  |  | 2026-06-19 | 2026-06-22 |  | HydroIns | 29UF44 | Ruroci¹g | Budowa | Roboty | Agnieszk | Wyspa | PM000 | Zespó³-K | Blok | Normalny | Pakiet | L2 |  |  |
| 29UF44-083 |  | Izolacje – Sekcja 12 |  | 10d | 2026-06-24 A | 2026-07-10 A | 29UF44-082 | 100% |  |  | 2026-06-23 | 2026-07-06 |  | HydroIns | 29UF44 | Ruroci¹g | Budowa | Roboty | Agnieszk | Wyspa | PM000 | Zespó³-K | Blok | Normalny | Pakiet | L2 |  | Do weryfikacji z wykonawc¹ |
| 29UF44-084 |  | Malowanie i oznakowanie – Sekcja 12 |  | 7d | 2026-06-29 A | 2026-07-08 A | 29UF44-083 FF+2d | 100% |  |  | 2026-06-30 | 2026-07-08 |  | HydroIns | 29UF44 | Ruroci¹g | Budowa | Roboty | Agnieszk | Wyspa | PM000 | Zespó³-E | Blok | Normalny | Pakiet | L2 |  |  |
|  | SEKCJA 13 | **Sekcja 13** |  |  | 2026-04-28 | 2026-06-30 |  |  |  |  |  |  |  |  |  |  |  |  |  |  |  |  |  |  |  |  |  |  |
| 29UF44-087 |  | Prefabrykacja ruroci¹gów – Sekcja 13 |  | 9.4d | 2026-04-28 A | 2026-05-11 A | 29UF44-012, 29UF44-080 SS+5d | 100% |  |  | 2026-04-23 | 2026-05-05 | Kalendarz 6-dniowy | HydroIns | 29UF44 | Ruroci¹g | Budowa | Roboty | Agnieszk | Wyspa | PM000 | Zespó³-K | Blok | Normalny | Pakiet | L2 |  |  |
| 29UF44-088 |  | Monta¿ ruroci¹gów – Sekcja 13 |  | 9.2d | 2026-05-18 A | 2026-05-28 A | 29UF44-087, 29UF44-014 SS+4d | 100% |  |  | 2026-05-19 | 2026-05-29 |  | HydroIns | 29UF44 | Ruroci¹g | Budowa | Roboty | Agnieszk | Wyspa | PM000 | Zespó³-K | Blok | Normalny | Pakiet | L2 |  |  |
| 29UF44-089 |  | Próba ciœnieniowa – Sekcja 13 |  | 3d | 2026-06-02 A | 2026-06-09 A | 29UF44-088 | 100% |  |  | 2026-06-01 | 2026-06-03 |  | HydroIns | 29UF44 | Ruroci¹g | Budowa | Roboty | Agnieszk | Wyspa | PM000 | Zespó³-W | Blok | Normalny | Pakiet | L2 |  | Bez uwag |
| 29UF44-090 |  | Izolacje – Sekcja 13 |  | 12d | 2026-06-05 A | 2026-06-24 A | 29UF44-089 | 100% |  |  | 2026-06-04 | 2026-06-19 |  | HydroIns | 29UF44 | Ruroci¹g | Budowa | Roboty | Agnieszk | Wyspa | PM000 | Zespó³-W | Blok | Normalny | Pakiet | L2 |  |  |
| 29UF44-091 |  | Malowanie i oznakowanie – Sekcja 13 |  | 2d | 2026-06-25 A | 2026-06-30 A | 29UF44-090 FF+2d | 100% |  |  | 2026-06-22 | 2026-06-23 |  | HydroIns | 29UF44 | Ruroci¹g | Budowa | Roboty | Agnieszk | Wyspa | PM000 | Zespó³-K | Blok | Normalny | Pakiet | L2 |  |  |
|  | PROJ | **Projektowanie** |  |  | 2025-01-31 | 2025-05-29 |  |  |  |  |  |  |  |  |  |  |  |  |  |  |  |  |  |  |  |  |  |  |
|  | DOKUMENTAC | **Dokumentacja** |  |  | 2025-01-31 | 2025-05-29 |  |  |  |  |  |  |  |  |  |  |  |  |  |  |  |  |  |  |  |  |  |  |
| 29UF44-001 |  | Projekt wykonawczy – Pompy skroplin |  | 51d | 2025-01-31 A | 2025-04-14 A |  | 100% |  |  | 2025-01-30 | 2025-04-10 |  | HydroIns | 29UF44 | Budowlan | Projekto | Projekt | Agnieszk | Wyspa | PM000 | Zespó³-W | Blok | Normalny | Pakiet | L2 |  |  |
| 29UF44-002 |  | Uzgodnienie dokumentacji z Inwestorem |  | 27d | 2025-04-14 A | 2025-05-21 A | 29UF44-001 | 100% |  |  | 2025-04-11 | 2025-05-19 |  | HydroIns | 29UF44 | Budowlan | Projekto | Projekt | Agnieszk | Wyspa | PM000 | Zespó³-W | Blok | Normalny | Pakiet | L2 | Rev C |  |
| 29UF44-003 |  | Zatwierdzenie dokumentacji do realizacji |  | 6d | 2025-05-19 A | 2025-05-26 A | 29UF44-002 | 100% |  |  | 2025-05-20 | 2025-05-27 |  | HydroIns | 29UF44 | Budowlan | Projekto | Projekt | Agnieszk | Wyspa | PM000 | Zespó³-W | Blok | Normalny | Pakiet | L2 |  |  |
| 29UF44-004 |  | KM: Dokumentacja zatwierdzona – Pompy skroplin | milestone | 0d | 2025-05-29 A | 2025-05-29 | 29UF44-003 | 100% |  | 2025-05-28 | 2025-05-28 | 2025-05-28 |  | HydroIns | 29UF44 | Budowlan | Projekto | Kamieñ | Agnieszk | Wyspa | PM000 | Zespó³-W | Blok | Normalny | Pakiet | L1 |  | Ryzyko opóŸnienia |
|  | ROZR | **Rozruch** |  |  | 2026-07-30 | 2026-08-27 |  |  |  |  |  |  |  |  |  |  |  |  |  |  |  |  |  |  |  |  |  |  |
|  | ROZRUCH | **Rozruch** |  |  | 2026-07-30 | 2026-08-27 |  |  |  |  |  |  |  |  |  |  |  |  |  |  |  |  |  |  |  |  |  |  |
| 29UF44-094 |  | Przegl¹d gotowoœci do rozruchu |  | 3d | 2026-07-30 A | 2026-08-03 A | 29UF44-093, 29UF44-019, 29UF44-024, 29UF44-026 | 100% |  |  | 2026-07-29 | 2026-07-31 |  | HydroIns | 29UF44 | Rozruch | Rozruch | Rozruch | Agnieszk | Wyspa | PM000 | Zespó³-K | Blok | Normalny | Pakiet | L2 |  | Bez uwag |
| 29UF44-095 |  | Rozruch na zimno |  | 6d | 2026-07-31 A | 2026-08-07 A | 29UF44-094 | 100% |  |  | 2026-08-03 | 2026-08-10 |  | HydroIns | 29UF44 | Rozruch | Rozruch | Rozruch | Agnieszk | Wyspa | PM000 | Zespó³-E | Blok | Normalny | Pakiet | L2 |  |  |
| 29UF44-096 |  | Rozruch na gor¹co / próby ruchowe |  | 11d | 2026-08-11 A | 2026-08-27 A | 29UF44-095 | 100% |  |  | 2026-08-11 | 2026-08-25 |  | HydroIns | 29UF44 | Rozruch | Rozruch | Rozruch | Agnieszk | Wyspa | PM000 | Zespó³-K | Blok | Normalny | Pakiet | L2 |  |  |
| 29UF44-097 |  | KM: Odbiór koñcowy – Pompy skroplin | milestone | 0d | 2026-08-27 | 2026-08-27 A | 29UF44-096 | 100% | 2026-08-28 |  | 2026-08-26 | 2026-08-26 |  | HydroIns | 29UF44 | Rozruch | Rozruch | Kamieñ | Agnieszk | Wyspa | PM000 | Zespó³-W | Blok | Wysoki | Pakiet | L1 |  |  |

| ID | WBS | Activity | Type | Duration | Start | Finish | Predecessors | Complete | Actual finish | Planned start | Planned finish | AC_Wykonawca | AC_Obiekt | AC_Dyscyplina | AC_Faza | AC_Zakres | AC_Opiekun | AC_Obszar | AC_PP_PM | AC_Zespol | AC_Blok | AC_Priorytet | AC_Pakiet | AC_Poziom | Uwagi harmonogramisty | Rewizja dokumentu |
| --- | --- | --- | --- | --- | --- | --- | --- | --- | --- | --- | --- | --- | --- | --- | --- | --- | --- | --- | --- | --- | --- | --- | --- | --- | --- | --- |
|  | ZAKU | **Zakupy** |  |  | 2025-02-28 | 2026-05-15 |  |  |  |  |  |  |  |  |  |  |  |  |  |  |  |  |  |  |  |  |
|  | DOSTAWY | **Dostawy** |  |  | 2025-11-11 | 2026-05-15 |  |  |  |  |  |  |  |  |  |  |  |  |  |  |  |  |  |  |  |  |
| 29UF44-008 |  | Produkcja u dostawcy |  | 107d | 2025-11-11 A | 2026-04-08 A | 29UF44-007 | 100% |  | 2025-11-07 | 2026-04-06 | HydroIns | 29UF44 | Mechanic | Zakupy | Dostawa | Agnieszk | Wyspa | PM000 | Zespó³-K | Blok | Normalny | Pakiet | L2 |  |  |
| 29UF44-009 |  | Testy FAT |  | 4d | 2026-04-08 A | 2026-04-15 A | 29UF44-008 | 100% |  | 2026-04-07 | 2026-04-10 | HydroIns | 29UF44 | Mechanic | Zakupy | Dostawa | Agnieszk | Wyspa | PM000 | Zespó³-K | Blok | Wysoki | Pakiet | L2 | Do weryfikacji z wykonawc¹ |  |
| 29UF44-010 |  | Transport i dostawa na plac budowy |  | 22d | 2026-04-16 A | 2026-05-15 A | 29UF44-009 | 100% |  | 2026-04-13 | 2026-05-12 | HydroIns | 29UF44 | Mechanic | Zakupy | Dostawa | Agnieszk | Wyspa | PM200 | Zespó³-E | Blok | Normalny | Pakiet | L2 |  | Rev B |
| 29UF44-011 |  | KM: Dostawa na budowê – Pompy skroplin | milestone | 0d | 2026-05-15 A | 2026-05-15 | 29UF44-010 | 100% | 2026-05-14 | 2026-05-13 | 2026-05-13 | HydroIns | 29UF44 | Mechanic | Zakupy | Kamieñ | Agnieszk | Wyspa | PM000 | Zespó³-W | Blok | Niski | Pakiet | L1 |  | Rev A |
|  | ZAMÓWIENIA | **Zamówienia** |  |  | 2025-02-28 | 2025-11-11 |  |  |  |  |  |  |  |  |  |  |  |  |  |  |  |  |  |  |  |  |
| 29UF44-005 |  | Zapytanie ofertowe |  | 22d | 2025-02-28 A | 2025-03-31 A | 29UF44-001 SS+20d | 100% |  | 2025-02-27 | 2025-03-28 | HydroIns | 29UF44 | Mechanic | Zakupy | Dostawa | Agnieszk | Wyspa | PM000 | Zespó³-W | Blok | Niski | Pakiet | L2 |  |  |
| 29UF44-006 |  | Analiza i wybór ofert |  | 13d | 2025-04-03 A | 2025-04-24 A | 29UF44-005 | 100% |  | 2025-03-31 | 2025-04-16 | HydroIns | 29UF44 | Mechanic | Zakupy | Dostawa | Agnieszk | Wyspa | PM000 | Zespó³-I | Blok | Normalny | Pakiet | L2 |  |  |
| 29UF44-007 |  | Zawarcie umowy / zamówienie |  | 10d | 2025-10-28 A | 2025-11-11 A | 29UF44-006, 29UF44-004 SS, 24PY38-004 FS+14d, 12PB41-004 FS+2d | 100% |  | 2025-10-24 | 2025-11-06 | HydroIns | 29UF44 | Mechanic | Zakupy | Dostawa | Agnieszk | Wyspa | PM000 | Zespó³-W | Blok | Normalny | Pakiet | L1 |  | Rev B |

## Activity codes

| Code | Value | Meaning |
| --- | --- | --- |
| AC_Blok | Blok | Blok 2 |
| AC_Dyscyplina | Budowlan | Budowlana |
| AC_Dyscyplina | Elektryc | Elektryczna |
| AC_Dyscyplina | Mechanic | Mechaniczna |
| AC_Dyscyplina | Ruroci¹g | Ruroci¹gi |
| AC_Faza | Projekto | Projektowanie |
| AC_Obiekt | 10BW45 | 10BW45 Generator |
| AC_Obiekt | 10TM34 | 10TM34 Hala maszyn |
| AC_Obiekt | 10YD43 | 10YD43 Odgazowywacz |
| AC_Obiekt | 11CP59 | 11CP59 Pompy wody zasilaj¹cej |
| AC_Obiekt | 12FX78 | 12FX78 Turbina parowa |
| AC_Obiekt | 12PB41 | 12PB41 Skraplacz |
| AC_Obiekt | 14NX42 | 14NX42 Uk³ad paliwa gazowego |
| AC_Obiekt | 15BP15 | 15BP15 Uk³ad oleju smarnego |
| AC_Obiekt | 18CX52 | 18CX52 Bêben wysokiego ciœnienia |
| AC_Obiekt | 19FK60 | 19FK60 Komin g³ówny |
| AC_Obiekt | 24PY38 | 24PY38 Turbina gazowa |
| AC_Obiekt | 27XT34 | 27XT34 Zbiornik wody zasilaj¹cej |
| AC_Obiekt | 28BW90 | 28BW90 Uk³ad by-pass pary |
| AC_Obiekt | 29UF44 | 29UF44 Pompy skroplin |
| AC_Obiekt | 30BU48 | 30BU48 Kocio³ odzyskowy HRSG |
| AC_Obszar | Wyspa | Wyspa turbinowa |
| AC_Opiekun | Agnieszk | Agnieszka WoŸniak |
| AC_Opiekun | Anna | Anna Wiœniewska |
| AC_Opiekun | Krzyszto | Krzysztof Koz³owski |
| AC_Opiekun | Magdalen | Magdalena Jankowska |
| AC_Opiekun | Marek | Marek Kowalczyk |
| AC_Opiekun | Micha³ | Micha³ Szymañski |
| AC_Opiekun | Piotr | Piotr Mazur |
| AC_Pakiet | Pakiet | Pakiet G |
| AC_Poziom | L1 | L1 – kamieñ milowy kontraktowy |
| AC_Poziom | L2 | L2 – kamieñ milowy obiektowy |
| AC_Priorytet | Krytyczn | Krytyczny |
| AC_Wykonawca | Automaty | AutomatykaPlus |
| AC_Wykonawca | BudMar | BudMar Sp. z o.o. |
| AC_Wykonawca | GdanskSt | GdanskSteel Monta¿ |
| AC_Wykonawca | HydroIns | HydroInstal |
| AC_Wykonawca | Kablex | Kablex Energo |
| AC_Wykonawca | TurboSys | TurboSystem S.A. |
| AC_Zakres | Kamieñ | Kamieñ milowy |
| AC_Zespol | Zespó³-E | Zespó³-E (Eksploatacja) |
| AC_Zespol | Zespó³-I | Zespó³-I (Inwestor) |
| AC_Zespol | Zespó³-K | Zespó³-K (Kontrakt) |
| AC_Zespol | Zespó³-W | Zespó³-W (Wykonawca) |

# PL5001 – AKPiA i infrastruktura (SE-03)

Schedule from Primavera P6, 2025-01-10 to 2028-03-01, data date 2026-10-07, A marks actual dates.

## Schedule

| ID | WBS | Activity | Type | Duration | Start | Finish | Predecessors | Complete | Actual finish | Planned start | Planned finish | AC_Wykonawca | AC_Obiekt | AC_Dyscyplina | AC_Faza | AC_Zakres | AC_Opiekun | AC_Obszar | AC_PP_PM | AC_Zespol | AC_Blok | AC_Priorytet | AC_Pakiet | AC_Poziom | Uwagi harmonogramisty | Rewizja dokumentu |
| --- | --- | --- | --- | --- | --- | --- | --- | --- | --- | --- | --- | --- | --- | --- | --- | --- | --- | --- | --- | --- | --- | --- | --- | --- | --- | --- |
|  | AUTOMATYKA_I | **Automatyka i AKPiA** |  |  | 2025-01-13 | 2028-03-01 |  |  |  |  |  |  |  |  |  |  |  |  |  |  |  |  |  |  |  |  |
|  | 10PQ22 | **10PQ22 – System DCS** |  |  | 2025-06-17 | 2028-03-01 |  |  |  |  |  |  |  |  |  |  |  |  |  |  |  |  |  |  |  |  |
|  | BUDO | **Budowa** |  |  | 2026-01-22 | 2026-09-15 |  |  |  |  |  |  |  |  |  |  |  |  |  |  |  |  |  |  |  |  |
|  | AKPIA | **AKPiA** |  |  | 2026-07-10 | 2026-08-27 |  |  |  |  |  |  |  |  |  |  |  |  |  |  |  |  |  |  |  |  |
| 10PQ22-116 |  | Monta¿ uk³adów AKPiA |  | 34d | 2026-07-10 A | 2026-08-27 A | 10PQ22-014 SS+5d | 100% |  | 2026-07-13 | 2026-08-27 | GdanskSt | 10PQ22 | AKPiA | Budowa | Roboty | Ewa | Automaty | PM000 | Zespó³-W | Blok | Normalny | Pakiet | L2 |  |  |
|  | ELEKTRYKA | **Elektryka** |  |  | 2026-07-13 | 2026-08-19 |  |  |  |  |  |  |  |  |  |  |  |  |  |  |  |  |  |  |  |  |
| 10PQ22-110 |  | Pod³¹czenia i pomiary – trasa 16 |  | 10d | 2026-07-13 A | 2026-07-29 A | 10PQ22-109 FF | 100% |  | 2026-07-10 | 2026-07-23 | GdanskSt | 10PQ22 | Elektryc | Budowa | Roboty | Ewa | Automaty | PM000 | Zespó³-K | Blok | Normalny | Pakiet | L2 |  |  |
| 10PQ22-025 |  | Uk³adanie kabli – trasa 02 |  | 13d | 2026-07-17 A | 2026-08-06 A | 10PQ22-014 SS+10d | 100% |  | 2026-07-20 | 2026-08-05 | GdanskSt | 10PQ22 | Elektryc | Budowa | Roboty | Ewa | Automaty | PM000 | Zespó³-W | Blok | Wysoki | Pakiet | L2 | Ryzyko opóŸnienia | Rev B |
| 10PQ22-097 |  | Uk³adanie kabli – trasa 14 |  | 20d | 2026-07-17 A | 2026-08-17 A | 10PQ22-014 SS+10d | 100% |  | 2026-07-20 | 2026-08-14 | GdanskSt | 10PQ22 | Elektryc | Budowa | Roboty | Ewa | Automaty | PM000 | Zespó³-W | Blok | Normalny | Pakiet | L2 |  |  |
| 10PQ22-073 |  | Uk³adanie kabli – trasa 10 |  | 20d | 2026-07-20 A | 2026-08-18 A | 10PQ22-014 SS+10d | 100% |  | 2026-07-20 | 2026-08-14 | GdanskSt | 10PQ22 | Elektryc | Budowa | Roboty | Ewa | Automaty | PM000 | Zespó³-K | Blok | Niski | Pakiet | L2 |  |  |
| 10PQ22-049 |  | Uk³adanie kabli – trasa 06 |  | 15d | 2026-07-21 A | 2026-08-12 A | 10PQ22-014 SS+10d | 100% |  | 2026-07-20 | 2026-08-07 | GdanskSt | 10PQ22 | Elektryc | Budowa | Roboty | Ewa | Automaty | PM000 | Zespó³-W | Blok | Normalny | Pakiet | L2 |  |  |
| 10PQ22-037 |  | Uk³adanie kabli – trasa 04 |  | 5d | 2026-07-22 A | 2026-07-29 A | 10PQ22-014 SS+10d | 100% |  | 2026-07-20 | 2026-07-24 | GdanskSt | 10PQ22 | Elektryc | Budowa | Roboty | Ewa | Automaty | PM000 | Zespó³-W | Blok | Normalny | Pakiet | L2 |  |  |
| 10PQ22-109 |  | Uk³adanie kabli – trasa 16 |  | 4d | 2026-07-22 A | 2026-07-29 A | 10PQ22-014 SS+10d | 100% |  | 2026-07-20 | 2026-07-23 | GdanskSt | 10PQ22 | Elektryc | Budowa | Roboty | Ewa | Automaty | PM000 | Zespó³-K | Blok | Niski | Pakiet | L2 |  | Rev C |
| 10PQ22-038 |  | Pod³¹czenia i pomiary – trasa 04 |  | 4d | 2026-07-23 A | 2026-07-30 A | 10PQ22-037 FF | 100% |  | 2026-07-21 | 2026-07-24 | GdanskSt | 10PQ22 | Elektryc | Budowa | Roboty | Ewa | Automaty | PM000 | Zespó³-W | Blok | Normalny | Pakiet | L2 |  |  |
| 10PQ22-061 |  | Uk³adanie kabli – trasa 08 |  | 4d | 2026-07-23 A | 2026-07-30 A | 10PQ22-014 SS+10d | 100% |  | 2026-07-20 | 2026-07-23 | GdanskSt | 10PQ22 | Elektryc | Budowa | Roboty | Ewa | Automaty | PM000 | Zespó³-K | Blok | Normalny | Pakiet | L2 |  |  |
| 10PQ22-085 |  | Uk³adanie kabli – trasa 12 |  | 10d | 2026-07-23 A | 2026-08-10 A | 10PQ22-014 SS+10d | 100% |  | 2026-07-20 | 2026-07-31 | GdanskSt | 10PQ22 | Elektryc | Budowa | Roboty | Ewa | Automaty | PM000 | Zespó³-W | Blok | Normalny | Pakiet | L2 |  | Rev B |
| 10PQ22-062 |  | Pod³¹czenia i pomiary – trasa 08 |  | 3d | 2026-07-24 A | 2026-07-29 A | 10PQ22-061 FF | 100% |  | 2026-07-21 | 2026-07-23 | GdanskSt | 10PQ22 | Elektryc | Budowa | Roboty | Ewa | Automaty | PM000 | Zespó³-W | Blok | Normalny | Pakiet | L2 |  | Rev B |
| 10PQ22-086 |  | Pod³¹czenia i pomiary – trasa 12 |  | 7d | 2026-07-27 A | 2026-08-07 A | 10PQ22-085 FF | 100% |  | 2026-07-23 | 2026-07-31 | GdanskSt | 10PQ22 | Elektryc | Budowa | Roboty | Ewa | Automaty | PM000 | Zespó³-W | Blok | Normalny | Pakiet | L2 | Bez uwag |  |
| 10PQ22-026 |  | Pod³¹czenia i pomiary – trasa 02 |  | 3d | 2026-08-04 A | 2026-08-10 A | 10PQ22-025 FF | 100% |  | 2026-08-03 | 2026-08-05 | GdanskSt | 10PQ22 | Elektryc | Budowa | Roboty | Ewa | Automaty | PM000 | Zespó³-I | Blok | Wysoki | Pakiet | L2 |  | Rev A |
| 10PQ22-098 |  | Pod³¹czenia i pomiary – trasa 14 |  | 7d | 2026-08-06 A | 2026-08-17 A | 10PQ22-097 FF | 100% |  | 2026-08-06 | 2026-08-14 | GdanskSt | 10PQ22 | Elektryc | Budowa | Roboty | Ewa | Automaty | PM000 | Zespó³-K | Blok | Wysoki | Pakiet | L2 |  |  |
| 10PQ22-050 |  | Pod³¹czenia i pomiary – trasa 06 |  | 3d | 2026-08-07 A | 2026-08-14 A | 10PQ22-049 FF | 100% |  | 2026-08-05 | 2026-08-07 | GdanskSt | 10PQ22 | Elektryc | Budowa | Roboty | Ewa | Automaty | PM000 | Zespó³-K | Blok | Niski | Pakiet | L2 | Bez uwag |  |
| 10PQ22-074 |  | Pod³¹czenia i pomiary – trasa 10 |  | 5d | 2026-08-13 A | 2026-08-19 A | 10PQ22-073 FF | 100% |  | 2026-08-10 | 2026-08-14 | GdanskSt | 10PQ22 | Elektryc | Budowa | Roboty | Ewa | Automaty | PM000 | Zespó³-W | Blok | Normalny | Pakiet | L2 |  | Rev C |
|  | MONTA¯ | **Monta¿** |  |  | 2026-03-05 | 2026-09-15 |  |  |  |  |  |  |  |  |  |  |  |  |  |  |  |  |  |  |  |  |
| 10PQ22-013 |  | Monta¿ konstrukcji stalowych |  | 19d | 2026-03-05 A | 2026-04-01 A | 10PQ22-012 | 100% |  | 2026-03-06 | 2026-04-01 | GdanskSt | 10PQ22 | Mechanic | Budowa | Roboty | Ewa | Automaty | PM000 | Zespó³-K | Blok | Normalny | Pakiet | L2 |  | Rev B |
| 10PQ22-014 |  | Monta¿ urz¹dzeñ g³ównych |  | 48d | 2026-07-03 A | 2026-09-08 A | 10PQ22-013, 10PQ22-011 | 100% |  | 2026-07-06 | 2026-09-09 | GdanskSt | 10PQ22 | Mechanic | Budowa | Roboty | Ewa | Automaty | PM000 | Zespó³-K | Blok | Krytyczn | Pakiet | L2 | Bez uwag |  |
| 10PQ22-117 |  | KM: Zakoñczenie monta¿u – System DCS | milestone | 0d | 2026-09-15 A | 2026-09-15 | 10PQ22-108, 10PQ22-110, 10PQ22-115, 10PQ22-116, 10PQ22-014 | 100% | 2026-09-14 | 2026-09-10 | 2026-09-10 | GdanskSt | 10PQ22 | Mechanic | Budowa | Kamieñ | Ewa | Automaty | PM000 | Zespó³-K | Blok | Normalny | Pakiet | L2 |  |  |

| ID | WBS | Activity | Duration | Start | Finish | Predecessors | Complete | Planned start | Planned finish | Calendar | Rewizja dokumentu | AC_Wykonawca | AC_Obiekt | AC_Dyscyplina | AC_Faza | AC_Zakres | AC_Opiekun | AC_Obszar | AC_PP_PM | AC_Zespol | AC_Blok | AC_Priorytet | AC_Pakiet | AC_Poziom | Uwagi harmonogramisty |
| --- | --- | --- | --- | --- | --- | --- | --- | --- | --- | --- | --- | --- | --- | --- | --- | --- | --- | --- | --- | --- | --- | --- | --- | --- | --- |
|  | ROBOTY BUD | **Roboty budowlane** |  | 2026-01-22 | 2026-03-06 |  |  |  |  |  |  |  |  |  |  |  |  |  |  |  |  |  |  |  |  |
| 10PQ22-012 |  | Fundamenty i roboty ziemne | 31d | 2026-01-22 A | 2026-03-06 A | 10PQ22-007 FS+8d | 100% | 2026-01-22 | 2026-03-05 |  | Rev B | GdanskSt | 10PQ22 | Budowlan | Budowa | Roboty | Ewa | Automaty | PM000 | Zespó³-K | Blok | Normalny | Pakiet | L2 |  |
|  | RUROCI¥GI | **Ruroci¹gi** |  | 2026-03-10 | 2026-09-11 |  |  |  |  |  |  |  |  |  |  |  |  |  |  |  |  |  |  |  |  |
|  | SEKCJA 01 | **Sekcja 01** |  | 2026-03-10 | 2026-08-12 |  |  |  |  |  |  |  |  |  |  |  |  |  |  |  |  |  |  |  |  |
| 10PQ22-015 |  | Prefabrykacja ruroci¹gów – Sekcja 01 | 3.2d | 2026-03-10 A | 2026-03-12 A | 10PQ22-012 | 100% | 2026-03-06 | 2026-03-10 |  |  | GdanskSt | 10PQ22 | Ruroci¹g | Budowa | Roboty | Ewa | Automaty | PM000 | Zespó³-W | Blok | Normalny | Pakiet | L2 |  |
| 10PQ22-016 |  | Monta¿ ruroci¹gów – Sekcja 01 | 11.5d | 2026-07-08 A | 2026-07-27 A | 10PQ22-015, 10PQ22-014 SS | 100% | 2026-07-06 | 2026-07-20 |  |  | GdanskSt | 10PQ22 | Ruroci¹g | Budowa | Roboty | Ewa | Automaty | PM000 | Zespó³-W | Blok | Normalny | Pakiet | L2 |  |
| 10PQ22-017 |  | Próba ciœnieniowa – Sekcja 01 | 2d | 2026-07-20 A | 2026-07-22 A | 10PQ22-016 | 100% | 2026-07-21 | 2026-07-22 |  | Rev C | GdanskSt | 10PQ22 | Ruroci¹g | Budowa | Roboty | Ewa | Automaty | PM000 | Zespó³-W | Blok | Wysoki | Pakiet | L2 |  |
| 10PQ22-018 |  | Izolacje – Sekcja 01 | 11d | 2026-07-28 A | 2026-08-12 A | 10PQ22-017 | 100% | 2026-07-23 | 2026-08-06 |  |  | GdanskSt | 10PQ22 | Ruroci¹g | Budowa | Roboty | Ewa | Automaty | PM000 | Zespó³-K | Blok | Normalny | Pakiet | L2 |  |
| 10PQ22-019 |  | Malowanie i oznakowanie – Sekcja 01 | 6d | 2026-08-04 A | 2026-08-11 A | 10PQ22-018 FF+2d | 100% | 2026-08-03 | 2026-08-10 | Kalendarz 6-dniowy |  | GdanskSt | 10PQ22 | Ruroci¹g | Budowa | Roboty | Ewa | Automaty | PM000 | Zespó³-W | Blok | Wysoki | Pakiet | L2 |  |
|  | SEKCJA 02 | **Sekcja 02** |  | 2026-03-12 | 2026-08-10 |  |  |  |  |  |  |  |  |  |  |  |  |  |  |  |  |  |  |  |  |
| 10PQ22-020 |  | Prefabrykacja ruroci¹gów – Sekcja 02 | 5.8d | 2026-03-12 A | 2026-03-19 A | 10PQ22-012, 10PQ22-015 SS+5d | 100% | 2026-03-13 | 2026-03-19 |  |  | GdanskSt | 10PQ22 | Ruroci¹g | Budowa | Roboty | Ewa | Automaty | PM000 | Zespó³-W | Blok | Normalny | Pakiet | L2 |  |
| 10PQ22-021 |  | Monta¿ ruroci¹gów – Sekcja 02 | 6.1d | 2026-07-17 A | 2026-07-29 A | 10PQ22-020, 10PQ22-014 SS+6d | 100% | 2026-07-14 | 2026-07-21 |  |  | GdanskSt | 10PQ22 | Ruroci¹g | Budowa | Roboty | Ewa | Automaty | PM000 | Zespó³-W | Blok | Normalny | Pakiet | L2 |  |
| 10PQ22-022 |  | Próba ciœnieniowa – Sekcja 02 | 3d | 2026-07-27 A | 2026-08-03 A | 10PQ22-021 | 100% | 2026-07-22 | 2026-07-24 | Kalendarz 6-dniowy |  | GdanskSt | 10PQ22 | Ruroci¹g | Budowa | Roboty | Ewa | Automaty | PM000 | Zespó³-W | Blok | Normalny | Pakiet | L2 |  |
| 10PQ22-023 |  | Izolacje – Sekcja 02 | 6d | 2026-07-28 A | 2026-08-05 A | 10PQ22-022 | 100% | 2026-07-27 | 2026-08-03 |  |  | GdanskSt | 10PQ22 | Ruroci¹g | Budowa | Roboty | Ewa | Automaty | PM000 | Zespó³-W | Blok | Krytyczn | Pakiet | L2 | Uzgodnione na koordynacji |
| 10PQ22-024 |  | Malowanie i oznakowanie – Sekcja 02 | 3d | 2026-08-06 A | 2026-08-10 A | 10PQ22-023 FF+2d | 100% | 2026-08-03 | 2026-08-05 |  | Rev C | GdanskSt | 10PQ22 | Ruroci¹g | Budowa | Roboty | Ewa | Automaty | PM000 | Zespó³-W | Blok | Normalny | Pakiet | L2 |  |
|  | SEKCJA 03 | **Sekcja 03** |  | 2026-03-19 | 2026-08-20 |  |  |  |  |  |  |  |  |  |  |  |  |  |  |  |  |  |  |  |  |
|  | PODSEKCJA | **Podsekcja 03.A** |  | 2026-03-19 | 2026-08-20 |  |  |  |  |  |  |  |  |  |  |  |  |  |  |  |  |  |  |  |  |
| 10PQ22-027 |  | Prefabrykacja ruroci¹gów – Sekcja 03 | 5.1d | 2026-03-19 A | 2026-03-25 A | 10PQ22-012, 10PQ22-020 SS+5d | 100% | 2026-03-20 | 2026-03-26 |  |  | GdanskSt | 10PQ22 | Ruroci¹g | Budowa | Roboty | Ewa | Automaty | PM000 | Zespó³-W | Blok | Normalny | Pakiet | L2 |  |
| 10PQ22-028 |  | Monta¿ ruroci¹gów – Sekcja 03 | 9.8d | 2026-07-20 A | 2026-08-03 A | 10PQ22-027, 10PQ22-014 SS+9d | 100% | 2026-07-17 | 2026-07-29 |  |  | GdanskSt | 10PQ22 | Ruroci¹g | Budowa | Roboty | Ewa | Automaty | PM000 | Zespó³-W | Blok | Niski | Pakiet | L2 |  |
| 10PQ22-029 |  | Próba ciœnieniowa – Sekcja 03 | 5d | 2026-07-29 A | 2026-08-04 A | 10PQ22-028 | 100% | 2026-07-30 | 2026-08-05 |  | Rev A | GdanskSt | 10PQ22 | Ruroci¹g | Budowa | Roboty | Ewa | Automaty | PM000 | Zespó³-W | Blok | Normalny | Pakiet | L2 |  |
| 10PQ22-030 |  | Izolacje – Sekcja 03 | 7d | 2026-08-11 A | 2026-08-20 A | 10PQ22-029 | 100% | 2026-08-06 | 2026-08-14 |  | Rev C | GdanskSt | 10PQ22 | Ruroci¹g | Budowa | Roboty | Ewa | Automaty | PM000 | Zespó³-W | Blok | Normalny | Pakiet | L2 |  |
| 10PQ22-031 |  | Malowanie i oznakowanie – Sekcja 03 | 5d | 2026-08-14 A | 2026-08-20 A | 10PQ22-030 FF+2d | 100% | 2026-08-12 | 2026-08-18 |  |  | GdanskSt | 10PQ22 | Ruroci¹g | Budowa | Roboty | Ewa | Automaty | PM100 | Zespó³-I | Blok | Normalny | Pakiet | L2 | Uzgodnione na koordynacji |
|  | SEKCJA 04 | **Sekcja 04** |  | 2026-03-27 | 2026-09-01 |  |  |  |  |  |  |  |  |  |  |  |  |  |  |  |  |  |  |  |  |
| 10PQ22-032 |  | Prefabrykacja ruroci¹gów – Sekcja 04 | 9.8d | 2026-03-27 A | 2026-04-13 A | 10PQ22-012, 10PQ22-027 SS+5d | 100% | 2026-03-27 | 2026-04-08 |  | Rev C | GdanskSt | 10PQ22 | Ruroci¹g | Budowa | Roboty | Ewa | Automaty | PM000 | Zespó³-K | Blok | Niski | Pakiet | L2 |  |
| 10PQ22-033 |  | Monta¿ ruroci¹gów – Sekcja 04 | 16d | 2026-07-14 A | 2026-08-07 A | 10PQ22-032, 10PQ22-014 SS+6d | 100% | 2026-07-14 | 2026-08-04 |  |  | GdanskSt | 10PQ22 | Ruroci¹g | Budowa | Roboty | Ewa | Automaty | PM000 | Zespó³-K | Blok | Wysoki | Pakiet | L2 |  |
| 10PQ22-034 |  | Próba ciœnieniowa – Sekcja 04 | 6d | 2026-08-06 A | 2026-08-13 A | 10PQ22-033 | 100% | 2026-08-05 | 2026-08-12 |  | Rev C | GdanskSt | 10PQ22 | Ruroci¹g | Budowa | Roboty | Ewa | Automaty | PM000 | Zespó³-W | Blok | Normalny | Pakiet | L2 |  |
| 10PQ22-035 |  | Izolacje – Sekcja 04 | 8d | 2026-08-18 A | 2026-08-31 A | 10PQ22-034 | 100% | 2026-08-13 | 2026-08-24 |  |  | GdanskSt | 10PQ22 | Ruroci¹g | Budowa | Roboty | Ewa | Automaty | PM000 | Zespó³-K | Blok | Normalny | Pakiet | L2 |  |
| 10PQ22-036 |  | Malowanie i oznakowanie – Sekcja 04 | 3d | 2026-08-26 A | 2026-09-01 A | 10PQ22-035 FF+2d | 100% | 2026-08-24 | 2026-08-26 |  |  | GdanskSt | 10PQ22 | Ruroci¹g | Budowa | Roboty | Ewa | Automaty | PM000 | Zespó³-K | Blok | Normalny | Pakiet | L2 |  |

| ID | WBS | Activity | Duration | Start | Finish | Predecessors | Complete | Planned start | Planned finish | Calendar | AC_Wykonawca | AC_Obiekt | AC_Dyscyplina | AC_Faza | AC_Zakres | AC_Opiekun | AC_Obszar | AC_PP_PM | AC_Zespol | AC_Blok | AC_Priorytet | AC_Pakiet | AC_Poziom | Uwagi harmonogramisty | Rewizja dokumentu |
| --- | --- | --- | --- | --- | --- | --- | --- | --- | --- | --- | --- | --- | --- | --- | --- | --- | --- | --- | --- | --- | --- | --- | --- | --- | --- |
|  | SEKCJA 05 | **Sekcja 05** |  | 2026-04-08 | 2026-08-05 |  |  |  |  |  |  |  |  |  |  |  |  |  |  |  |  |  |  |  |  |
| 10PQ22-039 |  | Prefabrykacja ruroci¹gów – Sekcja 05 | 14.3d | 2026-04-08 A | 2026-04-28 A | 10PQ22-012, 10PQ22-032 SS+5d | 100% | 2026-04-03 | 2026-04-22 |  | GdanskSt | 10PQ22 | Ruroci¹g | Budowa | Roboty | Ewa | Automaty | PM000 | Zespó³-W | Blok | Krytyczn | Pakiet | L2 |  |  |
| 10PQ22-040 |  | Monta¿ ruroci¹gów – Sekcja 05 | 9.3d | 2026-07-17 A | 2026-07-31 A | 10PQ22-039, 10PQ22-014 SS+6d | 100% | 2026-07-14 | 2026-07-24 |  | GdanskSt | 10PQ22 | Ruroci¹g | Budowa | Roboty | Ewa | Automaty | PM000 | Zespó³-W | Blok | Normalny | Pakiet | L2 | Czeka na dostawê | Rev C |
| 10PQ22-041 |  | Próba ciœnieniowa – Sekcja 05 | 2d | 2026-07-24 A | 2026-07-29 A | 10PQ22-040 | 100% | 2026-07-27 | 2026-07-28 |  | GdanskSt | 10PQ22 | Ruroci¹g | Budowa | Roboty | Ewa | Automaty | PM000 | Zespó³-W | Blok | Normalny | Pakiet | L2 |  |  |
| 10PQ22-043 |  | Malowanie i oznakowanie – Sekcja 05 | 7d | 2026-07-24 A | 2026-08-05 A | 10PQ22-042 FF+2d | 100% | 2026-07-27 | 2026-08-04 |  | GdanskSt | 10PQ22 | Ruroci¹g | Budowa | Roboty | Ewa | Automaty | PM000 | Zespó³-K | Blok | Normalny | Pakiet | L2 |  |  |
| 10PQ22-042 |  | Izolacje – Sekcja 05 | 3d | 2026-07-30 A | 2026-08-04 A | 10PQ22-041 | 100% | 2026-07-29 | 2026-07-31 |  | GdanskSt | 10PQ22 | Ruroci¹g | Budowa | Roboty | Ewa | Automaty | PM000 | Zespó³-K | Blok | Normalny | Pakiet | L2 |  |  |
|  | SEKCJA 06 | **Sekcja 06** |  | 2026-04-09 | 2026-09-11 |  |  |  |  |  |  |  |  |  |  |  |  |  |  |  |  |  |  |  |  |
|  | PODSEKCJA | **Podsekcja 06.A** |  | 2026-04-09 | 2026-09-11 |  |  |  |  |  |  |  |  |  |  |  |  |  |  |  |  |  |  |  |  |
| 10PQ22-044 |  | Prefabrykacja ruroci¹gów – Sekcja 06 | 8d | 2026-04-09 A | 2026-04-21 A | 10PQ22-012, 10PQ22-039 SS+5d | 100% | 2026-04-10 | 2026-04-21 |  | GdanskSt | 10PQ22 | Ruroci¹g | Budowa | Roboty | Ewa | Automaty | PM000 | Zespó³-K | Blok | Niski | Pakiet | L2 | Uzgodnione na koordynacji | Rev A |
| 10PQ22-045 |  | Monta¿ ruroci¹gów – Sekcja 06 | 23.6d | 2026-07-14 A | 2026-08-18 A | 10PQ22-044, 10PQ22-014 SS+6d | 100% | 2026-07-14 | 2026-08-13 | Kalendarz 6-dniowy | GdanskSt | 10PQ22 | Ruroci¹g | Budowa | Roboty | Ewa | Automaty | PM000 | Zespó³-K | Blok | Krytyczn | Pakiet | L2 |  |  |
| 10PQ22-046 |  | Próba ciœnieniowa – Sekcja 06 | 5d | 2026-08-18 A | 2026-08-24 A | 10PQ22-045 | 100% | 2026-08-14 | 2026-08-20 |  | GdanskSt | 10PQ22 | Ruroci¹g | Budowa | Roboty | Ewa | Automaty | PM000 | Zespó³-K | Blok | Normalny | Pakiet | L2 |  |  |
| 10PQ22-047 |  | Izolacje – Sekcja 06 | 9d | 2026-08-26 A | 2026-09-08 A | 10PQ22-046 | 100% | 2026-08-21 | 2026-09-02 |  | GdanskSt | 10PQ22 | Ruroci¹g | Budowa | Roboty | Ewa | Automaty | PM000 | Zespó³-K | Blok | Wysoki | Pakiet | L2 | Ryzyko opóŸnienia | Rev C |
| 10PQ22-048 |  | Malowanie i oznakowanie – Sekcja 06 | 3d | 2026-09-04 A | 2026-09-11 A | 10PQ22-047 FF+2d | 100% | 2026-09-02 | 2026-09-04 |  | GdanskSt | 10PQ22 | Ruroci¹g | Budowa | Roboty | Ewa | Automaty | PM000 | Zespó³-W | Blok | Niski | Pakiet | L2 |  |  |
|  | SEKCJA 07 | **Sekcja 07** |  | 2026-04-20 | 2026-08-21 |  |  |  |  |  |  |  |  |  |  |  |  |  |  |  |  |  |  |  |  |
| 10PQ22-051 |  | Prefabrykacja ruroci¹gów – Sekcja 07 | 12.3d | 2026-04-20 A | 2026-05-05 A | 10PQ22-012, 10PQ22-044 SS+5d | 100% | 2026-04-17 | 2026-05-04 |  | GdanskSt | 10PQ22 | Ruroci¹g | Budowa | Roboty | Ewa | Automaty | PM000 | Zespó³-W | Blok | Normalny | Pakiet | L2 |  | Rev A |
| 10PQ22-052 |  | Monta¿ ruroci¹gów – Sekcja 07 | 14.6d | 2026-07-15 A | 2026-08-06 A | 10PQ22-051, 10PQ22-014 SS+5d | 100% | 2026-07-13 | 2026-07-30 |  | GdanskSt | 10PQ22 | Ruroci¹g | Budowa | Roboty | Ewa | Automaty | PM000 | Zespó³-W | Blok | Niski | Pakiet | L2 | Uzgodnione na koordynacji |  |
| 10PQ22-053 |  | Próba ciœnieniowa – Sekcja 07 | 3d | 2026-07-31 A | 2026-08-04 A | 10PQ22-052 | 100% |  |  |  | GdanskSt | 10PQ22 | Ruroci¹g | Budowa | Roboty | Ewa | Automaty | PM000 | Zespó³-I | Blok | Normalny | Pakiet | L2 |  |  |
| 10PQ22-054 |  | Izolacje – Sekcja 07 | 7d | 2026-08-10 A | 2026-08-21 A | 10PQ22-053 | 100% | 2026-08-05 | 2026-08-13 |  | GdanskSt | 10PQ22 | Ruroci¹g | Budowa | Roboty | Ewa | Automaty | PM000 | Zespó³-K | Blok | Normalny | Pakiet | L2 | Do weryfikacji z wykonawc¹ |  |
| 10PQ22-055 |  | Malowanie i oznakowanie – Sekcja 07 | 4d | 2026-08-13 A | 2026-08-20 A | 10PQ22-054 FF+2d | 100% | 2026-08-12 | 2026-08-17 |  | GdanskSt | 10PQ22 | Ruroci¹g | Budowa | Roboty | Ewa | Automaty | PM000 | Zespó³-W | Blok | Normalny | Pakiet | L2 |  |  |
|  | SEKCJA 08 | **Sekcja 08** |  | 2026-04-27 | 2026-08-20 |  |  |  |  |  |  |  |  |  |  |  |  |  |  |  |  |  |  |  |  |
| 10PQ22-056 |  | Prefabrykacja ruroci¹gów – Sekcja 08 | 14.7d | 2026-04-27 A | 2026-05-18 A | 10PQ22-012, 10PQ22-051 SS+5d | 100% | 2026-04-24 | 2026-05-13 |  | GdanskSt | 10PQ22 | Ruroci¹g | Budowa | Roboty | Ewa | Automaty | PM000 | Zespó³-W | Blok | Normalny | Pakiet | L2 |  |  |
| 10PQ22-057 |  | Monta¿ ruroci¹gów – Sekcja 08 | 14.9d | 2026-07-13 A | 2026-07-30 A | 10PQ22-056, 10PQ22-014 SS+5d | 100% |  |  |  | GdanskSt | 10PQ22 | Ruroci¹g | Budowa | Roboty | Ewa | Automaty | PM000 | Zespó³-W | Blok | Wysoki | Pakiet | L2 |  | Rev A |
| 10PQ22-058 |  | Próba ciœnieniowa – Sekcja 08 | 3d | 2026-08-04 A | 2026-08-11 A | 10PQ22-057 | 100% | 2026-07-31 | 2026-08-04 |  | GdanskSt | 10PQ22 | Ruroci¹g | Budowa | Roboty | Ewa | Automaty | PM000 | Zespó³-W | Blok | Wysoki | Pakiet | L2 |  |  |
| 10PQ22-059 |  | Izolacje – Sekcja 08 | 5d | 2026-08-04 A | 2026-08-13 A | 10PQ22-058 | 100% | 2026-08-05 | 2026-08-11 |  | GdanskSt | 10PQ22 | Ruroci¹g | Budowa | Roboty | Ewa | Automaty | PM000 | Zespó³-K | Blok | Normalny | Pakiet | L2 |  |  |
| 10PQ22-060 |  | Malowanie i oznakowanie – Sekcja 08 | 5d | 2026-08-11 A | 2026-08-20 A | 10PQ22-059 FF+2d | 100% | 2026-08-07 | 2026-08-13 |  | GdanskSt | 10PQ22 | Ruroci¹g | Budowa | Roboty | Ewa | Automaty | PM000 | Zespó³-W | Blok | Krytyczn | Pakiet | L2 | Do weryfikacji z wykonawc¹ | Rev A |

| ID | WBS | Activity | Duration | Start | Finish | Predecessors | Complete | Planned start | Planned finish | Calendar | AC_Wykonawca | AC_Obiekt | AC_Dyscyplina | AC_Faza | AC_Zakres | AC_Opiekun | AC_Obszar | AC_PP_PM | AC_Zespol | AC_Blok | AC_Priorytet | AC_Pakiet | AC_Poziom | Rewizja dokumentu | Uwagi harmonogramisty |
| --- | --- | --- | --- | --- | --- | --- | --- | --- | --- | --- | --- | --- | --- | --- | --- | --- | --- | --- | --- | --- | --- | --- | --- | --- | --- |
|  | SEKCJA 09 | **Sekcja 09** |  | 2026-05-06 | 2026-08-28 |  |  |  |  |  |  |  |  |  |  |  |  |  |  |  |  |  |  |  |  |
|  | PODSEKCJA | **Podsekcja 09.A** |  | 2026-05-06 | 2026-08-28 |  |  |  |  |  |  |  |  |  |  |  |  |  |  |  |  |  |  |  |  |
| 10PQ22-063 |  | Prefabrykacja ruroci¹gów – Sekcja 09 | 10.3d | 2026-05-06 A | 2026-05-21 A | 10PQ22-012, 10PQ22-056 SS+5d | 100% | 2026-05-01 | 2026-05-14 |  | GdanskSt | 10PQ22 | Ruroci¹g | Budowa | Roboty | Ewa | Automaty | PM000 | Zespó³-W | Blok | Normalny | Pakiet | L2 |  |  |
| 10PQ22-064 |  | Monta¿ ruroci¹gów – Sekcja 09 | 11d | 2026-07-20 A | 2026-08-06 A | 10PQ22-063, 10PQ22-014 SS+8d | 100% | 2026-07-16 | 2026-07-30 | Kalendarz 6-dniowy | GdanskSt | 10PQ22 | Ruroci¹g | Budowa | Roboty | Ewa | Automaty | PM000 | Zespó³-K | Blok | Wysoki | Pakiet | L2 |  |  |
| 10PQ22-065 |  | Próba ciœnieniowa – Sekcja 09 | 5d | 2026-08-05 A | 2026-08-14 A | 10PQ22-064 | 100% | 2026-07-31 | 2026-08-06 |  | GdanskSt | 10PQ22 | Ruroci¹g | Budowa | Roboty | Ewa | Automaty | PM300 | Zespó³-I | Blok | Niski | Pakiet | L2 |  |  |
| 10PQ22-066 |  | Izolacje – Sekcja 09 | 12d | 2026-08-11 A | 2026-08-28 A | 10PQ22-065 | 100% | 2026-08-07 | 2026-08-24 |  | GdanskSt | 10PQ22 | Ruroci¹g | Budowa | Roboty | Ewa | Automaty | PM000 | Zespó³-W | Blok | Normalny | Pakiet | L2 |  |  |
| 10PQ22-067 |  | Malowanie i oznakowanie – Sekcja 09 | 7d | 2026-08-18 A | 2026-08-28 A | 10PQ22-066 FF+2d | 100% | 2026-08-18 | 2026-08-26 |  | GdanskSt | 10PQ22 | Ruroci¹g | Budowa | Roboty | Ewa | Automaty | PM000 | Zespó³-W | Blok | Normalny | Pakiet | L2 |  |  |
|  | SEKCJA 10 | **Sekcja 10** |  | 2026-05-07 | 2026-08-13 |  |  |  |  |  |  |  |  |  |  |  |  |  |  |  |  |  |  |  |  |
| 10PQ22-068 |  | Prefabrykacja ruroci¹gów – Sekcja 10 | 12d | 2026-05-07 A | 2026-05-26 A | 10PQ22-012, 10PQ22-063 SS+5d | 100% | 2026-05-08 | 2026-05-25 |  | GdanskSt | 10PQ22 | Ruroci¹g | Budowa | Roboty | Ewa | Automaty | PM000 | Zespó³-W | Blok | Krytyczn | Pakiet | L2 |  |  |
| 10PQ22-069 |  | Monta¿ ruroci¹gów – Sekcja 10 | 11.9d | 2026-07-09 A | 2026-07-28 A | 10PQ22-068, 10PQ22-014 SS+4d | 100% | 2026-07-10 | 2026-07-24 |  | GdanskSt | 10PQ22 | Ruroci¹g | Budowa | Roboty | Ewa | Automaty | PM000 | Zespó³-K | Blok | Normalny | Pakiet | L2 |  |  |
| 10PQ22-070 |  | Próba ciœnieniowa – Sekcja 10 | 2d | 2026-07-28 A | 2026-07-30 A | 10PQ22-069 | 100% | 2026-07-27 | 2026-07-28 |  | GdanskSt | 10PQ22 | Ruroci¹g | Budowa | Roboty | Ewa | Automaty | PM000 | Zespó³-K | Blok | Normalny | Pakiet | L2 |  |  |
| 10PQ22-071 |  | Izolacje – Sekcja 10 | 6d | 2026-07-31 A | 2026-08-12 A | 10PQ22-070 | 100% | 2026-07-29 | 2026-08-05 |  | GdanskSt | 10PQ22 | Ruroci¹g | Budowa | Roboty | Ewa | Automaty | PM000 | Zespó³-K | Blok | Normalny | Pakiet | L2 |  |  |
| 10PQ22-072 |  | Malowanie i oznakowanie – Sekcja 10 | 2d | 2026-08-07 A | 2026-08-13 A | 10PQ22-071 FF+2d | 100% | 2026-08-06 | 2026-08-07 |  | GdanskSt | 10PQ22 | Ruroci¹g | Budowa | Roboty | Ewa | Automaty | PM000 | Zespó³-W | Blok | Normalny | Pakiet | L2 |  |  |
|  | SEKCJA 11 | **Sekcja 11** |  | 2026-05-18 | 2026-08-21 |  |  |  |  |  |  |  |  |  |  |  |  |  |  |  |  |  |  |  |  |
| 10PQ22-075 |  | Prefabrykacja ruroci¹gów – Sekcja 11 | 10.3d | 2026-05-18 A | 2026-05-29 A | 10PQ22-012, 10PQ22-068 SS+5d | 100% | 2026-05-15 | 2026-05-28 |  | GdanskSt | 10PQ22 | Ruroci¹g | Budowa | Roboty | Ewa | Automaty | PM000 | Zespó³-K | Blok | Niski | Pakiet | L2 |  |  |
| 10PQ22-076 |  | Monta¿ ruroci¹gów – Sekcja 11 | 16.8d | 2026-07-10 A | 2026-08-04 A | 10PQ22-075, 10PQ22-014 SS+1d | 100% | 2026-07-07 | 2026-07-28 |  | GdanskSt | 10PQ22 | Ruroci¹g | Budowa | Roboty | Ewa | Automaty | PM000 | Zespó³-W | Blok | Wysoki | Pakiet | L2 | Rev A |  |
| 10PQ22-077 |  | Próba ciœnieniowa – Sekcja 11 | 4d | 2026-07-29 A | 2026-08-03 A | 10PQ22-076 | 100% |  |  |  | GdanskSt | 10PQ22 | Ruroci¹g | Budowa | Roboty | Ewa | Automaty | PM000 | Zespó³-I | Blok | Normalny | Pakiet | L2 | Rev C |  |
| 10PQ22-078 |  | Izolacje – Sekcja 11 | 11d | 2026-08-06 A | 2026-08-20 A | 10PQ22-077 | 100% | 2026-08-04 | 2026-08-18 |  | GdanskSt | 10PQ22 | Ruroci¹g | Budowa | Roboty | Ewa | Automaty | PM000 | Zespó³-K | Blok | Normalny | Pakiet | L2 |  |  |
| 10PQ22-079 |  | Malowanie i oznakowanie – Sekcja 11 | 5d | 2026-08-13 A | 2026-08-21 A | 10PQ22-078 FF+2d | 100% | 2026-08-14 | 2026-08-20 | Kalendarz 6-dniowy | GdanskSt | 10PQ22 | Ruroci¹g | Budowa | Roboty | Ewa | Automaty | PM000 | Zespó³-K | Blok | Normalny | Pakiet | L2 | Rev A |  |
|  | SEKCJA 12 | **Sekcja 12** |  | 2026-05-21 | 2026-08-19 |  |  |  |  |  |  |  |  |  |  |  |  |  |  |  |  |  |  |  |  |
|  | PODSEKCJA | **Podsekcja 12.A** |  | 2026-05-21 | 2026-08-19 |  |  |  |  |  |  |  |  |  |  |  |  |  |  |  |  |  |  |  |  |
| 10PQ22-080 |  | Prefabrykacja ruroci¹gów – Sekcja 12 | 11.7d | 2026-05-21 A | 2026-06-05 A | 10PQ22-012, 10PQ22-075 SS+5d | 100% | 2026-05-22 | 2026-06-05 |  | GdanskSt | 10PQ22 | Ruroci¹g | Budowa | Roboty | Ewa | Automaty | PM000 | Zespó³-W | Blok | Normalny | Pakiet | L2 |  |  |
| 10PQ22-081 |  | Monta¿ ruroci¹gów – Sekcja 12 | 10.1d | 2026-07-09 A | 2026-07-22 A | 10PQ22-080, 10PQ22-014 SS+4d | 100% | 2026-07-10 | 2026-07-23 |  | GdanskSt | 10PQ22 | Ruroci¹g | Budowa | Roboty | Ewa | Automaty | PM000 | Zespó³-W | Blok | Normalny | Pakiet | L2 |  |  |
| 10PQ22-082 |  | Próba ciœnieniowa – Sekcja 12 | 4d | 2026-07-24 A | 2026-08-03 A | 10PQ22-081 | 100% | 2026-07-24 | 2026-07-29 |  | GdanskSt | 10PQ22 | Ruroci¹g | Budowa | Roboty | Ewa | Automaty | PM000 | Zespó³-K | Blok | Wysoki | Pakiet | L2 | Rev C |  |
| 10PQ22-083 |  | Izolacje – Sekcja 12 | 11d | 2026-07-29 A | 2026-08-14 A | 10PQ22-082 | 100% | 2026-07-30 | 2026-08-13 |  | GdanskSt | 10PQ22 | Ruroci¹g | Budowa | Roboty | Ewa | Automaty | PM000 | Zespó³-W | Blok | Normalny | Pakiet | L2 |  | Bez uwag |
| 10PQ22-084 |  | Malowanie i oznakowanie – Sekcja 12 | 4d | 2026-08-12 A | 2026-08-19 A | 10PQ22-083 FF+2d | 100% | 2026-08-12 | 2026-08-17 | Kalendarz 6-dniowy | GdanskSt | 10PQ22 | Ruroci¹g | Budowa | Roboty | Ewa | Automaty | PM000 | Zespó³-W | Blok | Normalny | Pakiet | L2 |  |  |

| ID | WBS | Activity | Duration | Start | Finish | Predecessors | Complete | Planned start | Planned finish | AC_Wykonawca | AC_Obiekt | AC_Dyscyplina | AC_Faza | AC_Zakres | AC_Opiekun | AC_Obszar | AC_PP_PM | AC_Zespol | AC_Blok | AC_Priorytet | AC_Pakiet | AC_Poziom | Rewizja dokumentu | Uwagi harmonogramisty |
| --- | --- | --- | --- | --- | --- | --- | --- | --- | --- | --- | --- | --- | --- | --- | --- | --- | --- | --- | --- | --- | --- | --- | --- | --- |
|  | SEKCJA 13 | **Sekcja 13** |  | 2026-06-03 | 2026-08-25 |  |  |  |  |  |  |  |  |  |  |  |  |  |  |  |  |  |  |  |
| 10PQ22-087 |  | Prefabrykacja ruroci¹gów – Sekcja 13 | 5.1d | 2026-06-03 A | 2026-06-09 A | 10PQ22-012, 10PQ22-080 SS+5d | 100% | 2026-05-29 | 2026-06-04 | GdanskSt | 10PQ22 | Ruroci¹g | Budowa | Roboty | Ewa | Automaty | PM000 | Zespó³-W | Blok | Wysoki | Pakiet | L2 |  |  |
| 10PQ22-088 |  | Monta¿ ruroci¹gów – Sekcja 13 | 19.1d | 2026-07-14 A | 2026-08-11 A | 10PQ22-087, 10PQ22-014 SS+3d | 100% | 2026-07-09 | 2026-08-04 | GdanskSt | 10PQ22 | Ruroci¹g | Budowa | Roboty | Ewa | Automaty | PM000 | Zespó³-W | Blok | Normalny | Pakiet | L2 | Rev A |  |
| 10PQ22-089 |  | Próba ciœnieniowa – Sekcja 13 | 2d | 2026-08-10 A | 2026-08-14 A | 10PQ22-088 | 100% | 2026-08-05 | 2026-08-06 | GdanskSt | 10PQ22 | Ruroci¹g | Budowa | Roboty | Ewa | Automaty | PM000 | Zespó³-K | Blok | Normalny | Pakiet | L2 | Rev C | Uzgodnione na koordynacji |
| 10PQ22-090 |  | Izolacje – Sekcja 13 | 7d | 2026-08-12 A | 2026-08-25 A | 10PQ22-089 | 100% | 2026-08-07 | 2026-08-17 | GdanskSt | 10PQ22 | Ruroci¹g | Budowa | Roboty | Ewa | Automaty | PM000 | Zespó³-W | Blok | Normalny | Pakiet | L2 |  |  |
| 10PQ22-091 |  | Malowanie i oznakowanie – Sekcja 13 | 3d | 2026-08-14 A | 2026-08-21 A | 10PQ22-090 FF+2d | 100% | 2026-08-17 | 2026-08-19 | GdanskSt | 10PQ22 | Ruroci¹g | Budowa | Roboty | Ewa | Automaty | PM300 | Zespó³-E | Blok | Normalny | Pakiet | L2 |  |  |
|  | SEKCJA 14 | **Sekcja 14** |  | 2026-06-10 | 2026-08-25 |  |  |  |  |  |  |  |  |  |  |  |  |  |  |  |  |  |  |  |
| 10PQ22-092 |  | Prefabrykacja ruroci¹gów – Sekcja 14 | 4.3d | 2026-06-10 A | 2026-06-16 A | 10PQ22-012, 10PQ22-087 SS+5d | 100% | 2026-06-05 | 2026-06-10 | GdanskSt | 10PQ22 | Ruroci¹g | Budowa | Roboty | Ewa | Automaty | PM000 | Zespó³-W | Blok | Normalny | Pakiet | L2 |  |  |
| 10PQ22-093 |  | Monta¿ ruroci¹gów – Sekcja 14 | 7.5d | 2026-07-21 A | 2026-07-30 A | 10PQ22-092, 10PQ22-014 SS+9d | 100% | 2026-07-17 | 2026-07-27 | GdanskSt | 10PQ22 | Ruroci¹g | Budowa | Roboty | Ewa | Automaty | PM000 | Zespó³-K | Blok | Normalny | Pakiet | L2 |  |  |
| 10PQ22-094 |  | Próba ciœnieniowa – Sekcja 14 | 6d | 2026-07-30 A | 2026-08-06 A | 10PQ22-093 | 100% | 2026-07-28 | 2026-08-04 | GdanskSt | 10PQ22 | Ruroci¹g | Budowa | Roboty | Ewa | Automaty | PM000 | Zespó³-W | Blok | Niski | Pakiet | L2 |  | Ryzyko opóŸnienia |
| 10PQ22-095 |  | Izolacje – Sekcja 14 | 10d | 2026-08-04 A | 2026-08-19 A | 10PQ22-094 | 100% | 2026-08-05 | 2026-08-18 | GdanskSt | 10PQ22 | Ruroci¹g | Budowa | Roboty | Ewa | Automaty | PM000 | Zespó³-W | Blok | Normalny | Pakiet | L2 |  |  |
| 10PQ22-096 |  | Malowanie i oznakowanie – Sekcja 14 | 7d | 2026-08-12 A | 2026-08-25 A | 10PQ22-095 FF+2d | 100% | 2026-08-12 | 2026-08-20 | GdanskSt | 10PQ22 | Ruroci¹g | Budowa | Roboty | Ewa | Automaty | PM000 | Zespó³-K | Blok | Normalny | Pakiet | L2 |  |  |
|  | SEKCJA 15 | **Sekcja 15** |  | 2026-06-17 | 2026-08-27 |  |  |  |  |  |  |  |  |  |  |  |  |  |  |  |  |  |  |  |
|  | PODSEKCJA | **Podsekcja 15.A** |  | 2026-06-17 | 2026-08-27 |  |  |  |  |  |  |  |  |  |  |  |  |  |  |  |  |  |  |  |
| 10PQ22-099 |  | Prefabrykacja ruroci¹gów – Sekcja 15 | 12.1d | 2026-06-17 A | 2026-07-07 A | 10PQ22-012, 10PQ22-092 SS+5d | 100% | 2026-06-12 | 2026-06-29 | GdanskSt | 10PQ22 | Ruroci¹g | Budowa | Roboty | Ewa | Automaty | PM000 | Zespó³-K | Blok | Normalny | Pakiet | L2 |  |  |
| 10PQ22-100 |  | Monta¿ ruroci¹gów – Sekcja 15 | 17.2d | 2026-07-15 A | 2026-08-06 A | 10PQ22-099, 10PQ22-014 SS+4d | 100% | 2026-07-10 | 2026-08-03 | GdanskSt | 10PQ22 | Ruroci¹g | Budowa | Roboty | Ewa | Automaty | PM000 | Zespó³-W | Blok | Normalny | Pakiet | L2 |  |  |
| 10PQ22-101 |  | Próba ciœnieniowa – Sekcja 15 | 3d | 2026-08-03 A | 2026-08-06 A | 10PQ22-100 | 100% | 2026-08-04 | 2026-08-06 | GdanskSt | 10PQ22 | Ruroci¹g | Budowa | Roboty | Ewa | Automaty | PM300 | Zespó³-I | Blok | Niski | Pakiet | L2 | Rev C |  |
| 10PQ22-102 |  | Izolacje – Sekcja 15 | 8d | 2026-08-12 A | 2026-08-24 A | 10PQ22-101 | 100% | 2026-08-07 | 2026-08-18 | GdanskSt | 10PQ22 | Ruroci¹g | Budowa | Roboty | Ewa | Automaty | PM000 | Zespó³-W | Blok | Normalny | Pakiet | L2 | Rev B |  |
| 10PQ22-103 |  | Malowanie i oznakowanie – Sekcja 15 | 8d | 2026-08-13 A | 2026-08-27 A | 10PQ22-102 FF+2d | 100% | 2026-08-11 | 2026-08-20 | GdanskSt | 10PQ22 | Ruroci¹g | Budowa | Roboty | Ewa | Automaty | PM000 | Zespó³-W | Blok | Normalny | Pakiet | L2 |  |  |
|  | SEKCJA 16 | **Sekcja 16** |  | 2026-06-23 | 2026-08-17 |  |  |  |  |  |  |  |  |  |  |  |  |  |  |  |  |  |  |  |
| 10PQ22-104 |  | Prefabrykacja ruroci¹gów – Sekcja 16 | 14.3d | 2026-06-23 A | 2026-07-15 A | 10PQ22-012, 10PQ22-099 SS+5d | 100% | 2026-06-19 | 2026-07-08 | GdanskSt | 10PQ22 | Ruroci¹g | Budowa | Roboty | Ewa | Automaty | PM000 | Zespó³-W | Blok | Normalny | Pakiet | L2 | Rev A | Ryzyko opóŸnienia |
| 10PQ22-105 |  | Monta¿ ruroci¹gów – Sekcja 16 | 7.9d | 2026-07-17 A | 2026-07-28 A | 10PQ22-104, 10PQ22-014 SS+8d | 100% | 2026-07-16 | 2026-07-24 | GdanskSt | 10PQ22 | Ruroci¹g | Budowa | Roboty | Ewa | Automaty | PM000 | Zespó³-K | Blok | Normalny | Pakiet | L2 | Rev B | Czeka na dostawê |
| 10PQ22-106 |  | Próba ciœnieniowa – Sekcja 16 | 5d | 2026-07-28 A | 2026-08-06 A | 10PQ22-105 | 100% | 2026-07-27 | 2026-07-31 | GdanskSt | 10PQ22 | Ruroci¹g | Budowa | Roboty | Ewa | Automaty | PM000 | Zespó³-K | Blok | Normalny | Pakiet | L2 |  |  |
| 10PQ22-107 |  | Izolacje – Sekcja 16 | 7d | 2026-08-05 A | 2026-08-17 A | 10PQ22-106 | 100% | 2026-08-03 | 2026-08-11 | GdanskSt | 10PQ22 | Ruroci¹g | Budowa | Roboty | Ewa | Automaty | PM000 | Zespó³-K | Blok | Wysoki | Pakiet | L2 |  | Bez uwag |
| 10PQ22-108 |  | Malowanie i oznakowanie – Sekcja 16 | 2d | 2026-08-11 A | 2026-08-12 A | 10PQ22-107 FF+2d | 100% | 2026-08-12 | 2026-08-13 | GdanskSt | 10PQ22 | Ruroci¹g | Budowa | Roboty | Ewa | Automaty | PM000 | Zespó³-I | Blok | Normalny | Pakiet | L2 |  |  |

| ID | WBS | Activity | Type | Duration | Start | Finish | Predecessors | Complete | Remaining | Actual finish | Planned start | Planned finish | Total float | Free float | Calendar | Uwagi harmonogramisty | AC_Wykonawca | AC_Obiekt | AC_Dyscyplina | AC_Faza | AC_Zakres | AC_Opiekun | AC_Obszar | AC_PP_PM | AC_Zespol | AC_Blok | AC_Priorytet | AC_Pakiet | AC_Poziom | Rewizja dokumentu |
| --- | --- | --- | --- | --- | --- | --- | --- | --- | --- | --- | --- | --- | --- | --- | --- | --- | --- | --- | --- | --- | --- | --- | --- | --- | --- | --- | --- | --- | --- | --- |
|  | SEKCJA 17 | **Sekcja 17** |  |  | 2026-06-30 | 2026-09-08 |  |  |  |  |  |  |  |  |  |  |  |  |  |  |  |  |  |  |  |  |  |  |  |  |
| 10PQ22-111 |  | Prefabrykacja ruroci¹gów – Sekcja 17 |  | 8.4d | 2026-06-30 A | 2026-07-09 A | 10PQ22-012, 10PQ22-104 SS+5d | 100% |  |  | 2026-06-26 | 2026-07-07 |  |  | Kalendarz 6-dniowy | Bez uwag | GdanskSt | 10PQ22 | Ruroci¹g | Budowa | Roboty | Ewa | Automaty | PM000 | Zespó³-K | Blok | Normalny | Pakiet | L2 |  |
| 10PQ22-112 |  | Monta¿ ruroci¹gów – Sekcja 17 |  | 16d | 2026-07-21 A | 2026-08-12 A | 10PQ22-111, 10PQ22-014 SS+10d | 100% |  |  | 2026-07-20 | 2026-08-10 |  |  |  | Czeka na dostawê | GdanskSt | 10PQ22 | Ruroci¹g | Budowa | Roboty | Ewa | Automaty | PM000 | Zespó³-W | Blok | Normalny | Pakiet | L2 |  |
| 10PQ22-113 |  | Próba ciœnieniowa – Sekcja 17 |  | 5d | 2026-08-13 A | 2026-08-19 A | 10PQ22-112 | 100% |  |  | 2026-08-11 | 2026-08-17 |  |  |  |  | GdanskSt | 10PQ22 | Ruroci¹g | Budowa | Roboty | Ewa | Automaty | PM000 | Zespó³-W | Blok | Normalny | Pakiet | L2 |  |
| 10PQ22-114 |  | Izolacje – Sekcja 17 |  | 12d | 2026-08-18 A | 2026-09-07 A | 10PQ22-113 | 100% |  |  | 2026-08-18 | 2026-09-02 |  |  | Kalendarz 6-dniowy | Ryzyko opóŸnienia | GdanskSt | 10PQ22 | Ruroci¹g | Budowa | Roboty | Ewa | Automaty | PM000 | Zespó³-W | Blok | Normalny | Pakiet | L2 | Rev A |
| 10PQ22-115 |  | Malowanie i oznakowanie – Sekcja 17 |  | 6d | 2026-09-01 A | 2026-09-08 A | 10PQ22-114 FF+2d | 100% |  |  | 2026-08-28 | 2026-09-04 |  |  |  |  | GdanskSt | 10PQ22 | Ruroci¹g | Budowa | Roboty | Ewa | Automaty | PM000 | Zespó³-W | Blok | Normalny | Pakiet | L2 |  |
|  | PROJ | **Projektowanie** |  |  | 2025-06-17 | 2026-01-08 |  |  |  |  |  |  |  |  |  |  |  |  |  |  |  |  |  |  |  |  |  |  |  |  |
|  | DOKUMENTAC | **Dokumentacja** |  |  | 2025-06-17 | 2026-01-08 |  |  |  |  |  |  |  |  |  |  |  |  |  |  |  |  |  |  |  |  |  |  |  |  |
| 10PQ22-001 |  | Projekt wykonawczy – System DCS |  | 109d | 2025-06-17 A | 2025-11-17 A |  | 100% |  |  | 2025-06-13 | 2025-11-12 |  |  |  |  | GdanskSt | 10PQ22 | Budowlan | Projekto | Projekt | Ewa | Automaty | PM000 | Zespó³-K | Blok | Normalny | Pakiet | L2 | Rev C |
| 10PQ22-002 |  | Uzgodnienie dokumentacji z Inwestorem |  | 22d | 2025-11-18 A | 2025-12-19 A | 10PQ22-001 | 100% |  |  | 2025-11-13 | 2025-12-12 |  |  |  |  | GdanskSt | 10PQ22 | Budowlan | Projekto | Projekt | Ewa | Automaty | PM000 | Zespó³-W | Blok | Normalny | Pakiet | L2 |  |
| 10PQ22-003 |  | Zatwierdzenie dokumentacji do realizacji |  | 15d | 2025-12-18 A | 2026-01-07 A | 10PQ22-002 | 100% |  |  | 2025-12-15 | 2026-01-02 |  |  |  |  | GdanskSt | 10PQ22 | Budowlan | Projekto | Projekt | Ewa | Automaty | PM000 | Zespó³-K | Blok | Normalny | Pakiet | L2 |  |
| 10PQ22-004 |  | KM: Dokumentacja zatwierdzona – System DCS | milestone | 0d | 2026-01-08 A | 2026-01-08 | 10PQ22-003 | 100% |  | 2026-01-07 | 2026-01-05 | 2026-01-05 |  |  |  |  | GdanskSt | 10PQ22 | Budowlan | Projekto | Kamieñ | Ewa | Automaty | PM000 | Zespó³-W | Blok | Normalny | Pakiet | L1 |  |
|  | ROZR | **Rozruch** |  |  | 2026-09-15 | 2028-03-01 |  |  |  |  |  |  |  |  |  |  |  |  |  |  |  |  |  |  |  |  |  |  |  |  |
|  | KAMIENIE M | **Kamienie milowe** |  |  | 2028-03-01 | 2028-03-01 |  |  |  |  |  |  |  |  |  |  |  |  |  |  |  |  |  |  |  |  |  |  |  |  |
| 10PQ22-122 |  | KM: Zakoñczenie rozruchu – PL5001-SE-03 | milestone | 0d | 2028-03-01 | 2028-03-01 | 10PQ22-121, 16KE73-145, 29DM24-181, 21MY97-085, 26DX82-133, 12DQ22-169, 29YB32-097, 19WP38-068, 28AM31-109, 25ND89-104, 29XB26-092, 28YY90-116, 26CG51-121, 15XQ71-073, 25DF82-104 |  |  |  | 2027-07-12 | 2027-07-12 | 27.9d | 0d |  | Do weryfikacji z wykonawc¹ | GdanskSt | 10PQ22 | Rozruch | Rozruch | Kamieñ | Ewa | Automaty | PM000 | Zespó³-K | Blok | Niski | Pakiet | L1 |  |
|  | ROZRUCH | **Rozruch** |  |  | 2026-09-15 | 2026-10-20 |  |  |  |  |  |  |  |  |  |  |  |  |  |  |  |  |  |  |  |  |  |  |  |  |
| 10PQ22-118 |  | Przegl¹d gotowoœci do rozruchu |  | 5d | 2026-09-15 A | 2026-09-21 A | 10PQ22-117, 10PQ22-019, 10PQ22-024, 10PQ22-026 | 100% |  |  | 2026-09-10 | 2026-09-16 |  |  |  |  | GdanskSt | 10PQ22 | Rozruch | Rozruch | Rozruch | Ewa | Automaty | PM000 | Zespó³-W | Blok | Normalny | Pakiet | L2 |  |
| 10PQ22-119 |  | Rozruch na zimno |  | 13d | 2026-09-22 A | 2026-10-06 A | 10PQ22-118 | 100% |  |  | 2026-09-17 | 2026-10-05 |  |  |  | Ryzyko opóŸnienia | GdanskSt | 10PQ22 | Rozruch | Rozruch | Rozruch | Ewa | Automaty | PM000 | Zespó³-W | Blok | Normalny | Pakiet | L2 |  |
| 10PQ22-120 |  | Rozruch na gor¹co / próby ruchowe |  | 16d | 2026-10-07 A | 2026-10-19 | 10PQ22-119 | 44% | 9d |  | 2026-10-06 | 2026-10-27 | 377.6d | 0d |  |  | GdanskSt | 10PQ22 | Rozruch | Rozruch | Rozruch | Ewa | Automaty | PM000 | Zespó³-W | Blok | Niski | Pakiet | L2 | Rev A |
| 10PQ22-121 |  | KM: Odbiór koñcowy – System DCS | milestone | 0d | 2026-10-20 | 2026-10-20 | 10PQ22-120 |  |  |  | 2026-10-28 | 2026-10-28 | 384.6d | 0d |  |  | GdanskSt | 10PQ22 | Rozruch | Rozruch | Kamieñ | Ewa | Automaty | PM000 | Zespó³-W | Blok | Normalny | Pakiet | L1 |  |
|  | ZAKU | **Zakupy** |  |  | 2025-07-15 | 2026-07-09 |  |  |  |  |  |  |  |  |  |  |  |  |  |  |  |  |  |  |  |  |  |  |  |  |
|  | DOSTAWY | **Dostawy** |  |  | 2026-01-15 | 2026-07-09 |  |  |  |  |  |  |  |  |  |  |  |  |  |  |  |  |  |  |  |  |  |  |  |  |
| 10PQ22-008 |  | Produkcja u dostawcy |  | 81d | 2026-01-15 A | 2026-05-07 A | 10PQ22-007 | 100% |  |  | 2026-01-12 | 2026-05-04 |  |  |  |  | GdanskSt | 10PQ22 | Mechanic | Zakupy | Dostawa | Ewa | Automaty | PM000 | Zespó³-K | Blok | Normalny | Pakiet | L2 | Rev A |
| 10PQ22-009 |  | Testy FAT |  | 4d | 2026-05-04 A | 2026-05-11 A | 10PQ22-008 | 100% |  |  | 2026-05-05 | 2026-05-08 |  |  |  | Ryzyko opóŸnienia | GdanskSt | 10PQ22 | Mechanic | Zakupy | Dostawa | Ewa | Automaty | PM000 | Zespó³-W | Blok | Normalny | Pakiet | L2 | Rev A |
| 10PQ22-010 |  | Transport i dostawa na plac budowy |  | 40d | 2026-05-08 A | 2026-07-02 A | 10PQ22-009 | 100% |  |  | 2026-05-11 | 2026-07-03 |  |  |  | Czeka na dostawê | GdanskSt | 10PQ22 | Mechanic | Zakupy | Dostawa | Ewa | Automaty | PM000 | Zespó³-W | Blok | Wysoki | Pakiet | L2 |  |
| 10PQ22-011 |  | KM: Dostawa na budowê – System DCS | milestone | 0d | 2026-07-09 A | 2026-07-09 | 10PQ22-010 | 100% |  | 2026-07-08 | 2026-07-06 | 2026-07-06 |  |  |  |  | GdanskSt | 10PQ22 | Mechanic | Zakupy | Kamieñ | Ewa | Automaty | PM000 | Zespó³-W | Blok | Normalny | Pakiet | L1 |  |

| ID | WBS | Activity | Duration | Start | Finish | Predecessors | Complete | Planned start | Planned finish | Total float | Free float | Calendar | AC_Wykonawca | AC_Obiekt | AC_Dyscyplina | AC_Faza | AC_Zakres | AC_Opiekun | AC_Obszar | AC_PP_PM | AC_Zespol | AC_Blok | AC_Priorytet | AC_Pakiet | AC_Poziom | Rewizja dokumentu | Uwagi harmonogramisty |
| --- | --- | --- | --- | --- | --- | --- | --- | --- | --- | --- | --- | --- | --- | --- | --- | --- | --- | --- | --- | --- | --- | --- | --- | --- | --- | --- | --- |
|  | ZAMÓWIENIA | **Zamówienia** |  | 2025-07-15 | 2026-01-15 |  |  |  |  |  |  |  |  |  |  |  |  |  |  |  |  |  |  |  |  |  |  |
| 10PQ22-005 |  | Zapytanie ofertowe | 16d | 2025-07-15 A | 2025-08-07 A | 10PQ22-001 SS+20d | 100% | 2025-07-11 | 2025-08-01 |  |  |  | GdanskSt | 10PQ22 | Mechanic | Zakupy | Dostawa | Ewa | Automaty | PM000 | Zespó³-K | Blok | Krytyczn | Pakiet | L2 |  |  |
| 10PQ22-006 |  | Analiza i wybór ofert | 16d | 2025-08-04 A | 2025-08-25 A | 10PQ22-005 | 100% |  |  |  |  |  | GdanskSt | 10PQ22 | Mechanic | Zakupy | Dostawa | Ewa | Automaty | PM100 | Zespó³-E | Blok | Normalny | Pakiet | L2 |  |  |
| 10PQ22-007 |  | Zawarcie umowy / zamówienie | 5d | 2026-01-06 A | 2026-01-15 A | 10PQ22-006, 10PQ22-004 SS, 28BW90-004 (other project) FS+2d | 100% | 2026-01-05 | 2026-01-09 |  |  | Kalendarz 6-dniowy | GdanskSt | 10PQ22 | Mechanic | Zakupy | Dostawa | Ewa | Automaty | PM000 | Zespó³-K | Blok | Normalny | Pakiet | L1 | Rev B |  |
|  | 12DQ22 | **12DQ22 – System SCADA** |  | 2025-02-06 | 2027-10-18 |  |  |  |  |  |  |  |  |  |  |  |  |  |  |  |  |  |  |  |  |  |  |
|  | BUDO | **Budowa** |  | 2025-12-31 | 2027-08-20 |  |  |  |  |  |  |  |  |  |  |  |  |  |  |  |  |  |  |  |  |  |  |
|  | AKPIA | **AKPiA** |  | 2027-04-20 | 2027-05-13 |  |  |  |  |  |  |  |  |  |  |  |  |  |  |  |  |  |  |  |  |  |  |
| 12DQ22-164 |  | Monta¿ uk³adów AKPiA | 18d | 2027-04-20 | 2027-05-13 | 12DQ22-014 SS+5d |  | 2027-03-15 | 2027-04-07 | 213.9d | 0d |  | Izoterm | 12DQ22 | AKPiA | Budowa | Roboty | Tomasz | Automaty | PM000 | Zespó³-W | Wspólne | Wysoki | Pakiet | L2 |  |  |
|  | ELEKTRYKA | **Elektryka** |  | 2027-04-21 | 2027-05-21 |  |  |  |  |  |  |  |  |  |  |  |  |  |  |  |  |  |  |  |  |  |  |
| 12DQ22-074 |  | Pod³¹czenia i pomiary – trasa 10 | 8d | 2027-04-21 | 2027-04-30 | 12DQ22-073 FF |  | 2027-03-16 | 2027-03-25 | 254.9d | 0d |  | Izoterm | 12DQ22 | Elektryc | Budowa | Roboty | Tomasz | Automaty | PM000 | Zespó³-W | Wspólne | Normalny | Pakiet | L2 |  |  |
| 12DQ22-134 |  | Pod³¹czenia i pomiary – trasa 20 | 8d | 2027-04-21 | 2027-04-30 | 12DQ22-133 FF |  | 2027-03-16 | 2027-03-25 | 254.9d | 0d |  | Izoterm | 12DQ22 | Elektryc | Budowa | Roboty | Tomasz | Automaty | PM000 | Zespó³-K | Wspólne | Normalny | Pakiet | L2 |  |  |
| 12DQ22-025 |  | Uk³adanie kabli – trasa 02 | 13d | 2027-04-27 | 2027-05-13 | 12DQ22-014 SS+10d |  | 2027-03-22 | 2027-04-07 | 213.9d | 0d |  | Izoterm | 12DQ22 | Elektryc | Budowa | Roboty | Tomasz | Automaty | PM000 | Zespó³-W | Wspólne | Normalny | Pakiet | L2 |  |  |
| 12DQ22-037 |  | Uk³adanie kabli – trasa 04 | 8d | 2027-04-27 | 2027-05-06 | 12DQ22-014 SS+10d |  | 2027-03-22 | 2027-03-31 | 250.9d | 0d |  | Izoterm | 12DQ22 | Elektryc | Budowa | Roboty | Tomasz | Automaty | PM000 | Zespó³-K | Wspólne | Wysoki | Pakiet | L2 |  |  |
| 12DQ22-049 |  | Uk³adanie kabli – trasa 06 | 17d | 2027-04-27 | 2027-05-19 | 12DQ22-014 SS+10d |  | 2027-03-22 | 2027-04-13 | 241.9d | 0d |  | Izoterm | 12DQ22 | Elektryc | Budowa | Roboty | Tomasz | Automaty | PM000 | Zespó³-W | Wspólne | Normalny | Pakiet | L2 |  |  |
| 12DQ22-061 |  | Uk³adanie kabli – trasa 08 | 9d | 2027-04-27 | 2027-05-07 | 12DQ22-014 SS+10d |  | 2027-03-22 | 2027-04-01 | 249.9d | 0d |  | Izoterm | 12DQ22 | Elektryc | Budowa | Roboty | Tomasz | Automaty | PM300 | Zespó³-E | Wspólne | Normalny | Pakiet | L2 | Rev B |  |
| 12DQ22-073 |  | Uk³adanie kabli – trasa 10 | 4d | 2027-04-27 | 2027-04-30 | 12DQ22-014 SS+10d |  | 2027-03-22 | 2027-03-25 | 254.9d | 0d |  | Izoterm | 12DQ22 | Elektryc | Budowa | Roboty | Tomasz | Automaty | PM000 | Zespó³-I | Wspólne | Wysoki | Pakiet | L2 |  |  |
| 12DQ22-085 |  | Uk³adanie kabli – trasa 12 | 19d | 2027-04-27 | 2027-05-21 | 12DQ22-014 SS+10d |  | 2027-03-22 | 2027-04-15 | 239.9d | 0d |  | Izoterm | 12DQ22 | Elektryc | Budowa | Roboty | Tomasz | Automaty | PM000 | Zespó³-K | Wspólne | Normalny | Pakiet | L2 |  |  |
| 12DQ22-097 |  | Uk³adanie kabli – trasa 14 | 6d | 2027-04-27 | 2027-05-04 | 12DQ22-014 SS+10d |  | 2027-03-22 | 2027-03-29 | 252.9d | 0d |  | Izoterm | 12DQ22 | Elektryc | Budowa | Roboty | Tomasz | Automaty | PM000 | Zespó³-K | Wspólne | Wysoki | Pakiet | L2 |  |  |
| 12DQ22-109 |  | Uk³adanie kabli – trasa 16 | 9d | 2027-04-27 | 2027-05-07 | 12DQ22-014 SS+10d |  | 2027-03-22 | 2027-04-01 | 249.9d | 0d |  | Izoterm | 12DQ22 | Elektryc | Budowa | Roboty | Tomasz | Automaty | PM000 | Zespó³-W | Wspólne | Normalny | Pakiet | L2 |  |  |
| 12DQ22-121 |  | Uk³adanie kabli – trasa 18 | 19d | 2027-04-27 | 2027-05-21 | 12DQ22-014 SS+10d |  | 2027-03-22 | 2027-04-15 | 239.9d | 0d |  | Izoterm | 12DQ22 | Elektryc | Budowa | Roboty | Tomasz | Automaty | PM000 | Zespó³-K | Wspólne | Normalny | Pakiet | L2 |  |  |
| 12DQ22-133 |  | Uk³adanie kabli – trasa 20 | 4d | 2027-04-27 | 2027-04-30 | 12DQ22-014 SS+10d |  | 2027-03-22 | 2027-03-25 | 254.9d | 0d |  | Izoterm | 12DQ22 | Elektryc | Budowa | Roboty | Tomasz | Automaty | PM000 | Zespó³-W | Wspólne | Niski | Pakiet | L2 | Rev B |  |
| 12DQ22-145 |  | Uk³adanie kabli – trasa 22 | 13d | 2027-04-27 | 2027-05-13 | 12DQ22-014 SS+10d |  | 2027-03-22 | 2027-04-07 | 245.9d | 0d |  | Izoterm | 12DQ22 | Elektryc | Budowa | Roboty | Tomasz | Automaty | PM000 | Zespó³-W | Wspólne | Wysoki | Pakiet | L2 |  |  |
| 12DQ22-157 |  | Uk³adanie kabli – trasa 24 | 10d | 2027-04-27 | 2027-05-10 | 12DQ22-014 SS+10d |  | 2027-03-22 | 2027-04-02 | 216.9d | 0d |  | Izoterm | 12DQ22 | Elektryc | Budowa | Roboty | Tomasz | Automaty | PM000 | Zespó³-W | Wspólne | Normalny | Pakiet | L2 |  | Czeka na dostawê |
| 12DQ22-110 |  | Pod³¹czenia i pomiary – trasa 16 | 8d | 2027-04-28 | 2027-05-07 | 12DQ22-109 FF |  | 2027-03-23 | 2027-04-01 | 249.9d | 0d |  | Izoterm | 12DQ22 | Elektryc | Budowa | Roboty | Tomasz | Automaty | PM000 | Zespó³-W | Wspólne | Normalny | Pakiet | L2 | Rev A |  |
| 12DQ22-062 |  | Pod³¹czenia i pomiary – trasa 08 | 7d | 2027-04-29 | 2027-05-07 | 12DQ22-061 FF |  | 2027-03-24 | 2027-04-01 | 249.9d | 0d |  | Izoterm | 12DQ22 | Elektryc | Budowa | Roboty | Tomasz | Automaty | PM000 | Zespó³-K | Wspólne | Normalny | Pakiet | L2 |  |  |
| 12DQ22-038 |  | Pod³¹czenia i pomiary – trasa 04 | 5d | 2027-04-30 | 2027-05-06 | 12DQ22-037 FF |  | 2027-03-25 | 2027-03-31 | 250.9d | 0d |  | Izoterm | 12DQ22 | Elektryc | Budowa | Roboty | Tomasz | Automaty | PM000 | Zespó³-W | Wspólne | Normalny | Pakiet | L2 |  |  |
| 12DQ22-098 |  | Pod³¹czenia i pomiary – trasa 14 | 3d | 2027-04-30 | 2027-05-04 | 12DQ22-097 FF |  | 2027-03-25 | 2027-03-29 | 252.9d | 0d |  | Izoterm | 12DQ22 | Elektryc | Budowa | Roboty | Tomasz | Automaty | PM000 | Zespó³-K | Wspólne | Normalny | Pakiet | L2 |  |  |
| 12DQ22-158 |  | Pod³¹czenia i pomiary – trasa 24 | 5d | 2027-05-04 | 2027-05-10 | 12DQ22-157 FF |  | 2027-03-29 | 2027-04-02 | 216.9d | 0d |  | Izoterm | 12DQ22 | Elektryc | Budowa | Roboty | Tomasz | Automaty | PM000 | Zespó³-K | Wspólne | Normalny | Pakiet | L2 |  | Bez uwag |
| 12DQ22-146 |  | Pod³¹czenia i pomiary – trasa 22 | 6d | 2027-05-06 | 2027-05-13 | 12DQ22-145 FF |  | 2027-03-31 | 2027-04-07 | 245.9d | 0d |  | Izoterm | 12DQ22 | Elektryc | Budowa | Roboty | Tomasz | Automaty | PM000 | Zespó³-K | Wspólne | Wysoki | Pakiet | L2 | Rev B | Czeka na dostawê |
| 12DQ22-026 |  | Pod³¹czenia i pomiary – trasa 02 | 3d | 2027-05-11 | 2027-05-13 | 12DQ22-025 FF |  | 2027-04-05 | 2027-04-07 | 213.9d | 0d |  | Izoterm | 12DQ22 | Elektryc | Budowa | Roboty | Tomasz | Automaty | PM000 | Zespó³-W | Wspólne | Normalny | Pakiet | L2 |  |  |
| 12DQ22-086 |  | Pod³¹czenia i pomiary – trasa 12 | 9d | 2027-05-11 | 2027-05-21 | 12DQ22-085 FF |  | 2027-04-05 | 2027-04-15 | 239.9d | 0d |  | Izoterm | 12DQ22 | Elektryc | Budowa | Roboty | Tomasz | Automaty | PM200 | Zespó³-E | Wspólne | Normalny | Pakiet | L2 |  |  |
| 12DQ22-050 |  | Pod³¹czenia i pomiary – trasa 06 | 4d | 2027-05-14 | 2027-05-19 | 12DQ22-049 FF |  | 2027-04-08 | 2027-04-13 | 241.9d | 0d |  | Izoterm | 12DQ22 | Elektryc | Budowa | Roboty | Tomasz | Automaty | PM000 | Zespó³-W | Wspólne | Wysoki | Pakiet | L2 |  |  |
| 12DQ22-122 |  | Pod³¹czenia i pomiary – trasa 18 | 3d | 2027-05-19 | 2027-05-21 | 12DQ22-121 FF |  | 2027-04-13 | 2027-04-15 | 239.9d | 0d |  | Izoterm | 12DQ22 | Elektryc | Budowa | Roboty | Tomasz | Automaty | PM000 | Zespó³-W | Wspólne | Wysoki | Pakiet | L2 |  |  |

| ID | WBS | Activity | Type | Duration | Start | Finish | Predecessors | Complete | Planned start | Planned finish | Total float | Free float | Calendar | AC_Wykonawca | AC_Obiekt | AC_Dyscyplina | AC_Faza | AC_Zakres | AC_Opiekun | AC_Obszar | AC_PP_PM | AC_Zespol | AC_Blok | AC_Priorytet | AC_Pakiet | AC_Poziom | Uwagi harmonogramisty | Rewizja dokumentu |
| --- | --- | --- | --- | --- | --- | --- | --- | --- | --- | --- | --- | --- | --- | --- | --- | --- | --- | --- | --- | --- | --- | --- | --- | --- | --- | --- | --- | --- |
|  | MONTA¯ | **Monta¿** |  |  | 2026-02-03 | 2027-07-16 |  |  |  |  |  |  |  |  |  |  |  |  |  |  |  |  |  |  |  |  |  |  |
| 12DQ22-013 |  | Monta¿ konstrukcji stalowych |  | 23d | 2026-02-03 A | 2026-03-10 A | 12DQ22-012 | 100% | 2026-02-03 | 2026-03-05 |  |  |  | Izoterm | 12DQ22 | Mechanic | Budowa | Roboty | Tomasz | Automaty | PM000 | Zespó³-K | Wspólne | Krytyczn | Pakiet | L2 |  |  |
| 12DQ22-014 |  | Monta¿ urz¹dzeñ g³ównych |  | 68d | 2027-04-13 | 2027-07-15 | 12DQ22-013, 12DQ22-011 |  | 2027-03-08 | 2027-06-09 | 168.9d | 0d |  | Izoterm | 12DQ22 | Mechanic | Budowa | Roboty | Tomasz | Automaty | PM000 | Zespó³-W | Wspólne | Normalny | Pakiet | L2 |  |  |
| 12DQ22-165 |  | KM: Zakoñczenie monta¿u – System SCADA | milestone | 0d | 2027-07-16 | 2027-07-16 | 12DQ22-156, 12DQ22-158, 12DQ22-163, 12DQ22-164, 12DQ22-014 |  | 2027-06-10 | 2027-06-10 | 168.9d | 0d | Kalendarz 6-dniowy | Izoterm | 12DQ22 | Mechanic | Budowa | Kamieñ | Tomasz | Automaty | PM000 | Zespó³-K | Wspólne | Krytyczn | Pakiet | L2 | Uzgodnione na koordynacji |  |
|  | ROBOTY BUD | **Roboty budowlane** |  |  | 2025-12-31 | 2026-02-03 |  |  |  |  |  |  |  |  |  |  |  |  |  |  |  |  |  |  |  |  |  |  |
| 12DQ22-012 |  | Fundamenty i roboty ziemne |  | 25d | 2025-12-31 A | 2026-02-03 A | 12DQ22-007 FS+2d | 100% | 2025-12-30 | 2026-02-02 |  |  |  | Izoterm | 12DQ22 | Budowlan | Budowa | Roboty | Tomasz | Automaty | PM000 | Zespó³-K | Wspólne | Normalny | Pakiet | L2 |  |  |
|  | RUROCI¥GI | **Ruroci¹gi** |  |  | 2026-02-03 | 2027-08-20 |  |  |  |  |  |  |  |  |  |  |  |  |  |  |  |  |  |  |  |  |  |  |
|  | SEKCJA 01 | **Sekcja 01** |  |  | 2026-02-03 | 2027-05-31 |  |  |  |  |  |  |  |  |  |  |  |  |  |  |  |  |  |  |  |  |  |  |
| 12DQ22-015 |  | Prefabrykacja ruroci¹gów – Sekcja 01 |  | 11.5d | 2026-02-03 A | 2026-02-19 A | 12DQ22-012 | 100% | 2026-02-03 | 2026-02-17 |  |  |  | Izoterm | 12DQ22 | Ruroci¹g | Budowa | Roboty | Tomasz | Automaty | PM000 | Zespó³-K | Wspólne | Normalny | Pakiet | L2 |  |  |
| 12DQ22-016 |  | Monta¿ ruroci¹gów – Sekcja 01 |  | 17.4d | 2027-04-13 | 2027-05-06 | 12DQ22-015, 12DQ22-014 SS |  | 2027-03-08 | 2027-03-30 | 202.5d | 0d |  | Izoterm | 12DQ22 | Ruroci¹g | Budowa | Roboty | Tomasz | Automaty | PM000 | Zespó³-W | Wspólne | Normalny | Pakiet | L2 |  |  |
| 12DQ22-017 |  | Próba ciœnieniowa – Sekcja 01 |  | 4d | 2027-05-07 | 2027-05-12 | 12DQ22-016 |  | 2027-03-31 | 2027-04-05 | 202.5d | 0d |  | Izoterm | 12DQ22 | Ruroci¹g | Budowa | Roboty | Tomasz | Automaty | PM000 | Zespó³-W | Wspólne | Krytyczn | Pakiet | L2 |  | Rev C |
| 12DQ22-018 |  | Izolacje – Sekcja 01 |  | 11d | 2027-05-13 | 2027-05-27 | 12DQ22-017 |  | 2027-04-06 | 2027-04-20 | 202.5d | 0d |  | Izoterm | 12DQ22 | Ruroci¹g | Budowa | Roboty | Tomasz | Automaty | PM000 | Zespó³-W | Wspólne | Normalny | Pakiet | L2 |  |  |
| 12DQ22-019 |  | Malowanie i oznakowanie – Sekcja 01 |  | 6d | 2027-05-24 | 2027-05-31 | 12DQ22-018 FF+2d |  | 2027-04-15 | 2027-04-22 | 202.5d | 0d |  | Izoterm | 12DQ22 | Ruroci¹g | Budowa | Roboty | Tomasz | Automaty | PM000 | Zespó³-K | Wspólne | Normalny | Pakiet | L2 |  |  |
|  | SEKCJA 02 | **Sekcja 02** |  |  | 2026-02-09 | 2027-06-07 |  |  |  |  |  |  |  |  |  |  |  |  |  |  |  |  |  |  |  |  |  |  |
| 12DQ22-020 |  | Prefabrykacja ruroci¹gów – Sekcja 02 |  | 7.4d | 2026-02-09 A | 2026-02-20 A | 12DQ22-012, 12DQ22-015 SS+5d | 100% | 2026-02-10 | 2026-02-18 |  |  |  | Izoterm | 12DQ22 | Ruroci¹g | Budowa | Roboty | Tomasz | Automaty | PM000 | Zespó³-W | Wspólne | Wysoki | Pakiet | L2 |  |  |
| 12DQ22-021 |  | Monta¿ ruroci¹gów – Sekcja 02 |  | 20.1d | 2027-04-27 | 2027-05-24 | 12DQ22-020, 12DQ22-014 SS+10d |  | 2027-03-22 | 2027-04-16 | 196.8d | 0d |  | Izoterm | 12DQ22 | Ruroci¹g | Budowa | Roboty | Tomasz | Automaty | PM000 | Zespó³-K | Wspólne | Normalny | Pakiet | L2 |  |  |
| 12DQ22-022 |  | Próba ciœnieniowa – Sekcja 02 |  | 2d | 2027-05-25 | 2027-05-26 | 12DQ22-021 |  | 2027-04-19 | 2027-04-20 | 196.8d | 0d |  | Izoterm | 12DQ22 | Ruroci¹g | Budowa | Roboty | Tomasz | Automaty | PM000 | Zespó³-K | Wspólne | Normalny | Pakiet | L2 | Czeka na dostawê | Rev A |
| 12DQ22-023 |  | Izolacje – Sekcja 02 |  | 6d | 2027-05-27 | 2027-06-03 | 12DQ22-022 |  | 2027-04-21 | 2027-04-28 | 196.8d | 0d |  | Izoterm | 12DQ22 | Ruroci¹g | Budowa | Roboty | Tomasz | Automaty | PM000 | Zespó³-K | Wspólne | Niski | Pakiet | L2 |  | Rev B |
| 12DQ22-024 |  | Malowanie i oznakowanie – Sekcja 02 |  | 2d | 2027-06-04 | 2027-06-07 | 12DQ22-023 FF+2d |  | 2027-04-29 | 2027-04-30 | 196.8d | 0d |  | Izoterm | 12DQ22 | Ruroci¹g | Budowa | Roboty | Tomasz | Automaty | PM000 | Zespó³-K | Wspólne | Krytyczn | Pakiet | L2 |  |  |
|  | SEKCJA 03 | **Sekcja 03** |  |  | 2026-02-20 | 2027-05-27 |  |  |  |  |  |  |  |  |  |  |  |  |  |  |  |  |  |  |  |  |  |  |
|  | PODSEKCJA | **Podsekcja 03.A** |  |  | 2026-02-20 | 2027-05-27 |  |  |  |  |  |  |  |  |  |  |  |  |  |  |  |  |  |  |  |  |  |  |
| 12DQ22-027 |  | Prefabrykacja ruroci¹gów – Sekcja 03 |  | 9.8d | 2026-02-20 A | 2026-03-05 A | 12DQ22-012, 12DQ22-020 SS+5d | 100% | 2026-02-17 | 2026-02-27 |  |  |  | Izoterm | 12DQ22 | Ruroci¹g | Budowa | Roboty | Tomasz | Automaty | PM000 | Zespó³-W | Wspólne | Normalny | Pakiet | L2 |  |  |
| 12DQ22-028 |  | Monta¿ ruroci¹gów – Sekcja 03 |  | 14.2d | 2027-04-15 | 2027-05-04 | 12DQ22-027, 12DQ22-014 SS+2d |  | 2027-03-10 | 2027-03-29 | 235.7d | 0d |  | Izoterm | 12DQ22 | Ruroci¹g | Budowa | Roboty | Tomasz | Automaty | PM000 | Zespó³-W | Wspólne | Wysoki | Pakiet | L2 |  | Rev B |
| 12DQ22-029 |  | Próba ciœnieniowa – Sekcja 03 |  | 5d | 2027-05-05 | 2027-05-11 | 12DQ22-028 |  | 2027-03-30 | 2027-04-05 | 235.7d | 0d |  | Izoterm | 12DQ22 | Ruroci¹g | Budowa | Roboty | Tomasz | Automaty | PM000 | Zespó³-W | Wspólne | Normalny | Pakiet | L2 |  |  |
| 12DQ22-030 |  | Izolacje – Sekcja 03 |  | 10d | 2027-05-12 | 2027-05-25 | 12DQ22-029 |  | 2027-04-06 | 2027-04-19 | 235.7d | 0d |  | Izoterm | 12DQ22 | Ruroci¹g | Budowa | Roboty | Tomasz | Automaty | PM000 | Zespó³-K | Wspólne | Niski | Pakiet | L2 | Czeka na dostawê |  |
| 12DQ22-031 |  | Malowanie i oznakowanie – Sekcja 03 |  | 7d | 2027-05-19 | 2027-05-27 | 12DQ22-030 FF+2d |  | 2027-04-13 | 2027-04-21 | 235.7d | 0d |  | Izoterm | 12DQ22 | Ruroci¹g | Budowa | Roboty | Tomasz | Automaty | PM000 | Zespó³-K | Wspólne | Normalny | Pakiet | L2 | Bez uwag |  |

| ID | WBS | Activity | Duration | Start | Finish | Predecessors | Complete | Planned start | Planned finish | Total float | Free float | Calendar | AC_Wykonawca | AC_Obiekt | AC_Dyscyplina | AC_Faza | AC_Zakres | AC_Opiekun | AC_Obszar | AC_PP_PM | AC_Zespol | AC_Blok | AC_Priorytet | AC_Pakiet | AC_Poziom | Rewizja dokumentu | Uwagi harmonogramisty |
| --- | --- | --- | --- | --- | --- | --- | --- | --- | --- | --- | --- | --- | --- | --- | --- | --- | --- | --- | --- | --- | --- | --- | --- | --- | --- | --- | --- |
|  | SEKCJA 04 | **Sekcja 04** |  | 2026-02-24 | 2027-05-26 |  |  |  |  |  |  |  |  |  |  |  |  |  |  |  |  |  |  |  |  |  |  |
| 12DQ22-032 |  | Prefabrykacja ruroci¹gów – Sekcja 04 | 4.3d | 2026-02-24 A | 2026-03-04 A | 12DQ22-012, 12DQ22-027 SS+5d | 100% | 2026-02-24 | 2026-02-27 |  |  |  | Izoterm | 12DQ22 | Ruroci¹g | Budowa | Roboty | Tomasz | Automaty | PM000 | Zespó³-K | Wspólne | Normalny | Pakiet | L2 |  |  |
| 12DQ22-033 |  | Monta¿ ruroci¹gów – Sekcja 04 | 12.8d | 2027-04-20 | 2027-05-06 | 12DQ22-032, 12DQ22-014 SS+5d |  | 2027-03-15 | 2027-03-30 | 237.1d | 0d |  | Izoterm | 12DQ22 | Ruroci¹g | Budowa | Roboty | Tomasz | Automaty | PM000 | Zespó³-K | Wspólne | Normalny | Pakiet | L2 | Rev C |  |
| 12DQ22-034 |  | Próba ciœnieniowa – Sekcja 04 | 6d | 2027-05-07 | 2027-05-14 | 12DQ22-033 |  | 2027-03-31 | 2027-04-07 | 237.1d | 0d |  | Izoterm | 12DQ22 | Ruroci¹g | Budowa | Roboty | Tomasz | Automaty | PM000 | Zespó³-W | Wspólne | Normalny | Pakiet | L2 |  |  |
| 12DQ22-035 |  | Izolacje – Sekcja 04 | 6d | 2027-05-17 | 2027-05-24 | 12DQ22-034 |  | 2027-04-08 | 2027-04-15 | 237.1d | 0d |  | Izoterm | 12DQ22 | Ruroci¹g | Budowa | Roboty | Tomasz | Automaty | PM000 | Zespó³-K | Wspólne | Normalny | Pakiet | L2 |  |  |
| 12DQ22-036 |  | Malowanie i oznakowanie – Sekcja 04 | 4d | 2027-05-21 | 2027-05-26 | 12DQ22-035 FF+2d |  | 2027-04-14 | 2027-04-19 | 237.1d | 0d |  | Izoterm | 12DQ22 | Ruroci¹g | Budowa | Roboty | Tomasz | Automaty | PM000 | Zespó³-K | Wspólne | Normalny | Pakiet | L2 |  |  |
|  | SEKCJA 05 | **Sekcja 05** |  | 2026-03-02 | 2027-07-19 |  |  |  |  |  |  |  |  |  |  |  |  |  |  |  |  |  |  |  |  |  |  |
| 12DQ22-039 |  | Prefabrykacja ruroci¹gów – Sekcja 05 | 9.1d | 2026-03-02 A | 2026-03-12 A | 12DQ22-012, 12DQ22-032 SS+5d | 100% | 2026-03-03 | 2026-03-13 |  |  |  | Izoterm | 12DQ22 | Ruroci¹g | Budowa | Roboty | Tomasz | Automaty | PM000 | Zespó³-W | Wspólne | Normalny | Pakiet | L2 |  |  |
| 12DQ22-040 |  | Monta¿ ruroci¹gów – Sekcja 05 | 14d | 2027-04-23 | 2027-05-12 | 12DQ22-039, 12DQ22-014 SS+8d |  | 2027-03-18 | 2027-04-06 | 232.9d | 0d |  | Izoterm | 12DQ22 | Ruroci¹g | Budowa | Roboty | Tomasz | Automaty | PM000 | Zespó³-W | Wspólne | Normalny | Pakiet | L2 |  |  |
| 12DQ22-041 |  | Próba ciœnieniowa – Sekcja 05 | 5d | 2027-06-30 | 2027-07-06 | 12DQ22-040 |  | 2027-04-07 | 2027-04-13 | 199.6d | 0d |  | Izoterm | 12DQ22 | Ruroci¹g | Budowa | Roboty | Tomasz | Automaty | PM000 | Zespó³-I | Wspólne | Niski | Pakiet | L2 |  |  |
| 12DQ22-042 |  | Izolacje – Sekcja 05 | 7d | 2027-07-07 | 2027-07-15 | 12DQ22-041 |  | 2027-04-14 | 2027-04-22 | 199.6d | 0d |  | Izoterm | 12DQ22 | Ruroci¹g | Budowa | Roboty | Tomasz | Automaty | PM000 | Zespó³-W | Wspólne | Normalny | Pakiet | L2 |  | Ryzyko opóŸnienia |
| 12DQ22-043 |  | Malowanie i oznakowanie – Sekcja 05 | 5d | 2027-07-13 | 2027-07-19 | 12DQ22-042 FF+2d |  | 2027-04-20 | 2027-04-26 | 199.6d | 0d |  | Izoterm | 12DQ22 | Ruroci¹g | Budowa | Roboty | Tomasz | Automaty | PM000 | Zespó³-W | Wspólne | Normalny | Pakiet | L2 | Rev C |  |
|  | SEKCJA 06 | **Sekcja 06** |  | 2026-03-10 | 2027-05-11 |  |  |  |  |  |  |  |  |  |  |  |  |  |  |  |  |  |  |  |  |  |  |
|  | PODSEKCJA | **Podsekcja 06.A** |  | 2026-03-10 | 2027-05-11 |  |  |  |  |  |  |  |  |  |  |  |  |  |  |  |  |  |  |  |  |  |  |
| 12DQ22-044 |  | Prefabrykacja ruroci¹gów – Sekcja 06 | 4d | 2026-03-10 A | 2026-03-18 A | 12DQ22-012, 12DQ22-039 SS+5d | 100% | 2026-03-10 | 2026-03-13 |  |  | Kalendarz 6-dniowy | Izoterm | 12DQ22 | Ruroci¹g | Budowa | Roboty | Tomasz | Automaty | PM000 | Zespó³-W | Wspólne | Normalny | Pakiet | L2 | Rev B |  |
| 12DQ22-045 |  | Monta¿ ruroci¹gów – Sekcja 06 | 8.1d | 2027-04-13 | 2027-04-22 | 12DQ22-044, 12DQ22-014 SS |  | 2027-03-08 | 2027-03-17 | 247.8d | 0d |  | Izoterm | 12DQ22 | Ruroci¹g | Budowa | Roboty | Tomasz | Automaty | PM000 | Zespó³-K | Wspólne | Wysoki | Pakiet | L2 |  | Do weryfikacji z wykonawc¹ |
| 12DQ22-046 |  | Próba ciœnieniowa – Sekcja 06 | 2d | 2027-04-23 | 2027-04-26 | 12DQ22-045 |  | 2027-03-18 | 2027-03-19 | 247.8d | 0d |  | Izoterm | 12DQ22 | Ruroci¹g | Budowa | Roboty | Tomasz | Automaty | PM000 | Zespó³-E | Wspólne | Normalny | Pakiet | L2 |  |  |
| 12DQ22-047 |  | Izolacje – Sekcja 06 | 9d | 2027-04-27 | 2027-05-07 | 12DQ22-046 |  | 2027-03-22 | 2027-04-01 | 247.8d | 0d |  | Izoterm | 12DQ22 | Ruroci¹g | Budowa | Roboty | Tomasz | Automaty | PM000 | Zespó³-W | Wspólne | Normalny | Pakiet | L2 | Rev B |  |
| 12DQ22-048 |  | Malowanie i oznakowanie – Sekcja 06 | 8d | 2027-04-30 | 2027-05-11 | 12DQ22-047 FF+2d |  | 2027-03-25 | 2027-04-05 | 247.8d | 0d |  | Izoterm | 12DQ22 | Ruroci¹g | Budowa | Roboty | Tomasz | Automaty | PM000 | Zespó³-K | Wspólne | Normalny | Pakiet | L2 |  |  |
|  | SEKCJA 07 | **Sekcja 07** |  | 2026-03-19 | 2027-06-04 |  |  |  |  |  |  |  |  |  |  |  |  |  |  |  |  |  |  |  |  |  |  |
| 12DQ22-051 |  | Prefabrykacja ruroci¹gów – Sekcja 07 | 8.9d | 2026-03-19 A | 2026-03-31 A | 12DQ22-012, 12DQ22-044 SS+5d | 100% | 2026-03-17 | 2026-03-26 |  |  |  | Izoterm | 12DQ22 | Ruroci¹g | Budowa | Roboty | Tomasz | Automaty | PM000 | Zespó³-W | Wspólne | Normalny | Pakiet | L2 |  |  |
| 12DQ22-052 |  | Monta¿ ruroci¹gów – Sekcja 07 | 18.7d | 2027-04-16 | 2027-05-12 | 12DQ22-051, 12DQ22-014 SS+3d |  | 2027-03-11 | 2027-04-05 | 230.2d | 0d |  | Izoterm | 12DQ22 | Ruroci¹g | Budowa | Roboty | Tomasz | Automaty | PM000 | Zespó³-W | Wspólne | Niski | Pakiet | L2 |  |  |
| 12DQ22-053 |  | Próba ciœnieniowa – Sekcja 07 | 5d | 2027-05-13 | 2027-05-19 | 12DQ22-052 |  | 2027-04-06 | 2027-04-12 | 230.2d | 0d |  | Izoterm | 12DQ22 | Ruroci¹g | Budowa | Roboty | Tomasz | Automaty | PM000 | Zespó³-W | Wspólne | Normalny | Pakiet | L2 |  |  |
| 12DQ22-054 |  | Izolacje – Sekcja 07 | 10d | 2027-05-20 | 2027-06-02 | 12DQ22-053 |  | 2027-04-13 | 2027-04-26 | 230.2d | 0d |  | Izoterm | 12DQ22 | Ruroci¹g | Budowa | Roboty | Tomasz | Automaty | PM000 | Zespó³-K | Wspólne | Normalny | Pakiet | L2 |  |  |
| 12DQ22-055 |  | Malowanie i oznakowanie – Sekcja 07 | 5d | 2027-05-31 | 2027-06-04 | 12DQ22-054 FF+2d |  | 2027-04-22 | 2027-04-28 | 230.2d | 0d |  | Izoterm | 12DQ22 | Ruroci¹g | Budowa | Roboty | Tomasz | Automaty | PM000 | Zespó³-W | Wspólne | Wysoki | Pakiet | L2 |  |  |

| ID | WBS | Activity | Duration | Start | Finish | Predecessors | Complete | Planned start | Planned finish | Total float | Free float | Calendar | Uwagi harmonogramisty | AC_Wykonawca | AC_Obiekt | AC_Dyscyplina | AC_Faza | AC_Zakres | AC_Opiekun | AC_Obszar | AC_PP_PM | AC_Zespol | AC_Blok | AC_Priorytet | AC_Pakiet | AC_Poziom | Rewizja dokumentu |
| --- | --- | --- | --- | --- | --- | --- | --- | --- | --- | --- | --- | --- | --- | --- | --- | --- | --- | --- | --- | --- | --- | --- | --- | --- | --- | --- | --- |
|  | SEKCJA 08 | **Sekcja 08** |  | 2026-03-25 | 2027-07-27 |  |  |  |  |  |  |  |  |  |  |  |  |  |  |  |  |  |  |  |  |  |  |
| 12DQ22-056 |  | Prefabrykacja ruroci¹gów – Sekcja 08 | 14.4d | 2026-03-25 A | 2026-04-13 A | 12DQ22-012, 12DQ22-051 SS+5d | 100% | 2026-03-24 | 2026-04-10 |  |  |  | Uzgodnione na koordynacji | Izoterm | 12DQ22 | Ruroci¹g | Budowa | Roboty | Tomasz | Automaty | PM000 | Zespó³-K | Wspólne | Niski | Pakiet | L2 |  |
| 12DQ22-057 |  | Monta¿ ruroci¹gów – Sekcja 08 | 22.4d | 2027-04-15 | 2027-05-17 | 12DQ22-056, 12DQ22-014 SS+2d |  | 2027-03-10 | 2027-04-08 | 229.5d | 0d |  |  | Izoterm | 12DQ22 | Ruroci¹g | Budowa | Roboty | Tomasz | Automaty | PM000 | Zespó³-W | Wspólne | Normalny | Pakiet | L2 |  |
| 12DQ22-058 |  | Próba ciœnieniowa – Sekcja 08 | 4d | 2027-05-18 | 2027-05-21 | 12DQ22-057 |  | 2027-04-09 | 2027-04-14 | 229.5d | 0d |  | Bez uwag | Izoterm | 12DQ22 | Ruroci¹g | Budowa | Roboty | Tomasz | Automaty | PM000 | Zespó³-W | Wspólne | Normalny | Pakiet | L2 |  |
| 12DQ22-059 |  | Izolacje – Sekcja 08 | 9d | 2027-07-13 | 2027-07-23 | 12DQ22-058 |  | 2027-04-15 | 2027-04-27 | 193.6d | 0d |  |  | Izoterm | 12DQ22 | Ruroci¹g | Budowa | Roboty | Tomasz | Automaty | PM300 | Zespó³-I | Wspólne | Normalny | Pakiet | L2 | Rev C |
| 12DQ22-060 |  | Malowanie i oznakowanie – Sekcja 08 | 4d | 2027-07-22 | 2027-07-27 | 12DQ22-059 FF+2d |  | 2027-04-26 | 2027-04-29 | 193.6d | 0d |  |  | Izoterm | 12DQ22 | Ruroci¹g | Budowa | Roboty | Tomasz | Automaty | PM000 | Zespó³-K | Wspólne | Normalny | Pakiet | L2 | Rev C |
|  | SEKCJA 09 | **Sekcja 09** |  | 2026-04-03 | 2027-06-08 |  |  |  |  |  |  |  |  |  |  |  |  |  |  |  |  |  |  |  |  |  |  |
|  | PODSEKCJA | **Podsekcja 09.A** |  | 2026-04-03 | 2027-06-08 |  |  |  |  |  |  |  |  |  |  |  |  |  |  |  |  |  |  |  |  |  |  |
| 12DQ22-063 |  | Prefabrykacja ruroci¹gów – Sekcja 09 | 14.8d | 2026-04-03 A | 2026-04-23 A | 12DQ22-012, 12DQ22-056 SS+5d | 100% | 2026-03-31 | 2026-04-17 |  |  |  | Czeka na dostawê | Izoterm | 12DQ22 | Ruroci¹g | Budowa | Roboty | Tomasz | Automaty | PM000 | Zespó³-K | Wspólne | Wysoki | Pakiet | L2 | Rev B |
| 12DQ22-064 |  | Monta¿ ruroci¹gów – Sekcja 09 | 14.9d | 2027-04-27 | 2027-05-17 | 12DQ22-063, 12DQ22-014 SS+10d |  | 2027-03-22 | 2027-04-08 | 228d | 0d |  |  | Izoterm | 12DQ22 | Ruroci¹g | Budowa | Roboty | Tomasz | Automaty | PM000 | Zespó³-K | Wspólne | Wysoki | Pakiet | L2 |  |
| 12DQ22-065 |  | Próba ciœnieniowa – Sekcja 09 | 3d | 2027-05-18 | 2027-05-20 | 12DQ22-064 |  | 2027-04-09 | 2027-04-13 | 228d | 0d |  |  | Izoterm | 12DQ22 | Ruroci¹g | Budowa | Roboty | Tomasz | Automaty | PM000 | Zespó³-W | Wspólne | Normalny | Pakiet | L2 |  |
| 12DQ22-066 |  | Izolacje – Sekcja 09 | 11d | 2027-05-21 | 2027-06-04 | 12DQ22-065 |  | 2027-04-14 | 2027-04-28 | 228d | 0d |  |  | Izoterm | 12DQ22 | Ruroci¹g | Budowa | Roboty | Tomasz | Automaty | PM000 | Zespó³-K | Wspólne | Normalny | Pakiet | L2 |  |
| 12DQ22-067 |  | Malowanie i oznakowanie – Sekcja 09 | 7d | 2027-05-31 | 2027-06-08 | 12DQ22-066 FF+2d |  | 2027-04-22 | 2027-04-30 | 228d | 0d | Kalendarz 6-dniowy | Czeka na dostawê | Izoterm | 12DQ22 | Ruroci¹g | Budowa | Roboty | Tomasz | Automaty | PM000 | Zespó³-W | Wspólne | Normalny | Pakiet | L2 |  |
|  | SEKCJA 10 | **Sekcja 10** |  | 2026-04-07 | 2027-08-20 |  |  |  |  |  |  |  |  |  |  |  |  |  |  |  |  |  |  |  |  |  |  |
| 12DQ22-068 |  | Prefabrykacja ruroci¹gów – Sekcja 10 | 12.6d | 2026-04-07 A | 2026-04-27 A | 12DQ22-012, 12DQ22-063 SS+5d | 100% | 2026-04-07 | 2026-04-22 |  |  |  |  | Izoterm | 12DQ22 | Ruroci¹g | Budowa | Roboty | Tomasz | Automaty | PM000 | Zespó³-K | Wspólne | Normalny | Pakiet | L2 |  |
| 12DQ22-069 |  | Monta¿ ruroci¹gów – Sekcja 10 | 20.9d | 2027-07-07 | 2027-08-03 | 12DQ22-068, 12DQ22-014 SS+10d |  | 2027-03-22 | 2027-04-16 | 174.7d | 0d |  | Do weryfikacji z wykonawc¹ | Izoterm | 12DQ22 | Ruroci¹g | Budowa | Roboty | Tomasz | Automaty | PM000 | Zespó³-E | Wspólne | Normalny | Pakiet | L2 |  |
| 12DQ22-070 |  | Próba ciœnieniowa – Sekcja 10 | 3d | 2027-08-04 | 2027-08-06 | 12DQ22-069 |  | 2027-04-19 | 2027-04-21 | 174.7d | 0d |  | Bez uwag | Izoterm | 12DQ22 | Ruroci¹g | Budowa | Roboty | Tomasz | Automaty | PM000 | Zespó³-W | Wspólne | Normalny | Pakiet | L2 | Rev A |
| 12DQ22-071 |  | Izolacje – Sekcja 10 | 8d | 2027-08-09 | 2027-08-18 | 12DQ22-070 |  | 2027-04-22 | 2027-05-03 | 174.7d | 0d |  | Ryzyko opóŸnienia | Izoterm | 12DQ22 | Ruroci¹g | Budowa | Roboty | Tomasz | Automaty | PM000 | Zespó³-W | Wspólne | Normalny | Pakiet | L2 | Rev B |
| 12DQ22-072 |  | Malowanie i oznakowanie – Sekcja 10 | 7d | 2027-08-12 | 2027-08-20 | 12DQ22-071 FF+2d |  | 2027-04-27 | 2027-05-05 | 174.7d | 0d |  |  | Izoterm | 12DQ22 | Ruroci¹g | Budowa | Roboty | Tomasz | Automaty | PM000 | Zespó³-W | Wspólne | Normalny | Pakiet | L2 |  |
|  | SEKCJA 11 | **Sekcja 11** |  | 2026-04-13 | 2027-06-11 |  |  |  |  |  |  |  |  |  |  |  |  |  |  |  |  |  |  |  |  |  |  |
| 12DQ22-075 |  | Prefabrykacja ruroci¹gów – Sekcja 11 | 11.6d | 2026-04-13 A | 2026-04-30 A | 12DQ22-012, 12DQ22-068 SS+5d | 100% | 2026-04-14 | 2026-04-28 |  |  |  | Uzgodnione na koordynacji | Izoterm | 12DQ22 | Ruroci¹g | Budowa | Roboty | Tomasz | Automaty | PM000 | Zespó³-K | Wspólne | Normalny | Pakiet | L2 | Rev A |
| 12DQ22-076 |  | Monta¿ ruroci¹gów – Sekcja 11 | 24.2d | 2027-04-19 | 2027-05-20 | 12DQ22-075, 12DQ22-014 SS+4d |  | 2027-03-12 | 2027-04-14 | 224.7d | 0d |  |  | Izoterm | 12DQ22 | Ruroci¹g | Budowa | Roboty | Tomasz | Automaty | PM000 | Zespó³-W | Wspólne | Normalny | Pakiet | L2 |  |
| 12DQ22-077 |  | Próba ciœnieniowa – Sekcja 11 | 4d | 2027-05-21 | 2027-05-26 | 12DQ22-076 |  | 2027-04-15 | 2027-04-20 | 224.7d | 0d |  |  | Izoterm | 12DQ22 | Ruroci¹g | Budowa | Roboty | Tomasz | Automaty | PM000 | Zespó³-W | Wspólne | Normalny | Pakiet | L2 |  |
| 12DQ22-078 |  | Izolacje – Sekcja 11 | 10d | 2027-05-27 | 2027-06-09 | 12DQ22-077 |  | 2027-04-21 | 2027-05-04 | 224.7d | 0d |  |  | Izoterm | 12DQ22 | Ruroci¹g | Budowa | Roboty | Tomasz | Automaty | PM000 | Zespó³-W | Wspólne | Normalny | Pakiet | L2 |  |
| 12DQ22-079 |  | Malowanie i oznakowanie – Sekcja 11 | 8d | 2027-06-02 | 2027-06-11 | 12DQ22-078 FF+2d |  | 2027-04-27 | 2027-05-06 | 224.7d | 0d |  | Ryzyko opóŸnienia | Izoterm | 12DQ22 | Ruroci¹g | Budowa | Roboty | Tomasz | Automaty | PM000 | Zespó³-W | Wspólne | Wysoki | Pakiet | L2 |  |

| ID | WBS | Activity | Duration | Start | Finish | Predecessors | Complete | Planned start | Planned finish | Total float | Free float | Calendar | Uwagi harmonogramisty | AC_Wykonawca | AC_Obiekt | AC_Dyscyplina | AC_Faza | AC_Zakres | AC_Opiekun | AC_Obszar | AC_PP_PM | AC_Zespol | AC_Blok | AC_Priorytet | AC_Pakiet | AC_Poziom | Rewizja dokumentu |
| --- | --- | --- | --- | --- | --- | --- | --- | --- | --- | --- | --- | --- | --- | --- | --- | --- | --- | --- | --- | --- | --- | --- | --- | --- | --- | --- | --- |
|  | SEKCJA 12 | **Sekcja 12** |  | 2026-04-24 | 2027-06-07 |  |  |  |  |  |  |  |  |  |  |  |  |  |  |  |  |  |  |  |  |  |  |
|  | PODSEKCJA | **Podsekcja 12.A** |  | 2026-04-24 | 2027-06-07 |  |  |  |  |  |  |  |  |  |  |  |  |  |  |  |  |  |  |  |  |  |  |
| 12DQ22-080 |  | Prefabrykacja ruroci¹gów – Sekcja 12 | 8.1d | 2026-04-24 A | 2026-05-08 A | 12DQ22-012, 12DQ22-075 SS+5d | 100% | 2026-04-21 | 2026-04-30 |  |  |  | Ryzyko opóŸnienia | Izoterm | 12DQ22 | Ruroci¹g | Budowa | Roboty | Tomasz | Automaty | PM000 | Zespó³-W | Wspólne | Normalny | Pakiet | L2 |  |
| 12DQ22-081 |  | Monta¿ ruroci¹gów – Sekcja 12 | 13.5d | 2027-04-23 | 2027-05-12 | 12DQ22-080, 12DQ22-014 SS+8d |  | 2027-03-18 | 2027-04-05 | 229.4d | 0d |  |  | Izoterm | 12DQ22 | Ruroci¹g | Budowa | Roboty | Tomasz | Automaty | PM000 | Zespó³-W | Wspólne | Normalny | Pakiet | L2 |  |
| 12DQ22-082 |  | Próba ciœnieniowa – Sekcja 12 | 6d | 2027-05-13 | 2027-05-20 | 12DQ22-081 |  | 2027-04-06 | 2027-04-13 | 229.4d | 0d |  |  | Izoterm | 12DQ22 | Ruroci¹g | Budowa | Roboty | Tomasz | Automaty | PM000 | Zespó³-W | Wspólne | Normalny | Pakiet | L2 |  |
| 12DQ22-083 |  | Izolacje – Sekcja 12 | 10d | 2027-05-21 | 2027-06-03 | 12DQ22-082 |  | 2027-04-14 | 2027-04-27 | 229.4d | 0d |  |  | Izoterm | 12DQ22 | Ruroci¹g | Budowa | Roboty | Tomasz | Automaty | PM000 | Zespó³-K | Wspólne | Normalny | Pakiet | L2 |  |
| 12DQ22-084 |  | Malowanie i oznakowanie – Sekcja 12 | 4d | 2027-06-02 | 2027-06-07 | 12DQ22-083 FF+2d |  | 2027-04-26 | 2027-04-29 | 229.4d | 0d |  |  | Izoterm | 12DQ22 | Ruroci¹g | Budowa | Roboty | Tomasz | Automaty | PM000 | Zespó³-K | Wspólne | Normalny | Pakiet | L2 | Rev B |
|  | SEKCJA 13 | **Sekcja 13** |  | 2026-05-01 | 2027-06-02 |  |  |  |  |  |  |  |  |  |  |  |  |  |  |  |  |  |  |  |  |  |  |
| 12DQ22-087 |  | Prefabrykacja ruroci¹gów – Sekcja 13 | 6d | 2026-05-01 A | 2026-05-08 A | 12DQ22-012, 12DQ22-080 SS+5d | 100% | 2026-04-28 | 2026-05-05 |  |  |  |  | Izoterm | 12DQ22 | Ruroci¹g | Budowa | Roboty | Tomasz | Automaty | PM000 | Zespó³-W | Wspólne | Normalny | Pakiet | L2 |  |
| 12DQ22-088 |  | Monta¿ ruroci¹gów – Sekcja 13 | 19.9d | 2027-04-16 | 2027-05-13 | 12DQ22-087, 12DQ22-014 SS+3d |  | 2027-03-11 | 2027-04-06 | 232d | 0d |  |  | Izoterm | 12DQ22 | Ruroci¹g | Budowa | Roboty | Tomasz | Automaty | PM000 | Zespó³-W | Wspólne | Krytyczn | Pakiet | L2 |  |
| 12DQ22-089 |  | Próba ciœnieniowa – Sekcja 13 | 5d | 2027-05-14 | 2027-05-20 | 12DQ22-088 |  | 2027-04-07 | 2027-04-13 | 232d | 0d |  |  | Izoterm | 12DQ22 | Ruroci¹g | Budowa | Roboty | Tomasz | Automaty | PM000 | Zespó³-W | Wspólne | Normalny | Pakiet | L2 |  |
| 12DQ22-090 |  | Izolacje – Sekcja 13 | 7d | 2027-05-21 | 2027-05-31 | 12DQ22-089 |  | 2027-04-14 | 2027-04-22 | 232d | 0d | Kalendarz 6-dniowy |  | Izoterm | 12DQ22 | Ruroci¹g | Budowa | Roboty | Tomasz | Automaty | PM000 | Zespó³-K | Wspólne | Normalny | Pakiet | L2 |  |
| 12DQ22-091 |  | Malowanie i oznakowanie – Sekcja 13 | 6d | 2027-05-26 | 2027-06-02 | 12DQ22-090 FF+2d |  | 2027-04-19 | 2027-04-26 | 232d | 0d |  |  | Izoterm | 12DQ22 | Ruroci¹g | Budowa | Roboty | Tomasz | Automaty | PM000 | Zespó³-W | Wspólne | Normalny | Pakiet | L2 |  |
|  | SEKCJA 14 | **Sekcja 14** |  | 2026-05-05 | 2027-05-17 |  |  |  |  |  |  |  |  |  |  |  |  |  |  |  |  |  |  |  |  |  |  |
| 12DQ22-092 |  | Prefabrykacja ruroci¹gów – Sekcja 14 | 5.9d | 2026-05-05 A | 2026-05-11 A | 12DQ22-012, 12DQ22-087 SS+5d | 100% |  |  |  |  |  | Ryzyko opóŸnienia | Izoterm | 12DQ22 | Ruroci¹g | Budowa | Roboty | Tomasz | Automaty | PM300 | Zespó³-E | Wspólne | Normalny | Pakiet | L2 |  |
| 12DQ22-093 |  | Monta¿ ruroci¹gów – Sekcja 14 | 7.4d | 2027-04-22 | 2027-05-03 | 12DQ22-092, 12DQ22-014 SS+7d |  | 2027-03-17 | 2027-03-25 | 244.5d | 0d |  |  | Izoterm | 12DQ22 | Ruroci¹g | Budowa | Roboty | Tomasz | Automaty | PM000 | Zespó³-W | Wspólne | Normalny | Pakiet | L2 |  |
| 12DQ22-094 |  | Próba ciœnieniowa – Sekcja 14 | 4d | 2027-05-04 | 2027-05-07 | 12DQ22-093 |  | 2027-03-26 | 2027-03-31 | 244.5d | 0d |  |  | Izoterm | 12DQ22 | Ruroci¹g | Budowa | Roboty | Tomasz | Automaty | PM000 | Zespó³-W | Wspólne | Normalny | Pakiet | L2 |  |
| 12DQ22-095 |  | Izolacje – Sekcja 14 | 4d | 2027-05-10 | 2027-05-13 | 12DQ22-094 |  | 2027-04-01 | 2027-04-06 | 244.5d | 0d |  |  | Izoterm | 12DQ22 | Ruroci¹g | Budowa | Roboty | Tomasz | Automaty | PM000 | Zespó³-K | Wspólne | Wysoki | Pakiet | L2 |  |
| 12DQ22-096 |  | Malowanie i oznakowanie – Sekcja 14 | 4d | 2027-05-12 | 2027-05-17 | 12DQ22-095 FF+2d |  | 2027-04-05 | 2027-04-08 | 244.5d | 0d |  |  | Izoterm | 12DQ22 | Ruroci¹g | Budowa | Roboty | Tomasz | Automaty | PM000 | Zespó³-W | Wspólne | Normalny | Pakiet | L2 |  |
|  | SEKCJA 15 | **Sekcja 15** |  | 2026-05-14 | 2027-05-10 |  |  |  |  |  |  |  |  |  |  |  |  |  |  |  |  |  |  |  |  |  |  |
|  | PODSEKCJA | **Podsekcja 15.A** |  | 2026-05-14 | 2027-05-10 |  |  |  |  |  |  |  |  |  |  |  |  |  |  |  |  |  |  |  |  |  |  |
| 12DQ22-099 |  | Prefabrykacja ruroci¹gów – Sekcja 15 | 14.4d | 2026-05-14 A | 2026-06-05 A | 12DQ22-012, 12DQ22-092 SS+5d | 100% | 2026-05-12 | 2026-05-29 |  |  |  |  | Izoterm | 12DQ22 | Ruroci¹g | Budowa | Roboty | Tomasz | Automaty | PM200 | Zespó³-E | Wspólne | Normalny | Pakiet | L2 |  |
| 12DQ22-100 |  | Monta¿ ruroci¹gów – Sekcja 15 | 7.5d | 2027-04-13 | 2027-04-22 | 12DQ22-099, 12DQ22-014 SS |  | 2027-03-08 | 2027-03-16 | 249.4d | 0d |  | Bez uwag | Izoterm | 12DQ22 | Ruroci¹g | Budowa | Roboty | Tomasz | Automaty | PM000 | Zespó³-K | Wspólne | Krytyczn | Pakiet | L2 |  |
| 12DQ22-101 |  | Próba ciœnieniowa – Sekcja 15 | 2d | 2027-04-23 | 2027-04-26 | 12DQ22-100 |  | 2027-03-17 | 2027-03-18 | 249.4d | 0d |  |  | Izoterm | 12DQ22 | Ruroci¹g | Budowa | Roboty | Tomasz | Automaty | PM000 | Zespó³-W | Wspólne | Niski | Pakiet | L2 | Rev B |
| 12DQ22-102 |  | Izolacje – Sekcja 15 | 8d | 2027-04-27 | 2027-05-06 | 12DQ22-101 |  | 2027-03-19 | 2027-03-30 | 249.4d | 0d |  |  | Izoterm | 12DQ22 | Ruroci¹g | Budowa | Roboty | Tomasz | Automaty | PM000 | Zespó³-K | Wspólne | Normalny | Pakiet | L2 |  |
| 12DQ22-103 |  | Malowanie i oznakowanie – Sekcja 15 | 2d | 2027-05-07 | 2027-05-10 | 12DQ22-102 FF+2d |  | 2027-03-31 | 2027-04-01 | 249.4d | 0d |  |  | Izoterm | 12DQ22 | Ruroci¹g | Budowa | Roboty | Tomasz | Automaty | PM000 | Zespó³-K | Wspólne | Wysoki | Pakiet | L2 |  |

| ID | WBS | Activity | Duration | Start | Finish | Predecessors | Complete | Planned start | Planned finish | Total float | Free float | Calendar | Rewizja dokumentu | AC_Wykonawca | AC_Obiekt | AC_Dyscyplina | AC_Faza | AC_Zakres | AC_Opiekun | AC_Obszar | AC_PP_PM | AC_Zespol | AC_Blok | AC_Priorytet | AC_Pakiet | AC_Poziom | Uwagi harmonogramisty |
| --- | --- | --- | --- | --- | --- | --- | --- | --- | --- | --- | --- | --- | --- | --- | --- | --- | --- | --- | --- | --- | --- | --- | --- | --- | --- | --- | --- |
|  | SEKCJA 16 | **Sekcja 16** |  | 2026-05-20 | 2027-06-24 |  |  |  |  |  |  |  |  |  |  |  |  |  |  |  |  |  |  |  |  |  |  |
| 12DQ22-104 |  | Prefabrykacja ruroci¹gów – Sekcja 16 | 5.1d | 2026-05-20 A | 2026-05-29 A | 12DQ22-012, 12DQ22-099 SS+5d | 100% | 2026-05-19 | 2026-05-25 |  |  |  | Rev B | Izoterm | 12DQ22 | Ruroci¹g | Budowa | Roboty | Tomasz | Automaty | PM000 | Zespó³-K | Wspólne | Wysoki | Pakiet | L2 |  |
| 12DQ22-105 |  | Monta¿ ruroci¹gów – Sekcja 16 | 5.9d | 2027-04-16 | 2027-04-23 | 12DQ22-104, 12DQ22-014 SS+3d |  | 2027-03-11 | 2027-03-17 | 246d | 0d | Kalendarz 6-dniowy |  | Izoterm | 12DQ22 | Ruroci¹g | Budowa | Roboty | Tomasz | Automaty | PM000 | Zespó³-K | Wspólne | Normalny | Pakiet | L2 |  |
| 12DQ22-106 |  | Próba ciœnieniowa – Sekcja 16 | 3d | 2027-04-26 | 2027-04-28 | 12DQ22-105 |  | 2027-03-18 | 2027-03-22 | 246d | 0d |  |  | Izoterm | 12DQ22 | Ruroci¹g | Budowa | Roboty | Tomasz | Automaty | PM000 | Zespó³-W | Wspólne | Niski | Pakiet | L2 |  |
| 12DQ22-107 |  | Izolacje – Sekcja 16 | 9d | 2027-06-10 | 2027-06-22 | 12DQ22-106 |  | 2027-03-23 | 2027-04-02 | 216.6d | 0d |  | Rev C | Izoterm | 12DQ22 | Ruroci¹g | Budowa | Roboty | Tomasz | Automaty | PM100 | Zespó³-E | Wspólne | Normalny | Pakiet | L2 |  |
| 12DQ22-108 |  | Malowanie i oznakowanie – Sekcja 16 | 3d | 2027-06-22 | 2027-06-24 | 12DQ22-107 FF+2d |  | 2027-04-02 | 2027-04-06 | 216.6d | 0d |  | Rev B | Izoterm | 12DQ22 | Ruroci¹g | Budowa | Roboty | Tomasz | Automaty | PM000 | Zespó³-W | Wspólne | Normalny | Pakiet | L2 |  |
|  | SEKCJA 17 | **Sekcja 17** |  | 2026-05-26 | 2027-06-03 |  |  |  |  |  |  |  |  |  |  |  |  |  |  |  |  |  |  |  |  |  |  |
| 12DQ22-111 |  | Prefabrykacja ruroci¹gów – Sekcja 17 | 7.5d | 2026-05-26 A | 2026-06-04 A | 12DQ22-012, 12DQ22-104 SS+5d | 100% | 2026-05-26 | 2026-06-03 |  |  |  | Rev B | Izoterm | 12DQ22 | Ruroci¹g | Budowa | Roboty | Tomasz | Automaty | PM000 | Zespó³-W | Wspólne | Krytyczn | Pakiet | L2 | Uzgodnione na koordynacji |
| 12DQ22-112 |  | Monta¿ ruroci¹gów – Sekcja 17 | 14.1d | 2027-04-23 | 2027-05-12 | 12DQ22-111, 12DQ22-014 SS+8d |  | 2027-03-18 | 2027-04-06 | 230.8d | 0d |  |  | Izoterm | 12DQ22 | Ruroci¹g | Budowa | Roboty | Tomasz | Automaty | PM000 | Zespó³-W | Wspólne | Normalny | Pakiet | L2 |  |
| 12DQ22-113 |  | Próba ciœnieniowa – Sekcja 17 | 4d | 2027-05-13 | 2027-05-18 | 12DQ22-112 |  | 2027-04-07 | 2027-04-12 | 230.8d | 0d |  | Rev C | Izoterm | 12DQ22 | Ruroci¹g | Budowa | Roboty | Tomasz | Automaty | PM000 | Zespó³-K | Wspólne | Wysoki | Pakiet | L2 |  |
| 12DQ22-114 |  | Izolacje – Sekcja 17 | 10d | 2027-05-19 | 2027-06-01 | 12DQ22-113 |  | 2027-04-13 | 2027-04-26 | 230.8d | 0d |  |  | Izoterm | 12DQ22 | Ruroci¹g | Budowa | Roboty | Tomasz | Automaty | PM000 | Zespó³-W | Wspólne | Normalny | Pakiet | L2 |  |
| 12DQ22-115 |  | Malowanie i oznakowanie – Sekcja 17 | 5d | 2027-05-28 | 2027-06-03 | 12DQ22-114 FF+2d |  | 2027-04-22 | 2027-04-28 | 230.8d | 0d | Kalendarz 6-dniowy | Rev C | Izoterm | 12DQ22 | Ruroci¹g | Budowa | Roboty | Tomasz | Automaty | PM000 | Zespó³-W | Wspólne | Normalny | Pakiet | L2 | Ryzyko opóŸnienia |
|  | SEKCJA 18 | **Sekcja 18** |  | 2026-06-03 | 2027-07-19 |  |  |  |  |  |  |  |  |  |  |  |  |  |  |  |  |  |  |  |  |  |  |
|  | PODSEKCJA | **Podsekcja 18.A** |  | 2026-06-03 | 2027-07-19 |  |  |  |  |  |  |  |  |  |  |  |  |  |  |  |  |  |  |  |  |  |  |
| 12DQ22-116 |  | Prefabrykacja ruroci¹gów – Sekcja 18 | 7.5d | 2026-06-03 A | 2026-06-15 A | 12DQ22-012, 12DQ22-111 SS+5d | 100% | 2026-06-02 | 2026-06-10 |  |  |  |  | Izoterm | 12DQ22 | Ruroci¹g | Budowa | Roboty | Tomasz | Automaty | PM000 | Zespó³-K | Wspólne | Wysoki | Pakiet | L2 |  |
| 12DQ22-117 |  | Monta¿ ruroci¹gów – Sekcja 18 | 9.5d | 2027-04-22 | 2027-05-05 | 12DQ22-116, 12DQ22-014 SS+7d |  | 2027-03-17 | 2027-03-29 | 235.4d | 0d |  |  | Izoterm | 12DQ22 | Ruroci¹g | Budowa | Roboty | Tomasz | Automaty | PM000 | Zespó³-W | Wspólne | Normalny | Pakiet | L2 |  |
| 12DQ22-118 |  | Próba ciœnieniowa – Sekcja 18 | 6d | 2027-05-06 | 2027-05-13 | 12DQ22-117 |  | 2027-03-30 | 2027-04-06 | 235.4d | 0d |  |  | Izoterm | 12DQ22 | Ruroci¹g | Budowa | Roboty | Tomasz | Automaty | PM000 | Zespó³-K | Wspólne | Normalny | Pakiet | L2 |  |
| 12DQ22-119 |  | Izolacje – Sekcja 18 | 9d | 2027-07-05 | 2027-07-15 | 12DQ22-118 |  | 2027-04-07 | 2027-04-19 | 199.6d | 0d | Kalendarz 6-dniowy |  | Izoterm | 12DQ22 | Ruroci¹g | Budowa | Roboty | Tomasz | Automaty | PM000 | Zespó³-I | Wspólne | Normalny | Pakiet | L2 |  |
| 12DQ22-120 |  | Malowanie i oznakowanie – Sekcja 18 | 4d | 2027-07-14 | 2027-07-19 | 12DQ22-119 FF+2d |  | 2027-04-16 | 2027-04-21 | 199.6d | 0d |  |  | Izoterm | 12DQ22 | Ruroci¹g | Budowa | Roboty | Tomasz | Automaty | PM000 | Zespó³-K | Wspólne | Normalny | Pakiet | L2 |  |
|  | SEKCJA 19 | **Sekcja 19** |  | 2026-06-09 | 2027-05-19 |  |  |  |  |  |  |  |  |  |  |  |  |  |  |  |  |  |  |  |  |  |  |
| 12DQ22-123 |  | Prefabrykacja ruroci¹gów – Sekcja 19 | 12.3d | 2026-06-09 A | 2026-06-26 A | 12DQ22-012, 12DQ22-116 SS+5d | 100% | 2026-06-09 | 2026-06-24 |  |  |  |  | Izoterm | 12DQ22 | Ruroci¹g | Budowa | Roboty | Tomasz | Automaty | PM000 | Zespó³-K | Wspólne | Niski | Pakiet | L2 |  |
| 12DQ22-124 |  | Monta¿ ruroci¹gów – Sekcja 19 | 8.2d | 2027-04-26 | 2027-05-05 | 12DQ22-123, 12DQ22-014 SS+9d |  | 2027-03-19 | 2027-03-30 | 241.7d | 0d |  |  | Izoterm | 12DQ22 | Ruroci¹g | Budowa | Roboty | Tomasz | Automaty | PM000 | Zespó³-K | Wspólne | Normalny | Pakiet | L2 |  |
| 12DQ22-125 |  | Próba ciœnieniowa – Sekcja 19 | 2d | 2027-05-06 | 2027-05-07 | 12DQ22-124 |  | 2027-03-31 | 2027-04-01 | 241.7d | 0d |  |  | Izoterm | 12DQ22 | Ruroci¹g | Budowa | Roboty | Tomasz | Automaty | PM000 | Zespó³-E | Wspólne | Krytyczn | Pakiet | L2 | Uzgodnione na koordynacji |
| 12DQ22-126 |  | Izolacje – Sekcja 19 | 6d | 2027-05-10 | 2027-05-17 | 12DQ22-125 |  | 2027-04-02 | 2027-04-09 | 241.7d | 0d |  |  | Izoterm | 12DQ22 | Ruroci¹g | Budowa | Roboty | Tomasz | Automaty | PM000 | Zespó³-W | Wspólne | Normalny | Pakiet | L2 |  |
| 12DQ22-127 |  | Malowanie i oznakowanie – Sekcja 19 | 6d | 2027-05-12 | 2027-05-19 | 12DQ22-126 FF+2d |  | 2027-04-06 | 2027-04-13 | 241.7d | 0d | Kalendarz 6-dniowy | Rev B | Izoterm | 12DQ22 | Ruroci¹g | Budowa | Roboty | Tomasz | Automaty | PM000 | Zespó³-W | Wspólne | Normalny | Pakiet | L2 |  |

| ID | WBS | Activity | Duration | Start | Finish | Predecessors | Complete | Planned start | Planned finish | Total float | Free float | Rewizja dokumentu | AC_Wykonawca | AC_Obiekt | AC_Dyscyplina | AC_Faza | AC_Zakres | AC_Opiekun | AC_Obszar | AC_PP_PM | AC_Zespol | AC_Blok | AC_Priorytet | AC_Pakiet | AC_Poziom | Uwagi harmonogramisty |
| --- | --- | --- | --- | --- | --- | --- | --- | --- | --- | --- | --- | --- | --- | --- | --- | --- | --- | --- | --- | --- | --- | --- | --- | --- | --- | --- |
|  | SEKCJA 20 | **Sekcja 20** |  | 2026-06-15 | 2027-05-10 |  |  |  |  |  |  |  |  |  |  |  |  |  |  |  |  |  |  |  |  |  |
| 12DQ22-128 |  | Prefabrykacja ruroci¹gów – Sekcja 20 | 3d | 2026-06-15 A | 2026-06-17 A | 12DQ22-012, 12DQ22-123 SS+5d | 100% | 2026-06-16 | 2026-06-18 |  |  | Rev A | Izoterm | 12DQ22 | Ruroci¹g | Budowa | Roboty | Tomasz | Automaty | PM300 | Zespó³-I | Wspólne | Normalny | Pakiet | L2 |  |
| 12DQ22-129 |  | Monta¿ ruroci¹gów – Sekcja 20 | 6d | 2027-04-13 | 2027-04-20 | 12DQ22-128, 12DQ22-014 SS |  | 2027-03-08 | 2027-03-15 | 248.9d | 0d | Rev B | Izoterm | 12DQ22 | Ruroci¹g | Budowa | Roboty | Tomasz | Automaty | PM000 | Zespó³-W | Wspólne | Normalny | Pakiet | L2 |  |
| 12DQ22-130 |  | Próba ciœnieniowa – Sekcja 20 | 3d | 2027-04-21 | 2027-04-23 | 12DQ22-129 |  | 2027-03-16 | 2027-03-18 | 248.9d | 0d | Rev A | Izoterm | 12DQ22 | Ruroci¹g | Budowa | Roboty | Tomasz | Automaty | PM000 | Zespó³-K | Wspólne | Normalny | Pakiet | L2 | Do weryfikacji z wykonawc¹ |
| 12DQ22-131 |  | Izolacje – Sekcja 20 | 9d | 2027-04-26 | 2027-05-06 | 12DQ22-130 |  | 2027-03-19 | 2027-03-31 | 248.9d | 0d |  | Izoterm | 12DQ22 | Ruroci¹g | Budowa | Roboty | Tomasz | Automaty | PM000 | Zespó³-W | Wspólne | Normalny | Pakiet | L2 | Czeka na dostawê |
| 12DQ22-132 |  | Malowanie i oznakowanie – Sekcja 20 | 6d | 2027-05-03 | 2027-05-10 | 12DQ22-131 FF+2d |  | 2027-03-26 | 2027-04-02 | 248.9d | 0d |  | Izoterm | 12DQ22 | Ruroci¹g | Budowa | Roboty | Tomasz | Automaty | PM000 | Zespó³-K | Wspólne | Niski | Pakiet | L2 |  |
|  | SEKCJA 21 | **Sekcja 21** |  | 2026-06-22 | 2027-05-20 |  |  |  |  |  |  |  |  |  |  |  |  |  |  |  |  |  |  |  |  |  |
|  | PODSEKCJA | **Podsekcja 21.A** |  | 2026-06-22 | 2027-05-20 |  |  |  |  |  |  |  |  |  |  |  |  |  |  |  |  |  |  |  |  |  |
| 12DQ22-135 |  | Prefabrykacja ruroci¹gów – Sekcja 21 | 10.1d | 2026-06-22 A | 2026-07-06 A | 12DQ22-012, 12DQ22-128 SS+5d | 100% | 2026-06-23 | 2026-07-06 |  |  |  | Izoterm | 12DQ22 | Ruroci¹g | Budowa | Roboty | Tomasz | Automaty | PM000 | Zespó³-K | Wspólne | Normalny | Pakiet | L2 |  |
| 12DQ22-136 |  | Monta¿ ruroci¹gów – Sekcja 21 | 6.4d | 2027-04-23 | 2027-05-03 | 12DQ22-135, 12DQ22-014 SS+8d |  | 2027-03-18 | 2027-03-25 | 241.5d | 0d |  | Izoterm | 12DQ22 | Ruroci¹g | Budowa | Roboty | Tomasz | Automaty | PM000 | Zespó³-W | Wspólne | Normalny | Pakiet | L2 |  |
| 12DQ22-137 |  | Próba ciœnieniowa – Sekcja 21 | 5d | 2027-05-04 | 2027-05-10 | 12DQ22-136 |  | 2027-03-26 | 2027-04-01 | 241.5d | 0d | Rev A | Izoterm | 12DQ22 | Ruroci¹g | Budowa | Roboty | Tomasz | Automaty | PM000 | Zespó³-K | Wspólne | Normalny | Pakiet | L2 |  |
| 12DQ22-138 |  | Izolacje – Sekcja 21 | 6d | 2027-05-11 | 2027-05-18 | 12DQ22-137 |  | 2027-04-02 | 2027-04-09 | 241.5d | 0d | Rev B | Izoterm | 12DQ22 | Ruroci¹g | Budowa | Roboty | Tomasz | Automaty | PM000 | Zespó³-E | Wspólne | Normalny | Pakiet | L2 |  |
| 12DQ22-139 |  | Malowanie i oznakowanie – Sekcja 21 | 8d | 2027-05-11 | 2027-05-20 | 12DQ22-138 FF+2d |  | 2027-04-02 | 2027-04-13 | 241.5d | 0d |  | Izoterm | 12DQ22 | Ruroci¹g | Budowa | Roboty | Tomasz | Automaty | PM000 | Zespó³-W | Wspólne | Normalny | Pakiet | L2 | Ryzyko opóŸnienia |
|  | SEKCJA 22 | **Sekcja 22** |  | 2026-06-29 | 2027-05-31 |  |  |  |  |  |  |  |  |  |  |  |  |  |  |  |  |  |  |  |  |  |
| 12DQ22-140 |  | Prefabrykacja ruroci¹gów – Sekcja 22 | 9d | 2026-06-29 A | 2026-07-13 A | 12DQ22-012, 12DQ22-135 SS+5d | 100% | 2026-06-30 | 2026-07-10 |  |  |  | Izoterm | 12DQ22 | Ruroci¹g | Budowa | Roboty | Tomasz | Automaty | PM000 | Zespó³-W | Wspólne | Krytyczn | Pakiet | L2 |  |
| 12DQ22-141 |  | Monta¿ ruroci¹gów – Sekcja 22 | 11.9d | 2027-04-26 | 2027-05-11 | 12DQ22-140, 12DQ22-014 SS+9d |  | 2027-03-19 | 2027-04-02 | 234d | 0d | Rev B | Izoterm | 12DQ22 | Ruroci¹g | Budowa | Roboty | Tomasz | Automaty | PM000 | Zespó³-W | Wspólne | Normalny | Pakiet | L2 | Do weryfikacji z wykonawc¹ |
| 12DQ22-142 |  | Próba ciœnieniowa – Sekcja 22 | 4d | 2027-05-12 | 2027-05-17 | 12DQ22-141 |  | 2027-04-05 | 2027-04-08 | 234d | 0d |  | Izoterm | 12DQ22 | Ruroci¹g | Budowa | Roboty | Tomasz | Automaty | PM000 | Zespó³-K | Wspólne | Normalny | Pakiet | L2 |  |
| 12DQ22-143 |  | Izolacje – Sekcja 22 | 8d | 2027-05-18 | 2027-05-27 | 12DQ22-142 |  | 2027-04-09 | 2027-04-20 | 234d | 0d |  | Izoterm | 12DQ22 | Ruroci¹g | Budowa | Roboty | Tomasz | Automaty | PM000 | Zespó³-K | Wspólne | Wysoki | Pakiet | L2 |  |
| 12DQ22-144 |  | Malowanie i oznakowanie – Sekcja 22 | 6d | 2027-05-24 | 2027-05-31 | 12DQ22-143 FF+2d |  | 2027-04-15 | 2027-04-22 | 234d | 0d |  | Izoterm | 12DQ22 | Ruroci¹g | Budowa | Roboty | Tomasz | Automaty | PM000 | Zespó³-W | Wspólne | Normalny | Pakiet | L2 |  |
|  | SEKCJA 23 | **Sekcja 23** |  | 2026-07-06 | 2027-05-31 |  |  |  |  |  |  |  |  |  |  |  |  |  |  |  |  |  |  |  |  |  |
| 12DQ22-147 |  | Prefabrykacja ruroci¹gów – Sekcja 23 | 6.2d | 2026-07-06 A | 2026-07-14 A | 12DQ22-012, 12DQ22-140 SS+5d | 100% | 2026-07-07 | 2026-07-14 |  |  | Rev B | Izoterm | 12DQ22 | Ruroci¹g | Budowa | Roboty | Tomasz | Automaty | PM000 | Zespó³-W | Wspólne | Niski | Pakiet | L2 |  |
| 12DQ22-148 |  | Monta¿ ruroci¹gów – Sekcja 23 | 9.4d | 2027-04-21 | 2027-05-04 | 12DQ22-147, 12DQ22-014 SS+6d |  | 2027-03-16 | 2027-03-26 | 234.5d | 0d | Rev A | Izoterm | 12DQ22 | Ruroci¹g | Budowa | Roboty | Tomasz | Automaty | PM000 | Zespó³-W | Wspólne | Normalny | Pakiet | L2 |  |
| 12DQ22-149 |  | Próba ciœnieniowa – Sekcja 23 | 6d | 2027-05-05 | 2027-05-12 | 12DQ22-148 |  | 2027-03-29 | 2027-04-05 | 234.5d | 0d |  | Izoterm | 12DQ22 | Ruroci¹g | Budowa | Roboty | Tomasz | Automaty | PM000 | Zespó³-K | Wspólne | Normalny | Pakiet | L2 |  |
| 12DQ22-150 |  | Izolacje – Sekcja 23 | 11d | 2027-05-13 | 2027-05-27 | 12DQ22-149 |  | 2027-04-06 | 2027-04-20 | 234.5d | 0d | Rev B | Izoterm | 12DQ22 | Ruroci¹g | Budowa | Roboty | Tomasz | Automaty | PM000 | Zespó³-E | Wspólne | Normalny | Pakiet | L2 |  |
| 12DQ22-151 |  | Malowanie i oznakowanie – Sekcja 23 | 3d | 2027-05-27 | 2027-05-31 | 12DQ22-150 FF+2d |  | 2027-04-20 | 2027-04-22 | 234.5d | 0d | Rev A | Izoterm | 12DQ22 | Ruroci¹g | Budowa | Roboty | Tomasz | Automaty | PM000 | Zespó³-W | Wspólne | Krytyczn | Pakiet | L2 |  |

| ID | WBS | Activity | Type | Duration | Start | Finish | Predecessors | Complete | Actual finish | Planned start | Planned finish | Total float | Free float | AC_Wykonawca | AC_Obiekt | AC_Dyscyplina | AC_Faza | AC_Zakres | AC_Opiekun | AC_Obszar | AC_PP_PM | AC_Zespol | AC_Blok | AC_Priorytet | AC_Pakiet | AC_Poziom | Uwagi harmonogramisty | Rewizja dokumentu |
| --- | --- | --- | --- | --- | --- | --- | --- | --- | --- | --- | --- | --- | --- | --- | --- | --- | --- | --- | --- | --- | --- | --- | --- | --- | --- | --- | --- | --- |
|  | SEKCJA 24 | **Sekcja 24** |  |  | 2026-07-17 | 2027-05-24 |  |  |  |  |  |  |  |  |  |  |  |  |  |  |  |  |  |  |  |  |  |  |
|  | PODSEKCJA | **Podsekcja 24.A** |  |  | 2026-07-17 | 2027-05-24 |  |  |  |  |  |  |  |  |  |  |  |  |  |  |  |  |  |  |  |  |  |  |
| 12DQ22-152 |  | Prefabrykacja ruroci¹gów – Sekcja 24 |  | 5d | 2026-07-17 A | 2026-07-23 A | 12DQ22-012, 12DQ22-147 SS+5d | 100% |  | 2026-07-14 | 2026-07-20 |  |  | Izoterm | 12DQ22 | Ruroci¹g | Budowa | Roboty | Tomasz | Automaty | PM000 | Zespó³-K | Wspólne | Niski | Pakiet | L2 |  |  |
| 12DQ22-153 |  | Monta¿ ruroci¹gów – Sekcja 24 |  | 12.2d | 2027-04-19 | 2027-05-04 | 12DQ22-152, 12DQ22-014 SS+4d |  |  | 2027-03-12 | 2027-03-29 | 206.7d | 0d | Izoterm | 12DQ22 | Ruroci¹g | Budowa | Roboty | Tomasz | Automaty | PM000 | Zespó³-K | Wspólne | Normalny | Pakiet | L2 |  |  |
| 12DQ22-154 |  | Próba ciœnieniowa – Sekcja 24 |  | 5d | 2027-05-05 | 2027-05-11 | 12DQ22-153 |  |  | 2027-03-30 | 2027-04-05 | 206.7d | 0d | Izoterm | 12DQ22 | Ruroci¹g | Budowa | Roboty | Tomasz | Automaty | PM000 | Zespó³-W | Wspólne | Normalny | Pakiet | L2 | Ryzyko opóŸnienia |  |
| 12DQ22-155 |  | Izolacje – Sekcja 24 |  | 7d | 2027-05-12 | 2027-05-20 | 12DQ22-154 |  |  | 2027-04-06 | 2027-04-14 | 206.7d | 0d | Izoterm | 12DQ22 | Ruroci¹g | Budowa | Roboty | Tomasz | Automaty | PM000 | Zespó³-W | Wspólne | Normalny | Pakiet | L2 | Do weryfikacji z wykonawc¹ |  |
| 12DQ22-156 |  | Malowanie i oznakowanie – Sekcja 24 |  | 8d | 2027-05-13 | 2027-05-24 | 12DQ22-155 FF+2d |  |  | 2027-04-07 | 2027-04-16 | 206.7d | 0d | Izoterm | 12DQ22 | Ruroci¹g | Budowa | Roboty | Tomasz | Automaty | PM000 | Zespó³-W | Wspólne | Normalny | Pakiet | L2 | Bez uwag |  |
|  | SEKCJA 25 | **Sekcja 25** |  |  | 2026-07-20 | 2027-05-21 |  |  |  |  |  |  |  |  |  |  |  |  |  |  |  |  |  |  |  |  |  |  |
| 12DQ22-159 |  | Prefabrykacja ruroci¹gów – Sekcja 25 |  | 5d | 2026-07-20 A | 2026-07-24 A | 12DQ22-012, 12DQ22-152 SS+5d | 100% |  | 2026-07-21 | 2026-07-27 |  |  | Izoterm | 12DQ22 | Ruroci¹g | Budowa | Roboty | Tomasz | Automaty | PM300 | Zespó³-I | Wspólne | Normalny | Pakiet | L2 |  | Rev C |
| 12DQ22-160 |  | Monta¿ ruroci¹gów – Sekcja 25 |  | 14.3d | 2027-04-13 | 2027-05-03 | 12DQ22-159, 12DQ22-014 SS |  |  | 2027-03-08 | 2027-03-25 | 208.6d | 0d | Izoterm | 12DQ22 | Ruroci¹g | Budowa | Roboty | Tomasz | Automaty | PM000 | Zespó³-K | Wspólne | Normalny | Pakiet | L2 |  |  |
| 12DQ22-161 |  | Próba ciœnieniowa – Sekcja 25 |  | 2d | 2027-05-04 | 2027-05-05 | 12DQ22-160 |  |  | 2027-03-26 | 2027-03-29 | 208.6d | 0d | Izoterm | 12DQ22 | Ruroci¹g | Budowa | Roboty | Tomasz | Automaty | PM000 | Zespó³-W | Wspólne | Krytyczn | Pakiet | L2 |  |  |
| 12DQ22-162 |  | Izolacje – Sekcja 25 |  | 10d | 2027-05-06 | 2027-05-19 | 12DQ22-161 |  |  | 2027-03-30 | 2027-04-12 | 208.6d | 0d | Izoterm | 12DQ22 | Ruroci¹g | Budowa | Roboty | Tomasz | Automaty | PM000 | Zespó³-K | Wspólne | Normalny | Pakiet | L2 |  |  |
| 12DQ22-163 |  | Malowanie i oznakowanie – Sekcja 25 |  | 7d | 2027-05-13 | 2027-05-21 | 12DQ22-162 FF+2d |  |  | 2027-04-06 | 2027-04-14 | 208.6d | 0d | Izoterm | 12DQ22 | Ruroci¹g | Budowa | Roboty | Tomasz | Automaty | PM000 | Zespó³-K | Wspólne | Niski | Pakiet | L2 |  |  |
|  | PROJ | **Projektowanie** |  |  | 2025-02-06 | 2025-07-25 |  |  |  |  |  |  |  |  |  |  |  |  |  |  |  |  |  |  |  |  |  |  |
|  | DOKUMENTAC | **Dokumentacja** |  |  | 2025-02-06 | 2025-07-25 |  |  |  |  |  |  |  |  |  |  |  |  |  |  |  |  |  |  |  |  |  |  |
| 12DQ22-001 |  | Projekt wykonawczy – System SCADA |  | 90d | 2025-02-06 A | 2025-06-11 A |  | 100% |  | 2025-02-07 | 2025-06-12 |  |  | Izoterm | 12DQ22 | Budowlan | Projekto | Projekt | Tomasz | Automaty | PM000 | Zespó³-K | Wspólne | Normalny | Pakiet | L2 | Ryzyko opóŸnienia | Rev B |
| 12DQ22-002 |  | Uzgodnienie dokumentacji z Inwestorem |  | 10d | 2025-06-17 A | 2025-07-02 A | 12DQ22-001 | 100% |  | 2025-06-13 | 2025-06-26 |  |  | Izoterm | 12DQ22 | Budowlan | Projekto | Projekt | Tomasz | Automaty | PM000 | Zespó³-W | Wspólne | Normalny | Pakiet | L2 | Bez uwag |  |
| 12DQ22-003 |  | Zatwierdzenie dokumentacji do realizacji |  | 15d | 2025-07-02 A | 2025-07-25 A | 12DQ22-002 | 100% |  | 2025-06-27 | 2025-07-17 |  |  | Izoterm | 12DQ22 | Budowlan | Projekto | Projekt | Tomasz | Automaty | PM000 | Zespó³-W | Wspólne | Wysoki | Pakiet | L2 |  |  |
| 12DQ22-004 |  | KM: Dokumentacja zatwierdzona – System SCADA | milestone | 0d | 2025-07-21 A | 2025-07-21 | 12DQ22-003 | 100% | 2025-07-18 | 2025-07-18 | 2025-07-18 |  |  | Izoterm | 12DQ22 | Budowlan | Projekto | Kamieñ | Tomasz | Automaty | PM000 | Zespó³-K | Wspólne | Normalny | Pakiet | L1 |  |  |
|  | ROZR | **Rozruch** |  |  | 2027-07-16 | 2027-10-18 |  |  |  |  |  |  |  |  |  |  |  |  |  |  |  |  |  |  |  |  |  |  |
|  | ROZRUCH | **Rozruch** |  |  | 2027-07-16 | 2027-10-18 |  |  |  |  |  |  |  |  |  |  |  |  |  |  |  |  |  |  |  |  |  |  |
| 12DQ22-166 |  | Przegl¹d gotowoœci do rozruchu |  | 5d | 2027-07-16 | 2027-07-22 | 12DQ22-165, 12DQ22-019, 12DQ22-024, 12DQ22-026 |  |  | 2027-06-10 | 2027-06-16 | 168.9d | 0d | Izoterm | 12DQ22 | Rozruch | Rozruch | Rozruch | Tomasz | Automaty | PM000 | Zespó³-K | Wspólne | Normalny | Pakiet | L2 |  | Rev B |
| 12DQ22-167 |  | Rozruch na zimno |  | 7d | 2027-09-23 | 2027-10-01 | 12DQ22-166 |  |  | 2027-06-17 | 2027-06-25 | 125.6d | 0d | Izoterm | 12DQ22 | Rozruch | Rozruch | Rozruch | Tomasz | Automaty | PM100 | Zespó³-E | Wspólne | Normalny | Pakiet | L2 |  |  |
| 12DQ22-168 |  | Rozruch na gor¹co / próby ruchowe |  | 10d | 2027-10-04 | 2027-10-15 | 12DQ22-167 |  |  | 2027-06-28 | 2027-07-09 | 125.6d | 0d | Izoterm | 12DQ22 | Rozruch | Rozruch | Rozruch | Tomasz | Automaty | PM000 | Zespó³-W | Wspólne | Normalny | Pakiet | L2 | Do weryfikacji z wykonawc¹ |  |
| 12DQ22-169 |  | KM: Odbiór koñcowy – System SCADA | milestone | 0d | 2027-10-18 | 2027-10-18 | 12DQ22-168 |  |  | 2027-07-12 | 2027-07-12 | 125.6d | 0d | Izoterm | 12DQ22 | Rozruch | Rozruch | Kamieñ | Tomasz | Automaty | PM000 | Zespó³-W | Wspólne | Normalny | Pakiet | L1 |  | Rev A |

| ID | WBS | Activity | Type | Duration | Start | Finish | Predecessors | Complete | Remaining | Planned start | Planned finish | Total float | Free float | Calendar | AC_Wykonawca | AC_Obiekt | AC_Dyscyplina | AC_Faza | AC_Zakres | AC_Opiekun | AC_Obszar | AC_PP_PM | AC_Zespol | AC_Blok | AC_Priorytet | AC_Pakiet | AC_Poziom | Rewizja dokumentu | Uwagi harmonogramisty |
| --- | --- | --- | --- | --- | --- | --- | --- | --- | --- | --- | --- | --- | --- | --- | --- | --- | --- | --- | --- | --- | --- | --- | --- | --- | --- | --- | --- | --- | --- |
|  | ZAKU | **Zakupy** |  |  | 2025-03-11 | 2027-04-13 |  |  |  |  |  |  |  |  |  |  |  |  |  |  |  |  |  |  |  |  |  |  |  |
|  | DOSTAWY | **Dostawy** |  |  | 2025-12-29 | 2027-04-13 |  |  |  |  |  |  |  |  |  |  |  |  |  |  |  |  |  |  |  |  |  |  |  |
| 12DQ22-008 |  | Produkcja u dostawcy |  | 288d | 2025-12-29 A | 2027-03-10 | 12DQ22-007 | 61% | 111.7d | 2025-12-26 | 2027-02-02 | 194.6d | 0d |  | Izoterm | 12DQ22 | Mechanic | Zakupy | Dostawa | Tomasz | Automaty | PM000 | Zespó³-W | Wspólne | Normalny | Pakiet | L2 |  |  |
| 12DQ22-009 |  | Testy FAT |  | 4d | 2027-03-11 | 2027-03-16 | 12DQ22-008 |  |  | 2027-02-03 | 2027-02-08 | 168.9d | 0d |  | Izoterm | 12DQ22 | Mechanic | Zakupy | Dostawa | Tomasz | Automaty | PM000 | Zespó³-W | Wspólne | Normalny | Pakiet | L2 | Rev B |  |
| 12DQ22-010 |  | Transport i dostawa na plac budowy |  | 19d | 2027-03-17 | 2027-04-12 | 12DQ22-009 |  |  | 2027-02-09 | 2027-03-05 | 168.9d | 0d |  | Izoterm | 12DQ22 | Mechanic | Zakupy | Dostawa | Tomasz | Automaty | PM000 | Zespó³-K | Wspólne | Niski | Pakiet | L2 | Rev A |  |
| 12DQ22-011 |  | KM: Dostawa na budowê – System SCADA | milestone | 0d | 2027-04-13 | 2027-04-13 | 12DQ22-010 |  |  | 2027-03-08 | 2027-03-08 | 168.9d | 0d |  | Izoterm | 12DQ22 | Mechanic | Zakupy | Kamieñ | Tomasz | Automaty | PM000 | Zespó³-K | Wspólne | Normalny | Pakiet | L1 |  |  |
|  | ZAMÓWIENIA | **Zamówienia** |  |  | 2025-03-11 | 2025-12-31 |  |  |  |  |  |  |  |  |  |  |  |  |  |  |  |  |  |  |  |  |  |  |  |
| 12DQ22-005 |  | Zapytanie ofertowe |  | 23d | 2025-03-11 A | 2025-04-11 A | 12DQ22-001 SS+20d | 100% |  | 2025-03-07 | 2025-04-08 |  |  |  | Izoterm | 12DQ22 | Mechanic | Zakupy | Dostawa | Tomasz | Automaty | PM000 | Zespó³-K | Wspólne | Normalny | Pakiet | L2 |  |  |
| 12DQ22-006 |  | Analiza i wybór ofert |  | 17d | 2025-04-14 A | 2025-05-08 A | 12DQ22-005 | 100% |  | 2025-04-09 | 2025-05-01 |  |  |  | Izoterm | 12DQ22 | Mechanic | Zakupy | Dostawa | Tomasz | Automaty | PM000 | Zespó³-W | Wspólne | Normalny | Pakiet | L2 | Rev A | Uzgodnione na koordynacji |
| 12DQ22-007 |  | Zawarcie umowy / zamówienie |  | 5d | 2025-12-24 A | 2025-12-31 A | 12DQ22-006, 12DQ22-004 SS, 10TM34-004 (other project) SS+7d, 27XT34-004 (other project) SF+15d | 100% |  | 2025-12-19 | 2025-12-25 |  |  |  | Izoterm | 12DQ22 | Mechanic | Zakupy | Dostawa | Tomasz | Automaty | PM000 | Zespó³-K | Wspólne | Normalny | Pakiet | L1 |  |  |
|  | 16KE73 | **16KE73 – System zabezpieczeñ** |  |  | 2025-04-09 | 2027-01-05 |  |  |  |  |  |  |  |  |  |  |  |  |  |  |  |  |  |  |  |  |  |  |  |
|  | BUDO | **Budowa** |  |  | 2025-12-04 | 2026-12-07 |  |  |  |  |  |  |  |  |  |  |  |  |  |  |  |  |  |  |  |  |  |  |  |
|  | AKPIA | **AKPiA** |  |  | 2026-09-09 | 2026-09-29 |  |  |  |  |  |  |  |  |  |  |  |  |  |  |  |  |  |  |  |  |  |  |  |
| 16KE73-140 |  | Monta¿ uk³adów AKPiA |  | 16d | 2026-09-09 A | 2026-09-29 A | 16KE73-014 SS+5d | 100% |  | 2026-09-10 | 2026-10-01 |  |  |  | Pomorski | 16KE73 | AKPiA | Budowa | Roboty | Micha³ | Automaty | PM000 | Zespó³-K | Blok | Normalny | Pakiet | L2 |  |  |
|  | ELEKTRYKA | **Elektryka** |  |  | 2026-09-16 | 2026-10-27 |  |  |  |  |  |  |  |  |  |  |  |  |  |  |  |  |  |  |  |  |  |  |  |
| 16KE73-038 |  | Pod³¹czenia i pomiary – trasa 04 |  | 7d | 2026-09-16 A | 2026-09-29 A | 16KE73-037 FF | 100% |  | 2026-09-16 | 2026-09-24 |  |  |  | Pomorski | 16KE73 | Elektryc | Budowa | Roboty | Micha³ | Automaty | PM000 | Zespó³-W | Blok | Normalny | Pakiet | L2 |  |  |
| 16KE73-026 |  | Pod³¹czenia i pomiary – trasa 02 |  | 10d | 2026-09-17 A | 2026-10-05 A | 16KE73-025 FF | 100% |  | 2026-09-17 | 2026-09-30 |  |  |  | Pomorski | 16KE73 | Elektryc | Budowa | Roboty | Micha³ | Automaty | PM200 | Zespó³-E | Blok | Wysoki | Pakiet | L2 |  |  |
| 16KE73-049 |  | Uk³adanie kabli – trasa 06 |  | 18d | 2026-09-17 A | 2026-10-08 | 16KE73-014 SS+10d | 87% | 2.3d | 2026-09-17 | 2026-10-12 | 399.6d | 0d |  | Pomorski | 16KE73 | Elektryc | Budowa | Roboty | Micha³ | Automaty | PM000 | Zespó³-I | Blok | Normalny | Pakiet | L2 |  |  |
| 16KE73-121 |  | Uk³adanie kabli – trasa 18 |  | 13d | 2026-09-17 A | 2026-10-05 A | 16KE73-014 SS+10d | 100% |  |  |  |  |  |  | Pomorski | 16KE73 | Elektryc | Budowa | Roboty | Micha³ | Automaty | PM000 | Zespó³-K | Blok | Niski | Pakiet | L2 |  |  |
| 16KE73-037 |  | Uk³adanie kabli – trasa 04 |  | 6d | 2026-09-18 A | 2026-09-25 A | 16KE73-014 SS+10d | 100% |  | 2026-09-17 | 2026-09-24 |  |  |  | Pomorski | 16KE73 | Elektryc | Budowa | Roboty | Micha³ | Automaty | PM000 | Zespó³-K | Blok | Normalny | Pakiet | L2 |  |  |
| 16KE73-073 |  | Uk³adanie kabli – trasa 10 |  | 17d | 2026-09-18 A | 2026-10-27 | 16KE73-014 SS+10d | 11% | 15.1d | 2026-09-17 | 2026-10-09 | 399.6d | 0d |  | Pomorski | 16KE73 | Elektryc | Budowa | Roboty | Micha³ | Automaty | PM000 | Zespó³-W | Blok | Wysoki | Pakiet | L2 |  |  |
| 16KE73-085 |  | Uk³adanie kabli – trasa 12 |  | 17d | 2026-09-18 A | 2026-10-21 | 16KE73-014 SS+10d | 30% | 11.9d | 2026-09-17 | 2026-10-09 | 399.6d | 0d |  | Pomorski | 16KE73 | Elektryc | Budowa | Roboty | Micha³ | Automaty | PM000 | Zespó³-K | Blok | Normalny | Pakiet | L2 |  |  |
| 16KE73-097 |  | Uk³adanie kabli – trasa 14 |  | 9d | 2026-09-18 A | 2026-09-29 A | 16KE73-014 SS+10d | 100% |  | 2026-09-17 | 2026-09-29 |  |  |  | Pomorski | 16KE73 | Elektryc | Budowa | Roboty | Micha³ | Automaty | PM000 | Zespó³-W | Blok | Normalny | Pakiet | L2 |  | Czeka na dostawê |
| 16KE73-109 |  | Uk³adanie kabli – trasa 16 |  | 13d | 2026-09-18 A | 2026-10-06 A | 16KE73-014 SS+10d | 100% |  | 2026-09-17 | 2026-10-05 |  |  |  | Pomorski | 16KE73 | Elektryc | Budowa | Roboty | Micha³ | Automaty | PM000 | Zespó³-K | Blok | Normalny | Pakiet | L2 |  |  |
| 16KE73-133 |  | Uk³adanie kabli – trasa 20 |  | 9d | 2026-09-21 A | 2026-09-29 A | 16KE73-014 SS+10d | 100% |  | 2026-09-17 | 2026-09-29 |  |  |  | Pomorski | 16KE73 | Elektryc | Budowa | Roboty | Micha³ | Automaty | PM000 | Zespó³-W | Blok | Niski | Pakiet | L2 |  |  |
| 16KE73-025 |  | Uk³adanie kabli – trasa 02 |  | 10d | 2026-09-22 A | 2026-10-05 A | 16KE73-014 SS+10d | 100% |  | 2026-09-17 | 2026-09-30 |  |  |  | Pomorski | 16KE73 | Elektryc | Budowa | Roboty | Micha³ | Automaty | PM000 | Zespó³-W | Blok | Normalny | Pakiet | L2 | Rev B |  |
| 16KE73-098 |  | Pod³¹czenia i pomiary – trasa 14 |  | 6d | 2026-09-22 A | 2026-10-02 A | 16KE73-097 FF | 100% |  | 2026-09-22 | 2026-09-29 |  |  |  | Pomorski | 16KE73 | Elektryc | Budowa | Roboty | Micha³ | Automaty | PM000 | Zespó³-W | Blok | Normalny | Pakiet | L2 | Rev A |  |
| 16KE73-134 |  | Pod³¹czenia i pomiary – trasa 20 |  | 6d | 2026-09-25 A | 2026-10-02 A | 16KE73-133 FF | 100% |  | 2026-09-22 | 2026-09-29 |  |  |  | Pomorski | 16KE73 | Elektryc | Budowa | Roboty | Micha³ | Automaty | PM000 | Zespó³-W | Blok | Krytyczn | Pakiet | L2 | Rev A |  |
| 16KE73-062 |  | Pod³¹czenia i pomiary – trasa 08 |  | 9d | 2026-09-28 A | 2026-10-07 | 16KE73-061 FF | 79% | 1.9d | 2026-09-24 | 2026-10-06 | 401.6d | 0d | Kalendarz 6-dniowy | Pomorski | 16KE73 | Elektryc | Budowa | Roboty | Micha³ | Automaty | PM200 | Zespó³-I | Blok | Normalny | Pakiet | L2 |  |  |
| 16KE73-110 |  | Pod³¹czenia i pomiary – trasa 16 |  | 4d | 2026-09-30 A | 2026-10-06 A | 16KE73-109 FF | 100% |  | 2026-09-30 | 2026-10-05 |  |  |  | Pomorski | 16KE73 | Elektryc | Budowa | Roboty | Micha³ | Automaty | PM000 | Zespó³-W | Blok | Niski | Pakiet | L2 |  |  |
| 16KE73-122 |  | Pod³¹czenia i pomiary – trasa 18 |  | 3d | 2026-10-05 A | 2026-10-06 A | 16KE73-121 FF | 100% |  | 2026-10-01 | 2026-10-05 |  |  |  | Pomorski | 16KE73 | Elektryc | Budowa | Roboty | Micha³ | Automaty | PM000 | Zespó³-W | Blok | Normalny | Pakiet | L2 |  |  |
| 16KE73-086 |  | Pod³¹czenia i pomiary – trasa 12 |  | 7d | 2026-10-06 A | 2026-10-12 | 16KE73-085 FF | 34% | 4.6d | 2026-10-01 | 2026-10-09 | 397.6d | 0d |  | Pomorski | 16KE73 | Elektryc | Budowa | Roboty | Micha³ | Automaty | PM000 | Zespó³-W | Blok | Wysoki | Pakiet | L2 |  |  |
| 16KE73-050 |  | Pod³¹czenia i pomiary – trasa 06 |  | 3d | 2026-10-07 | 2026-10-09 | 16KE73-049 FF |  |  | 2026-10-08 | 2026-10-12 | 400.6d | 0d |  | Pomorski | 16KE73 | Elektryc | Budowa | Roboty | Micha³ | Automaty | PM000 | Zespó³-K | Blok | Normalny | Pakiet | L2 | Rev C |  |
| 16KE73-061 |  | Uk³adanie kabli – trasa 08 |  | 14d | 2026-10-07 | 2026-10-26 | 16KE73-014 SS+10d |  |  | 2026-09-17 | 2026-10-06 | 389.6d | 0d |  | Pomorski | 16KE73 | Elektryc | Budowa | Roboty | Micha³ | Automaty | PM000 | Zespó³-W | Blok | Normalny | Pakiet | L2 | Rev B | Czeka na dostawê |
| 16KE73-074 |  | Pod³¹czenia i pomiary – trasa 10 |  | 5d | 2026-10-07 A | 2026-10-08 | 16KE73-073 FF | 42% | 2.9d | 2026-10-05 | 2026-10-09 | 398.6d | 0d |  | Pomorski | 16KE73 | Elektryc | Budowa | Roboty | Micha³ | Automaty | PM000 | Zespó³-W | Blok | Normalny | Pakiet | L2 |  | Czeka na dostawê |

| ID | WBS | Activity | Type | Duration | Start | Finish | Predecessors | Complete | Remaining | Planned start | Planned finish | Total float | Free float | Calendar | AC_Wykonawca | AC_Obiekt | AC_Dyscyplina | AC_Faza | AC_Zakres | AC_Opiekun | AC_Obszar | AC_PP_PM | AC_Zespol | AC_Blok | AC_Priorytet | AC_Pakiet | AC_Poziom | Uwagi harmonogramisty | Rewizja dokumentu |
| --- | --- | --- | --- | --- | --- | --- | --- | --- | --- | --- | --- | --- | --- | --- | --- | --- | --- | --- | --- | --- | --- | --- | --- | --- | --- | --- | --- | --- | --- |
|  | MONTA¯ | **Monta¿** |  |  | 2026-01-05 | 2026-11-06 |  |  |  |  |  |  |  |  |  |  |  |  |  |  |  |  |  |  |  |  |  |  |  |
| 16KE73-013 |  | Monta¿ konstrukcji stalowych |  | 23d | 2026-01-05 A | 2026-02-05 A | 16KE73-012 | 100% |  | 2026-01-06 | 2026-02-05 |  |  |  | Pomorski | 16KE73 | Mechanic | Budowa | Roboty | Micha³ | Automaty | PM000 | Zespó³-W | Blok | Normalny | Pakiet | L2 |  |  |
| 16KE73-014 |  | Monta¿ urz¹dzeñ g³ównych |  | 51d | 2026-09-04 A | 2026-11-05 | 16KE73-013, 16KE73-011 | 55% | 22.8d | 2026-09-03 | 2026-11-12 | 333.6d | 0d |  | Pomorski | 16KE73 | Mechanic | Budowa | Roboty | Micha³ | Automaty | PM100 | Zespó³-I | Blok | Normalny | Pakiet | L2 | Czeka na dostawê |  |
| 16KE73-141 |  | KM: Zakoñczenie monta¿u – System zabezpieczeñ | milestone | 0d | 2026-11-06 | 2026-11-06 | 16KE73-132, 16KE73-134, 16KE73-139, 16KE73-140, 16KE73-014 |  |  | 2026-11-13 | 2026-11-13 | 338.8d | 0d | Kalendarz 6-dniowy | Pomorski | 16KE73 | Mechanic | Budowa | Kamieñ | Micha³ | Automaty | PM000 | Zespó³-I | Blok | Wysoki | Pakiet | L2 | Czeka na dostawê |  |
|  | ROBOTY BUD | **Roboty budowlane** |  |  | 2025-12-04 | 2026-01-06 |  |  |  |  |  |  |  |  |  |  |  |  |  |  |  |  |  |  |  |  |  |  |  |
| 16KE73-012 |  | Fundamenty i roboty ziemne |  | 23d | 2025-12-04 A | 2026-01-06 A | 16KE73-007 FS+3d | 100% |  | 2025-12-04 | 2026-01-05 |  |  | Kalendarz 6-dniowy | Pomorski | 16KE73 | Budowlan | Budowa | Roboty | Micha³ | Automaty | PM000 | Zespó³-W | Blok | Normalny | Pakiet | L2 |  | Rev C |
|  | RUROCI¥GI | **Ruroci¹gi** |  |  | 2026-01-09 | 2026-12-07 |  |  |  |  |  |  |  |  |  |  |  |  |  |  |  |  |  |  |  |  |  |  |  |
|  | SEKCJA 01 | **Sekcja 01** |  |  | 2026-01-09 | 2026-10-15 |  |  |  |  |  |  |  |  |  |  |  |  |  |  |  |  |  |  |  |  |  |  |  |
| 16KE73-015 |  | Prefabrykacja ruroci¹gów – Sekcja 01 |  | 6.6d | 2026-01-09 A | 2026-01-19 A | 16KE73-012 | 100% |  | 2026-01-06 | 2026-01-13 |  |  |  | Pomorski | 16KE73 | Ruroci¹g | Budowa | Roboty | Micha³ | Automaty | PM000 | Zespó³-K | Blok | Normalny | Pakiet | L2 |  |  |
| 16KE73-016 |  | Monta¿ ruroci¹gów – Sekcja 01 |  | 11.8d | 2026-09-16 A | 2026-10-01 A | 16KE73-015, 16KE73-014 SS+9d | 100% |  | 2026-09-16 | 2026-09-30 |  |  |  | Pomorski | 16KE73 | Ruroci¹g | Budowa | Roboty | Micha³ | Automaty | PM000 | Zespó³-W | Blok | Wysoki | Pakiet | L2 | Uzgodnione na koordynacji |  |
| 16KE73-017 |  | Próba ciœnieniowa – Sekcja 01 |  | 2d | 2026-10-01 A | 2026-10-02 A | 16KE73-016 | 100% |  |  |  |  |  |  | Pomorski | 16KE73 | Ruroci¹g | Budowa | Roboty | Micha³ | Automaty | PM000 | Zespó³-K | Blok | Normalny | Pakiet | L2 | Bez uwag |  |
| 16KE73-018 |  | Izolacje – Sekcja 01 |  | 9d | 2026-10-07 A | 2026-10-13 | 16KE73-017 | 44% | 5d | 2026-10-05 | 2026-10-15 | 350.6d | 0d |  | Pomorski | 16KE73 | Ruroci¹g | Budowa | Roboty | Micha³ | Automaty | PM000 | Zespó³-W | Blok | Wysoki | Pakiet | L2 |  | Rev B |
| 16KE73-019 |  | Malowanie i oznakowanie – Sekcja 01 |  | 3d | 2026-10-13 | 2026-10-15 | 16KE73-018 FF+2d |  |  | 2026-10-15 | 2026-10-19 | 354.6d | 0d |  | Pomorski | 16KE73 | Ruroci¹g | Budowa | Roboty | Micha³ | Automaty | PM000 | Zespó³-K | Blok | Normalny | Pakiet | L2 |  | Rev C |
|  | SEKCJA 02 | **Sekcja 02** |  |  | 2026-01-16 | 2026-11-19 |  |  |  |  |  |  |  |  |  |  |  |  |  |  |  |  |  |  |  |  |  |  |  |
| 16KE73-020 |  | Prefabrykacja ruroci¹gów – Sekcja 02 |  | 6.9d | 2026-01-16 A | 2026-01-26 A | 16KE73-012, 16KE73-015 SS+5d | 100% |  | 2026-01-13 | 2026-01-20 |  |  |  | Pomorski | 16KE73 | Ruroci¹g | Budowa | Roboty | Micha³ | Automaty | PM000 | Zespó³-W | Blok | Wysoki | Pakiet | L2 | Czeka na dostawê |  |
| 16KE73-021 |  | Monta¿ ruroci¹gów – Sekcja 02 |  | 21.7d | 2026-09-17 A | 2026-10-20 | 16KE73-020, 16KE73-014 SS+6d | 53% | 10.3d | 2026-09-11 | 2026-10-09 | 340.9d | 0d |  | Pomorski | 16KE73 | Ruroci¹g | Budowa | Roboty | Micha³ | Automaty | PM000 | Zespó³-W | Blok | Normalny | Pakiet | L2 | Czeka na dostawê | Rev C |
| 16KE73-022 |  | Próba ciœnieniowa – Sekcja 02 |  | 2d | 2026-10-21 | 2026-10-22 | 16KE73-021 |  |  | 2026-10-12 | 2026-10-13 | 338.3d | 0d |  | Pomorski | 16KE73 | Ruroci¹g | Budowa | Roboty | Micha³ | Automaty | PM000 | Zespó³-K | Blok | Normalny | Pakiet | L2 |  |  |
| 16KE73-023 |  | Izolacje – Sekcja 02 |  | 9d | 2026-11-05 | 2026-11-17 | 16KE73-022 |  |  | 2026-10-14 | 2026-10-26 | 329.6d | 0d |  | Pomorski | 16KE73 | Ruroci¹g | Budowa | Roboty | Micha³ | Automaty | PM000 | Zespó³-E | Blok | Niski | Pakiet | L2 |  |  |
| 16KE73-024 |  | Malowanie i oznakowanie – Sekcja 02 |  | 8d | 2026-11-10 | 2026-11-19 | 16KE73-023 FF+2d |  |  | 2026-10-19 | 2026-10-28 | 329.6d | 0d | Kalendarz 6-dniowy | Pomorski | 16KE73 | Ruroci¹g | Budowa | Roboty | Micha³ | Automaty | PM000 | Zespó³-W | Blok | Wysoki | Pakiet | L2 |  | Rev A |
|  | SEKCJA 03 | **Sekcja 03** |  |  | 2026-01-20 | 2026-11-09 |  |  |  |  |  |  |  |  |  |  |  |  |  |  |  |  |  |  |  |  |  |  |  |
|  | PODSEKCJA | **Podsekcja 03.A** |  |  | 2026-01-20 | 2026-11-09 |  |  |  |  |  |  |  |  |  |  |  |  |  |  |  |  |  |  |  |  |  |  |  |
| 16KE73-027 |  | Prefabrykacja ruroci¹gów – Sekcja 03 |  | 3.7d | 2026-01-20 A | 2026-01-22 A | 16KE73-012, 16KE73-020 SS+5d | 100% |  |  |  |  |  |  | Pomorski | 16KE73 | Ruroci¹g | Budowa | Roboty | Micha³ | Automaty | PM000 | Zespó³-W | Blok | Normalny | Pakiet | L2 | Bez uwag |  |
| 16KE73-028 |  | Monta¿ ruroci¹gów – Sekcja 03 |  | 21.8d | 2026-09-17 A | 2026-10-14 | 16KE73-027, 16KE73-014 SS+6d | 70% | 6.5d | 2026-09-11 | 2026-10-09 | 384.8d | 0d |  | Pomorski | 16KE73 | Ruroci¹g | Budowa | Roboty | Micha³ | Automaty | PM000 | Zespó³-I | Blok | Niski | Pakiet | L2 |  | Rev B |
| 16KE73-029 |  | Próba ciœnieniowa – Sekcja 03 |  | 5d | 2026-10-15 | 2026-10-21 | 16KE73-028 |  |  | 2026-10-12 | 2026-10-16 | 386.1d | 0d |  | Pomorski | 16KE73 | Ruroci¹g | Budowa | Roboty | Micha³ | Automaty | PM000 | Zespó³-W | Blok | Normalny | Pakiet | L2 | Czeka na dostawê | Rev C |
| 16KE73-030 |  | Izolacje – Sekcja 03 |  | 4d | 2026-10-22 | 2026-10-27 | 16KE73-029 |  |  | 2026-10-19 | 2026-10-22 | 386.1d | 0d |  | Pomorski | 16KE73 | Ruroci¹g | Budowa | Roboty | Micha³ | Automaty | PM000 | Zespó³-W | Blok | Normalny | Pakiet | L2 |  | Rev C |
| 16KE73-031 |  | Malowanie i oznakowanie – Sekcja 03 |  | 6d | 2026-11-02 | 2026-11-09 | 16KE73-030 FF+2d |  |  | 2026-10-19 | 2026-10-26 | 379.6d | 0d |  | Pomorski | 16KE73 | Ruroci¹g | Budowa | Roboty | Micha³ | Automaty | PM000 | Zespó³-K | Blok | Wysoki | Pakiet | L2 | Do weryfikacji z wykonawc¹ |  |

| ID | WBS | Activity | Duration | Start | Finish | Predecessors | Complete | Remaining | Planned start | Planned finish | Total float | Free float | Calendar | Uwagi harmonogramisty | Rewizja dokumentu | AC_Wykonawca | AC_Obiekt | AC_Dyscyplina | AC_Faza | AC_Zakres | AC_Opiekun | AC_Obszar | AC_PP_PM | AC_Zespol | AC_Blok | AC_Priorytet | AC_Pakiet | AC_Poziom |
| --- | --- | --- | --- | --- | --- | --- | --- | --- | --- | --- | --- | --- | --- | --- | --- | --- | --- | --- | --- | --- | --- | --- | --- | --- | --- | --- | --- | --- |
|  | SEKCJA 04 | **Sekcja 04** |  | 2026-01-27 | 2026-10-13 |  |  |  |  |  |  |  |  |  |  |  |  |  |  |  |  |  |  |  |  |  |  |  |
| 16KE73-032 |  | Prefabrykacja ruroci¹gów – Sekcja 04 | 11.4d | 2026-01-27 A | 2026-02-12 A | 16KE73-012, 16KE73-027 SS+5d | 100% |  | 2026-01-27 | 2026-02-10 |  |  |  | Czeka na dostawê | Rev C | Pomorski | 16KE73 | Ruroci¹g | Budowa | Roboty | Micha³ | Automaty | PM000 | Zespó³-K | Blok | Normalny | Pakiet | L2 |
| 16KE73-033 |  | Monta¿ ruroci¹gów – Sekcja 04 | 6.1d | 2026-09-21 A | 2026-09-28 A | 16KE73-032, 16KE73-014 SS+10d | 100% |  | 2026-09-17 | 2026-09-24 |  |  |  |  | Rev A | Pomorski | 16KE73 | Ruroci¹g | Budowa | Roboty | Micha³ | Automaty | PM000 | Zespó³-W | Blok | Niski | Pakiet | L2 |
| 16KE73-034 |  | Próba ciœnieniowa – Sekcja 04 | 2d | 2026-09-29 A | 2026-10-02 A | 16KE73-033 | 100% |  | 2026-09-25 | 2026-09-28 |  |  |  |  |  | Pomorski | 16KE73 | Ruroci¹g | Budowa | Roboty | Micha³ | Automaty | PM000 | Zespó³-K | Blok | Normalny | Pakiet | L2 |
| 16KE73-035 |  | Izolacje – Sekcja 04 | 10d | 2026-09-30 A | 2026-10-09 | 16KE73-034 | 68% | 3.2d | 2026-09-29 | 2026-10-12 | 396.5d | 0d |  |  | Rev A | Pomorski | 16KE73 | Ruroci¹g | Budowa | Roboty | Micha³ | Automaty | PM000 | Zespó³-E | Blok | Normalny | Pakiet | L2 |
| 16KE73-036 |  | Malowanie i oznakowanie – Sekcja 04 | 3d | 2026-10-09 | 2026-10-13 | 16KE73-035 FF+2d |  |  | 2026-10-12 | 2026-10-14 | 398.4d | 0d |  |  | Rev A | Pomorski | 16KE73 | Ruroci¹g | Budowa | Roboty | Micha³ | Automaty | PM000 | Zespó³-W | Blok | Normalny | Pakiet | L2 |
|  | SEKCJA 05 | **Sekcja 05** |  | 2026-02-04 | 2026-10-26 |  |  |  |  |  |  |  |  |  |  |  |  |  |  |  |  |  |  |  |  |  |  |  |
| 16KE73-039 |  | Prefabrykacja ruroci¹gów – Sekcja 05 | 8d | 2026-02-04 A | 2026-02-17 A | 16KE73-012, 16KE73-032 SS+5d | 100% |  | 2026-02-03 | 2026-02-12 |  |  |  |  |  | Pomorski | 16KE73 | Ruroci¹g | Budowa | Roboty | Micha³ | Automaty | PM000 | Zespó³-W | Blok | Normalny | Pakiet | L2 |
| 16KE73-040 |  | Monta¿ ruroci¹gów – Sekcja 05 | 20.1d | 2026-09-07 A | 2026-10-26 | 16KE73-039, 16KE73-014 SS+2d | 26% | 14.9d | 2026-09-07 | 2026-10-02 | 392.5d | 0d |  |  |  | Pomorski | 16KE73 | Ruroci¹g | Budowa | Roboty | Micha³ | Automaty | PM000 | Zespó³-E | Blok | Normalny | Pakiet | L2 |
| 16KE73-041 |  | Próba ciœnieniowa – Sekcja 05 | 4d | 2026-10-06 A | 2026-10-09 | 16KE73-040 | 15% | 3.4d | 2026-10-05 | 2026-10-08 | 391.5d | 0d | Kalendarz 6-dniowy |  | Rev C | Pomorski | 16KE73 | Ruroci¹g | Budowa | Roboty | Micha³ | Automaty | PM000 | Zespó³-W | Blok | Wysoki | Pakiet | L2 |
| 16KE73-042 |  | Izolacje – Sekcja 05 | 7d | 2026-10-12 | 2026-10-20 | 16KE73-041 |  |  | 2026-10-09 | 2026-10-19 | 391.2d | 0d |  |  |  | Pomorski | 16KE73 | Ruroci¹g | Budowa | Roboty | Micha³ | Automaty | PM000 | Zespó³-K | Blok | Normalny | Pakiet | L2 |
| 16KE73-043 |  | Malowanie i oznakowanie – Sekcja 05 | 2d | 2026-10-21 | 2026-10-22 | 16KE73-042 FF+2d |  |  | 2026-10-20 | 2026-10-21 | 391.2d | 0d |  |  |  | Pomorski | 16KE73 | Ruroci¹g | Budowa | Roboty | Micha³ | Automaty | PM000 | Zespó³-K | Blok | Normalny | Pakiet | L2 |
|  | SEKCJA 06 | **Sekcja 06** |  | 2026-02-12 | 2026-10-06 |  |  |  |  |  |  |  |  |  |  |  |  |  |  |  |  |  |  |  |  |  |  |  |
|  | PODSEKCJA | **Podsekcja 06.A** |  | 2026-02-12 | 2026-10-06 |  |  |  |  |  |  |  |  |  |  |  |  |  |  |  |  |  |  |  |  |  |  |  |
| 16KE73-044 |  | Prefabrykacja ruroci¹gów – Sekcja 06 | 13.1d | 2026-02-12 A | 2026-03-02 A | 16KE73-012, 16KE73-039 SS+5d | 100% |  | 2026-02-10 | 2026-02-26 |  |  |  | Czeka na dostawê |  | Pomorski | 16KE73 | Ruroci¹g | Budowa | Roboty | Micha³ | Automaty | PM000 | Zespó³-W | Blok | Normalny | Pakiet | L2 |
| 16KE73-045 |  | Monta¿ ruroci¹gów – Sekcja 06 | 10d | 2026-09-07 A | 2026-09-23 A | 16KE73-044, 16KE73-014 SS+3d | 100% |  | 2026-09-08 | 2026-09-21 |  |  |  |  |  | Pomorski | 16KE73 | Ruroci¹g | Budowa | Roboty | Micha³ | Automaty | PM000 | Zespó³-W | Blok | Normalny | Pakiet | L2 |
| 16KE73-046 |  | Próba ciœnieniowa – Sekcja 06 | 3d | 2026-09-24 A | 2026-09-28 A | 16KE73-045 | 100% |  | 2026-09-22 | 2026-09-24 |  |  |  |  |  | Pomorski | 16KE73 | Ruroci¹g | Budowa | Roboty | Micha³ | Automaty | PM000 | Zespó³-W | Blok | Normalny | Pakiet | L2 |
| 16KE73-048 |  | Malowanie i oznakowanie – Sekcja 06 | 8d | 2026-09-25 A | 2026-10-06 A | 16KE73-047 FF+2d | 100% |  | 2026-09-23 | 2026-10-02 |  |  |  |  | Rev A | Pomorski | 16KE73 | Ruroci¹g | Budowa | Roboty | Micha³ | Automaty | PM000 | Zespó³-W | Blok | Normalny | Pakiet | L2 |
| 16KE73-047 |  | Izolacje – Sekcja 06 | 4d | 2026-09-29 A | 2026-10-02 A | 16KE73-046 | 100% |  | 2026-09-25 | 2026-09-30 |  |  |  | Ryzyko opóŸnienia |  | Pomorski | 16KE73 | Ruroci¹g | Budowa | Roboty | Micha³ | Automaty | PM000 | Zespó³-W | Blok | Wysoki | Pakiet | L2 |
|  | SEKCJA 07 | **Sekcja 07** |  | 2026-02-19 | 2026-10-20 |  |  |  |  |  |  |  |  |  |  |  |  |  |  |  |  |  |  |  |  |  |  |  |
| 16KE73-051 |  | Prefabrykacja ruroci¹gów – Sekcja 07 | 10.6d | 2026-02-19 A | 2026-03-09 A | 16KE73-012, 16KE73-044 SS+5d | 100% |  | 2026-02-17 | 2026-03-02 |  |  |  |  |  | Pomorski | 16KE73 | Ruroci¹g | Budowa | Roboty | Micha³ | Automaty | PM000 | Zespó³-W | Blok | Niski | Pakiet | L2 |
| 16KE73-052 |  | Monta¿ ruroci¹gów – Sekcja 07 | 6.4d | 2026-09-09 A | 2026-09-18 A | 16KE73-051, 16KE73-014 SS+5d | 100% |  | 2026-09-10 | 2026-09-17 |  |  |  |  |  | Pomorski | 16KE73 | Ruroci¹g | Budowa | Roboty | Micha³ | Automaty | PM000 | Zespó³-K | Blok | Normalny | Pakiet | L2 |
| 16KE73-053 |  | Próba ciœnieniowa – Sekcja 07 | 4d | 2026-09-23 A | 2026-09-29 A | 16KE73-052 | 100% |  | 2026-09-18 | 2026-09-23 |  |  |  | Ryzyko opóŸnienia | Rev B | Pomorski | 16KE73 | Ruroci¹g | Budowa | Roboty | Micha³ | Automaty | PM000 | Zespó³-W | Blok | Niski | Pakiet | L2 |
| 16KE73-054 |  | Izolacje – Sekcja 07 | 10d | 2026-09-28 A | 2026-10-16 | 16KE73-053 | 19% | 8.1d | 2026-09-24 | 2026-10-07 | 398.2d | 0d |  |  |  | Pomorski | 16KE73 | Ruroci¹g | Budowa | Roboty | Micha³ | Automaty | PM000 | Zespó³-K | Blok | Normalny | Pakiet | L2 |
| 16KE73-055 |  | Malowanie i oznakowanie – Sekcja 07 | 3d | 2026-10-16 | 2026-10-20 | 16KE73-054 FF+2d |  |  | 2026-10-07 | 2026-10-09 | 393.5d | 0d |  |  |  | Pomorski | 16KE73 | Ruroci¹g | Budowa | Roboty | Micha³ | Automaty | PM000 | Zespó³-W | Blok | Normalny | Pakiet | L2 |

| ID | WBS | Activity | Duration | Start | Finish | Predecessors | Complete | Remaining | Planned start | Planned finish | Total float | Free float | Calendar | Uwagi harmonogramisty | AC_Wykonawca | AC_Obiekt | AC_Dyscyplina | AC_Faza | AC_Zakres | AC_Opiekun | AC_Obszar | AC_PP_PM | AC_Zespol | AC_Blok | AC_Priorytet | AC_Pakiet | AC_Poziom | Rewizja dokumentu |
| --- | --- | --- | --- | --- | --- | --- | --- | --- | --- | --- | --- | --- | --- | --- | --- | --- | --- | --- | --- | --- | --- | --- | --- | --- | --- | --- | --- | --- |
|  | SEKCJA 08 | **Sekcja 08** |  | 2026-02-27 | 2026-10-15 |  |  |  |  |  |  |  |  |  |  |  |  |  |  |  |  |  |  |  |  |  |  |  |
| 16KE73-056 |  | Prefabrykacja ruroci¹gów – Sekcja 08 | 5.3d | 2026-02-27 A | 2026-03-10 A | 16KE73-012, 16KE73-051 SS+5d | 100% |  | 2026-02-24 | 2026-03-02 |  |  |  | Bez uwag | Pomorski | 16KE73 | Ruroci¹g | Budowa | Roboty | Micha³ | Automaty | PM000 | Zespó³-K | Blok | Normalny | Pakiet | L2 |  |
| 16KE73-057 |  | Monta¿ ruroci¹gów – Sekcja 08 | 23.4d | 2026-09-02 A | 2026-10-05 A | 16KE73-056, 16KE73-014 SS | 100% |  | 2026-09-03 | 2026-10-05 |  |  |  |  | Pomorski | 16KE73 | Ruroci¹g | Budowa | Roboty | Micha³ | Automaty | PM000 | Zespó³-W | Blok | Normalny | Pakiet | L2 |  |
| 16KE73-058 |  | Próba ciœnieniowa – Sekcja 08 | 6d | 2026-10-07 A | 2026-10-08 | 16KE73-057 | 52% | 2.9d | 2026-10-06 | 2026-10-13 | 392.6d | 0d |  |  | Pomorski | 16KE73 | Ruroci¹g | Budowa | Roboty | Micha³ | Automaty | PM000 | Zespó³-W | Blok | Wysoki | Pakiet | L2 |  |
| 16KE73-060 |  | Malowanie i oznakowanie – Sekcja 08 | 7d | 2026-10-07 | 2026-10-15 | 16KE73-059 FF+2d |  |  | 2026-10-12 | 2026-10-20 | 395.7d | 0d |  |  | Pomorski | 16KE73 | Ruroci¹g | Budowa | Roboty | Micha³ | Automaty | PM000 | Zespó³-W | Blok | Normalny | Pakiet | L2 |  |
| 16KE73-059 |  | Izolacje – Sekcja 08 | 3d | 2026-10-09 | 2026-10-13 | 16KE73-058 |  |  | 2026-10-14 | 2026-10-16 | 395.7d | 0d |  |  | Pomorski | 16KE73 | Ruroci¹g | Budowa | Roboty | Micha³ | Automaty | PM000 | Zespó³-K | Blok | Normalny | Pakiet | L2 |  |
|  | SEKCJA 09 | **Sekcja 09** |  | 2026-03-05 | 2026-11-04 |  |  |  |  |  |  |  |  |  |  |  |  |  |  |  |  |  |  |  |  |  |  |  |
|  | PODSEKCJA | **Podsekcja 09.A** |  | 2026-03-05 | 2026-11-04 |  |  |  |  |  |  |  |  |  |  |  |  |  |  |  |  |  |  |  |  |  |  |  |
| 16KE73-063 |  | Prefabrykacja ruroci¹gów – Sekcja 09 | 13.7d | 2026-03-05 A | 2026-03-26 A | 16KE73-012, 16KE73-056 SS+5d | 100% |  | 2026-03-03 | 2026-03-19 |  |  |  |  | Pomorski | 16KE73 | Ruroci¹g | Budowa | Roboty | Micha³ | Automaty | PM000 | Zespó³-W | Blok | Wysoki | Pakiet | L2 |  |
| 16KE73-064 |  | Monta¿ ruroci¹gów – Sekcja 09 | 19.6d | 2026-09-23 A | 2026-10-13 | 16KE73-063, 16KE73-014 SS+10d | 70% | 5.9d | 2026-09-17 | 2026-10-13 | 378d | 0d | Kalendarz 6-dniowy |  | Pomorski | 16KE73 | Ruroci¹g | Budowa | Roboty | Micha³ | Automaty | PM000 | Zespó³-W | Blok | Wysoki | Pakiet | L2 |  |
| 16KE73-065 |  | Próba ciœnieniowa – Sekcja 09 | 3d | 2026-10-14 | 2026-10-16 | 16KE73-064 |  |  |  |  | 381.7d | 0d |  |  | Pomorski | 16KE73 | Ruroci¹g | Budowa | Roboty | Micha³ | Automaty | PM000 | Zespó³-W | Blok | Normalny | Pakiet | L2 | Rev A |
| 16KE73-066 |  | Izolacje – Sekcja 09 | 11d | 2026-10-19 | 2026-11-02 | 16KE73-065 |  |  |  |  | 381.7d | 0d |  | Czeka na dostawê | Pomorski | 16KE73 | Ruroci¹g | Budowa | Roboty | Micha³ | Automaty | PM000 | Zespó³-W | Blok | Wysoki | Pakiet | L2 |  |
| 16KE73-067 |  | Malowanie i oznakowanie – Sekcja 09 | 8d | 2026-10-26 | 2026-11-04 | 16KE73-066 FF+2d |  |  |  |  | 381.7d | 0d |  |  | Pomorski | 16KE73 | Ruroci¹g | Budowa | Roboty | Micha³ | Automaty | PM000 | Zespó³-W | Blok | Normalny | Pakiet | L2 |  |
|  | SEKCJA 10 | **Sekcja 10** |  | 2026-03-12 | 2026-12-07 |  |  |  |  |  |  |  |  |  |  |  |  |  |  |  |  |  |  |  |  |  |  |  |
| 16KE73-068 |  | Prefabrykacja ruroci¹gów – Sekcja 10 | 10.2d | 2026-03-12 A | 2026-03-25 A | 16KE73-012, 16KE73-063 SS+5d | 100% |  | 2026-03-10 | 2026-03-23 |  |  |  | Ryzyko opóŸnienia | Pomorski | 16KE73 | Ruroci¹g | Budowa | Roboty | Micha³ | Automaty | PM000 | Zespó³-E | Blok | Normalny | Pakiet | L2 | Rev C |
| 16KE73-069 |  | Monta¿ ruroci¹gów – Sekcja 10 | 17d | 2026-09-04 A | 2026-09-29 A | 16KE73-068, 16KE73-014 SS+1d | 100% |  | 2026-09-04 | 2026-09-28 |  |  |  |  | Pomorski | 16KE73 | Ruroci¹g | Budowa | Roboty | Micha³ | Automaty | PM000 | Zespó³-K | Blok | Normalny | Pakiet | L2 | Rev C |
| 16KE73-070 |  | Próba ciœnieniowa – Sekcja 10 | 5d | 2026-09-28 A | 2026-10-06 A | 16KE73-069 | 100% |  | 2026-09-29 | 2026-10-05 |  |  |  |  | Pomorski | 16KE73 | Ruroci¹g | Budowa | Roboty | Micha³ | Automaty | PM200 | Zespó³-E | Blok | Krytyczn | Pakiet | L2 |  |
| 16KE73-071 |  | Izolacje – Sekcja 10 | 11d | 2026-10-07 A | 2026-10-19 | 16KE73-070 | 13% | 9.6d | 2026-10-06 | 2026-10-20 | 390.6d | 0d |  | Uzgodnione na koordynacji | Pomorski | 16KE73 | Ruroci¹g | Budowa | Roboty | Micha³ | Automaty | PM000 | Zespó³-W | Blok | Normalny | Pakiet | L2 |  |
| 16KE73-072 |  | Malowanie i oznakowanie – Sekcja 10 | 3d | 2026-12-03 | 2026-12-07 | 16KE73-071 FF+2d |  |  | 2026-10-20 | 2026-10-22 | 359.6d | 0d |  |  | Pomorski | 16KE73 | Ruroci¹g | Budowa | Roboty | Micha³ | Automaty | PM100 | Zespó³-I | Blok | Normalny | Pakiet | L2 | Rev B |
|  | SEKCJA 11 | **Sekcja 11** |  | 2026-03-17 | 2026-10-06 |  |  |  |  |  |  |  |  |  |  |  |  |  |  |  |  |  |  |  |  |  |  |  |
| 16KE73-075 |  | Prefabrykacja ruroci¹gów – Sekcja 11 | 14.6d | 2026-03-17 A | 2026-04-06 A | 16KE73-012, 16KE73-068 SS+5d | 100% |  | 2026-03-17 | 2026-04-03 |  |  |  |  | Pomorski | 16KE73 | Ruroci¹g | Budowa | Roboty | Micha³ | Automaty | PM200 | Zespó³-I | Blok | Normalny | Pakiet | L2 |  |
| 16KE73-076 |  | Monta¿ ruroci¹gów – Sekcja 11 | 6.7d | 2026-09-11 A | 2026-09-18 A | 16KE73-075, 16KE73-014 SS+4d | 100% |  | 2026-09-09 | 2026-09-16 |  |  |  |  | Pomorski | 16KE73 | Ruroci¹g | Budowa | Roboty | Micha³ | Automaty | PM000 | Zespó³-K | Blok | Normalny | Pakiet | L2 |  |
| 16KE73-077 |  | Próba ciœnieniowa – Sekcja 11 | 4d | 2026-09-18 A | 2026-09-25 A | 16KE73-076 | 100% |  | 2026-09-17 | 2026-09-22 |  |  | Kalendarz 6-dniowy | Uzgodnione na koordynacji | Pomorski | 16KE73 | Ruroci¹g | Budowa | Roboty | Micha³ | Automaty | PM000 | Zespó³-W | Blok | Normalny | Pakiet | L2 |  |
| 16KE73-078 |  | Izolacje – Sekcja 11 | 7d | 2026-09-23 A | 2026-10-05 A | 16KE73-077 | 100% |  | 2026-09-23 | 2026-10-01 |  |  |  | Uzgodnione na koordynacji | Pomorski | 16KE73 | Ruroci¹g | Budowa | Roboty | Micha³ | Automaty | PM000 | Zespó³-K | Blok | Wysoki | Pakiet | L2 |  |
| 16KE73-079 |  | Malowanie i oznakowanie – Sekcja 11 | 8d | 2026-09-28 A | 2026-10-06 A | 16KE73-078 FF+2d | 100% |  | 2026-09-24 | 2026-10-05 |  |  |  |  | Pomorski | 16KE73 | Ruroci¹g | Budowa | Roboty | Micha³ | Automaty | PM200 | Zespó³-E | Blok | Normalny | Pakiet | L2 | Rev C |

| ID | WBS | Activity | Duration | Start | Finish | Predecessors | Complete | Remaining | Planned start | Planned finish | Total float | Free float | Calendar | Uwagi harmonogramisty | Rewizja dokumentu | AC_Wykonawca | AC_Obiekt | AC_Dyscyplina | AC_Faza | AC_Zakres | AC_Opiekun | AC_Obszar | AC_PP_PM | AC_Zespol | AC_Blok | AC_Priorytet | AC_Pakiet | AC_Poziom |
| --- | --- | --- | --- | --- | --- | --- | --- | --- | --- | --- | --- | --- | --- | --- | --- | --- | --- | --- | --- | --- | --- | --- | --- | --- | --- | --- | --- | --- |
|  | SEKCJA 12 | **Sekcja 12** |  | 2026-03-27 | 2026-10-13 |  |  |  |  |  |  |  |  |  |  |  |  |  |  |  |  |  |  |  |  |  |  |  |
|  | PODSEKCJA | **Podsekcja 12.A** |  | 2026-03-27 | 2026-10-13 |  |  |  |  |  |  |  |  |  |  |  |  |  |  |  |  |  |  |  |  |  |  |  |
| 16KE73-080 |  | Prefabrykacja ruroci¹gów – Sekcja 12 | 7.5d | 2026-03-27 A | 2026-04-09 A | 16KE73-012, 16KE73-075 SS+5d | 100% |  | 2026-03-24 | 2026-04-01 |  |  |  | Do weryfikacji z wykonawc¹ | Rev B | Pomorski | 16KE73 | Ruroci¹g | Budowa | Roboty | Micha³ | Automaty | PM000 | Zespó³-K | Blok | Normalny | Pakiet | L2 |
| 16KE73-081 |  | Monta¿ ruroci¹gów – Sekcja 12 | 9.6d | 2026-09-09 A | 2026-09-22 A | 16KE73-080, 16KE73-014 SS+2d | 100% |  | 2026-09-07 | 2026-09-17 |  |  |  |  |  | Pomorski | 16KE73 | Ruroci¹g | Budowa | Roboty | Micha³ | Automaty | PM000 | Zespó³-W | Blok | Normalny | Pakiet | L2 |
| 16KE73-082 |  | Próba ciœnieniowa – Sekcja 12 | 4d | 2026-09-23 A | 2026-09-29 A | 16KE73-081 | 100% |  | 2026-09-18 | 2026-09-23 |  |  |  |  | Rev A | Pomorski | 16KE73 | Ruroci¹g | Budowa | Roboty | Micha³ | Automaty | PM000 | Zespó³-K | Blok | Normalny | Pakiet | L2 |
| 16KE73-083 |  | Izolacje – Sekcja 12 | 7d | 2026-09-30 A | 2026-10-13 | 16KE73-082 | 16% | 5.9d | 2026-09-24 | 2026-10-02 | 399d | 0d |  |  |  | Pomorski | 16KE73 | Ruroci¹g | Budowa | Roboty | Micha³ | Automaty | PM000 | Zespó³-K | Blok | Wysoki | Pakiet | L2 |
| 16KE73-084 |  | Malowanie i oznakowanie – Sekcja 12 | 6d | 2026-09-30 A | 2026-10-08 | 16KE73-083 FF+2d | 58% | 2.5d | 2026-09-29 | 2026-10-06 | 402d | 0d |  |  |  | Pomorski | 16KE73 | Ruroci¹g | Budowa | Roboty | Micha³ | Automaty | PM000 | Zespó³-K | Blok | Normalny | Pakiet | L2 |
|  | SEKCJA 13 | **Sekcja 13** |  | 2026-03-30 | 2026-10-20 |  |  |  |  |  |  |  |  |  |  |  |  |  |  |  |  |  |  |  |  |  |  |  |
| 16KE73-087 |  | Prefabrykacja ruroci¹gów – Sekcja 13 | 14.8d | 2026-03-30 A | 2026-04-20 A | 16KE73-012, 16KE73-080 SS+5d | 100% |  | 2026-03-31 | 2026-04-17 |  |  |  |  |  | Pomorski | 16KE73 | Ruroci¹g | Budowa | Roboty | Micha³ | Automaty | PM000 | Zespó³-K | Blok | Normalny | Pakiet | L2 |
| 16KE73-088 |  | Monta¿ ruroci¹gów – Sekcja 13 | 10.9d | 2026-09-15 A | 2026-09-29 A | 16KE73-087, 16KE73-014 SS+8d | 100% |  | 2026-09-15 | 2026-09-28 |  |  |  |  |  | Pomorski | 16KE73 | Ruroci¹g | Budowa | Roboty | Micha³ | Automaty | PM000 | Zespó³-W | Blok | Normalny | Pakiet | L2 |
| 16KE73-089 |  | Próba ciœnieniowa – Sekcja 13 | 5d | 2026-09-28 A | 2026-10-05 A | 16KE73-088 | 100% |  | 2026-09-29 | 2026-10-05 |  |  |  |  |  | Pomorski | 16KE73 | Ruroci¹g | Budowa | Roboty | Micha³ | Automaty | PM100 | Zespó³-I | Blok | Normalny | Pakiet | L2 |
| 16KE73-090 |  | Izolacje – Sekcja 13 | 12d | 2026-10-07 A | 2026-10-16 | 16KE73-089 | 28% | 8.7d | 2026-10-06 | 2026-10-21 | 389.6d | 0d |  | Bez uwag |  | Pomorski | 16KE73 | Ruroci¹g | Budowa | Roboty | Micha³ | Automaty | PM000 | Zespó³-W | Blok | Wysoki | Pakiet | L2 |
| 16KE73-091 |  | Malowanie i oznakowanie – Sekcja 13 | 7d | 2026-10-12 | 2026-10-20 | 16KE73-090 FF+2d |  |  | 2026-10-15 | 2026-10-23 | 392.9d | 0d | Kalendarz 6-dniowy |  |  | Pomorski | 16KE73 | Ruroci¹g | Budowa | Roboty | Micha³ | Automaty | PM000 | Zespó³-K | Blok | Krytyczn | Pakiet | L2 |
|  | SEKCJA 14 | **Sekcja 14** |  | 2026-04-06 | 2026-10-15 |  |  |  |  |  |  |  |  |  |  |  |  |  |  |  |  |  |  |  |  |  |  |  |
| 16KE73-092 |  | Prefabrykacja ruroci¹gów – Sekcja 14 | 10.4d | 2026-04-06 A | 2026-04-20 A | 16KE73-012, 16KE73-087 SS+5d | 100% |  | 2026-04-07 | 2026-04-20 |  |  |  |  |  | Pomorski | 16KE73 | Ruroci¹g | Budowa | Roboty | Micha³ | Automaty | PM000 | Zespó³-K | Blok | Krytyczn | Pakiet | L2 |
| 16KE73-093 |  | Monta¿ ruroci¹gów – Sekcja 14 | 15.9d | 2026-09-04 A | 2026-09-29 A | 16KE73-092, 16KE73-014 SS+1d | 100% |  | 2026-09-04 | 2026-09-24 |  |  |  |  |  | Pomorski | 16KE73 | Ruroci¹g | Budowa | Roboty | Micha³ | Automaty | PM000 | Zespó³-W | Blok | Normalny | Pakiet | L2 |
| 16KE73-094 |  | Próba ciœnieniowa – Sekcja 14 | 3d | 2026-09-29 A | 2026-10-01 A | 16KE73-093 | 100% |  | 2026-09-25 | 2026-09-29 |  |  |  |  | Rev C | Pomorski | 16KE73 | Ruroci¹g | Budowa | Roboty | Micha³ | Automaty | PM000 | Zespó³-W | Blok | Normalny | Pakiet | L2 |
| 16KE73-095 |  | Izolacje – Sekcja 14 | 12d | 2026-10-06 A | 2026-10-13 | 16KE73-094 | 51% | 5.9d | 2026-09-30 | 2026-10-15 | 389.7d | 0d |  |  | Rev A | Pomorski | 16KE73 | Ruroci¹g | Budowa | Roboty | Micha³ | Automaty | PM000 | Zespó³-W | Blok | Wysoki | Pakiet | L2 |
| 16KE73-096 |  | Malowanie i oznakowanie – Sekcja 14 | 7d | 2026-10-07 | 2026-10-15 | 16KE73-095 FF+2d |  |  | 2026-10-09 | 2026-10-19 | 395.7d | 0d |  |  | Rev A | Pomorski | 16KE73 | Ruroci¹g | Budowa | Roboty | Micha³ | Automaty | PM000 | Zespó³-K | Blok | Niski | Pakiet | L2 |
|  | SEKCJA 15 | **Sekcja 15** |  | 2026-04-16 | 2026-10-22 |  |  |  |  |  |  |  |  |  |  |  |  |  |  |  |  |  |  |  |  |  |  |  |
|  | PODSEKCJA | **Podsekcja 15.A** |  | 2026-04-16 | 2026-10-22 |  |  |  |  |  |  |  |  |  |  |  |  |  |  |  |  |  |  |  |  |  |  |  |
| 16KE73-099 |  | Prefabrykacja ruroci¹gów – Sekcja 15 | 12.7d | 2026-04-16 A | 2026-05-06 A | 16KE73-012, 16KE73-092 SS+5d | 100% |  | 2026-04-14 | 2026-04-29 |  |  | Kalendarz 6-dniowy |  | Rev B | Pomorski | 16KE73 | Ruroci¹g | Budowa | Roboty | Micha³ | Automaty | PM000 | Zespó³-K | Blok | Normalny | Pakiet | L2 |
| 16KE73-100 |  | Monta¿ ruroci¹gów – Sekcja 15 | 19.8d | 2026-09-07 A | 2026-10-02 A | 16KE73-099, 16KE73-014 SS+2d | 100% |  | 2026-09-07 | 2026-10-01 |  |  |  |  |  | Pomorski | 16KE73 | Ruroci¹g | Budowa | Roboty | Micha³ | Automaty | PM000 | Zespó³-W | Blok | Normalny | Pakiet | L2 |
| 16KE73-101 |  | Próba ciœnieniowa – Sekcja 15 | 3d | 2026-10-02 A | 2026-10-08 | 16KE73-100 | 33% | 2d | 2026-10-02 | 2026-10-06 | 392.8d | 0d |  |  |  | Pomorski | 16KE73 | Ruroci¹g | Budowa | Roboty | Micha³ | Automaty | PM000 | Zespó³-K | Blok | Normalny | Pakiet | L2 |
| 16KE73-102 |  | Izolacje – Sekcja 15 | 8d | 2026-10-09 | 2026-10-20 | 16KE73-101 |  |  | 2026-10-07 | 2026-10-16 | 391.6d | 0d |  |  | Rev C | Pomorski | 16KE73 | Ruroci¹g | Budowa | Roboty | Micha³ | Automaty | PM000 | Zespó³-K | Blok | Niski | Pakiet | L2 |
| 16KE73-103 |  | Malowanie i oznakowanie – Sekcja 15 | 8d | 2026-10-13 | 2026-10-22 | 16KE73-102 FF+2d |  |  | 2026-10-09 | 2026-10-20 | 391.6d | 0d |  |  |  | Pomorski | 16KE73 | Ruroci¹g | Budowa | Roboty | Micha³ | Automaty | PM000 | Zespó³-K | Blok | Normalny | Pakiet | L2 |

| ID | WBS | Activity | Duration | Start | Finish | Predecessors | Complete | Remaining | Planned start | Planned finish | Total float | Free float | Calendar | Rewizja dokumentu | AC_Wykonawca | AC_Obiekt | AC_Dyscyplina | AC_Faza | AC_Zakres | AC_Opiekun | AC_Obszar | AC_PP_PM | AC_Zespol | AC_Blok | AC_Priorytet | AC_Pakiet | AC_Poziom | Uwagi harmonogramisty |
| --- | --- | --- | --- | --- | --- | --- | --- | --- | --- | --- | --- | --- | --- | --- | --- | --- | --- | --- | --- | --- | --- | --- | --- | --- | --- | --- | --- | --- |
|  | SEKCJA 16 | **Sekcja 16** |  | 2026-04-21 | 2026-10-16 |  |  |  |  |  |  |  |  |  |  |  |  |  |  |  |  |  |  |  |  |  |  |  |
| 16KE73-104 |  | Prefabrykacja ruroci¹gów – Sekcja 16 | 5.8d | 2026-04-21 A | 2026-04-29 A | 16KE73-012, 16KE73-099 SS+5d | 100% |  | 2026-04-21 | 2026-04-27 |  |  |  | Rev C | Pomorski | 16KE73 | Ruroci¹g | Budowa | Roboty | Micha³ | Automaty | PM000 | Zespó³-W | Blok | Normalny | Pakiet | L2 |  |
| 16KE73-105 |  | Monta¿ ruroci¹gów – Sekcja 16 | 12.5d | 2026-09-10 A | 2026-09-30 A | 16KE73-104, 16KE73-014 SS+4d | 100% |  | 2026-09-09 | 2026-09-24 |  |  |  |  | Pomorski | 16KE73 | Ruroci¹g | Budowa | Roboty | Micha³ | Automaty | PM000 | Zespó³-W | Blok | Normalny | Pakiet | L2 |  |
| 16KE73-106 |  | Próba ciœnieniowa – Sekcja 16 | 4d | 2026-09-28 A | 2026-09-29 A | 16KE73-105 | 100% |  | 2026-09-25 | 2026-09-30 |  |  |  | Rev A | Pomorski | 16KE73 | Ruroci¹g | Budowa | Roboty | Micha³ | Automaty | PM000 | Zespó³-W | Blok | Krytyczn | Pakiet | L2 |  |
| 16KE73-107 |  | Izolacje – Sekcja 16 | 11d | 2026-10-05 A | 2026-10-14 | 16KE73-106 | 37% | 6.9d | 2026-10-01 | 2026-10-15 | 392.1d | 0d |  |  | Pomorski | 16KE73 | Ruroci¹g | Budowa | Roboty | Micha³ | Automaty | PM000 | Zespó³-K | Blok | Normalny | Pakiet | L2 | Bez uwag |
| 16KE73-108 |  | Malowanie i oznakowanie – Sekcja 16 | 5d | 2026-10-12 | 2026-10-16 | 16KE73-107 FF+2d |  |  | 2026-10-13 | 2026-10-19 | 394.7d | 0d |  |  | Pomorski | 16KE73 | Ruroci¹g | Budowa | Roboty | Micha³ | Automaty | PM000 | Zespó³-W | Blok | Niski | Pakiet | L2 |  |
|  | SEKCJA 17 | **Sekcja 17** |  | 2026-04-29 | 2026-10-19 |  |  |  |  |  |  |  |  |  |  |  |  |  |  |  |  |  |  |  |  |  |  |  |
| 16KE73-111 |  | Prefabrykacja ruroci¹gów – Sekcja 17 | 12.9d | 2026-04-29 A | 2026-05-15 A | 16KE73-012, 16KE73-104 SS+5d | 100% |  | 2026-04-28 | 2026-05-13 |  |  |  |  | Pomorski | 16KE73 | Ruroci¹g | Budowa | Roboty | Micha³ | Automaty | PM000 | Zespó³-K | Blok | Normalny | Pakiet | L2 |  |
| 16KE73-112 |  | Monta¿ ruroci¹gów – Sekcja 17 | 7.5d | 2026-09-10 A | 2026-09-21 A | 16KE73-111, 16KE73-014 SS+5d | 100% |  | 2026-09-10 | 2026-09-18 |  |  |  | Rev C | Pomorski | 16KE73 | Ruroci¹g | Budowa | Roboty | Micha³ | Automaty | PM000 | Zespó³-W | Blok | Normalny | Pakiet | L2 | Czeka na dostawê |
| 16KE73-113 |  | Próba ciœnieniowa – Sekcja 17 | 6d | 2026-09-18 A | 2026-09-28 A | 16KE73-112 | 100% |  | 2026-09-21 | 2026-09-28 |  |  |  | Rev C | Pomorski | 16KE73 | Ruroci¹g | Budowa | Roboty | Micha³ | Automaty | PM000 | Zespó³-W | Blok | Niski | Pakiet | L2 | Do weryfikacji z wykonawc¹ |
| 16KE73-114 |  | Izolacje – Sekcja 17 | 10d | 2026-10-01 A | 2026-10-15 | 16KE73-113 | 22% | 7.8d | 2026-09-29 | 2026-10-12 | 395.1d | 0d |  |  | Pomorski | 16KE73 | Ruroci¹g | Budowa | Roboty | Micha³ | Automaty | PM000 | Zespó³-W | Blok | Niski | Pakiet | L2 |  |
| 16KE73-115 |  | Malowanie i oznakowanie – Sekcja 17 | 5d | 2026-10-13 | 2026-10-19 | 16KE73-114 FF+2d |  |  | 2026-10-08 | 2026-10-14 | 393.8d | 0d |  | Rev C | Pomorski | 16KE73 | Ruroci¹g | Budowa | Roboty | Micha³ | Automaty | PM000 | Zespó³-W | Blok | Normalny | Pakiet | L2 |  |
|  | SEKCJA 18 | **Sekcja 18** |  | 2026-05-06 | 2026-10-13 |  |  |  |  |  |  |  |  |  |  |  |  |  |  |  |  |  |  |  |  |  |  |  |
|  | PODSEKCJA | **Podsekcja 18.A** |  | 2026-05-06 | 2026-10-13 |  |  |  |  |  |  |  |  |  |  |  |  |  |  |  |  |  |  |  |  |  |  |  |
| 16KE73-116 |  | Prefabrykacja ruroci¹gów – Sekcja 18 | 4.3d | 2026-05-06 A | 2026-05-12 A | 16KE73-012, 16KE73-111 SS+5d | 100% |  | 2026-05-05 | 2026-05-08 |  |  |  |  | Pomorski | 16KE73 | Ruroci¹g | Budowa | Roboty | Micha³ | Automaty | PM000 | Zespó³-K | Blok | Krytyczn | Pakiet | L2 |  |
| 16KE73-117 |  | Monta¿ ruroci¹gów – Sekcja 18 | 13.8d | 2026-09-11 A | 2026-09-29 A | 16KE73-116, 16KE73-014 SS+7d | 100% |  | 2026-09-14 | 2026-09-30 |  |  |  |  | Pomorski | 16KE73 | Ruroci¹g | Budowa | Roboty | Micha³ | Automaty | PM000 | Zespó³-W | Blok | Niski | Pakiet | L2 |  |
| 16KE73-118 |  | Próba ciœnieniowa – Sekcja 18 | 3d | 2026-10-06 A | 2026-10-07 | 16KE73-117 | 37% | 1.9d | 2026-10-01 | 2026-10-05 | 394.8d | 0d |  |  | Pomorski | 16KE73 | Ruroci¹g | Budowa | Roboty | Micha³ | Automaty | PM000 | Zespó³-W | Blok | Normalny | Pakiet | L2 |  |
| 16KE73-119 |  | Izolacje – Sekcja 18 | 4d | 2026-10-06 A | 2026-10-08 | 16KE73-118 | 50% | 2d | 2026-10-06 | 2026-10-09 | 397.8d | 0d | Kalendarz 6-dniowy |  | Pomorski | 16KE73 | Ruroci¹g | Budowa | Roboty | Micha³ | Automaty | PM000 | Zespó³-W | Blok | Normalny | Pakiet | L2 |  |
| 16KE73-120 |  | Malowanie i oznakowanie – Sekcja 18 | 6d | 2026-10-07 A | 2026-10-13 | 16KE73-119 FF+2d | 15% | 5.1d | 2026-10-06 | 2026-10-13 | 397.6d | 0d |  |  | Pomorski | 16KE73 | Ruroci¹g | Budowa | Roboty | Micha³ | Automaty | PM000 | Zespó³-W | Blok | Normalny | Pakiet | L2 |  |
|  | SEKCJA 19 | **Sekcja 19** |  | 2026-05-15 | 2026-10-12 |  |  |  |  |  |  |  |  |  |  |  |  |  |  |  |  |  |  |  |  |  |  |  |
| 16KE73-123 |  | Prefabrykacja ruroci¹gów – Sekcja 19 | 8.1d | 2026-05-15 A | 2026-05-27 A | 16KE73-012, 16KE73-116 SS+5d | 100% |  | 2026-05-12 | 2026-05-21 |  |  |  |  | Pomorski | 16KE73 | Ruroci¹g | Budowa | Roboty | Micha³ | Automaty | PM000 | Zespó³-K | Blok | Normalny | Pakiet | L2 |  |
| 16KE73-124 |  | Monta¿ ruroci¹gów – Sekcja 19 | 17.3d | 2026-09-10 A | 2026-10-05 A | 16KE73-123, 16KE73-014 SS+2d | 100% |  | 2026-09-07 | 2026-09-29 |  |  |  |  | Pomorski | 16KE73 | Ruroci¹g | Budowa | Roboty | Micha³ | Automaty | PM000 | Zespó³-W | Blok | Wysoki | Pakiet | L2 | Bez uwag |
| 16KE73-125 |  | Próba ciœnieniowa – Sekcja 19 | 6d | 2026-10-01 A | 2026-10-07 | 16KE73-124 | 78% | 1.3d | 2026-09-30 | 2026-10-07 | 396.3d | 0d |  |  | Pomorski | 16KE73 | Ruroci¹g | Budowa | Roboty | Micha³ | Automaty | PM000 | Zespó³-K | Blok | Wysoki | Pakiet | L2 |  |
| 16KE73-127 |  | Malowanie i oznakowanie – Sekcja 19 | 7d | 2026-10-07 A | 2026-10-08 | 16KE73-126 FF+2d | 66% | 2.4d | 2026-10-06 | 2026-10-14 | 396.6d | 0d |  |  | Pomorski | 16KE73 | Ruroci¹g | Budowa | Roboty | Micha³ | Automaty | PM000 | Zespó³-K | Blok | Wysoki | Pakiet | L2 |  |
| 16KE73-126 |  | Izolacje – Sekcja 19 | 3d | 2026-10-08 | 2026-10-12 | 16KE73-125 |  |  |  |  | 397.3d | 0d |  | Rev B | Pomorski | 16KE73 | Ruroci¹g | Budowa | Roboty | Micha³ | Automaty | PM000 | Zespó³-W | Blok | Normalny | Pakiet | L2 | Uzgodnione na koordynacji |

| ID | WBS | Activity | Type | Duration | Start | Finish | Predecessors | Complete | Remaining | Actual finish | Planned start | Planned finish | Total float | Free float | Calendar | Uwagi harmonogramisty | AC_Wykonawca | AC_Obiekt | AC_Dyscyplina | AC_Faza | AC_Zakres | AC_Opiekun | AC_Obszar | AC_PP_PM | AC_Zespol | AC_Blok | AC_Priorytet | AC_Pakiet | AC_Poziom | Rewizja dokumentu |
| --- | --- | --- | --- | --- | --- | --- | --- | --- | --- | --- | --- | --- | --- | --- | --- | --- | --- | --- | --- | --- | --- | --- | --- | --- | --- | --- | --- | --- | --- | --- |
|  | SEKCJA 20 | **Sekcja 20** |  |  | 2026-05-19 | 2026-10-21 |  |  |  |  |  |  |  |  |  |  |  |  |  |  |  |  |  |  |  |  |  |  |  |  |
| 16KE73-128 |  | Prefabrykacja ruroci¹gów – Sekcja 20 |  | 11.6d | 2026-05-19 A | 2026-06-02 A | 16KE73-012, 16KE73-123 SS+5d | 100% |  |  |  |  |  |  |  | Bez uwag | Pomorski | 16KE73 | Ruroci¹g | Budowa | Roboty | Micha³ | Automaty | PM000 | Zespó³-W | Blok | Normalny | Pakiet | L2 |  |
| 16KE73-129 |  | Monta¿ ruroci¹gów – Sekcja 20 |  | 15.9d | 2026-09-14 A | 2026-10-05 A | 16KE73-128, 16KE73-014 SS+8d | 100% |  |  | 2026-09-15 | 2026-10-05 |  |  |  |  | Pomorski | 16KE73 | Ruroci¹g | Budowa | Roboty | Micha³ | Automaty | PM000 | Zespó³-K | Blok | Normalny | Pakiet | L2 | Rev B |
| 16KE73-130 |  | Próba ciœnieniowa – Sekcja 20 |  | 4d | 2026-10-07 A | 2026-10-09 | 16KE73-129 | 22% | 3.1d |  | 2026-10-06 | 2026-10-09 | 349.6d | 0d |  | Uzgodnione na koordynacji | Pomorski | 16KE73 | Ruroci¹g | Budowa | Roboty | Micha³ | Automaty | PM000 | Zespó³-K | Blok | Normalny | Pakiet | L2 | Rev B |
| 16KE73-131 |  | Izolacje – Sekcja 20 |  | 6d | 2026-10-12 | 2026-10-19 | 16KE73-130 |  |  |  |  |  | 350.5d | 0d | Kalendarz 6-dniowy |  | Pomorski | 16KE73 | Ruroci¹g | Budowa | Roboty | Micha³ | Automaty | PM000 | Zespó³-W | Blok | Normalny | Pakiet | L2 | Rev B |
| 16KE73-132 |  | Malowanie i oznakowanie – Sekcja 20 |  | 3d | 2026-10-19 | 2026-10-21 | 16KE73-131 FF+2d |  |  |  |  |  | 350.5d | 0d |  |  | Pomorski | 16KE73 | Ruroci¹g | Budowa | Roboty | Micha³ | Automaty | PM000 | Zespó³-W | Blok | Normalny | Pakiet | L2 |  |
|  | SEKCJA 21 | **Sekcja 21** |  |  | 2026-05-25 | 2026-10-15 |  |  |  |  |  |  |  |  |  |  |  |  |  |  |  |  |  |  |  |  |  |  |  |  |
|  | PODSEKCJA | **Podsekcja 21.A** |  |  | 2026-05-25 | 2026-10-15 |  |  |  |  |  |  |  |  |  |  |  |  |  |  |  |  |  |  |  |  |  |  |  |  |
| 16KE73-135 |  | Prefabrykacja ruroci¹gów – Sekcja 21 |  | 12.8d | 2026-05-25 A | 2026-06-12 A | 16KE73-012, 16KE73-128 SS+5d | 100% |  |  | 2026-05-26 | 2026-06-10 |  |  |  |  | Pomorski | 16KE73 | Ruroci¹g | Budowa | Roboty | Micha³ | Automaty | PM000 | Zespó³-K | Blok | Wysoki | Pakiet | L2 |  |
| 16KE73-136 |  | Monta¿ ruroci¹gów – Sekcja 21 |  | 15d | 2026-09-04 A | 2026-09-25 A | 16KE73-135, 16KE73-014 SS+1d | 100% |  |  | 2026-09-04 | 2026-09-24 |  |  |  | Czeka na dostawê | Pomorski | 16KE73 | Ruroci¹g | Budowa | Roboty | Micha³ | Automaty | PM000 | Zespó³-W | Blok | Normalny | Pakiet | L2 |  |
| 16KE73-137 |  | Próba ciœnieniowa – Sekcja 21 |  | 3d | 2026-09-29 A | 2026-09-29 A | 16KE73-136 | 100% |  |  | 2026-09-25 | 2026-09-29 |  |  |  |  | Pomorski | 16KE73 | Ruroci¹g | Budowa | Roboty | Micha³ | Automaty | PM100 | Zespó³-E | Blok | Normalny | Pakiet | L2 |  |
| 16KE73-138 |  | Izolacje – Sekcja 21 |  | 6d | 2026-10-01 A | 2026-10-13 | 16KE73-137 | 13% | 5.2d |  | 2026-09-30 | 2026-10-07 | 357.6d | 0d |  |  | Pomorski | 16KE73 | Ruroci¹g | Budowa | Roboty | Micha³ | Automaty | PM000 | Zespó³-K | Blok | Normalny | Pakiet | L2 |  |
| 16KE73-139 |  | Malowanie i oznakowanie – Sekcja 21 |  | 2d | 2026-10-14 | 2026-10-15 | 16KE73-138 FF+2d |  |  |  | 2026-10-08 | 2026-10-09 | 354.4d | 0d | Kalendarz 6-dniowy | Uzgodnione na koordynacji | Pomorski | 16KE73 | Ruroci¹g | Budowa | Roboty | Micha³ | Automaty | PM000 | Zespó³-W | Blok | Normalny | Pakiet | L2 | Rev B |
|  | PROJ | **Projektowanie** |  |  | 2025-04-09 | 2025-10-02 |  |  |  |  |  |  |  |  |  |  |  |  |  |  |  |  |  |  |  |  |  |  |  |  |
|  | DOKUMENTAC | **Dokumentacja** |  |  | 2025-04-09 | 2025-10-02 |  |  |  |  |  |  |  |  |  |  |  |  |  |  |  |  |  |  |  |  |  |  |  |  |
| 16KE73-001 |  | Projekt wykonawczy – System zabezpieczeñ |  | 105d | 2025-04-09 A | 2025-09-03 A |  | 100% |  |  | 2025-04-09 | 2025-09-02 |  |  |  |  | Pomorski | 16KE73 | Budowlan | Projekto | Projekt | Micha³ | Automaty | PM000 | Zespó³-W | Blok | Normalny | Pakiet | L2 | Rev A |
| 16KE73-002 |  | Uzgodnienie dokumentacji z Inwestorem |  | 11d | 2025-09-05 A | 2025-09-19 A | 16KE73-001 | 100% |  |  | 2025-09-03 | 2025-09-17 |  |  |  |  | Pomorski | 16KE73 | Budowlan | Projekto | Projekt | Micha³ | Automaty | PM000 | Zespó³-W | Blok | Normalny | Pakiet | L2 |  |
| 16KE73-003 |  | Zatwierdzenie dokumentacji do realizacji |  | 7d | 2025-09-17 A | 2025-09-30 A | 16KE73-002 | 100% |  |  | 2025-09-18 | 2025-09-26 |  |  |  |  | Pomorski | 16KE73 | Budowlan | Projekto | Projekt | Micha³ | Automaty | PM000 | Zespó³-W | Blok | Wysoki | Pakiet | L2 | Rev C |
| 16KE73-004 |  | KM: Dokumentacja zatwierdzona – System zabezpieczeñ | milestone | 0d | 2025-10-02 A | 2025-10-02 | 16KE73-003 | 100% |  | 2025-10-01 | 2025-09-29 | 2025-09-29 |  |  |  |  | Pomorski | 16KE73 | Budowlan | Projekto | Kamieñ | Micha³ | Automaty | PM000 | Zespó³-W | Blok | Normalny | Pakiet | L1 | Rev A |
|  | ROZR | **Rozruch** |  |  | 2026-11-20 | 2027-01-05 |  |  |  |  |  |  |  |  |  |  |  |  |  |  |  |  |  |  |  |  |  |  |  |  |
|  | ROZRUCH | **Rozruch** |  |  | 2026-11-20 | 2027-01-05 |  |  |  |  |  |  |  |  |  |  |  |  |  |  |  |  |  |  |  |  |  |  |  |  |
| 16KE73-142 |  | Przegl¹d gotowoœci do rozruchu |  | 6d | 2026-11-20 | 2026-11-27 | 16KE73-141, 16KE73-019, 16KE73-024, 16KE73-026 |  |  |  | 2026-11-13 | 2026-11-20 | 329.6d | 0d |  |  | Pomorski | 16KE73 | Rozruch | Rozruch | Rozruch | Micha³ | Automaty | PM000 | Zespó³-I | Blok | Normalny | Pakiet | L2 | Rev B |
| 16KE73-143 |  | Rozruch na zimno |  | 15d | 2026-11-30 | 2026-12-18 | 16KE73-142 |  |  |  | 2026-11-23 | 2026-12-11 | 329.6d | 0d |  |  | Pomorski | 16KE73 | Rozruch | Rozruch | Rozruch | Micha³ | Automaty | PM000 | Zespó³-W | Blok | Normalny | Pakiet | L2 |  |
| 16KE73-144 |  | Rozruch na gor¹co / próby ruchowe |  | 11d | 2026-12-21 | 2027-01-04 | 16KE73-143 |  |  |  | 2026-12-14 | 2026-12-28 | 329.6d | 0d |  |  | Pomorski | 16KE73 | Rozruch | Rozruch | Rozruch | Micha³ | Automaty | PM000 | Zespó³-W | Blok | Normalny | Pakiet | L2 |  |
| 16KE73-145 |  | KM: Odbiór koñcowy – System zabezpieczeñ | milestone | 0d | 2027-01-05 | 2027-01-05 | 16KE73-144 |  |  |  | 2026-12-29 | 2026-12-29 | 329.6d | 0d |  |  | Pomorski | 16KE73 | Rozruch | Rozruch | Kamieñ | Micha³ | Automaty | PM000 | Zespó³-W | Blok | Wysoki | Pakiet | L1 |  |

| ID | WBS | Activity | Type | Duration | Start | Finish | Predecessors | Complete | Actual finish | Planned start | Planned finish | Total float | Free float | AC_Wykonawca | AC_Obiekt | AC_Dyscyplina | AC_Faza | AC_Zakres | AC_Opiekun | AC_Obszar | AC_PP_PM | AC_Zespol | AC_Blok | AC_Priorytet | AC_Pakiet | AC_Poziom | Uwagi harmonogramisty | Rewizja dokumentu |
| --- | --- | --- | --- | --- | --- | --- | --- | --- | --- | --- | --- | --- | --- | --- | --- | --- | --- | --- | --- | --- | --- | --- | --- | --- | --- | --- | --- | --- |
|  | ZAKU | **Zakupy** |  |  | 2025-05-08 | 2026-09-07 |  |  |  |  |  |  |  |  |  |  |  |  |  |  |  |  |  |  |  |  |  |  |
|  | DOSTAWY | **Dostawy** |  |  | 2025-12-03 | 2026-09-07 |  |  |  |  |  |  |  |  |  |  |  |  |  |  |  |  |  |  |  |  |  |  |
| 16KE73-008 |  | Produkcja u dostawcy |  | 177d | 2025-12-03 A | 2026-08-07 A | 16KE73-007 | 100% |  | 2025-12-01 | 2026-08-04 |  |  | Pomorski | 16KE73 | Mechanic | Zakupy | Dostawa | Micha³ | Automaty | PM000 | Zespó³-W | Blok | Normalny | Pakiet | L2 |  |  |
| 16KE73-009 |  | Testy FAT |  | 3d | 2026-08-06 A | 2026-08-11 A | 16KE73-008 | 100% |  | 2026-08-05 | 2026-08-07 |  |  | Pomorski | 16KE73 | Mechanic | Zakupy | Dostawa | Micha³ | Automaty | PM000 | Zespó³-W | Blok | Wysoki | Pakiet | L2 |  |  |
| 16KE73-010 |  | Transport i dostawa na plac budowy |  | 18d | 2026-08-12 A | 2026-09-04 A | 16KE73-009 | 100% |  | 2026-08-10 | 2026-09-02 |  |  | Pomorski | 16KE73 | Mechanic | Zakupy | Dostawa | Micha³ | Automaty | PM000 | Zespó³-W | Blok | Normalny | Pakiet | L2 |  |  |
| 16KE73-011 |  | KM: Dostawa na budowê – System zabezpieczeñ | milestone | 0d | 2026-09-07 A | 2026-09-07 | 16KE73-010 | 100% | 2026-09-04 | 2026-09-03 | 2026-09-03 |  |  | Pomorski | 16KE73 | Mechanic | Zakupy | Kamieñ | Micha³ | Automaty | PM200 | Zespó³-I | Blok | Normalny | Pakiet | L1 |  |  |
|  | ZAMÓWIENIA | **Zamówienia** |  |  | 2025-05-08 | 2025-12-02 |  |  |  |  |  |  |  |  |  |  |  |  |  |  |  |  |  |  |  |  |  |  |
| 16KE73-005 |  | Zapytanie ofertowe |  | 18d | 2025-05-08 A | 2025-06-04 A | 16KE73-001 SS+20d | 100% |  | 2025-05-07 | 2025-05-30 |  |  | Pomorski | 16KE73 | Mechanic | Zakupy | Dostawa | Micha³ | Automaty | PM000 | Zespó³-K | Blok | Normalny | Pakiet | L2 |  |  |
| 16KE73-006 |  | Analiza i wybór ofert |  | 13d | 2025-05-30 A | 2025-06-20 A | 16KE73-005 | 100% |  | 2025-06-02 | 2025-06-18 |  |  | Pomorski | 16KE73 | Mechanic | Zakupy | Dostawa | Micha³ | Automaty | PM000 | Zespó³-W | Blok | Wysoki | Pakiet | L2 |  |  |
| 16KE73-007 |  | Zawarcie umowy / zamówienie |  | 8d | 2025-11-19 A | 2025-12-02 A | 16KE73-006, 16KE73-004 SS, 14NX42-004 (other project) FS+14d, 11XQ69-004 (other project) SS+14d | 100% |  | 2025-11-19 | 2025-11-28 |  |  | Pomorski | 16KE73 | Mechanic | Zakupy | Dostawa | Micha³ | Automaty | PM000 | Zespó³-W | Blok | Normalny | Pakiet | L1 |  |  |
|  | 21MY97 | **21MY97 – Analizatory spalin (CEMS)** |  |  | 2025-06-25 | 2027-08-30 |  |  |  |  |  |  |  |  |  |  |  |  |  |  |  |  |  |  |  |  |  |  |
|  | BUDO | **Budowa** |  |  | 2026-01-07 | 2027-08-05 |  |  |  |  |  |  |  |  |  |  |  |  |  |  |  |  |  |  |  |  |  |  |
|  | AKPIA | **AKPiA** |  |  | 2027-03-24 | 2027-04-07 |  |  |  |  |  |  |  |  |  |  |  |  |  |  |  |  |  |  |  |  |  |  |
| 21MY97-080 |  | Monta¿ uk³adów AKPiA |  | 11d | 2027-03-24 | 2027-04-07 | 21MY97-014 SS+5d |  |  | 2027-03-26 | 2027-04-09 | 234.6d | 0d | Izoterm | 21MY97 | AKPiA | Budowa | Roboty | Krzyszto | Automaty | PM000 | Zespó³-K | Wspólne | Normalny | Pakiet | L2 | Do weryfikacji z wykonawc¹ | Rev C |
|  | ELEKTRYKA | **Elektryka** |  |  | 2027-03-31 | 2027-04-26 |  |  |  |  |  |  |  |  |  |  |  |  |  |  |  |  |  |  |  |  |  |  |
| 21MY97-025 |  | Uk³adanie kabli – trasa 02 |  | 15d | 2027-03-31 | 2027-04-20 | 21MY97-014 SS+10d |  |  | 2027-04-02 | 2027-04-22 | 225.6d | 0d | Izoterm | 21MY97 | Elektryc | Budowa | Roboty | Krzyszto | Automaty | PM000 | Zespó³-K | Wspólne | Normalny | Pakiet | L2 |  | Rev B |
| 21MY97-037 |  | Uk³adanie kabli – trasa 04 |  | 19d | 2027-03-31 | 2027-04-26 | 21MY97-014 SS+10d |  |  | 2027-04-02 | 2027-04-28 | 259.6d | 0d | Izoterm | 21MY97 | Elektryc | Budowa | Roboty | Krzyszto | Automaty | PM000 | Zespó³-K | Wspólne | Niski | Pakiet | L2 |  |  |
| 21MY97-049 |  | Uk³adanie kabli – trasa 06 |  | 18d | 2027-03-31 | 2027-04-23 | 21MY97-014 SS+10d |  |  | 2027-04-02 | 2027-04-27 | 260.6d | 0d | Izoterm | 21MY97 | Elektryc | Budowa | Roboty | Krzyszto | Automaty | PM000 | Zespó³-W | Wspólne | Normalny | Pakiet | L2 |  |  |
| 21MY97-061 |  | Uk³adanie kabli – trasa 08 |  | 7d | 2027-03-31 | 2027-04-08 | 21MY97-014 SS+10d |  |  | 2027-04-02 | 2027-04-12 | 271.6d | 0d | Izoterm | 21MY97 | Elektryc | Budowa | Roboty | Krzyszto | Automaty | PM000 | Zespó³-I | Wspólne | Normalny | Pakiet | L2 |  | Rev B |
| 21MY97-073 |  | Uk³adanie kabli – trasa 10 |  | 7d | 2027-03-31 | 2027-04-08 | 21MY97-014 SS+10d |  |  | 2027-04-02 | 2027-04-12 | 233.6d | 0d | Izoterm | 21MY97 | Elektryc | Budowa | Roboty | Krzyszto | Automaty | PM000 | Zespó³-W | Wspólne | Normalny | Pakiet | L2 |  |  |
| 21MY97-074 |  | Pod³¹czenia i pomiary – trasa 10 |  | 6d | 2027-04-01 | 2027-04-08 | 21MY97-073 FF |  |  | 2027-04-05 | 2027-04-12 | 233.6d | 0d | Izoterm | 21MY97 | Elektryc | Budowa | Roboty | Krzyszto | Automaty | PM300 | Zespó³-E | Wspólne | Normalny | Pakiet | L2 |  |  |
| 21MY97-062 |  | Pod³¹czenia i pomiary – trasa 08 |  | 4d | 2027-04-05 | 2027-04-08 | 21MY97-061 FF |  |  | 2027-04-07 | 2027-04-12 | 271.6d | 0d | Izoterm | 21MY97 | Elektryc | Budowa | Roboty | Krzyszto | Automaty | PM000 | Zespó³-K | Wspólne | Wysoki | Pakiet | L2 |  |  |
| 21MY97-026 |  | Pod³¹czenia i pomiary – trasa 02 |  | 6d | 2027-04-13 | 2027-04-20 | 21MY97-025 FF |  |  | 2027-04-15 | 2027-04-22 | 225.6d | 0d | Izoterm | 21MY97 | Elektryc | Budowa | Roboty | Krzyszto | Automaty | PM000 | Zespó³-W | Wspólne | Wysoki | Pakiet | L2 |  |  |
| 21MY97-038 |  | Pod³¹czenia i pomiary – trasa 04 |  | 7d | 2027-04-16 | 2027-04-26 | 21MY97-037 FF |  |  | 2027-04-20 | 2027-04-28 | 259.6d | 0d | Izoterm | 21MY97 | Elektryc | Budowa | Roboty | Krzyszto | Automaty | PM000 | Zespó³-K | Wspólne | Normalny | Pakiet | L2 | Bez uwag | Rev A |
| 21MY97-050 |  | Pod³¹czenia i pomiary – trasa 06 |  | 6d | 2027-04-16 | 2027-04-23 | 21MY97-049 FF |  |  | 2027-04-20 | 2027-04-27 | 260.6d | 0d | Izoterm | 21MY97 | Elektryc | Budowa | Roboty | Krzyszto | Automaty | PM000 | Zespó³-K | Wspólne | Normalny | Pakiet | L2 | Do weryfikacji z wykonawc¹ | Rev C |

| ID | WBS | Activity | Type | Duration | Start | Finish | Predecessors | Complete | Planned start | Planned finish | Total float | Free float | Calendar | Rewizja dokumentu | AC_Wykonawca | AC_Obiekt | AC_Dyscyplina | AC_Faza | AC_Zakres | AC_Opiekun | AC_Obszar | AC_PP_PM | AC_Zespol | AC_Blok | AC_Priorytet | AC_Pakiet | AC_Poziom | Uwagi harmonogramisty |
| --- | --- | --- | --- | --- | --- | --- | --- | --- | --- | --- | --- | --- | --- | --- | --- | --- | --- | --- | --- | --- | --- | --- | --- | --- | --- | --- | --- | --- |
|  | MONTA¯ | **Monta¿** |  |  | 2026-02-27 | 2027-05-04 |  |  |  |  |  |  |  |  |  |  |  |  |  |  |  |  |  |  |  |  |  |  |
| 21MY97-013 |  | Monta¿ konstrukcji stalowych |  | 34d | 2026-02-27 A | 2026-04-17 A | 21MY97-012 | 100% | 2026-02-24 | 2026-04-10 |  |  |  | Rev C | Izoterm | 21MY97 | Mechanic | Budowa | Roboty | Krzyszto | Automaty | PM000 | Zespó³-W | Wspólne | Wysoki | Pakiet | L2 |  |
| 21MY97-014 |  | Monta¿ urz¹dzeñ g³ównych |  | 23d | 2027-03-17 | 2027-04-16 | 21MY97-013, 21MY97-011 |  | 2027-03-19 | 2027-04-20 | 215.9d | 0d |  |  | Izoterm | 21MY97 | Mechanic | Budowa | Roboty | Krzyszto | Automaty | PM000 | Zespó³-K | Wspólne | Normalny | Pakiet | L2 |  |
| 21MY97-081 |  | KM: Zakoñczenie monta¿u – Analizatory spalin (CEMS) | milestone | 0d | 2027-05-04 | 2027-05-04 | 21MY97-072, 21MY97-074, 21MY97-079, 21MY97-080, 21MY97-014 |  | 2027-05-06 | 2027-05-06 | 215.9d | 0d |  |  | Izoterm | 21MY97 | Mechanic | Budowa | Kamieñ | Krzyszto | Automaty | PM000 | Zespó³-W | Wspólne | Normalny | Pakiet | L2 | Do weryfikacji z wykonawc¹ |
|  | ROBOTY BUD | **Roboty budowlane** |  |  | 2026-01-07 | 2026-02-27 |  |  |  |  |  |  |  |  |  |  |  |  |  |  |  |  |  |  |  |  |  |  |
| 21MY97-012 |  | Fundamenty i roboty ziemne |  | 36d | 2026-01-07 A | 2026-02-27 A | 21MY97-007 FS+1d | 100% | 2026-01-05 | 2026-02-23 |  |  |  |  | Izoterm | 21MY97 | Budowlan | Budowa | Roboty | Krzyszto | Automaty | PM000 | Zespó³-K | Wspólne | Normalny | Pakiet | L2 | Do weryfikacji z wykonawc¹ |
|  | RUROCI¥GI | **Ruroci¹gi** |  |  | 2026-02-23 | 2027-08-05 |  |  |  |  |  |  |  |  |  |  |  |  |  |  |  |  |  |  |  |  |  |  |
|  | SEKCJA 01 | **Sekcja 01** |  |  | 2026-02-23 | 2027-07-20 |  |  |  |  |  |  |  |  |  |  |  |  |  |  |  |  |  |  |  |  |  |  |
| 21MY97-015 |  | Prefabrykacja ruroci¹gów – Sekcja 01 |  | 8.5d | 2026-02-23 A | 2026-03-06 A | 21MY97-012 | 100% | 2026-02-24 | 2026-03-05 |  |  |  |  | Izoterm | 21MY97 | Ruroci¹g | Budowa | Roboty | Krzyszto | Automaty | PM000 | Zespó³-W | Wspólne | Normalny | Pakiet | L2 |  |
| 21MY97-016 |  | Monta¿ ruroci¹gów – Sekcja 01 |  | 8.4d | 2027-06-21 | 2027-06-30 | 21MY97-015, 21MY97-014 SS+4d |  | 2027-03-25 | 2027-04-05 | 160.2d | 0d |  |  | Izoterm | 21MY97 | Ruroci¹g | Budowa | Roboty | Krzyszto | Automaty | PM200 | Zespó³-E | Wspólne | Normalny | Pakiet | L2 |  |
| 21MY97-017 |  | Próba ciœnieniowa – Sekcja 01 |  | 4d | 2027-07-01 | 2027-07-06 | 21MY97-016 |  | 2027-04-06 | 2027-04-09 | 160.2d | 0d |  | Rev A | Izoterm | 21MY97 | Ruroci¹g | Budowa | Roboty | Krzyszto | Automaty | PM000 | Zespó³-K | Wspólne | Normalny | Pakiet | L2 |  |
| 21MY97-018 |  | Izolacje – Sekcja 01 |  | 8d | 2027-07-07 | 2027-07-16 | 21MY97-017 |  | 2027-04-12 | 2027-04-21 | 160.2d | 0d |  |  | Izoterm | 21MY97 | Ruroci¹g | Budowa | Roboty | Krzyszto | Automaty | PM000 | Zespó³-E | Wspólne | Normalny | Pakiet | L2 |  |
| 21MY97-019 |  | Malowanie i oznakowanie – Sekcja 01 |  | 4d | 2027-07-15 | 2027-07-20 | 21MY97-018 FF+2d |  | 2027-04-20 | 2027-04-23 | 160.2d | 0d |  |  | Izoterm | 21MY97 | Ruroci¹g | Budowa | Roboty | Krzyszto | Automaty | PM000 | Zespó³-W | Wspólne | Wysoki | Pakiet | L2 |  |
|  | SEKCJA 02 | **Sekcja 02** |  |  | 2026-03-04 | 2027-04-29 |  |  |  |  |  |  |  |  |  |  |  |  |  |  |  |  |  |  |  |  |  |  |
| 21MY97-020 |  | Prefabrykacja ruroci¹gów – Sekcja 02 |  | 3.6d | 2026-03-04 A | 2026-03-09 A | 21MY97-012, 21MY97-015 SS+5d | 100% | 2026-03-03 | 2026-03-05 |  |  |  | Rev A | Izoterm | 21MY97 | Ruroci¹g | Budowa | Roboty | Krzyszto | Automaty | PM000 | Zespó³-W | Wspólne | Wysoki | Pakiet | L2 | Uzgodnione na koordynacji |
| 21MY97-021 |  | Monta¿ ruroci¹gów – Sekcja 02 |  | 6.8d | 2027-03-31 | 2027-04-07 | 21MY97-020, 21MY97-014 SS+10d |  | 2027-04-02 | 2027-04-09 | 217.8d | 0d |  |  | Izoterm | 21MY97 | Ruroci¹g | Budowa | Roboty | Krzyszto | Automaty | PM000 | Zespó³-W | Wspólne | Krytyczn | Pakiet | L2 | Czeka na dostawê |
| 21MY97-022 |  | Próba ciœnieniowa – Sekcja 02 |  | 2d | 2027-04-08 | 2027-04-09 | 21MY97-021 |  | 2027-04-12 | 2027-04-13 | 217.8d | 0d |  | Rev C | Izoterm | 21MY97 | Ruroci¹g | Budowa | Roboty | Krzyszto | Automaty | PM000 | Zespó³-W | Wspólne | Normalny | Pakiet | L2 |  |
| 21MY97-023 |  | Izolacje – Sekcja 02 |  | 12d | 2027-04-12 | 2027-04-27 | 21MY97-022 |  | 2027-04-14 | 2027-04-29 | 217.8d | 0d |  |  | Izoterm | 21MY97 | Ruroci¹g | Budowa | Roboty | Krzyszto | Automaty | PM000 | Zespó³-K | Wspólne | Normalny | Pakiet | L2 |  |
| 21MY97-024 |  | Malowanie i oznakowanie – Sekcja 02 |  | 4d | 2027-04-26 | 2027-04-29 | 21MY97-023 FF+2d |  | 2027-04-28 | 2027-05-03 | 217.8d | 0d |  |  | Izoterm | 21MY97 | Ruroci¹g | Budowa | Roboty | Krzyszto | Automaty | PM000 | Zespó³-K | Wspólne | Normalny | Pakiet | L2 |  |
|  | SEKCJA 03 | **Sekcja 03** |  |  | 2026-03-11 | 2027-05-07 |  |  |  |  |  |  |  |  |  |  |  |  |  |  |  |  |  |  |  |  |  |  |
|  | PODSEKCJA | **Podsekcja 03.A** |  |  | 2026-03-11 | 2027-05-07 |  |  |  |  |  |  |  |  |  |  |  |  |  |  |  |  |  |  |  |  |  |  |
| 21MY97-027 |  | Prefabrykacja ruroci¹gów – Sekcja 03 |  | 13.4d | 2026-03-11 A | 2026-04-01 A | 21MY97-012, 21MY97-020 SS+5d | 100% | 2026-03-10 | 2026-03-26 |  |  |  |  | Izoterm | 21MY97 | Ruroci¹g | Budowa | Roboty | Krzyszto | Automaty | PM000 | Zespó³-K | Wspólne | Normalny | Pakiet | L2 |  |
| 21MY97-028 |  | Monta¿ ruroci¹gów – Sekcja 03 |  | 23.8d | 2027-03-24 | 2027-04-23 | 21MY97-027, 21MY97-014 SS+5d |  | 2027-03-26 | 2027-04-27 | 249.8d | 0d |  | Rev C | Izoterm | 21MY97 | Ruroci¹g | Budowa | Roboty | Krzyszto | Automaty | PM000 | Zespó³-K | Wspólne | Normalny | Pakiet | L2 |  |
| 21MY97-029 |  | Próba ciœnieniowa – Sekcja 03 |  | 2d | 2027-04-26 | 2027-04-27 | 21MY97-028 |  | 2027-04-28 | 2027-04-29 | 249.8d | 0d |  |  | Izoterm | 21MY97 | Ruroci¹g | Budowa | Roboty | Krzyszto | Automaty | PM000 | Zespó³-K | Wspólne | Krytyczn | Pakiet | L2 | Bez uwag |
| 21MY97-030 |  | Izolacje – Sekcja 03 |  | 6d | 2027-04-28 | 2027-05-05 | 21MY97-029 |  | 2027-04-30 | 2027-05-07 | 249.8d | 0d | Kalendarz 6-dniowy |  | Izoterm | 21MY97 | Ruroci¹g | Budowa | Roboty | Krzyszto | Automaty | PM000 | Zespó³-W | Wspólne | Normalny | Pakiet | L2 |  |
| 21MY97-031 |  | Malowanie i oznakowanie – Sekcja 03 |  | 8d | 2027-04-28 | 2027-05-07 | 21MY97-030 FF+2d |  | 2027-04-30 | 2027-05-11 | 249.8d | 0d |  |  | Izoterm | 21MY97 | Ruroci¹g | Budowa | Roboty | Krzyszto | Automaty | PM000 | Zespó³-W | Wspólne | Normalny | Pakiet | L2 |  |

| ID | WBS | Activity | Duration | Start | Finish | Predecessors | Complete | Planned start | Planned finish | Total float | Free float | Calendar | Uwagi harmonogramisty | AC_Wykonawca | AC_Obiekt | AC_Dyscyplina | AC_Faza | AC_Zakres | AC_Opiekun | AC_Obszar | AC_PP_PM | AC_Zespol | AC_Blok | AC_Priorytet | AC_Pakiet | AC_Poziom | Rewizja dokumentu |
| --- | --- | --- | --- | --- | --- | --- | --- | --- | --- | --- | --- | --- | --- | --- | --- | --- | --- | --- | --- | --- | --- | --- | --- | --- | --- | --- | --- |
|  | SEKCJA 04 | **Sekcja 04** |  | 2026-03-16 | 2027-04-29 |  |  |  |  |  |  |  |  |  |  |  |  |  |  |  |  |  |  |  |  |  |  |
| 21MY97-032 |  | Prefabrykacja ruroci¹gów – Sekcja 04 | 5.4d | 2026-03-16 A | 2026-03-23 A | 21MY97-012, 21MY97-027 SS+5d | 100% | 2026-03-17 | 2026-03-23 |  |  |  | Ryzyko opóŸnienia | Izoterm | 21MY97 | Ruroci¹g | Budowa | Roboty | Krzyszto | Automaty | PM000 | Zespó³-K | Wspólne | Normalny | Pakiet | L2 |  |
| 21MY97-033 |  | Monta¿ ruroci¹gów – Sekcja 04 | 11.2d | 2027-03-26 | 2027-04-09 | 21MY97-032, 21MY97-014 SS+7d |  | 2027-03-30 | 2027-04-13 | 256.4d | 0d | Kalendarz 6-dniowy | Czeka na dostawê | Izoterm | 21MY97 | Ruroci¹g | Budowa | Roboty | Krzyszto | Automaty | PM000 | Zespó³-W | Wspólne | Krytyczn | Pakiet | L2 | Rev C |
| 21MY97-034 |  | Próba ciœnieniowa – Sekcja 04 | 6d | 2027-04-12 | 2027-04-19 | 21MY97-033 |  | 2027-04-14 | 2027-04-21 | 256.4d | 0d |  | Do weryfikacji z wykonawc¹ | Izoterm | 21MY97 | Ruroci¹g | Budowa | Roboty | Krzyszto | Automaty | PM000 | Zespó³-K | Wspólne | Niski | Pakiet | L2 | Rev B |
| 21MY97-035 |  | Izolacje – Sekcja 04 | 6d | 2027-04-20 | 2027-04-27 | 21MY97-034 |  | 2027-04-22 | 2027-04-29 | 256.4d | 0d |  |  | Izoterm | 21MY97 | Ruroci¹g | Budowa | Roboty | Krzyszto | Automaty | PM000 | Zespó³-W | Wspólne | Normalny | Pakiet | L2 |  |
| 21MY97-036 |  | Malowanie i oznakowanie – Sekcja 04 | 3d | 2027-04-27 | 2027-04-29 | 21MY97-035 FF+2d |  | 2027-04-29 | 2027-05-03 | 256.4d | 0d |  |  | Izoterm | 21MY97 | Ruroci¹g | Budowa | Roboty | Krzyszto | Automaty | PM000 | Zespó³-W | Wspólne | Wysoki | Pakiet | L2 |  |
|  | SEKCJA 05 | **Sekcja 05** |  | 2026-03-23 | 2027-05-05 |  |  |  |  |  |  |  |  |  |  |  |  |  |  |  |  |  |  |  |  |  |  |
| 21MY97-039 |  | Prefabrykacja ruroci¹gów – Sekcja 05 | 10d | 2026-03-23 A | 2026-04-03 A | 21MY97-012, 21MY97-032 SS+5d | 100% | 2026-03-24 | 2026-04-06 |  |  |  |  | Izoterm | 21MY97 | Ruroci¹g | Budowa | Roboty | Krzyszto | Automaty | PM000 | Zespó³-K | Wspólne | Normalny | Pakiet | L2 |  |
| 21MY97-040 |  | Monta¿ ruroci¹gów – Sekcja 05 | 19.6d | 2027-03-19 | 2027-04-14 | 21MY97-039, 21MY97-014 SS+2d |  | 2027-03-23 | 2027-04-16 | 252d | 0d |  |  | Izoterm | 21MY97 | Ruroci¹g | Budowa | Roboty | Krzyszto | Automaty | PM000 | Zespó³-W | Wspólne | Normalny | Pakiet | L2 |  |
| 21MY97-041 |  | Próba ciœnieniowa – Sekcja 05 | 2d | 2027-04-15 | 2027-04-16 | 21MY97-040 |  | 2027-04-19 | 2027-04-20 | 252d | 0d |  |  | Izoterm | 21MY97 | Ruroci¹g | Budowa | Roboty | Krzyszto | Automaty | PM000 | Zespó³-W | Wspólne | Niski | Pakiet | L2 |  |
| 21MY97-042 |  | Izolacje – Sekcja 05 | 11d | 2027-04-19 | 2027-05-03 | 21MY97-041 |  | 2027-04-21 | 2027-05-05 | 252d | 0d |  |  | Izoterm | 21MY97 | Ruroci¹g | Budowa | Roboty | Krzyszto | Automaty | PM000 | Zespó³-K | Wspólne | Wysoki | Pakiet | L2 |  |
| 21MY97-043 |  | Malowanie i oznakowanie – Sekcja 05 | 6d | 2027-04-28 | 2027-05-05 | 21MY97-042 FF+2d |  | 2027-04-30 | 2027-05-07 | 252d | 0d |  |  | Izoterm | 21MY97 | Ruroci¹g | Budowa | Roboty | Krzyszto | Automaty | PM000 | Zespó³-K | Wspólne | Normalny | Pakiet | L2 | Rev C |
|  | SEKCJA 06 | **Sekcja 06** |  | 2026-03-30 | 2027-04-14 |  |  |  |  |  |  |  |  |  |  |  |  |  |  |  |  |  |  |  |  |  |  |
|  | PODSEKCJA | **Podsekcja 06.A** |  | 2026-03-30 | 2027-04-14 |  |  |  |  |  |  |  |  |  |  |  |  |  |  |  |  |  |  |  |  |  |  |
| 21MY97-044 |  | Prefabrykacja ruroci¹gów – Sekcja 06 | 9.3d | 2026-03-30 A | 2026-04-10 A | 21MY97-012, 21MY97-039 SS+5d | 100% | 2026-03-31 | 2026-04-10 |  |  |  |  | Izoterm | 21MY97 | Ruroci¹g | Budowa | Roboty | Krzyszto | Automaty | PM000 | Zespó³-K | Wspólne | Normalny | Pakiet | L2 |  |
| 21MY97-045 |  | Monta¿ ruroci¹gów – Sekcja 06 | 5.2d | 2027-03-24 | 2027-03-30 | 21MY97-044, 21MY97-014 SS+5d |  | 2027-03-26 | 2027-04-01 | 267.4d | 0d |  |  | Izoterm | 21MY97 | Ruroci¹g | Budowa | Roboty | Krzyszto | Automaty | PM000 | Zespó³-K | Wspólne | Normalny | Pakiet | L2 |  |
| 21MY97-046 |  | Próba ciœnieniowa – Sekcja 06 | 4d | 2027-03-31 | 2027-04-05 | 21MY97-045 |  | 2027-04-02 | 2027-04-07 | 267.4d | 0d |  |  | Izoterm | 21MY97 | Ruroci¹g | Budowa | Roboty | Krzyszto | Automaty | PM000 | Zespó³-W | Wspólne | Normalny | Pakiet | L2 |  |
| 21MY97-048 |  | Malowanie i oznakowanie – Sekcja 06 | 8d | 2027-04-05 | 2027-04-14 | 21MY97-047 FF+2d |  | 2027-04-07 | 2027-04-16 | 267.4d | 0d |  |  | Izoterm | 21MY97 | Ruroci¹g | Budowa | Roboty | Krzyszto | Automaty | PM000 | Zespó³-K | Wspólne | Wysoki | Pakiet | L2 |  |
| 21MY97-047 |  | Izolacje – Sekcja 06 | 5d | 2027-04-06 | 2027-04-12 | 21MY97-046 |  | 2027-04-08 | 2027-04-14 | 267.4d | 0d |  | Bez uwag | Izoterm | 21MY97 | Ruroci¹g | Budowa | Roboty | Krzyszto | Automaty | PM000 | Zespó³-W | Wspólne | Normalny | Pakiet | L2 |  |
|  | SEKCJA 07 | **Sekcja 07** |  | 2026-04-10 | 2027-05-14 |  |  |  |  |  |  |  |  |  |  |  |  |  |  |  |  |  |  |  |  |  |  |
| 21MY97-051 |  | Prefabrykacja ruroci¹gów – Sekcja 07 | 9.6d | 2026-04-10 A | 2026-04-24 A | 21MY97-012, 21MY97-044 SS+5d | 100% | 2026-04-07 | 2026-04-17 |  |  |  |  | Izoterm | 21MY97 | Ruroci¹g | Budowa | Roboty | Krzyszto | Automaty | PM000 | Zespó³-W | Wspólne | Normalny | Pakiet | L2 |  |
| 21MY97-052 |  | Monta¿ ruroci¹gów – Sekcja 07 | 22.4d | 2027-03-24 | 2027-04-22 | 21MY97-051, 21MY97-014 SS+5d |  | 2027-03-26 | 2027-04-26 | 245.2d | 0d |  |  | Izoterm | 21MY97 | Ruroci¹g | Budowa | Roboty | Krzyszto | Automaty | PM000 | Zespó³-W | Wspólne | Normalny | Pakiet | L2 |  |
| 21MY97-053 |  | Próba ciœnieniowa – Sekcja 07 | 2d | 2027-04-23 | 2027-04-26 | 21MY97-052 |  | 2027-04-27 | 2027-04-28 | 245.2d | 0d |  |  | Izoterm | 21MY97 | Ruroci¹g | Budowa | Roboty | Krzyszto | Automaty | PM000 | Zespó³-K | Wspólne | Wysoki | Pakiet | L2 |  |
| 21MY97-054 |  | Izolacje – Sekcja 07 | 12d | 2027-04-27 | 2027-05-12 | 21MY97-053 |  | 2027-04-29 | 2027-05-14 | 245.2d | 0d |  |  | Izoterm | 21MY97 | Ruroci¹g | Budowa | Roboty | Krzyszto | Automaty | PM000 | Zespó³-W | Wspólne | Niski | Pakiet | L2 |  |
| 21MY97-055 |  | Malowanie i oznakowanie – Sekcja 07 | 8d | 2027-05-05 | 2027-05-14 | 21MY97-054 FF+2d |  | 2027-05-07 | 2027-05-18 | 245.2d | 0d |  |  | Izoterm | 21MY97 | Ruroci¹g | Budowa | Roboty | Krzyszto | Automaty | PM000 | Zespó³-K | Wspólne | Normalny | Pakiet | L2 | Rev C |

| ID | WBS | Activity | Duration | Start | Finish | Predecessors | Complete | Planned start | Planned finish | Total float | Free float | Calendar | Rewizja dokumentu | AC_Wykonawca | AC_Obiekt | AC_Dyscyplina | AC_Faza | AC_Zakres | AC_Opiekun | AC_Obszar | AC_PP_PM | AC_Zespol | AC_Blok | AC_Priorytet | AC_Pakiet | AC_Poziom | Uwagi harmonogramisty |
| --- | --- | --- | --- | --- | --- | --- | --- | --- | --- | --- | --- | --- | --- | --- | --- | --- | --- | --- | --- | --- | --- | --- | --- | --- | --- | --- | --- |
|  | SEKCJA 08 | **Sekcja 08** |  | 2026-04-15 | 2027-08-05 |  |  |  |  |  |  |  |  |  |  |  |  |  |  |  |  |  |  |  |  |  |  |
| 21MY97-056 |  | Prefabrykacja ruroci¹gów – Sekcja 08 | 11.6d | 2026-04-15 A | 2026-04-30 A | 21MY97-012, 21MY97-051 SS+5d | 100% | 2026-04-14 | 2026-04-28 |  |  |  | Rev C | Izoterm | 21MY97 | Ruroci¹g | Budowa | Roboty | Krzyszto | Automaty | PM200 | Zespó³-I | Wspólne | Normalny | Pakiet | L2 |  |
| 21MY97-057 |  | Monta¿ ruroci¹gów – Sekcja 08 | 10.3d | 2027-03-26 | 2027-04-08 | 21MY97-056, 21MY97-014 SS+7d |  | 2027-03-30 | 2027-04-12 | 259.3d | 0d | Kalendarz 6-dniowy |  | Izoterm | 21MY97 | Ruroci¹g | Budowa | Roboty | Krzyszto | Automaty | PM000 | Zespó³-W | Wspólne | Normalny | Pakiet | L2 | Bez uwag |
| 21MY97-058 |  | Próba ciœnieniowa – Sekcja 08 | 3d | 2027-04-09 | 2027-04-13 | 21MY97-057 |  | 2027-04-13 | 2027-04-15 | 259.3d | 0d |  |  | Izoterm | 21MY97 | Ruroci¹g | Budowa | Roboty | Krzyszto | Automaty | PM000 | Zespó³-K | Wspólne | Normalny | Pakiet | L2 | Bez uwag |
| 21MY97-059 |  | Izolacje – Sekcja 08 | 7d | 2027-07-26 | 2027-08-03 | 21MY97-058 |  | 2027-04-16 | 2027-04-26 | 186.6d | 0d |  |  | Izoterm | 21MY97 | Ruroci¹g | Budowa | Roboty | Krzyszto | Automaty | PM000 | Zespó³-E | Wspólne | Normalny | Pakiet | L2 | Ryzyko opóŸnienia |
| 21MY97-060 |  | Malowanie i oznakowanie – Sekcja 08 | 7d | 2027-07-28 | 2027-08-05 | 21MY97-059 FF+2d |  | 2027-04-20 | 2027-04-28 | 186.6d | 0d |  | Rev B | Izoterm | 21MY97 | Ruroci¹g | Budowa | Roboty | Krzyszto | Automaty | PM000 | Zespó³-K | Wspólne | Normalny | Pakiet | L2 |  |
|  | SEKCJA 09 | **Sekcja 09** |  | 2026-04-20 | 2027-04-30 |  |  |  |  |  |  |  |  |  |  |  |  |  |  |  |  |  |  |  |  |  |  |
|  | PODSEKCJA | **Podsekcja 09.A** |  | 2026-04-20 | 2027-04-30 |  |  |  |  |  |  |  |  |  |  |  |  |  |  |  |  |  |  |  |  |  |  |
| 21MY97-063 |  | Prefabrykacja ruroci¹gów – Sekcja 09 | 14.5d | 2026-04-20 A | 2026-05-08 A | 21MY97-012, 21MY97-056 SS+5d | 100% | 2026-04-21 | 2026-05-08 |  |  |  |  | Izoterm | 21MY97 | Ruroci¹g | Budowa | Roboty | Krzyszto | Automaty | PM000 | Zespó³-K | Wspólne | Normalny | Pakiet | L2 |  |
| 21MY97-064 |  | Monta¿ ruroci¹gów – Sekcja 09 | 14.7d | 2027-03-29 | 2027-04-15 | 21MY97-063, 21MY97-014 SS+8d |  | 2027-03-31 | 2027-04-19 | 254.9d | 0d | Kalendarz 6-dniowy |  | Izoterm | 21MY97 | Ruroci¹g | Budowa | Roboty | Krzyszto | Automaty | PM000 | Zespó³-K | Wspólne | Normalny | Pakiet | L2 |  |
| 21MY97-065 |  | Próba ciœnieniowa – Sekcja 09 | 4d | 2027-04-16 | 2027-04-21 | 21MY97-064 |  | 2027-04-20 | 2027-04-23 | 254.9d | 0d |  |  | Izoterm | 21MY97 | Ruroci¹g | Budowa | Roboty | Krzyszto | Automaty | PM000 | Zespó³-K | Wspólne | Normalny | Pakiet | L2 |  |
| 21MY97-066 |  | Izolacje – Sekcja 09 | 5d | 2027-04-22 | 2027-04-28 | 21MY97-065 |  | 2027-04-26 | 2027-04-30 | 254.9d | 0d |  | Rev B | Izoterm | 21MY97 | Ruroci¹g | Budowa | Roboty | Krzyszto | Automaty | PM000 | Zespó³-W | Wspólne | Normalny | Pakiet | L2 | Do weryfikacji z wykonawc¹ |
| 21MY97-067 |  | Malowanie i oznakowanie – Sekcja 09 | 7d | 2027-04-22 | 2027-04-30 | 21MY97-066 FF+2d |  | 2027-04-26 | 2027-05-04 | 254.9d | 0d |  |  | Izoterm | 21MY97 | Ruroci¹g | Budowa | Roboty | Krzyszto | Automaty | PM000 | Zespó³-W | Wspólne | Normalny | Pakiet | L2 |  |
|  | SEKCJA 10 | **Sekcja 10** |  | 2026-04-28 | 2027-05-03 |  |  |  |  |  |  |  |  |  |  |  |  |  |  |  |  |  |  |  |  |  |  |
| 21MY97-068 |  | Prefabrykacja ruroci¹gów – Sekcja 10 | 7.9d | 2026-04-28 A | 2026-05-07 A | 21MY97-012, 21MY97-063 SS+5d | 100% | 2026-04-28 | 2026-05-06 |  |  |  | Rev A | Izoterm | 21MY97 | Ruroci¹g | Budowa | Roboty | Krzyszto | Automaty | PM000 | Zespó³-K | Wspólne | Normalny | Pakiet | L2 |  |
| 21MY97-069 |  | Monta¿ ruroci¹gów – Sekcja 10 | 14.7d | 2027-03-31 | 2027-04-19 | 21MY97-068, 21MY97-014 SS+10d |  | 2027-04-02 | 2027-04-21 | 215.9d | 0d |  |  | Izoterm | 21MY97 | Ruroci¹g | Budowa | Roboty | Krzyszto | Automaty | PM000 | Zespó³-W | Wspólne | Normalny | Pakiet | L2 |  |
| 21MY97-070 |  | Próba ciœnieniowa – Sekcja 10 | 2d | 2027-04-20 | 2027-04-21 | 21MY97-069 |  | 2027-04-22 | 2027-04-23 | 215.9d | 0d |  |  | Izoterm | 21MY97 | Ruroci¹g | Budowa | Roboty | Krzyszto | Automaty | PM000 | Zespó³-K | Wspólne | Normalny | Pakiet | L2 |  |
| 21MY97-071 |  | Izolacje – Sekcja 10 | 6d | 2027-04-22 | 2027-04-29 | 21MY97-070 |  | 2027-04-26 | 2027-05-03 | 215.9d | 0d |  |  | Izoterm | 21MY97 | Ruroci¹g | Budowa | Roboty | Krzyszto | Automaty | PM000 | Zespó³-K | Wspólne | Normalny | Pakiet | L2 |  |
| 21MY97-072 |  | Malowanie i oznakowanie – Sekcja 10 | 4d | 2027-04-28 | 2027-05-03 | 21MY97-071 FF+2d |  | 2027-04-30 | 2027-05-05 | 215.9d | 0d |  |  | Izoterm | 21MY97 | Ruroci¹g | Budowa | Roboty | Krzyszto | Automaty | PM000 | Zespó³-K | Wspólne | Normalny | Pakiet | L2 |  |
|  | SEKCJA 11 | **Sekcja 11** |  | 2026-05-06 | 2027-04-29 |  |  |  |  |  |  |  |  |  |  |  |  |  |  |  |  |  |  |  |  |  |  |
| 21MY97-075 |  | Prefabrykacja ruroci¹gów – Sekcja 11 | 12.5d | 2026-05-06 A | 2026-05-26 A | 21MY97-012, 21MY97-068 SS+5d | 100% | 2026-05-05 | 2026-05-20 |  |  |  | Rev A | Izoterm | 21MY97 | Ruroci¹g | Budowa | Roboty | Krzyszto | Automaty | PM000 | Zespó³-W | Wspólne | Normalny | Pakiet | L2 |  |
| 21MY97-076 |  | Monta¿ ruroci¹gów – Sekcja 11 | 12d | 2027-03-29 | 2027-04-13 | 21MY97-075, 21MY97-014 SS+8d |  | 2027-03-31 | 2027-04-15 | 218.6d | 0d |  | Rev A | Izoterm | 21MY97 | Ruroci¹g | Budowa | Roboty | Krzyszto | Automaty | PM000 | Zespó³-K | Wspólne | Niski | Pakiet | L2 |  |
| 21MY97-077 |  | Próba ciœnieniowa – Sekcja 11 | 5d | 2027-04-14 | 2027-04-20 | 21MY97-076 |  | 2027-04-16 | 2027-04-22 | 218.6d | 0d |  |  | Izoterm | 21MY97 | Ruroci¹g | Budowa | Roboty | Krzyszto | Automaty | PM000 | Zespó³-W | Wspólne | Normalny | Pakiet | L2 |  |
| 21MY97-078 |  | Izolacje – Sekcja 11 | 5d | 2027-04-21 | 2027-04-27 | 21MY97-077 |  | 2027-04-23 | 2027-04-29 | 218.6d | 0d |  |  | Izoterm | 21MY97 | Ruroci¹g | Budowa | Roboty | Krzyszto | Automaty | PM000 | Zespó³-W | Wspólne | Wysoki | Pakiet | L2 |  |
| 21MY97-079 |  | Malowanie i oznakowanie – Sekcja 11 | 4d | 2027-04-26 | 2027-04-29 | 21MY97-078 FF+2d |  | 2027-04-28 | 2027-05-03 | 218.6d | 0d |  |  | Izoterm | 21MY97 | Ruroci¹g | Budowa | Roboty | Krzyszto | Automaty | PM000 | Zespó³-K | Wspólne | Normalny | Pakiet | L2 | Bez uwag |

| ID | WBS | Activity | Type | Duration | Start | Finish | Predecessors | Complete | Remaining | Actual finish | Planned start | Planned finish | Total float | Free float | Calendar | AC_Wykonawca | AC_Obiekt | AC_Dyscyplina | AC_Faza | AC_Zakres | AC_Opiekun | AC_Obszar | AC_PP_PM | AC_Zespol | AC_Blok | AC_Priorytet | AC_Pakiet | AC_Poziom | Rewizja dokumentu | Uwagi harmonogramisty |
| --- | --- | --- | --- | --- | --- | --- | --- | --- | --- | --- | --- | --- | --- | --- | --- | --- | --- | --- | --- | --- | --- | --- | --- | --- | --- | --- | --- | --- | --- | --- |
|  | PROJ | **Projektowanie** |  |  | 2025-06-25 | 2025-12-30 |  |  |  |  |  |  |  |  |  |  |  |  |  |  |  |  |  |  |  |  |  |  |  |  |
|  | DOKUMENTAC | **Dokumentacja** |  |  | 2025-06-25 | 2025-12-30 |  |  |  |  |  |  |  |  |  |  |  |  |  |  |  |  |  |  |  |  |  |  |  |  |
| 21MY97-001 |  | Projekt wykonawczy – Analizatory spalin (CEMS) |  | 119d | 2025-06-25 A | 2025-12-09 A |  | 100% |  |  | 2025-06-20 | 2025-12-03 |  |  |  | Izoterm | 21MY97 | Budowlan | Projekto | Projekt | Krzyszto | Automaty | PM000 | Zespó³-K | Wspólne | Normalny | Pakiet | L2 |  |  |
| 21MY97-002 |  | Uzgodnienie dokumentacji z Inwestorem |  | 11d | 2025-12-09 A | 2025-12-24 A | 21MY97-001 | 100% |  |  | 2025-12-04 | 2025-12-18 |  |  |  | Izoterm | 21MY97 | Budowlan | Projekto | Projekt | Krzyszto | Automaty | PM000 | Zespó³-W | Wspólne | Niski | Pakiet | L2 |  |  |
| 21MY97-003 |  | Zatwierdzenie dokumentacji do realizacji |  | 5d | 2025-12-18 A | 2025-12-25 A | 21MY97-002 | 100% |  |  | 2025-12-19 | 2025-12-25 |  |  |  | Izoterm | 21MY97 | Budowlan | Projekto | Projekt | Krzyszto | Automaty | PM000 | Zespó³-K | Wspólne | Normalny | Pakiet | L2 | Rev B |  |
| 21MY97-004 |  | KM: Dokumentacja zatwierdzona – Analizatory spalin (CEMS) | milestone | 0d | 2025-12-30 A | 2025-12-30 | 21MY97-003 | 100% |  | 2025-12-29 | 2025-12-26 | 2025-12-26 |  |  |  | Izoterm | 21MY97 | Budowlan | Projekto | Kamieñ | Krzyszto | Automaty | PM000 | Zespó³-K | Wspólne | Wysoki | Pakiet | L1 | Rev C | Bez uwag |
|  | ROZR | **Rozruch** |  |  | 2027-07-21 | 2027-08-30 |  |  |  |  |  |  |  |  |  |  |  |  |  |  |  |  |  |  |  |  |  |  |  |  |
|  | ROZRUCH | **Rozruch** |  |  | 2027-07-21 | 2027-08-30 |  |  |  |  |  |  |  |  |  |  |  |  |  |  |  |  |  |  |  |  |  |  |  |  |
| 21MY97-082 |  | Przegl¹d gotowoœci do rozruchu |  | 6d | 2027-07-21 | 2027-07-28 | 21MY97-081, 21MY97-019, 21MY97-024, 21MY97-026 |  |  |  | 2027-05-06 | 2027-05-13 | 160.2d | 0d |  | Izoterm | 21MY97 | Rozruch | Rozruch | Rozruch | Krzyszto | Automaty | PM000 | Zespó³-K | Wspólne | Wysoki | Pakiet | L2 |  | Czeka na dostawê |
| 21MY97-083 |  | Rozruch na zimno |  | 6d | 2027-07-29 | 2027-08-05 | 21MY97-082 |  |  |  | 2027-05-14 | 2027-05-21 | 160.2d | 0d |  | Izoterm | 21MY97 | Rozruch | Rozruch | Rozruch | Krzyszto | Automaty | PM000 | Zespó³-W | Wspólne | Niski | Pakiet | L2 | Rev A | Ryzyko opóŸnienia |
| 21MY97-084 |  | Rozruch na gor¹co / próby ruchowe |  | 16d | 2027-08-06 | 2027-08-27 | 21MY97-083 |  |  |  | 2027-05-24 | 2027-06-14 | 160.2d | 0d |  | Izoterm | 21MY97 | Rozruch | Rozruch | Rozruch | Krzyszto | Automaty | PM000 | Zespó³-W | Wspólne | Normalny | Pakiet | L2 |  |  |
| 21MY97-085 |  | KM: Odbiór koñcowy – Analizatory spalin (CEMS) | milestone | 0d | 2027-08-30 | 2027-08-30 | 21MY97-084 |  |  |  | 2027-06-15 | 2027-06-15 | 160.2d | 0d | Kalendarz 6-dniowy | Izoterm | 21MY97 | Rozruch | Rozruch | Kamieñ | Krzyszto | Automaty | PM000 | Zespó³-W | Wspólne | Niski | Pakiet | L1 |  |  |
|  | ZAKU | **Zakupy** |  |  | 2025-07-22 | 2027-03-17 |  |  |  |  |  |  |  |  |  |  |  |  |  |  |  |  |  |  |  |  |  |  |  |  |
|  | DOSTAWY | **Dostawy** |  |  | 2026-01-07 | 2027-03-17 |  |  |  |  |  |  |  |  |  |  |  |  |  |  |  |  |  |  |  |  |  |  |  |  |
| 21MY97-008 |  | Produkcja u dostawcy |  | 286d | 2026-01-07 A | 2027-02-03 | 21MY97-007 | 70% | 86d |  | 2026-01-02 | 2027-02-05 | 210.9d | 0d |  | Izoterm | 21MY97 | Mechanic | Zakupy | Dostawa | Krzyszto | Automaty | PM000 | Zespó³-W | Wspólne | Normalny | Pakiet | L2 |  | Czeka na dostawê |
| 21MY97-009 |  | Testy FAT |  | 9d | 2027-02-04 | 2027-02-16 | 21MY97-008 |  |  |  | 2027-02-08 | 2027-02-18 | 215.9d | 0d |  | Izoterm | 21MY97 | Mechanic | Zakupy | Dostawa | Krzyszto | Automaty | PM000 | Zespó³-W | Wspólne | Wysoki | Pakiet | L2 | Rev A | Uzgodnione na koordynacji |
| 21MY97-010 |  | Transport i dostawa na plac budowy |  | 20d | 2027-02-17 | 2027-03-16 | 21MY97-009 |  |  |  | 2027-02-19 | 2027-03-18 | 215.9d | 0d |  | Izoterm | 21MY97 | Mechanic | Zakupy | Dostawa | Krzyszto | Automaty | PM000 | Zespó³-K | Wspólne | Normalny | Pakiet | L2 |  |  |
| 21MY97-011 |  | KM: Dostawa na budowê – Analizatory spalin (CEMS) | milestone | 0d | 2027-03-17 | 2027-03-17 | 21MY97-010 |  |  |  | 2027-03-19 | 2027-03-19 | 215.9d | 0d |  | Izoterm | 21MY97 | Mechanic | Zakupy | Kamieñ | Krzyszto | Automaty | PM000 | Zespó³-W | Wspólne | Normalny | Pakiet | L1 | Rev B |  |
|  | ZAMÓWIENIA | **Zamówienia** |  |  | 2025-07-22 | 2026-01-05 |  |  |  |  |  |  |  |  |  |  |  |  |  |  |  |  |  |  |  |  |  |  |  |  |
| 21MY97-005 |  | Zapytanie ofertowe |  | 28d | 2025-07-22 A | 2025-08-28 A | 21MY97-001 SS+20d | 100% |  |  | 2025-07-18 | 2025-08-26 |  |  |  | Izoterm | 21MY97 | Mechanic | Zakupy | Dostawa | Krzyszto | Automaty | PM000 | Zespó³-E | Wspólne | Normalny | Pakiet | L2 |  | Czeka na dostawê |
| 21MY97-006 |  | Analiza i wybór ofert |  | 19d | 2025-08-27 A | 2025-09-22 A | 21MY97-005 | 100% |  |  |  |  |  |  | Kalendarz 6-dniowy | Izoterm | 21MY97 | Mechanic | Zakupy | Dostawa | Krzyszto | Automaty | PM000 | Zespó³-W | Wspólne | Normalny | Pakiet | L2 |  |  |
| 21MY97-007 |  | Zawarcie umowy / zamówienie |  | 5d | 2025-12-26 A | 2026-01-05 A | 21MY97-006, 21MY97-004 SS, 29UF44-004 (other project) SF+12d | 100% |  |  | 2025-12-26 | 2026-01-01 |  |  |  | Izoterm | 21MY97 | Mechanic | Zakupy | Dostawa | Krzyszto | Automaty | PM200 | Zespó³-E | Wspólne | Normalny | Pakiet | L1 | Rev A |  |
|  | 26DX82 | **26DX82 – Sieæ œwiat³owodowa** |  |  | 2025-01-29 | 2026-08-10 |  |  |  |  |  |  |  |  |  |  |  |  |  |  |  |  |  |  |  |  |  |  |  |  |
|  | BUDO | **Budowa** |  |  | 2025-10-01 | 2026-06-26 |  |  |  |  |  |  |  |  |  |  |  |  |  |  |  |  |  |  |  |  |  |  |  |  |
|  | AKPIA | **AKPiA** |  |  | 2026-03-27 | 2026-04-30 |  |  |  |  |  |  |  |  |  |  |  |  |  |  |  |  |  |  |  |  |  |  |  |  |
| 26DX82-128 |  | Monta¿ uk³adów AKPiA |  | 24d | 2026-03-27 A | 2026-04-30 A | 26DX82-014 SS+5d | 100% |  |  | 2026-03-27 | 2026-04-29 |  |  |  | Aerother | 26DX82 | AKPiA | Budowa | Roboty | Agnieszk | Automaty | PM000 | Zespó³-K | Blok | Normalny | Pakiet | L2 |  | Do weryfikacji z wykonawc¹ |

| ID | WBS | Activity | Type | Duration | Start | Finish | Predecessors | Complete | Actual finish | Planned start | Planned finish | Calendar | AC_Wykonawca | AC_Obiekt | AC_Dyscyplina | AC_Faza | AC_Zakres | AC_Opiekun | AC_Obszar | AC_PP_PM | AC_Zespol | AC_Blok | AC_Priorytet | AC_Pakiet | AC_Poziom | Rewizja dokumentu | Uwagi harmonogramisty |
| --- | --- | --- | --- | --- | --- | --- | --- | --- | --- | --- | --- | --- | --- | --- | --- | --- | --- | --- | --- | --- | --- | --- | --- | --- | --- | --- | --- |
|  | ELEKTRYKA | **Elektryka** |  |  | 2026-03-30 | 2026-04-30 |  |  |  |  |  |  |  |  |  |  |  |  |  |  |  |  |  |  |  |  |  |
| 26DX82-110 |  | Pod³¹czenia i pomiary – trasa 16 |  | 10d | 2026-03-30 A | 2026-04-13 A | 26DX82-109 FF | 100% |  | 2026-03-27 | 2026-04-09 |  | Aerother | 26DX82 | Elektryc | Budowa | Roboty | Agnieszk | Automaty | PM000 | Zespó³-W | Blok | Normalny | Pakiet | L2 |  |  |
| 26DX82-073 |  | Uk³adanie kabli – trasa 10 |  | 15d | 2026-04-02 A | 2026-04-23 A | 26DX82-014 SS+10d | 100% |  | 2026-04-03 | 2026-04-23 |  | Aerother | 26DX82 | Elektryc | Budowa | Roboty | Agnieszk | Automaty | PM000 | Zespó³-W | Blok | Normalny | Pakiet | L2 |  |  |
| 26DX82-121 |  | Uk³adanie kabli – trasa 18 |  | 6d | 2026-04-02 A | 2026-04-10 A | 26DX82-014 SS+10d | 100% |  | 2026-04-03 | 2026-04-10 |  | Aerother | 26DX82 | Elektryc | Budowa | Roboty | Agnieszk | Automaty | PM000 | Zespó³-K | Blok | Normalny | Pakiet | L2 | Rev B |  |
| 26DX82-037 |  | Uk³adanie kabli – trasa 04 |  | 11d | 2026-04-03 A | 2026-04-17 A | 26DX82-014 SS+10d | 100% |  |  |  |  | Aerother | 26DX82 | Elektryc | Budowa | Roboty | Agnieszk | Automaty | PM000 | Zespó³-K | Blok | Normalny | Pakiet | L2 |  | Czeka na dostawê |
| 26DX82-038 |  | Pod³¹czenia i pomiary – trasa 04 |  | 9d | 2026-04-06 A | 2026-04-16 A | 26DX82-037 FF | 100% |  | 2026-04-07 | 2026-04-17 |  | Aerother | 26DX82 | Elektryc | Budowa | Roboty | Agnieszk | Automaty | PM000 | Zespó³-K | Blok | Wysoki | Pakiet | L2 | Rev C |  |
| 26DX82-049 |  | Uk³adanie kabli – trasa 06 |  | 8d | 2026-04-06 A | 2026-04-17 A | 26DX82-014 SS+10d | 100% |  | 2026-04-03 | 2026-04-14 |  | Aerother | 26DX82 | Elektryc | Budowa | Roboty | Agnieszk | Automaty | PM000 | Zespó³-W | Blok | Normalny | Pakiet | L2 | Rev A |  |
| 26DX82-061 |  | Uk³adanie kabli – trasa 08 |  | 17d | 2026-04-06 A | 2026-04-30 A | 26DX82-014 SS+10d | 100% |  | 2026-04-03 | 2026-04-27 |  | Aerother | 26DX82 | Elektryc | Budowa | Roboty | Agnieszk | Automaty | PM000 | Zespó³-K | Blok | Wysoki | Pakiet | L2 | Rev A | Ryzyko opóŸnienia |
| 26DX82-122 |  | Pod³¹czenia i pomiary – trasa 18 |  | 7d | 2026-04-06 A | 2026-04-14 A | 26DX82-121 FF | 100% |  | 2026-04-02 | 2026-04-10 |  | Aerother | 26DX82 | Elektryc | Budowa | Roboty | Agnieszk | Automaty | PM000 | Zespó³-K | Blok | Normalny | Pakiet | L2 | Rev C |  |
| 26DX82-086 |  | Pod³¹czenia i pomiary – trasa 12 |  | 6d | 2026-04-07 A | 2026-04-15 A | 26DX82-085 FF | 100% |  | 2026-04-08 | 2026-04-15 |  | Aerother | 26DX82 | Elektryc | Budowa | Roboty | Agnieszk | Automaty | PM000 | Zespó³-K | Blok | Wysoki | Pakiet | L2 | Rev A | Do weryfikacji z wykonawc¹ |
| 26DX82-025 |  | Uk³adanie kabli – trasa 02 |  | 16d | 2026-04-08 A | 2026-04-30 A | 26DX82-014 SS+10d | 100% |  | 2026-04-03 | 2026-04-24 | Kalendarz 6-dniowy | Aerother | 26DX82 | Elektryc | Budowa | Roboty | Agnieszk | Automaty | PM100 | Zespó³-E | Blok | Normalny | Pakiet | L2 |  |  |
| 26DX82-050 |  | Pod³¹czenia i pomiary – trasa 06 |  | 8d | 2026-04-08 A | 2026-04-22 A | 26DX82-049 FF | 100% |  | 2026-04-03 | 2026-04-14 | Kalendarz 6-dniowy | Aerother | 26DX82 | Elektryc | Budowa | Roboty | Agnieszk | Automaty | PM000 | Zespó³-K | Blok | Normalny | Pakiet | L2 |  |  |
| 26DX82-085 |  | Uk³adanie kabli – trasa 12 |  | 9d | 2026-04-08 A | 2026-04-22 A | 26DX82-014 SS+10d | 100% |  | 2026-04-03 | 2026-04-15 |  | Aerother | 26DX82 | Elektryc | Budowa | Roboty | Agnieszk | Automaty | PM000 | Zespó³-K | Blok | Normalny | Pakiet | L2 |  |  |
| 26DX82-097 |  | Uk³adanie kabli – trasa 14 |  | 11d | 2026-04-08 A | 2026-04-23 A | 26DX82-014 SS+10d | 100% |  | 2026-04-03 | 2026-04-17 |  | Aerother | 26DX82 | Elektryc | Budowa | Roboty | Agnieszk | Automaty | PM000 | Zespó³-W | Blok | Wysoki | Pakiet | L2 |  |  |
| 26DX82-098 |  | Pod³¹czenia i pomiary – trasa 14 |  | 9d | 2026-04-08 A | 2026-04-22 A | 26DX82-097 FF | 100% |  | 2026-04-07 | 2026-04-17 |  | Aerother | 26DX82 | Elektryc | Budowa | Roboty | Agnieszk | Automaty | PM000 | Zespó³-W | Blok | Normalny | Pakiet | L2 |  |  |
| 26DX82-109 |  | Uk³adanie kabli – trasa 16 |  | 5d | 2026-04-08 A | 2026-04-16 A | 26DX82-014 SS+10d | 100% |  | 2026-04-03 | 2026-04-09 |  | Aerother | 26DX82 | Elektryc | Budowa | Roboty | Agnieszk | Automaty | PM000 | Zespó³-K | Blok | Wysoki | Pakiet | L2 |  |  |
| 26DX82-074 |  | Pod³¹czenia i pomiary – trasa 10 |  | 9d | 2026-04-15 A | 2026-04-28 A | 26DX82-073 FF | 100% |  | 2026-04-13 | 2026-04-23 |  | Aerother | 26DX82 | Elektryc | Budowa | Roboty | Agnieszk | Automaty | PM000 | Zespó³-K | Blok | Normalny | Pakiet | L2 | Rev C |  |
| 26DX82-026 |  | Pod³¹czenia i pomiary – trasa 02 |  | 7d | 2026-04-16 A | 2026-04-24 A | 26DX82-025 FF | 100% |  |  |  |  | Aerother | 26DX82 | Elektryc | Budowa | Roboty | Agnieszk | Automaty | PM000 | Zespó³-W | Blok | Normalny | Pakiet | L2 |  |  |
| 26DX82-062 |  | Pod³¹czenia i pomiary – trasa 08 |  | 6d | 2026-04-17 A | 2026-04-28 A | 26DX82-061 FF | 100% |  | 2026-04-20 | 2026-04-27 |  | Aerother | 26DX82 | Elektryc | Budowa | Roboty | Agnieszk | Automaty | PM000 | Zespó³-K | Blok | Normalny | Pakiet | L2 | Rev C |  |
|  | MONTA¯ | **Monta¿** |  |  | 2025-11-17 | 2026-06-26 |  |  |  |  |  |  |  |  |  |  |  |  |  |  |  |  |  |  |  |  |  |
| 26DX82-013 |  | Monta¿ konstrukcji stalowych |  | 26d | 2025-11-17 A | 2025-12-23 A | 26DX82-012 | 100% |  | 2025-11-12 | 2025-12-17 |  | Aerother | 26DX82 | Mechanic | Budowa | Roboty | Agnieszk | Automaty | PM000 | Zespó³-E | Blok | Niski | Pakiet | L2 |  |  |
| 26DX82-014 |  | Monta¿ urz¹dzeñ g³ównych |  | 66d | 2026-03-24 A | 2026-06-26 A | 26DX82-013, 26DX82-011 | 100% |  | 2026-03-20 | 2026-06-19 |  | Aerother | 26DX82 | Mechanic | Budowa | Roboty | Agnieszk | Automaty | PM000 | Zespó³-K | Blok | Wysoki | Pakiet | L2 | Rev C | Bez uwag |
| 26DX82-129 |  | KM: Zakoñczenie monta¿u – Sieæ œwiat³owodowa | milestone | 0d | 2026-06-23 A | 2026-06-23 | 26DX82-120, 26DX82-122, 26DX82-127, 26DX82-128, 26DX82-014 | 100% | 2026-06-22 | 2026-06-22 | 2026-06-22 |  | Aerother | 26DX82 | Mechanic | Budowa | Kamieñ | Agnieszk | Automaty | PM000 | Zespó³-W | Blok | Normalny | Pakiet | L2 |  |  |
|  | ROBOTY BUD | **Roboty budowlane** |  |  | 2025-10-01 | 2025-11-13 |  |  |  |  |  |  |  |  |  |  |  |  |  |  |  |  |  |  |  |  |  |
| 26DX82-012 |  | Fundamenty i roboty ziemne |  | 29d | 2025-10-01 A | 2025-11-13 A | 26DX82-007 FS+13d | 100% |  | 2025-10-02 | 2025-11-11 |  | Aerother | 26DX82 | Budowlan | Budowa | Roboty | Agnieszk | Automaty | PM200 | Zespó³-E | Blok | Normalny | Pakiet | L2 | Rev A |  |

| ID | WBS | Activity | Duration | Start | Finish | Predecessors | Complete | Planned start | Planned finish | Calendar | Rewizja dokumentu | AC_Wykonawca | AC_Obiekt | AC_Dyscyplina | AC_Faza | AC_Zakres | AC_Opiekun | AC_Obszar | AC_PP_PM | AC_Zespol | AC_Blok | AC_Priorytet | AC_Pakiet | AC_Poziom | Uwagi harmonogramisty |
| --- | --- | --- | --- | --- | --- | --- | --- | --- | --- | --- | --- | --- | --- | --- | --- | --- | --- | --- | --- | --- | --- | --- | --- | --- | --- |
|  | RUROCI¥GI | **Ruroci¹gi** |  | 2025-11-13 | 2026-05-22 |  |  |  |  |  |  |  |  |  |  |  |  |  |  |  |  |  |  |  |  |
|  | SEKCJA 01 | **Sekcja 01** |  | 2025-11-13 | 2026-05-13 |  |  |  |  |  |  |  |  |  |  |  |  |  |  |  |  |  |  |  |  |
| 26DX82-015 |  | Prefabrykacja ruroci¹gów – Sekcja 01 | 5.7d | 2025-11-13 A | 2025-11-21 A | 26DX82-012 | 100% | 2025-11-12 | 2025-11-18 |  | Rev B | Aerother | 26DX82 | Ruroci¹g | Budowa | Roboty | Agnieszk | Automaty | PM000 | Zespó³-K | Blok | Normalny | Pakiet | L2 |  |
| 26DX82-016 |  | Monta¿ ruroci¹gów – Sekcja 01 | 20.7d | 2026-03-25 A | 2026-04-22 A | 26DX82-015, 26DX82-014 SS+4d | 100% | 2026-03-26 | 2026-04-22 |  |  | Aerother | 26DX82 | Ruroci¹g | Budowa | Roboty | Agnieszk | Automaty | PM000 | Zespó³-W | Blok | Wysoki | Pakiet | L2 | Czeka na dostawê |
| 26DX82-017 |  | Próba ciœnieniowa – Sekcja 01 | 3d | 2026-04-22 A | 2026-04-29 A | 26DX82-016 | 100% | 2026-04-23 | 2026-04-27 |  |  | Aerother | 26DX82 | Ruroci¹g | Budowa | Roboty | Agnieszk | Automaty | PM000 | Zespó³-W | Blok | Normalny | Pakiet | L2 |  |
| 26DX82-018 |  | Izolacje – Sekcja 01 | 6d | 2026-04-30 A | 2026-05-07 A | 26DX82-017 | 100% | 2026-04-28 | 2026-05-05 |  |  | Aerother | 26DX82 | Ruroci¹g | Budowa | Roboty | Agnieszk | Automaty | PM000 | Zespó³-W | Blok | Normalny | Pakiet | L2 |  |
| 26DX82-019 |  | Malowanie i oznakowanie – Sekcja 01 | 6d | 2026-05-01 A | 2026-05-13 A | 26DX82-018 FF+2d | 100% | 2026-04-30 | 2026-05-07 |  | Rev A | Aerother | 26DX82 | Ruroci¹g | Budowa | Roboty | Agnieszk | Automaty | PM000 | Zespó³-K | Blok | Wysoki | Pakiet | L2 |  |
|  | SEKCJA 02 | **Sekcja 02** |  | 2025-11-21 | 2026-05-14 |  |  |  |  |  |  |  |  |  |  |  |  |  |  |  |  |  |  |  |  |
| 26DX82-020 |  | Prefabrykacja ruroci¹gów – Sekcja 02 | 3.3d | 2025-11-21 A | 2025-11-25 A | 26DX82-012, 26DX82-015 SS+5d | 100% | 2025-11-19 | 2025-11-21 |  |  | Aerother | 26DX82 | Ruroci¹g | Budowa | Roboty | Agnieszk | Automaty | PM000 | Zespó³-W | Blok | Normalny | Pakiet | L2 |  |
| 26DX82-021 |  | Monta¿ ruroci¹gów – Sekcja 02 | 18.9d | 2026-03-30 A | 2026-04-23 A | 26DX82-020, 26DX82-014 SS+4d | 100% | 2026-03-26 | 2026-04-20 |  |  | Aerother | 26DX82 | Ruroci¹g | Budowa | Roboty | Agnieszk | Automaty | PM000 | Zespó³-K | Blok | Wysoki | Pakiet | L2 |  |
| 26DX82-022 |  | Próba ciœnieniowa – Sekcja 02 | 3d | 2026-04-21 A | 2026-04-27 A | 26DX82-021 | 100% | 2026-04-21 | 2026-04-23 |  | Rev B | Aerother | 26DX82 | Ruroci¹g | Budowa | Roboty | Agnieszk | Automaty | PM000 | Zespó³-K | Blok | Normalny | Pakiet | L2 | Do weryfikacji z wykonawc¹ |
| 26DX82-023 |  | Izolacje – Sekcja 02 | 11d | 2026-04-28 A | 2026-05-14 A | 26DX82-022 | 100% | 2026-04-24 | 2026-05-08 |  | Rev A | Aerother | 26DX82 | Ruroci¹g | Budowa | Roboty | Agnieszk | Automaty | PM000 | Zespó³-E | Blok | Normalny | Pakiet | L2 |  |
| 26DX82-024 |  | Malowanie i oznakowanie – Sekcja 02 | 5d | 2026-05-06 A | 2026-05-12 A | 26DX82-023 FF+2d | 100% |  |  |  |  | Aerother | 26DX82 | Ruroci¹g | Budowa | Roboty | Agnieszk | Automaty | PM000 | Zespó³-K | Blok | Normalny | Pakiet | L2 |  |
|  | SEKCJA 03 | **Sekcja 03** |  | 2025-11-25 | 2026-05-04 |  |  |  |  |  |  |  |  |  |  |  |  |  |  |  |  |  |  |  |  |
|  | PODSEKCJA | **Podsekcja 03.A** |  | 2025-11-25 | 2026-05-04 |  |  |  |  |  |  |  |  |  |  |  |  |  |  |  |  |  |  |  |  |
| 26DX82-027 |  | Prefabrykacja ruroci¹gów – Sekcja 03 | 5d | 2025-11-25 A | 2025-12-02 A | 26DX82-012, 26DX82-020 SS+5d | 100% | 2025-11-26 | 2025-12-02 |  |  | Aerother | 26DX82 | Ruroci¹g | Budowa | Roboty | Agnieszk | Automaty | PM200 | Zespó³-I | Blok | Niski | Pakiet | L2 |  |
| 26DX82-028 |  | Monta¿ ruroci¹gów – Sekcja 03 | 11.9d | 2026-04-03 A | 2026-04-20 A | 26DX82-027, 26DX82-014 SS+8d | 100% | 2026-04-01 | 2026-04-15 |  |  | Aerother | 26DX82 | Ruroci¹g | Budowa | Roboty | Agnieszk | Automaty | PM200 | Zespó³-I | Blok | Normalny | Pakiet | L2 |  |
| 26DX82-029 |  | Próba ciœnieniowa – Sekcja 03 | 2d | 2026-04-17 A | 2026-04-22 A | 26DX82-028 | 100% | 2026-04-16 | 2026-04-17 |  |  | Aerother | 26DX82 | Ruroci¹g | Budowa | Roboty | Agnieszk | Automaty | PM000 | Zespó³-W | Blok | Normalny | Pakiet | L2 | Ryzyko opóŸnienia |
| 26DX82-030 |  | Izolacje – Sekcja 03 | 7d | 2026-04-22 A | 2026-05-04 A | 26DX82-029 | 100% | 2026-04-20 | 2026-04-28 | Kalendarz 6-dniowy | Rev B | Aerother | 26DX82 | Ruroci¹g | Budowa | Roboty | Agnieszk | Automaty | PM000 | Zespó³-W | Blok | Niski | Pakiet | L2 |  |
| 26DX82-031 |  | Malowanie i oznakowanie – Sekcja 03 | 5d | 2026-04-28 A | 2026-05-04 A | 26DX82-030 FF+2d | 100% | 2026-04-24 | 2026-04-30 |  | Rev B | Aerother | 26DX82 | Ruroci¹g | Budowa | Roboty | Agnieszk | Automaty | PM000 | Zespó³-W | Blok | Wysoki | Pakiet | L2 |  |
|  | SEKCJA 04 | **Sekcja 04** |  | 2025-12-02 | 2026-05-04 |  |  |  |  |  |  |  |  |  |  |  |  |  |  |  |  |  |  |  |  |
| 26DX82-032 |  | Prefabrykacja ruroci¹gów – Sekcja 04 | 4.4d | 2025-12-02 A | 2025-12-10 A | 26DX82-012, 26DX82-027 SS+5d | 100% | 2025-12-03 | 2025-12-08 |  | Rev C | Aerother | 26DX82 | Ruroci¹g | Budowa | Roboty | Agnieszk | Automaty | PM000 | Zespó³-K | Blok | Normalny | Pakiet | L2 |  |
| 26DX82-033 |  | Monta¿ ruroci¹gów – Sekcja 04 | 8.4d | 2026-03-27 A | 2026-04-09 A | 26DX82-032, 26DX82-014 SS+4d | 100% | 2026-03-26 | 2026-04-06 |  |  | Aerother | 26DX82 | Ruroci¹g | Budowa | Roboty | Agnieszk | Automaty | PM000 | Zespó³-W | Blok | Normalny | Pakiet | L2 |  |
| 26DX82-034 |  | Próba ciœnieniowa – Sekcja 04 | 6d | 2026-04-09 A | 2026-04-21 A | 26DX82-033 | 100% | 2026-04-07 | 2026-04-14 |  | Rev C | Aerother | 26DX82 | Ruroci¹g | Budowa | Roboty | Agnieszk | Automaty | PM000 | Zespó³-K | Blok | Niski | Pakiet | L2 |  |
| 26DX82-035 |  | Izolacje – Sekcja 04 | 9d | 2026-04-16 A | 2026-04-28 A | 26DX82-034 | 100% | 2026-04-15 | 2026-04-27 |  |  | Aerother | 26DX82 | Ruroci¹g | Budowa | Roboty | Agnieszk | Automaty | PM000 | Zespó³-K | Blok | Krytyczn | Pakiet | L2 |  |
| 26DX82-036 |  | Malowanie i oznakowanie – Sekcja 04 | 7d | 2026-04-22 A | 2026-05-04 A | 26DX82-035 FF+2d | 100% | 2026-04-21 | 2026-04-29 |  |  | Aerother | 26DX82 | Ruroci¹g | Budowa | Roboty | Agnieszk | Automaty | PM000 | Zespó³-I | Blok | Normalny | Pakiet | L2 |  |

| ID | WBS | Activity | Duration | Start | Finish | Predecessors | Complete | Planned start | Planned finish | Calendar | AC_Wykonawca | AC_Obiekt | AC_Dyscyplina | AC_Faza | AC_Zakres | AC_Opiekun | AC_Obszar | AC_PP_PM | AC_Zespol | AC_Blok | AC_Priorytet | AC_Pakiet | AC_Poziom | Uwagi harmonogramisty | Rewizja dokumentu |
| --- | --- | --- | --- | --- | --- | --- | --- | --- | --- | --- | --- | --- | --- | --- | --- | --- | --- | --- | --- | --- | --- | --- | --- | --- | --- |
|  | SEKCJA 05 | **Sekcja 05** |  | 2025-12-10 | 2026-05-18 |  |  |  |  |  |  |  |  |  |  |  |  |  |  |  |  |  |  |  |  |
| 26DX82-039 |  | Prefabrykacja ruroci¹gów – Sekcja 05 | 4.1d | 2025-12-10 A | 2025-12-15 A | 26DX82-012, 26DX82-032 SS+5d | 100% |  |  |  | Aerother | 26DX82 | Ruroci¹g | Budowa | Roboty | Agnieszk | Automaty | PM000 | Zespó³-I | Blok | Krytyczn | Pakiet | L2 |  |  |
| 26DX82-040 |  | Monta¿ ruroci¹gów – Sekcja 05 | 15.2d | 2026-03-31 A | 2026-04-21 A | 26DX82-039, 26DX82-014 SS+7d | 100% | 2026-03-31 | 2026-04-20 |  | Aerother | 26DX82 | Ruroci¹g | Budowa | Roboty | Agnieszk | Automaty | PM000 | Zespó³-W | Blok | Normalny | Pakiet | L2 | Uzgodnione na koordynacji |  |
| 26DX82-041 |  | Próba ciœnieniowa – Sekcja 05 | 5d | 2026-04-20 A | 2026-04-29 A | 26DX82-040 | 100% | 2026-04-21 | 2026-04-27 |  | Aerother | 26DX82 | Ruroci¹g | Budowa | Roboty | Agnieszk | Automaty | PM000 | Zespó³-W | Blok | Normalny | Pakiet | L2 |  | Rev A |
| 26DX82-042 |  | Izolacje – Sekcja 05 | 7d | 2026-05-01 A | 2026-05-12 A | 26DX82-041 | 100% | 2026-04-28 | 2026-05-06 |  | Aerother | 26DX82 | Ruroci¹g | Budowa | Roboty | Agnieszk | Automaty | PM000 | Zespó³-W | Blok | Normalny | Pakiet | L2 | Uzgodnione na koordynacji |  |
| 26DX82-043 |  | Malowanie i oznakowanie – Sekcja 05 | 7d | 2026-05-05 A | 2026-05-18 A | 26DX82-042 FF+2d | 100% | 2026-04-30 | 2026-05-08 |  | Aerother | 26DX82 | Ruroci¹g | Budowa | Roboty | Agnieszk | Automaty | PM000 | Zespó³-K | Blok | Normalny | Pakiet | L2 | Do weryfikacji z wykonawc¹ | Rev C |
|  | SEKCJA 06 | **Sekcja 06** |  | 2025-12-17 | 2026-04-22 |  |  |  |  |  |  |  |  |  |  |  |  |  |  |  |  |  |  |  |  |
|  | PODSEKCJA | **Podsekcja 06.A** |  | 2025-12-17 | 2026-04-22 |  |  |  |  |  |  |  |  |  |  |  |  |  |  |  |  |  |  |  |  |
| 26DX82-044 |  | Prefabrykacja ruroci¹gów – Sekcja 06 | 8.8d | 2025-12-17 A | 2025-12-31 A | 26DX82-012, 26DX82-039 SS+5d | 100% | 2025-12-17 | 2025-12-26 |  | Aerother | 26DX82 | Ruroci¹g | Budowa | Roboty | Agnieszk | Automaty | PM000 | Zespó³-K | Blok | Normalny | Pakiet | L2 |  | Rev C |
| 26DX82-045 |  | Monta¿ ruroci¹gów – Sekcja 06 | 6.4d | 2026-03-23 A | 2026-04-02 A | 26DX82-044, 26DX82-014 SS | 100% | 2026-03-20 | 2026-03-27 |  | Aerother | 26DX82 | Ruroci¹g | Budowa | Roboty | Agnieszk | Automaty | PM000 | Zespó³-K | Blok | Niski | Pakiet | L2 |  | Rev C |
| 26DX82-046 |  | Próba ciœnieniowa – Sekcja 06 | 3d | 2026-03-31 A | 2026-04-02 A | 26DX82-045 | 100% | 2026-03-30 | 2026-04-01 |  | Aerother | 26DX82 | Ruroci¹g | Budowa | Roboty | Agnieszk | Automaty | PM000 | Zespó³-E | Blok | Wysoki | Pakiet | L2 |  |  |
| 26DX82-047 |  | Izolacje – Sekcja 06 | 9d | 2026-04-07 A | 2026-04-22 A | 26DX82-046 | 100% | 2026-04-02 | 2026-04-14 | Kalendarz 6-dniowy | Aerother | 26DX82 | Ruroci¹g | Budowa | Roboty | Agnieszk | Automaty | PM000 | Zespó³-W | Blok | Normalny | Pakiet | L2 |  |  |
| 26DX82-048 |  | Malowanie i oznakowanie – Sekcja 06 | 6d | 2026-04-08 A | 2026-04-15 A | 26DX82-047 FF+2d | 100% | 2026-04-09 | 2026-04-16 |  | Aerother | 26DX82 | Ruroci¹g | Budowa | Roboty | Agnieszk | Automaty | PM000 | Zespó³-K | Blok | Normalny | Pakiet | L2 |  |  |
|  | SEKCJA 07 | **Sekcja 07** |  | 2025-12-24 | 2026-04-24 |  |  |  |  |  |  |  |  |  |  |  |  |  |  |  |  |  |  |  |  |
| 26DX82-051 |  | Prefabrykacja ruroci¹gów – Sekcja 07 | 13.2d | 2025-12-24 A | 2026-01-13 A | 26DX82-012, 26DX82-044 SS+5d | 100% | 2025-12-24 | 2026-01-09 |  | Aerother | 26DX82 | Ruroci¹g | Budowa | Roboty | Agnieszk | Automaty | PM000 | Zespó³-K | Blok | Normalny | Pakiet | L2 | Uzgodnione na koordynacji |  |
| 26DX82-052 |  | Monta¿ ruroci¹gów – Sekcja 07 | 5.6d | 2026-04-06 A | 2026-04-15 A | 26DX82-051, 26DX82-014 SS+9d | 100% | 2026-04-02 | 2026-04-08 |  | Aerother | 26DX82 | Ruroci¹g | Budowa | Roboty | Agnieszk | Automaty | PM000 | Zespó³-W | Blok | Normalny | Pakiet | L2 | Bez uwag |  |
| 26DX82-053 |  | Próba ciœnieniowa – Sekcja 07 | 2d | 2026-04-08 A | 2026-04-09 A | 26DX82-052 | 100% | 2026-04-09 | 2026-04-10 | Kalendarz 6-dniowy | Aerother | 26DX82 | Ruroci¹g | Budowa | Roboty | Agnieszk | Automaty | PM200 | Zespó³-E | Blok | Normalny | Pakiet | L2 |  |  |
| 26DX82-054 |  | Izolacje – Sekcja 07 | 5d | 2026-04-10 A | 2026-04-20 A | 26DX82-053 | 100% | 2026-04-13 | 2026-04-17 |  | Aerother | 26DX82 | Ruroci¹g | Budowa | Roboty | Agnieszk | Automaty | PM000 | Zespó³-K | Blok | Normalny | Pakiet | L2 | Czeka na dostawê |  |
| 26DX82-055 |  | Malowanie i oznakowanie – Sekcja 07 | 6d | 2026-04-16 A | 2026-04-24 A | 26DX82-054 FF+2d | 100% | 2026-04-14 | 2026-04-21 |  | Aerother | 26DX82 | Ruroci¹g | Budowa | Roboty | Agnieszk | Automaty | PM000 | Zespó³-W | Blok | Niski | Pakiet | L2 | Do weryfikacji z wykonawc¹ | Rev A |
|  | SEKCJA 08 | **Sekcja 08** |  | 2026-01-01 | 2026-05-15 |  |  |  |  |  |  |  |  |  |  |  |  |  |  |  |  |  |  |  |  |
| 26DX82-056 |  | Prefabrykacja ruroci¹gów – Sekcja 08 | 7d | 2026-01-01 A | 2026-01-13 A | 26DX82-012, 26DX82-051 SS+5d | 100% | 2025-12-31 | 2026-01-08 |  | Aerother | 26DX82 | Ruroci¹g | Budowa | Roboty | Agnieszk | Automaty | PM000 | Zespó³-K | Blok | Normalny | Pakiet | L2 |  | Rev B |
| 26DX82-057 |  | Monta¿ ruroci¹gów – Sekcja 08 | 23.8d | 2026-04-01 A | 2026-05-06 A | 26DX82-056, 26DX82-014 SS+5d | 100% | 2026-03-27 | 2026-04-28 |  | Aerother | 26DX82 | Ruroci¹g | Budowa | Roboty | Agnieszk | Automaty | PM000 | Zespó³-W | Blok | Niski | Pakiet | L2 |  |  |
| 26DX82-058 |  | Próba ciœnieniowa – Sekcja 08 | 5d | 2026-04-28 A | 2026-05-05 A | 26DX82-057 | 100% | 2026-04-29 | 2026-05-05 |  | Aerother | 26DX82 | Ruroci¹g | Budowa | Roboty | Agnieszk | Automaty | PM000 | Zespó³-K | Blok | Normalny | Pakiet | L2 | Ryzyko opóŸnienia | Rev C |
| 26DX82-060 |  | Malowanie i oznakowanie – Sekcja 08 | 7d | 2026-05-05 A | 2026-05-14 A | 26DX82-059 FF+2d | 100% | 2026-05-06 | 2026-05-14 |  | Aerother | 26DX82 | Ruroci¹g | Budowa | Roboty | Agnieszk | Automaty | PM000 | Zespó³-K | Blok | Normalny | Pakiet | L2 |  |  |
| 26DX82-059 |  | Izolacje – Sekcja 08 | 5d | 2026-05-07 A | 2026-05-15 A | 26DX82-058 | 100% | 2026-05-06 | 2026-05-12 |  | Aerother | 26DX82 | Ruroci¹g | Budowa | Roboty | Agnieszk | Automaty | PM000 | Zespó³-W | Blok | Normalny | Pakiet | L2 | Do weryfikacji z wykonawc¹ |  |

| ID | WBS | Activity | Duration | Start | Finish | Predecessors | Complete | Planned start | Planned finish | Calendar | AC_Wykonawca | AC_Obiekt | AC_Dyscyplina | AC_Faza | AC_Zakres | AC_Opiekun | AC_Obszar | AC_PP_PM | AC_Zespol | AC_Blok | AC_Priorytet | AC_Pakiet | AC_Poziom | Uwagi harmonogramisty | Rewizja dokumentu |
| --- | --- | --- | --- | --- | --- | --- | --- | --- | --- | --- | --- | --- | --- | --- | --- | --- | --- | --- | --- | --- | --- | --- | --- | --- | --- |
|  | SEKCJA 09 | **Sekcja 09** |  | 2026-01-06 | 2026-04-29 |  |  |  |  |  |  |  |  |  |  |  |  |  |  |  |  |  |  |  |  |
|  | PODSEKCJA | **Podsekcja 09.A** |  | 2026-01-06 | 2026-04-29 |  |  |  |  |  |  |  |  |  |  |  |  |  |  |  |  |  |  |  |  |
| 26DX82-063 |  | Prefabrykacja ruroci¹gów – Sekcja 09 | 12d | 2026-01-06 A | 2026-01-23 A | 26DX82-012, 26DX82-056 SS+5d | 100% | 2026-01-07 | 2026-01-22 |  | Aerother | 26DX82 | Ruroci¹g | Budowa | Roboty | Agnieszk | Automaty | PM000 | Zespó³-K | Blok | Wysoki | Pakiet | L2 |  |  |
| 26DX82-064 |  | Monta¿ ruroci¹gów – Sekcja 09 | 8.3d | 2026-03-30 A | 2026-04-13 A | 26DX82-063, 26DX82-014 SS+7d | 100% | 2026-03-31 | 2026-04-09 |  | Aerother | 26DX82 | Ruroci¹g | Budowa | Roboty | Agnieszk | Automaty | PM300 | Zespó³-I | Blok | Normalny | Pakiet | L2 |  |  |
| 26DX82-065 |  | Próba ciœnieniowa – Sekcja 09 | 6d | 2026-04-10 A | 2026-04-21 A | 26DX82-064 | 100% | 2026-04-10 | 2026-04-17 |  | Aerother | 26DX82 | Ruroci¹g | Budowa | Roboty | Agnieszk | Automaty | PM000 | Zespó³-W | Blok | Wysoki | Pakiet | L2 |  |  |
| 26DX82-067 |  | Malowanie i oznakowanie – Sekcja 09 | 8d | 2026-04-16 A | 2026-04-29 A | 26DX82-066 FF+2d | 100% | 2026-04-16 | 2026-04-27 |  | Aerother | 26DX82 | Ruroci¹g | Budowa | Roboty | Agnieszk | Automaty | PM000 | Zespó³-K | Blok | Normalny | Pakiet | L2 |  |  |
| 26DX82-066 |  | Izolacje – Sekcja 09 | 4d | 2026-04-20 A | 2026-04-28 A | 26DX82-065 | 100% | 2026-04-20 | 2026-04-23 |  | Aerother | 26DX82 | Ruroci¹g | Budowa | Roboty | Agnieszk | Automaty | PM000 | Zespó³-K | Blok | Normalny | Pakiet | L2 |  |  |
|  | SEKCJA 10 | **Sekcja 10** |  | 2026-01-19 | 2026-05-06 |  |  |  |  |  |  |  |  |  |  |  |  |  |  |  |  |  |  |  |  |
| 26DX82-068 |  | Prefabrykacja ruroci¹gów – Sekcja 10 | 11.7d | 2026-01-19 A | 2026-02-02 A | 26DX82-012, 26DX82-063 SS+5d | 100% | 2026-01-14 | 2026-01-28 |  | Aerother | 26DX82 | Ruroci¹g | Budowa | Roboty | Agnieszk | Automaty | PM000 | Zespó³-E | Blok | Normalny | Pakiet | L2 |  |  |
| 26DX82-069 |  | Monta¿ ruroci¹gów – Sekcja 10 | 12d | 2026-04-02 A | 2026-04-20 A | 26DX82-068, 26DX82-014 SS+10d | 100% | 2026-04-03 | 2026-04-20 |  | Aerother | 26DX82 | Ruroci¹g | Budowa | Roboty | Agnieszk | Automaty | PM000 | Zespó³-W | Blok | Normalny | Pakiet | L2 | Uzgodnione na koordynacji | Rev A |
| 26DX82-070 |  | Próba ciœnieniowa – Sekcja 10 | 2d | 2026-04-22 A | 2026-04-23 A | 26DX82-069 | 100% | 2026-04-21 | 2026-04-22 |  | Aerother | 26DX82 | Ruroci¹g | Budowa | Roboty | Agnieszk | Automaty | PM000 | Zespó³-K | Blok | Niski | Pakiet | L2 |  | Rev B |
| 26DX82-071 |  | Izolacje – Sekcja 10 | 5d | 2026-04-27 A | 2026-05-05 A | 26DX82-070 | 100% | 2026-04-23 | 2026-04-29 |  | Aerother | 26DX82 | Ruroci¹g | Budowa | Roboty | Agnieszk | Automaty | PM000 | Zespó³-W | Blok | Normalny | Pakiet | L2 |  |  |
| 26DX82-072 |  | Malowanie i oznakowanie – Sekcja 10 | 3d | 2026-04-30 A | 2026-05-06 A | 26DX82-071 FF+2d | 100% | 2026-04-29 | 2026-05-01 |  | Aerother | 26DX82 | Ruroci¹g | Budowa | Roboty | Agnieszk | Automaty | PM000 | Zespó³-K | Blok | Normalny | Pakiet | L2 |  | Rev B |
|  | SEKCJA 11 | **Sekcja 11** |  | 2026-01-21 | 2026-04-29 |  |  |  |  |  |  |  |  |  |  |  |  |  |  |  |  |  |  |  |  |
| 26DX82-075 |  | Prefabrykacja ruroci¹gów – Sekcja 11 | 7.7d | 2026-01-21 A | 2026-01-30 A | 26DX82-012, 26DX82-068 SS+5d | 100% | 2026-01-21 | 2026-01-29 |  | Aerother | 26DX82 | Ruroci¹g | Budowa | Roboty | Agnieszk | Automaty | PM000 | Zespó³-W | Blok | Normalny | Pakiet | L2 | Do weryfikacji z wykonawc¹ |  |
| 26DX82-076 |  | Monta¿ ruroci¹gów – Sekcja 11 | 7.6d | 2026-04-01 A | 2026-04-14 A | 26DX82-075, 26DX82-014 SS+7d | 100% | 2026-03-31 | 2026-04-08 |  | Aerother | 26DX82 | Ruroci¹g | Budowa | Roboty | Agnieszk | Automaty | PM000 | Zespó³-K | Blok | Normalny | Pakiet | L2 | Czeka na dostawê |  |
| 26DX82-077 |  | Próba ciœnieniowa – Sekcja 11 | 2d | 2026-04-08 A | 2026-04-09 A | 26DX82-076 | 100% | 2026-04-09 | 2026-04-10 |  | Aerother | 26DX82 | Ruroci¹g | Budowa | Roboty | Agnieszk | Automaty | PM000 | Zespó³-W | Blok | Krytyczn | Pakiet | L2 | Czeka na dostawê |  |
| 26DX82-078 |  | Izolacje – Sekcja 11 | 11d | 2026-04-14 A | 2026-04-28 A | 26DX82-077 | 100% | 2026-04-13 | 2026-04-27 |  | Aerother | 26DX82 | Ruroci¹g | Budowa | Roboty | Agnieszk | Automaty | PM000 | Zespó³-W | Blok | Niski | Pakiet | L2 |  | Rev B |
| 26DX82-079 |  | Malowanie i oznakowanie – Sekcja 11 | 2d | 2026-04-28 A | 2026-04-29 A | 26DX82-078 FF+2d | 100% |  |  |  | Aerother | 26DX82 | Ruroci¹g | Budowa | Roboty | Agnieszk | Automaty | PM000 | Zespó³-K | Blok | Wysoki | Pakiet | L2 | Czeka na dostawê | Rev A |
|  | SEKCJA 12 | **Sekcja 12** |  | 2026-02-02 | 2026-04-22 |  |  |  |  |  |  |  |  |  |  |  |  |  |  |  |  |  |  |  |  |
|  | PODSEKCJA | **Podsekcja 12.A** |  | 2026-02-02 | 2026-04-22 |  |  |  |  |  |  |  |  |  |  |  |  |  |  |  |  |  |  |  |  |
| 26DX82-080 |  | Prefabrykacja ruroci¹gów – Sekcja 12 | 8.4d | 2026-02-02 A | 2026-02-11 A | 26DX82-012, 26DX82-075 SS+5d | 100% | 2026-01-28 | 2026-02-06 |  | Aerother | 26DX82 | Ruroci¹g | Budowa | Roboty | Agnieszk | Automaty | PM000 | Zespó³-W | Blok | Normalny | Pakiet | L2 |  |  |
| 26DX82-081 |  | Monta¿ ruroci¹gów – Sekcja 12 | 5.3d | 2026-03-23 A | 2026-03-27 A | 26DX82-080, 26DX82-014 SS+1d | 100% |  |  |  | Aerother | 26DX82 | Ruroci¹g | Budowa | Roboty | Agnieszk | Automaty | PM000 | Zespó³-W | Blok | Normalny | Pakiet | L2 |  | Rev C |
| 26DX82-082 |  | Próba ciœnieniowa – Sekcja 12 | 3d | 2026-03-30 A | 2026-04-06 A | 26DX82-081 | 100% | 2026-03-30 | 2026-04-01 |  | Aerother | 26DX82 | Ruroci¹g | Budowa | Roboty | Agnieszk | Automaty | PM300 | Zespó³-E | Blok | Normalny | Pakiet | L2 |  |  |
| 26DX82-083 |  | Izolacje – Sekcja 12 | 11d | 2026-04-07 A | 2026-04-22 A | 26DX82-082 | 100% | 2026-04-02 | 2026-04-16 |  | Aerother | 26DX82 | Ruroci¹g | Budowa | Roboty | Agnieszk | Automaty | PM000 | Zespó³-W | Blok | Niski | Pakiet | L2 |  |  |
| 26DX82-084 |  | Malowanie i oznakowanie – Sekcja 12 | 3d | 2026-04-20 A | 2026-04-22 A | 26DX82-083 FF+2d | 100% | 2026-04-16 | 2026-04-20 | Kalendarz 6-dniowy | Aerother | 26DX82 | Ruroci¹g | Budowa | Roboty | Agnieszk | Automaty | PM000 | Zespó³-W | Blok | Wysoki | Pakiet | L2 |  |  |

| ID | WBS | Activity | Duration | Start | Finish | Predecessors | Complete | Planned start | Planned finish | Rewizja dokumentu | AC_Wykonawca | AC_Obiekt | AC_Dyscyplina | AC_Faza | AC_Zakres | AC_Opiekun | AC_Obszar | AC_PP_PM | AC_Zespol | AC_Blok | AC_Priorytet | AC_Pakiet | AC_Poziom | Uwagi harmonogramisty |
| --- | --- | --- | --- | --- | --- | --- | --- | --- | --- | --- | --- | --- | --- | --- | --- | --- | --- | --- | --- | --- | --- | --- | --- | --- |
|  | SEKCJA 13 | **Sekcja 13** |  | 2026-02-03 | 2026-05-22 |  |  |  |  |  |  |  |  |  |  |  |  |  |  |  |  |  |  |  |
| 26DX82-087 |  | Prefabrykacja ruroci¹gów – Sekcja 13 | 12.9d | 2026-02-03 A | 2026-02-20 A | 26DX82-012, 26DX82-080 SS+5d | 100% | 2026-02-04 | 2026-02-19 | Rev B | Aerother | 26DX82 | Ruroci¹g | Budowa | Roboty | Agnieszk | Automaty | PM000 | Zespó³-K | Blok | Normalny | Pakiet | L2 |  |
| 26DX82-088 |  | Monta¿ ruroci¹gów – Sekcja 13 | 23.3d | 2026-04-02 A | 2026-05-04 A | 26DX82-087, 26DX82-014 SS+8d | 100% | 2026-04-01 | 2026-05-01 | Rev C | Aerother | 26DX82 | Ruroci¹g | Budowa | Roboty | Agnieszk | Automaty | PM000 | Zespó³-K | Blok | Normalny | Pakiet | L2 |  |
| 26DX82-089 |  | Próba ciœnieniowa – Sekcja 13 | 2d | 2026-05-04 A | 2026-05-07 A | 26DX82-088 | 100% | 2026-05-04 | 2026-05-05 |  | Aerother | 26DX82 | Ruroci¹g | Budowa | Roboty | Agnieszk | Automaty | PM000 | Zespó³-K | Blok | Normalny | Pakiet | L2 |  |
| 26DX82-090 |  | Izolacje – Sekcja 13 | 8d | 2026-05-07 A | 2026-05-20 A | 26DX82-089 | 100% | 2026-05-06 | 2026-05-15 |  | Aerother | 26DX82 | Ruroci¹g | Budowa | Roboty | Agnieszk | Automaty | PM000 | Zespó³-K | Blok | Normalny | Pakiet | L2 |  |
| 26DX82-091 |  | Malowanie i oznakowanie – Sekcja 13 | 7d | 2026-05-12 A | 2026-05-22 A | 26DX82-090 FF+2d | 100% | 2026-05-11 | 2026-05-19 |  | Aerother | 26DX82 | Ruroci¹g | Budowa | Roboty | Agnieszk | Automaty | PM000 | Zespó³-K | Blok | Wysoki | Pakiet | L2 |  |
|  | SEKCJA 14 | **Sekcja 14** |  | 2026-02-13 | 2026-05-15 |  |  |  |  |  |  |  |  |  |  |  |  |  |  |  |  |  |  |  |
| 26DX82-092 |  | Prefabrykacja ruroci¹gów – Sekcja 14 | 12.8d | 2026-02-13 A | 2026-03-04 A | 26DX82-012, 26DX82-087 SS+5d | 100% | 2026-02-11 | 2026-02-26 |  | Aerother | 26DX82 | Ruroci¹g | Budowa | Roboty | Agnieszk | Automaty | PM000 | Zespó³-W | Blok | Normalny | Pakiet | L2 |  |
| 26DX82-093 |  | Monta¿ ruroci¹gów – Sekcja 14 | 13.3d | 2026-04-06 A | 2026-04-24 A | 26DX82-092, 26DX82-014 SS+9d | 100% | 2026-04-02 | 2026-04-20 |  | Aerother | 26DX82 | Ruroci¹g | Budowa | Roboty | Agnieszk | Automaty | PM000 | Zespó³-E | Blok | Niski | Pakiet | L2 |  |
| 26DX82-094 |  | Próba ciœnieniowa – Sekcja 14 | 6d | 2026-04-23 A | 2026-05-04 A | 26DX82-093 | 100% | 2026-04-21 | 2026-04-28 |  | Aerother | 26DX82 | Ruroci¹g | Budowa | Roboty | Agnieszk | Automaty | PM000 | Zespó³-K | Blok | Normalny | Pakiet | L2 |  |
| 26DX82-095 |  | Izolacje – Sekcja 14 | 9d | 2026-04-28 A | 2026-05-11 A | 26DX82-094 | 100% | 2026-04-29 | 2026-05-11 |  | Aerother | 26DX82 | Ruroci¹g | Budowa | Roboty | Agnieszk | Automaty | PM000 | Zespó³-W | Blok | Normalny | Pakiet | L2 |  |
| 26DX82-096 |  | Malowanie i oznakowanie – Sekcja 14 | 2d | 2026-05-11 A | 2026-05-15 A | 26DX82-095 FF+2d | 100% | 2026-05-12 | 2026-05-13 | Rev C | Aerother | 26DX82 | Ruroci¹g | Budowa | Roboty | Agnieszk | Automaty | PM000 | Zespó³-W | Blok | Normalny | Pakiet | L2 |  |
|  | SEKCJA 15 | **Sekcja 15** |  | 2026-02-18 | 2026-05-05 |  |  |  |  |  |  |  |  |  |  |  |  |  |  |  |  |  |  |  |
|  | PODSEKCJA | **Podsekcja 15.A** |  | 2026-02-18 | 2026-05-05 |  |  |  |  |  |  |  |  |  |  |  |  |  |  |  |  |  |  |  |
| 26DX82-099 |  | Prefabrykacja ruroci¹gów – Sekcja 15 | 12.1d | 2026-02-18 A | 2026-03-06 A | 26DX82-012, 26DX82-092 SS+5d | 100% | 2026-02-18 | 2026-03-05 |  | Aerother | 26DX82 | Ruroci¹g | Budowa | Roboty | Agnieszk | Automaty | PM000 | Zespó³-W | Blok | Niski | Pakiet | L2 | Do weryfikacji z wykonawc¹ |
| 26DX82-100 |  | Monta¿ ruroci¹gów – Sekcja 15 | 22.7d | 2026-03-19 A | 2026-04-21 A | 26DX82-099, 26DX82-014 SS | 100% | 2026-03-20 | 2026-04-20 |  | Aerother | 26DX82 | Ruroci¹g | Budowa | Roboty | Agnieszk | Automaty | PM000 | Zespó³-W | Blok | Normalny | Pakiet | L2 | Czeka na dostawê |
| 26DX82-101 |  | Próba ciœnieniowa – Sekcja 15 | 2d | 2026-04-21 A | 2026-04-22 A | 26DX82-100 | 100% |  |  |  | Aerother | 26DX82 | Ruroci¹g | Budowa | Roboty | Agnieszk | Automaty | PM000 | Zespó³-I | Blok | Normalny | Pakiet | L2 |  |
| 26DX82-103 |  | Malowanie i oznakowanie – Sekcja 15 | 7d | 2026-04-22 A | 2026-05-05 A | 26DX82-102 FF+2d | 100% | 2026-04-21 | 2026-04-29 | Rev C | Aerother | 26DX82 | Ruroci¹g | Budowa | Roboty | Agnieszk | Automaty | PM000 | Zespó³-W | Blok | Normalny | Pakiet | L2 |  |
| 26DX82-102 |  | Izolacje – Sekcja 15 | 3d | 2026-04-24 A | 2026-04-30 A | 26DX82-101 | 100% | 2026-04-23 | 2026-04-27 |  | Aerother | 26DX82 | Ruroci¹g | Budowa | Roboty | Agnieszk | Automaty | PM000 | Zespó³-K | Blok | Normalny | Pakiet | L2 |  |
|  | SEKCJA 16 | **Sekcja 16** |  | 2026-02-27 | 2026-05-05 |  |  |  |  |  |  |  |  |  |  |  |  |  |  |  |  |  |  |  |
| 26DX82-104 |  | Prefabrykacja ruroci¹gów – Sekcja 16 | 7.4d | 2026-02-27 A | 2026-03-11 A | 26DX82-012, 26DX82-099 SS+5d | 100% | 2026-02-25 | 2026-03-05 |  | Aerother | 26DX82 | Ruroci¹g | Budowa | Roboty | Agnieszk | Automaty | PM000 | Zespó³-K | Blok | Wysoki | Pakiet | L2 | Uzgodnione na koordynacji |
| 26DX82-105 |  | Monta¿ ruroci¹gów – Sekcja 16 | 24.4d | 2026-03-24 A | 2026-04-29 A | 26DX82-104, 26DX82-014 SS | 100% | 2026-03-20 | 2026-04-22 |  | Aerother | 26DX82 | Ruroci¹g | Budowa | Roboty | Agnieszk | Automaty | PM000 | Zespó³-W | Blok | Normalny | Pakiet | L2 |  |
| 26DX82-106 |  | Próba ciœnieniowa – Sekcja 16 | 4d | 2026-04-23 A | 2026-04-28 A | 26DX82-105 | 100% |  |  |  | Aerother | 26DX82 | Ruroci¹g | Budowa | Roboty | Agnieszk | Automaty | PM000 | Zespó³-K | Blok | Normalny | Pakiet | L2 | Ryzyko opóŸnienia |
| 26DX82-108 |  | Malowanie i oznakowanie – Sekcja 16 | 7d | 2026-04-27 A | 2026-05-05 A | 26DX82-107 FF+2d | 100% |  |  |  | Aerother | 26DX82 | Ruroci¹g | Budowa | Roboty | Agnieszk | Automaty | PM000 | Zespó³-W | Blok | Normalny | Pakiet | L2 | Czeka na dostawê |
| 26DX82-107 |  | Izolacje – Sekcja 16 | 3d | 2026-04-28 A | 2026-05-01 A | 26DX82-106 | 100% | 2026-04-29 | 2026-05-01 |  | Aerother | 26DX82 | Ruroci¹g | Budowa | Roboty | Agnieszk | Automaty | PM000 | Zespó³-K | Blok | Normalny | Pakiet | L2 |  |

| ID | WBS | Activity | Type | Duration | Start | Finish | Predecessors | Complete | Actual finish | Planned start | Planned finish | Calendar | AC_Wykonawca | AC_Obiekt | AC_Dyscyplina | AC_Faza | AC_Zakres | AC_Opiekun | AC_Obszar | AC_PP_PM | AC_Zespol | AC_Blok | AC_Priorytet | AC_Pakiet | AC_Poziom | Rewizja dokumentu | Uwagi harmonogramisty |
| --- | --- | --- | --- | --- | --- | --- | --- | --- | --- | --- | --- | --- | --- | --- | --- | --- | --- | --- | --- | --- | --- | --- | --- | --- | --- | --- | --- |
|  | SEKCJA 17 | **Sekcja 17** |  |  | 2026-03-03 | 2026-05-01 |  |  |  |  |  |  |  |  |  |  |  |  |  |  |  |  |  |  |  |  |  |
| 26DX82-111 |  | Prefabrykacja ruroci¹gów – Sekcja 17 |  | 11.2d | 2026-03-03 A | 2026-03-17 A | 26DX82-012, 26DX82-104 SS+5d | 100% |  | 2026-03-04 | 2026-03-18 |  | Aerother | 26DX82 | Ruroci¹g | Budowa | Roboty | Agnieszk | Automaty | PM000 | Zespó³-K | Blok | Wysoki | Pakiet | L2 |  |  |
| 26DX82-112 |  | Monta¿ ruroci¹gów – Sekcja 17 |  | 8.1d | 2026-04-02 A | 2026-04-14 A | 26DX82-111, 26DX82-014 SS+9d | 100% |  | 2026-04-02 | 2026-04-13 |  | Aerother | 26DX82 | Ruroci¹g | Budowa | Roboty | Agnieszk | Automaty | PM200 | Zespó³-I | Blok | Wysoki | Pakiet | L2 |  |  |
| 26DX82-113 |  | Próba ciœnieniowa – Sekcja 17 |  | 3d | 2026-04-14 A | 2026-04-20 A | 26DX82-112 | 100% |  | 2026-04-14 | 2026-04-16 |  | Aerother | 26DX82 | Ruroci¹g | Budowa | Roboty | Agnieszk | Automaty | PM000 | Zespó³-K | Blok | Normalny | Pakiet | L2 | Rev C |  |
| 26DX82-114 |  | Izolacje – Sekcja 17 |  | 4d | 2026-04-16 A | 2026-04-22 A | 26DX82-113 | 100% |  | 2026-04-17 | 2026-04-22 |  | Aerother | 26DX82 | Ruroci¹g | Budowa | Roboty | Agnieszk | Automaty | PM000 | Zespó³-W | Blok | Normalny | Pakiet | L2 | Rev C |  |
| 26DX82-115 |  | Malowanie i oznakowanie – Sekcja 17 |  | 4d | 2026-04-23 A | 2026-05-01 A | 26DX82-114 FF+2d | 100% |  | 2026-04-21 | 2026-04-24 |  | Aerother | 26DX82 | Ruroci¹g | Budowa | Roboty | Agnieszk | Automaty | PM000 | Zespó³-W | Blok | Normalny | Pakiet | L2 |  |  |
|  | SEKCJA 18 | **Sekcja 18** |  |  | 2026-03-16 | 2026-05-11 |  |  |  |  |  |  |  |  |  |  |  |  |  |  |  |  |  |  |  |  |  |
|  | PODSEKCJA | **Podsekcja 18.A** |  |  | 2026-03-16 | 2026-05-11 |  |  |  |  |  |  |  |  |  |  |  |  |  |  |  |  |  |  |  |  |  |
| 26DX82-116 |  | Prefabrykacja ruroci¹gów – Sekcja 18 |  | 14.7d | 2026-03-16 A | 2026-04-07 A | 26DX82-012, 26DX82-111 SS+5d | 100% |  | 2026-03-11 | 2026-03-30 |  | Aerother | 26DX82 | Ruroci¹g | Budowa | Roboty | Agnieszk | Automaty | PM000 | Zespó³-K | Blok | Normalny | Pakiet | L2 |  |  |
| 26DX82-117 |  | Monta¿ ruroci¹gów – Sekcja 18 |  | 15.1d | 2026-03-31 A | 2026-04-20 A | 26DX82-116, 26DX82-014 SS+1d | 100% |  |  |  |  | Aerother | 26DX82 | Ruroci¹g | Budowa | Roboty | Agnieszk | Automaty | PM000 | Zespó³-W | Blok | Normalny | Pakiet | L2 |  |  |
| 26DX82-118 |  | Próba ciœnieniowa – Sekcja 18 |  | 4d | 2026-04-24 A | 2026-05-01 A | 26DX82-117 | 100% |  | 2026-04-21 | 2026-04-24 |  | Aerother | 26DX82 | Ruroci¹g | Budowa | Roboty | Agnieszk | Automaty | PM000 | Zespó³-W | Blok | Wysoki | Pakiet | L2 |  | Do weryfikacji z wykonawc¹ |
| 26DX82-119 |  | Izolacje – Sekcja 18 |  | 6d | 2026-04-27 A | 2026-05-05 A | 26DX82-118 | 100% |  | 2026-04-27 | 2026-05-04 |  | Aerother | 26DX82 | Ruroci¹g | Budowa | Roboty | Agnieszk | Automaty | PM100 | Zespó³-I | Blok | Normalny | Pakiet | L2 | Rev A | Do weryfikacji z wykonawc¹ |
| 26DX82-120 |  | Malowanie i oznakowanie – Sekcja 18 |  | 5d | 2026-04-30 A | 2026-05-11 A | 26DX82-119 FF+2d | 100% |  | 2026-04-30 | 2026-05-06 |  | Aerother | 26DX82 | Ruroci¹g | Budowa | Roboty | Agnieszk | Automaty | PM000 | Zespó³-W | Blok | Normalny | Pakiet | L2 |  |  |
|  | SEKCJA 19 | **Sekcja 19** |  |  | 2026-03-20 | 2026-05-07 |  |  |  |  |  |  |  |  |  |  |  |  |  |  |  |  |  |  |  |  |  |
| 26DX82-123 |  | Prefabrykacja ruroci¹gów – Sekcja 19 |  | 8.6d | 2026-03-20 A | 2026-04-03 A | 26DX82-012, 26DX82-116 SS+5d | 100% |  | 2026-03-18 | 2026-03-27 |  | Aerother | 26DX82 | Ruroci¹g | Budowa | Roboty | Agnieszk | Automaty | PM000 | Zespó³-I | Blok | Normalny | Pakiet | L2 |  |  |
| 26DX82-124 |  | Monta¿ ruroci¹gów – Sekcja 19 |  | 15d | 2026-04-01 A | 2026-04-23 A | 26DX82-123, 26DX82-014 SS+9d | 100% |  | 2026-04-02 | 2026-04-22 |  | Aerother | 26DX82 | Ruroci¹g | Budowa | Roboty | Agnieszk | Automaty | PM000 | Zespó³-W | Blok | Normalny | Pakiet | L2 |  |  |
| 26DX82-125 |  | Próba ciœnieniowa – Sekcja 19 |  | 2d | 2026-04-23 A | 2026-04-27 A | 26DX82-124 | 100% |  | 2026-04-23 | 2026-04-24 | Kalendarz 6-dniowy | Aerother | 26DX82 | Ruroci¹g | Budowa | Roboty | Agnieszk | Automaty | PM000 | Zespó³-W | Blok | Niski | Pakiet | L2 |  |  |
| 26DX82-127 |  | Malowanie i oznakowanie – Sekcja 19 |  | 6d | 2026-04-27 A | 2026-05-07 A | 26DX82-126 FF+2d | 100% |  | 2026-04-24 | 2026-05-01 |  | Aerother | 26DX82 | Ruroci¹g | Budowa | Roboty | Agnieszk | Automaty | PM000 | Zespó³-K | Blok | Wysoki | Pakiet | L2 |  | Bez uwag |
| 26DX82-126 |  | Izolacje – Sekcja 19 |  | 3d | 2026-04-29 A | 2026-05-05 A | 26DX82-125 | 100% |  | 2026-04-27 | 2026-04-29 |  | Aerother | 26DX82 | Ruroci¹g | Budowa | Roboty | Agnieszk | Automaty | PM000 | Zespó³-W | Blok | Normalny | Pakiet | L2 |  |  |
|  | PROJ | **Projektowanie** |  |  | 2025-01-29 | 2025-08-20 |  |  |  |  |  |  |  |  |  |  |  |  |  |  |  |  |  |  |  |  |  |
|  | DOKUMENTAC | **Dokumentacja** |  |  | 2025-01-29 | 2025-08-20 |  |  |  |  |  |  |  |  |  |  |  |  |  |  |  |  |  |  |  |  |  |
| 26DX82-001 |  | Projekt wykonawczy – Sieæ œwiat³owodowa |  | 111d | 2025-01-29 A | 2025-07-03 A |  | 100% |  | 2025-01-30 | 2025-07-03 |  | Aerother | 26DX82 | Budowlan | Projekto | Projekt | Agnieszk | Automaty | PM000 | Zespó³-W | Blok | Normalny | Pakiet | L2 |  |  |
| 26DX82-002 |  | Uzgodnienie dokumentacji z Inwestorem |  | 19d | 2025-07-08 A | 2025-08-06 A | 26DX82-001 | 100% |  | 2025-07-04 | 2025-07-30 |  | Aerother | 26DX82 | Budowlan | Projekto | Projekt | Agnieszk | Automaty | PM000 | Zespó³-W | Blok | Normalny | Pakiet | L2 |  |  |
| 26DX82-003 |  | Zatwierdzenie dokumentacji do realizacji |  | 13d | 2025-07-31 A | 2025-08-20 A | 26DX82-002 | 100% |  | 2025-07-31 | 2025-08-18 |  | Aerother | 26DX82 | Budowlan | Projekto | Projekt | Agnieszk | Automaty | PM000 | Zespó³-W | Blok | Normalny | Pakiet | L2 |  |  |
| 26DX82-004 |  | KM: Dokumentacja zatwierdzona – Sieæ œwiat³owodowa | milestone | 0d | 2025-08-19 A | 2025-08-19 | 26DX82-003 | 100% | 2025-08-18 |  |  |  | Aerother | 26DX82 | Budowlan | Projekto | Kamieñ | Agnieszk | Automaty | PM000 | Zespó³-W | Blok | Niski | Pakiet | L1 |  | Ryzyko opóŸnienia |

| ID | WBS | Activity | Type | Duration | Start | Finish | Predecessors | Complete | Actual start | Actual finish | Planned start | Planned finish | Calendar | Rewizja dokumentu | AC_Wykonawca | AC_Obiekt | AC_Dyscyplina | AC_Faza | AC_Zakres | AC_Opiekun | AC_Obszar | AC_PP_PM | AC_Zespol | AC_Blok | AC_Priorytet | AC_Pakiet | AC_Poziom | Uwagi harmonogramisty |
| --- | --- | --- | --- | --- | --- | --- | --- | --- | --- | --- | --- | --- | --- | --- | --- | --- | --- | --- | --- | --- | --- | --- | --- | --- | --- | --- | --- | --- |
|  | ROZR | **Rozruch** |  |  | 2026-06-24 | 2026-08-10 |  |  |  |  |  |  |  |  |  |  |  |  |  |  |  |  |  |  |  |  |  |  |
|  | ROZRUCH | **Rozruch** |  |  | 2026-06-24 | 2026-08-10 |  |  |  |  |  |  |  |  |  |  |  |  |  |  |  |  |  |  |  |  |  |  |
| 26DX82-130 |  | Przegl¹d gotowoœci do rozruchu |  | 8d | 2026-06-24 A | 2026-07-03 A | 26DX82-129, 26DX82-019, 26DX82-024, 26DX82-026 | 100% |  |  | 2026-06-22 | 2026-07-01 |  | Rev A | Aerother | 26DX82 | Rozruch | Rozruch | Rozruch | Agnieszk | Automaty | PM000 | Zespó³-W | Blok | Wysoki | Pakiet | L2 |  |
| 26DX82-131 |  | Rozruch na zimno |  | 9d | 2026-07-06 A | 2026-07-16 A | 26DX82-130 | 100% |  |  | 2026-07-02 | 2026-07-14 |  |  | Aerother | 26DX82 | Rozruch | Rozruch | Rozruch | Agnieszk | Automaty | PM000 | Zespó³-E | Blok | Normalny | Pakiet | L2 |  |
| 26DX82-132 |  | Rozruch na gor¹co / próby ruchowe |  | 14d | 2026-07-20 A | 2026-08-10 A | 26DX82-131 | 100% |  |  | 2026-07-15 | 2026-08-03 |  |  | Aerother | 26DX82 | Rozruch | Rozruch | Rozruch | Agnieszk | Automaty | PM000 | Zespó³-K | Blok | Normalny | Pakiet | L2 |  |
| 26DX82-133 |  | KM: Odbiór koñcowy – Sieæ œwiat³owodowa | milestone | 0d | 2026-08-04 | 2026-08-04 A | 26DX82-132 | 100% | 2026-08-05 |  |  |  |  |  | Aerother | 26DX82 | Rozruch | Rozruch | Kamieñ | Agnieszk | Automaty | PM000 | Zespó³-K | Blok | Normalny | Pakiet | L1 | Czeka na dostawê |
|  | ZAKU | **Zakupy** |  |  | 2025-03-03 | 2026-03-25 |  |  |  |  |  |  |  |  |  |  |  |  |  |  |  |  |  |  |  |  |  |  |
|  | DOSTAWY | **Dostawy** |  |  | 2025-09-12 | 2026-03-25 |  |  |  |  |  |  |  |  |  |  |  |  |  |  |  |  |  |  |  |  |  |  |
| 26DX82-008 |  | Produkcja u dostawcy |  | 111d | 2025-09-12 A | 2026-02-18 A | 26DX82-007 | 100% |  |  | 2025-09-15 | 2026-02-16 |  |  | Aerother | 26DX82 | Mechanic | Zakupy | Dostawa | Agnieszk | Automaty | PM000 | Zespó³-W | Blok | Normalny | Pakiet | L2 |  |
| 26DX82-009 |  | Testy FAT |  | 8d | 2026-02-18 A | 2026-02-27 A | 26DX82-008 | 100% |  |  | 2026-02-17 | 2026-02-26 |  | Rev C | Aerother | 26DX82 | Mechanic | Zakupy | Dostawa | Agnieszk | Automaty | PM000 | Zespó³-W | Blok | Krytyczn | Pakiet | L2 |  |
| 26DX82-010 |  | Transport i dostawa na plac budowy |  | 15d | 2026-02-26 A | 2026-03-19 A | 26DX82-009 | 100% |  |  | 2026-02-27 | 2026-03-19 |  |  | Aerother | 26DX82 | Mechanic | Zakupy | Dostawa | Agnieszk | Automaty | PM000 | Zespó³-W | Blok | Normalny | Pakiet | L2 | Uzgodnione na koordynacji |
| 26DX82-011 |  | KM: Dostawa na budowê – Sieæ œwiat³owodowa | milestone | 0d | 2026-03-25 A | 2026-03-25 | 26DX82-010 | 100% |  | 2026-03-24 | 2026-03-20 | 2026-03-20 |  |  | Aerother | 26DX82 | Mechanic | Zakupy | Kamieñ | Agnieszk | Automaty | PM300 | Zespó³-E | Blok | Normalny | Pakiet | L1 |  |
|  | ZAMÓWIENIA | **Zamówienia** |  |  | 2025-03-03 | 2025-09-18 |  |  |  |  |  |  |  |  |  |  |  |  |  |  |  |  |  |  |  |  |  |  |
| 26DX82-005 |  | Zapytanie ofertowe |  | 18d | 2025-03-03 A | 2025-03-31 A | 26DX82-001 SS+20d | 100% |  |  | 2025-02-27 | 2025-03-24 |  |  | Aerother | 26DX82 | Mechanic | Zakupy | Dostawa | Agnieszk | Automaty | PM000 | Zespó³-K | Blok | Normalny | Pakiet | L2 |  |
| 26DX82-006 |  | Analiza i wybór ofert |  | 10d | 2025-03-26 A | 2025-04-09 A | 26DX82-005 | 100% |  |  | 2025-03-25 | 2025-04-07 |  |  | Aerother | 26DX82 | Mechanic | Zakupy | Dostawa | Agnieszk | Automaty | PM000 | Zespó³-W | Blok | Normalny | Pakiet | L2 |  |
| 26DX82-007 |  | Zawarcie umowy / zamówienie |  | 7d | 2025-09-08 A | 2025-09-18 A | 26DX82-006, 26DX82-004 SS, 14NX42-004 (other project) FS+12d | 100% |  |  | 2025-09-04 | 2025-09-12 |  | Rev B | Aerother | 26DX82 | Mechanic | Zakupy | Dostawa | Agnieszk | Automaty | PM000 | Zespó³-W | Blok | Normalny | Pakiet | L1 |  |
|  | 29DM24 | **29DM24 – Uk³ady pomiarowe** |  |  | 2025-01-13 | 2026-09-10 |  |  |  |  |  |  |  |  |  |  |  |  |  |  |  |  |  |  |  |  |  |  |
|  | BUDO | **Budowa** |  |  | 2025-07-09 | 2026-07-23 |  |  |  |  |  |  |  |  |  |  |  |  |  |  |  |  |  |  |  |  |  |  |
|  | AKPIA | **AKPiA** |  |  | 2026-05-22 | 2026-06-04 |  |  |  |  |  |  |  |  |  |  |  |  |  |  |  |  |  |  |  |  |  |  |
| 29DM24-176 |  | Monta¿ uk³adów AKPiA |  | 10d | 2026-05-22 A | 2026-06-04 A | 29DM24-014 SS+5d | 100% |  |  | 2026-05-19 | 2026-06-01 |  |  | TurboSys | 29DM24 | AKPiA | Budowa | Roboty | Krzyszto | Automaty | PM000 | Zespó³-K | Blok | Normalny | Pakiet | L2 | Uzgodnione na koordynacji |
|  | ELEKTRYKA | **Elektryka** |  |  | 2026-05-22 | 2026-06-26 |  |  |  |  |  |  |  |  |  |  |  |  |  |  |  |  |  |  |  |  |  |  |
| 29DM24-158 |  | Pod³¹czenia i pomiary – trasa 24 |  | 6d | 2026-05-22 A | 2026-06-03 A | 29DM24-157 FF | 100% |  |  | 2026-05-22 | 2026-05-29 |  |  | TurboSys | 29DM24 | Elektryc | Budowa | Roboty | Krzyszto | Automaty | PM000 | Zespó³-W | Blok | Niski | Pakiet | L2 | Do weryfikacji z wykonawc¹ |
| 29DM24-073 |  | Uk³adanie kabli – trasa 10 |  | 19d | 2026-05-25 A | 2026-06-22 A | 29DM24-014 SS+10d | 100% |  |  | 2026-05-26 | 2026-06-19 |  | Rev A | TurboSys | 29DM24 | Elektryc | Budowa | Roboty | Krzyszto | Automaty | PM000 | Zespó³-W | Blok | Normalny | Pakiet | L2 |  |
| 29DM24-097 |  | Uk³adanie kabli – trasa 14 |  | 17d | 2026-05-25 A | 2026-06-18 A | 29DM24-014 SS+10d | 100% |  |  | 2026-05-26 | 2026-06-17 |  | Rev C | TurboSys | 29DM24 | Elektryc | Budowa | Roboty | Krzyszto | Automaty | PM000 | Zespó³-K | Blok | Wysoki | Pakiet | L2 |  |
| 29DM24-025 |  | Uk³adanie kabli – trasa 02 |  | 13d | 2026-05-26 A | 2026-06-16 A | 29DM24-014 SS+10d | 100% |  |  | 2026-05-26 | 2026-06-11 | Kalendarz 6-dniowy |  | TurboSys | 29DM24 | Elektryc | Budowa | Roboty | Krzyszto | Automaty | PM000 | Zespó³-W | Blok | Normalny | Pakiet | L2 |  |
| 29DM24-038 |  | Pod³¹czenia i pomiary – trasa 04 |  | 8d | 2026-05-26 A | 2026-06-09 A | 29DM24-037 FF | 100% |  |  | 2026-05-22 | 2026-06-02 |  |  | TurboSys | 29DM24 | Elektryc | Budowa | Roboty | Krzyszto | Automaty | PM000 | Zespó³-W | Blok | Normalny | Pakiet | L2 |  |
| 29DM24-085 |  | Uk³adanie kabli – trasa 12 |  | 7d | 2026-05-26 A | 2026-06-03 A | 29DM24-014 SS+10d | 100% |  |  |  |  |  |  | TurboSys | 29DM24 | Elektryc | Budowa | Roboty | Krzyszto | Automaty | PM000 | Zespó³-W | Blok | Normalny | Pakiet | L2 |  |
| 29DM24-086 |  | Pod³¹czenia i pomiary – trasa 12 |  | 8d | 2026-05-26 A | 2026-06-05 A | 29DM24-085 FF | 100% |  |  | 2026-05-25 | 2026-06-03 |  |  | TurboSys | 29DM24 | Elektryc | Budowa | Roboty | Krzyszto | Automaty | PM000 | Zespó³-K | Blok | Normalny | Pakiet | L2 | Ryzyko opóŸnienia |
| 29DM24-157 |  | Uk³adanie kabli – trasa 24 |  | 4d | 2026-05-26 A | 2026-06-02 A | 29DM24-014 SS+10d | 100% |  |  | 2026-05-26 | 2026-05-29 |  | Rev A | TurboSys | 29DM24 | Elektryc | Budowa | Roboty | Krzyszto | Automaty | PM000 | Zespó³-K | Blok | Normalny | Pakiet | L2 |  |
| 29DM24-050 |  | Pod³¹czenia i pomiary – trasa 06 |  | 7d | 2026-05-27 A | 2026-06-08 A | 29DM24-049 FF | 100% |  |  | 2026-05-28 | 2026-06-05 | Kalendarz 6-dniowy |  | TurboSys | 29DM24 | Elektryc | Budowa | Roboty | Krzyszto | Automaty | PM300 | Zespó³-I | Blok | Normalny | Pakiet | L2 |  |
| 29DM24-061 |  | Uk³adanie kabli – trasa 08 |  | 20d | 2026-05-27 A | 2026-06-26 A | 29DM24-014 SS+10d | 100% |  |  | 2026-05-26 | 2026-06-22 |  |  | TurboSys | 29DM24 | Elektryc | Budowa | Roboty | Krzyszto | Automaty | PM000 | Zespó³-K | Blok | Normalny | Pakiet | L2 | Bez uwag |
| 29DM24-146 |  | Pod³¹czenia i pomiary – trasa 22 |  | 8d | 2026-05-27 A | 2026-06-08 A | 29DM24-145 FF | 100% |  |  | 2026-05-22 | 2026-06-02 |  | Rev B | TurboSys | 29DM24 | Elektryc | Budowa | Roboty | Krzyszto | Automaty | PM000 | Zespó³-W | Blok | Normalny | Pakiet | L2 |  |
| 29DM24-037 |  | Uk³adanie kabli – trasa 04 |  | 6d | 2026-05-28 A | 2026-06-08 A | 29DM24-014 SS+10d | 100% |  |  | 2026-05-26 | 2026-06-02 |  |  | TurboSys | 29DM24 | Elektryc | Budowa | Roboty | Krzyszto | Automaty | PM000 | Zespó³-K | Blok | Normalny | Pakiet | L2 |  |
| 29DM24-109 |  | Uk³adanie kabli – trasa 16 |  | 10d | 2026-05-28 A | 2026-06-15 A | 29DM24-014 SS+10d | 100% |  |  | 2026-05-26 | 2026-06-08 |  |  | TurboSys | 29DM24 | Elektryc | Budowa | Roboty | Krzyszto | Automaty | PM000 | Zespó³-W | Blok | Wysoki | Pakiet | L2 | Do weryfikacji z wykonawc¹ |
| 29DM24-133 |  | Uk³adanie kabli – trasa 20 |  | 10d | 2026-05-28 A | 2026-06-11 A | 29DM24-014 SS+10d | 100% |  |  | 2026-05-26 | 2026-06-08 |  | Rev B | TurboSys | 29DM24 | Elektryc | Budowa | Roboty | Krzyszto | Automaty | PM000 | Zespó³-W | Blok | Normalny | Pakiet | L2 | Bez uwag |
| 29DM24-169 |  | Uk³adanie kabli – trasa 26 |  | 9d | 2026-05-28 A | 2026-06-10 A | 29DM24-014 SS+10d | 100% |  |  | 2026-05-26 | 2026-06-05 |  | Rev B | TurboSys | 29DM24 | Elektryc | Budowa | Roboty | Krzyszto | Automaty | PM000 | Zespó³-K | Blok | Niski | Pakiet | L2 | Do weryfikacji z wykonawc¹ |
| 29DM24-049 |  | Uk³adanie kabli – trasa 06 |  | 9d | 2026-05-29 A | 2026-06-12 A | 29DM24-014 SS+10d | 100% |  |  | 2026-05-26 | 2026-06-05 |  |  | TurboSys | 29DM24 | Elektryc | Budowa | Roboty | Krzyszto | Automaty | PM000 | Zespó³-W | Blok | Krytyczn | Pakiet | L2 |  |
| 29DM24-121 |  | Uk³adanie kabli – trasa 18 |  | 13d | 2026-05-29 A | 2026-06-19 A | 29DM24-014 SS+10d | 100% |  |  | 2026-05-26 | 2026-06-11 |  |  | TurboSys | 29DM24 | Elektryc | Budowa | Roboty | Krzyszto | Automaty | PM300 | Zespó³-E | Blok | Normalny | Pakiet | L2 |  |
| 29DM24-145 |  | Uk³adanie kabli – trasa 22 |  | 6d | 2026-05-29 A | 2026-06-05 A | 29DM24-014 SS+10d | 100% |  |  | 2026-05-26 | 2026-06-02 |  |  | TurboSys | 29DM24 | Elektryc | Budowa | Roboty | Krzyszto | Automaty | PM000 | Zespó³-K | Blok | Wysoki | Pakiet | L2 |  |
| 29DM24-170 |  | Pod³¹czenia i pomiary – trasa 26 |  | 5d | 2026-05-29 A | 2026-06-08 A | 29DM24-169 FF | 100% |  |  | 2026-06-01 | 2026-06-05 |  |  | TurboSys | 29DM24 | Elektryc | Budowa | Roboty | Krzyszto | Automaty | PM000 | Zespó³-W | Blok | Normalny | Pakiet | L2 |  |
| 29DM24-134 |  | Pod³¹czenia i pomiary – trasa 20 |  | 8d | 2026-06-01 A | 2026-06-15 A | 29DM24-133 FF | 100% |  |  | 2026-05-28 | 2026-06-08 |  |  | TurboSys | 29DM24 | Elektryc | Budowa | Roboty | Krzyszto | Automaty | PM000 | Zespó³-W | Blok | Normalny | Pakiet | L2 |  |
| 29DM24-026 |  | Pod³¹czenia i pomiary – trasa 02 |  | 8d | 2026-06-03 A | 2026-06-17 A | 29DM24-025 FF | 100% |  |  | 2026-06-02 | 2026-06-11 |  |  | TurboSys | 29DM24 | Elektryc | Budowa | Roboty | Krzyszto | Automaty | PM300 | Zespó³-I | Blok | Normalny | Pakiet | L2 |  |
| 29DM24-110 |  | Pod³¹czenia i pomiary – trasa 16 |  | 4d | 2026-06-08 A | 2026-06-16 A | 29DM24-109 FF | 100% |  |  | 2026-06-03 | 2026-06-08 |  |  | TurboSys | 29DM24 | Elektryc | Budowa | Roboty | Krzyszto | Automaty | PM000 | Zespó³-W | Blok | Wysoki | Pakiet | L2 |  |
| 29DM24-122 |  | Pod³¹czenia i pomiary – trasa 18 |  | 7d | 2026-06-08 A | 2026-06-19 A | 29DM24-121 FF | 100% |  |  | 2026-06-03 | 2026-06-11 |  |  | TurboSys | 29DM24 | Elektryc | Budowa | Roboty | Krzyszto | Automaty | PM000 | Zespó³-W | Blok | Normalny | Pakiet | L2 | Uzgodnione na koordynacji |
| 29DM24-074 |  | Pod³¹czenia i pomiary – trasa 10 |  | 7d | 2026-06-16 A | 2026-06-26 A | 29DM24-073 FF | 100% |  |  | 2026-06-11 | 2026-06-19 |  |  | TurboSys | 29DM24 | Elektryc | Budowa | Roboty | Krzyszto | Automaty | PM000 | Zespó³-K | Blok | Normalny | Pakiet | L2 |  |
| 29DM24-098 |  | Pod³¹czenia i pomiary – trasa 14 |  | 4d | 2026-06-16 A | 2026-06-24 A | 29DM24-097 FF | 100% |  |  | 2026-06-12 | 2026-06-17 |  | Rev C | TurboSys | 29DM24 | Elektryc | Budowa | Roboty | Krzyszto | Automaty | PM000 | Zespó³-W | Blok | Krytyczn | Pakiet | L2 |  |
| 29DM24-062 |  | Pod³¹czenia i pomiary – trasa 08 |  | 3d | 2026-06-17 A | 2026-06-23 A | 29DM24-061 FF | 100% |  |  | 2026-06-18 | 2026-06-22 |  |  | TurboSys | 29DM24 | Elektryc | Budowa | Roboty | Krzyszto | Automaty | PM000 | Zespó³-W | Blok | Normalny | Pakiet | L2 | Bez uwag |

| ID | WBS | Activity | Type | Duration | Start | Finish | Predecessors | Complete | Actual finish | Planned start | Planned finish | Calendar | AC_Wykonawca | AC_Obiekt | AC_Dyscyplina | AC_Faza | AC_Zakres | AC_Opiekun | AC_Obszar | AC_PP_PM | AC_Zespol | AC_Blok | AC_Priorytet | AC_Pakiet | AC_Poziom | Uwagi harmonogramisty | Rewizja dokumentu |
| --- | --- | --- | --- | --- | --- | --- | --- | --- | --- | --- | --- | --- | --- | --- | --- | --- | --- | --- | --- | --- | --- | --- | --- | --- | --- | --- | --- |
|  | MONTA¯ | **Monta¿** |  |  | 2025-09-15 | 2026-07-23 |  |  |  |  |  |  |  |  |  |  |  |  |  |  |  |  |  |  |  |  |  |
| 29DM24-013 |  | Monta¿ konstrukcji stalowych |  | 32d | 2025-09-15 A | 2025-10-29 A | 29DM24-012 | 100% |  | 2025-09-15 | 2025-10-28 |  | TurboSys | 29DM24 | Mechanic | Budowa | Roboty | Krzyszto | Automaty | PM000 | Zespó³-K | Blok | Normalny | Pakiet | L2 |  |  |
| 29DM24-014 |  | Monta¿ urz¹dzeñ g³ównych |  | 49d | 2026-05-15 A | 2026-07-23 A | 29DM24-013, 29DM24-011 | 100% |  | 2026-05-12 | 2026-07-17 |  | TurboSys | 29DM24 | Mechanic | Budowa | Roboty | Krzyszto | Automaty | PM000 | Zespó³-W | Blok | Normalny | Pakiet | L2 |  |  |
| 29DM24-177 |  | KM: Zakoñczenie monta¿u – Uk³ady pomiarowe | milestone | 0d | 2026-07-17 A | 2026-07-17 | 29DM24-168, 29DM24-170, 29DM24-175, 29DM24-176, 29DM24-014 | 100% | 2026-07-16 | 2026-07-20 | 2026-07-20 |  | TurboSys | 29DM24 | Mechanic | Budowa | Kamieñ | Krzyszto | Automaty | PM000 | Zespó³-W | Blok | Normalny | Pakiet | L2 | Do weryfikacji z wykonawc¹ | Rev B |
|  | ROBOTY BUD | **Roboty budowlane** |  |  | 2025-07-09 | 2025-09-12 |  |  |  |  |  |  |  |  |  |  |  |  |  |  |  |  |  |  |  |  |  |
| 29DM24-012 |  | Fundamenty i roboty ziemne |  | 48d | 2025-07-09 A | 2025-09-12 A | 29DM24-007 FS+10d | 100% |  |  |  |  | TurboSys | 29DM24 | Budowlan | Budowa | Roboty | Krzyszto | Automaty | PM000 | Zespó³-K | Blok | Normalny | Pakiet | L2 |  |  |
|  | RUROCI¥GI | **Ruroci¹gi** |  |  | 2025-09-18 | 2026-07-22 |  |  |  |  |  |  |  |  |  |  |  |  |  |  |  |  |  |  |  |  |  |
|  | SEKCJA 01 | **Sekcja 01** |  |  | 2025-09-18 | 2026-07-06 |  |  |  |  |  |  |  |  |  |  |  |  |  |  |  |  |  |  |  |  |  |
| 29DM24-015 |  | Prefabrykacja ruroci¹gów – Sekcja 01 |  | 9.2d | 2025-09-18 A | 2025-10-03 A | 29DM24-012 | 100% |  | 2025-09-15 | 2025-09-25 |  | TurboSys | 29DM24 | Ruroci¹g | Budowa | Roboty | Krzyszto | Automaty | PM000 | Zespó³-W | Blok | Normalny | Pakiet | L2 |  |  |
| 29DM24-016 |  | Monta¿ ruroci¹gów – Sekcja 01 |  | 14.2d | 2026-05-25 A | 2026-06-15 A | 29DM24-015, 29DM24-014 SS+6d | 100% |  | 2026-05-20 | 2026-06-08 |  | TurboSys | 29DM24 | Ruroci¹g | Budowa | Roboty | Krzyszto | Automaty | PM000 | Zespó³-W | Blok | Krytyczn | Pakiet | L2 | Ryzyko opóŸnienia |  |
| 29DM24-017 |  | Próba ciœnieniowa – Sekcja 01 |  | 5d | 2026-06-11 A | 2026-06-17 A | 29DM24-016 | 100% |  | 2026-06-09 | 2026-06-15 |  | TurboSys | 29DM24 | Ruroci¹g | Budowa | Roboty | Krzyszto | Automaty | PM000 | Zespó³-K | Blok | Normalny | Pakiet | L2 |  |  |
| 29DM24-018 |  | Izolacje – Sekcja 01 |  | 10d | 2026-06-19 A | 2026-07-02 A | 29DM24-017 | 100% |  | 2026-06-16 | 2026-06-29 |  | TurboSys | 29DM24 | Ruroci¹g | Budowa | Roboty | Krzyszto | Automaty | PM000 | Zespó³-K | Blok | Niski | Pakiet | L2 |  |  |
| 29DM24-019 |  | Malowanie i oznakowanie – Sekcja 01 |  | 4d | 2026-06-30 A | 2026-07-06 A | 29DM24-018 FF+2d | 100% |  | 2026-06-26 | 2026-07-01 |  | TurboSys | 29DM24 | Ruroci¹g | Budowa | Roboty | Krzyszto | Automaty | PM000 | Zespó³-W | Blok | Normalny | Pakiet | L2 |  | Rev A |
|  | SEKCJA 02 | **Sekcja 02** |  |  | 2025-09-25 | 2026-06-23 |  |  |  |  |  |  |  |  |  |  |  |  |  |  |  |  |  |  |  |  |  |
| 29DM24-020 |  | Prefabrykacja ruroci¹gów – Sekcja 02 |  | 12.4d | 2025-09-25 A | 2025-10-13 A | 29DM24-012, 29DM24-015 SS+5d | 100% |  | 2025-09-22 | 2025-10-07 |  | TurboSys | 29DM24 | Ruroci¹g | Budowa | Roboty | Krzyszto | Automaty | PM000 | Zespó³-W | Blok | Normalny | Pakiet | L2 |  |  |
| 29DM24-021 |  | Monta¿ ruroci¹gów – Sekcja 02 |  | 11d | 2026-05-25 A | 2026-06-09 A | 29DM24-020, 29DM24-014 SS+8d | 100% |  | 2026-05-22 | 2026-06-05 |  | TurboSys | 29DM24 | Ruroci¹g | Budowa | Roboty | Krzyszto | Automaty | PM000 | Zespó³-I | Blok | Normalny | Pakiet | L2 |  | Rev A |
| 29DM24-022 |  | Próba ciœnieniowa – Sekcja 02 |  | 2d | 2026-06-05 A | 2026-06-09 A | 29DM24-021 | 100% |  | 2026-06-08 | 2026-06-09 |  | TurboSys | 29DM24 | Ruroci¹g | Budowa | Roboty | Krzyszto | Automaty | PM000 | Zespó³-K | Blok | Krytyczn | Pakiet | L2 |  | Rev B |
| 29DM24-023 |  | Izolacje – Sekcja 02 |  | 5d | 2026-06-09 A | 2026-06-16 A | 29DM24-022 | 100% |  | 2026-06-10 | 2026-06-16 |  | TurboSys | 29DM24 | Ruroci¹g | Budowa | Roboty | Krzyszto | Automaty | PM000 | Zespó³-K | Blok | Wysoki | Pakiet | L2 |  |  |
| 29DM24-024 |  | Malowanie i oznakowanie – Sekcja 02 |  | 8d | 2026-06-10 A | 2026-06-23 A | 29DM24-023 FF+2d | 100% |  | 2026-06-09 | 2026-06-18 |  | TurboSys | 29DM24 | Ruroci¹g | Budowa | Roboty | Krzyszto | Automaty | PM000 | Zespó³-W | Blok | Wysoki | Pakiet | L2 |  |  |
|  | SEKCJA 03 | **Sekcja 03** |  |  | 2025-09-26 | 2026-06-11 |  |  |  |  |  |  |  |  |  |  |  |  |  |  |  |  |  |  |  |  |  |
|  | PODSEKCJA | **Podsekcja 03.A** |  |  | 2025-09-26 | 2026-06-11 |  |  |  |  |  |  |  |  |  |  |  |  |  |  |  |  |  |  |  |  |  |
| 29DM24-027 |  | Prefabrykacja ruroci¹gów – Sekcja 03 |  | 12.1d | 2025-09-26 A | 2025-10-15 A | 29DM24-012, 29DM24-020 SS+5d | 100% |  | 2025-09-29 | 2025-10-14 |  | TurboSys | 29DM24 | Ruroci¹g | Budowa | Roboty | Krzyszto | Automaty | PM000 | Zespó³-W | Blok | Normalny | Pakiet | L2 |  |  |
| 29DM24-028 |  | Monta¿ ruroci¹gów – Sekcja 03 |  | 9.1d | 2026-05-13 A | 2026-05-26 A | 29DM24-027, 29DM24-014 SS+1d | 100% |  | 2026-05-13 | 2026-05-25 |  | TurboSys | 29DM24 | Ruroci¹g | Budowa | Roboty | Krzyszto | Automaty | PM000 | Zespó³-W | Blok | Normalny | Pakiet | L2 |  |  |
| 29DM24-029 |  | Próba ciœnieniowa – Sekcja 03 |  | 5d | 2026-05-25 A | 2026-06-03 A | 29DM24-028 | 100% |  | 2026-05-26 | 2026-06-01 | Kalendarz 6-dniowy | TurboSys | 29DM24 | Ruroci¹g | Budowa | Roboty | Krzyszto | Automaty | PM000 | Zespó³-E | Blok | Normalny | Pakiet | L2 | Do weryfikacji z wykonawc¹ |  |
| 29DM24-031 |  | Malowanie i oznakowanie – Sekcja 03 |  | 5d | 2026-06-02 A | 2026-06-11 A | 29DM24-030 FF+2d | 100% |  | 2026-06-03 | 2026-06-09 |  | TurboSys | 29DM24 | Ruroci¹g | Budowa | Roboty | Krzyszto | Automaty | PM000 | Zespó³-K | Blok | Wysoki | Pakiet | L2 | Do weryfikacji z wykonawc¹ |  |
| 29DM24-030 |  | Izolacje – Sekcja 03 |  | 4d | 2026-06-03 A | 2026-06-11 A | 29DM24-029 | 100% |  | 2026-06-02 | 2026-06-05 |  | TurboSys | 29DM24 | Ruroci¹g | Budowa | Roboty | Krzyszto | Automaty | PM000 | Zespó³-W | Blok | Normalny | Pakiet | L2 |  |  |

| ID | WBS | Activity | Duration | Start | Finish | Predecessors | Complete | Planned start | Planned finish | Calendar | AC_Wykonawca | AC_Obiekt | AC_Dyscyplina | AC_Faza | AC_Zakres | AC_Opiekun | AC_Obszar | AC_PP_PM | AC_Zespol | AC_Blok | AC_Priorytet | AC_Pakiet | AC_Poziom | Rewizja dokumentu | Uwagi harmonogramisty |
| --- | --- | --- | --- | --- | --- | --- | --- | --- | --- | --- | --- | --- | --- | --- | --- | --- | --- | --- | --- | --- | --- | --- | --- | --- | --- |
|  | SEKCJA 04 | **Sekcja 04** |  | 2025-10-08 | 2026-06-26 |  |  |  |  |  |  |  |  |  |  |  |  |  |  |  |  |  |  |  |  |
| 29DM24-032 |  | Prefabrykacja ruroci¹gów – Sekcja 04 | 3.1d | 2025-10-08 A | 2025-10-14 A | 29DM24-012, 29DM24-027 SS+5d | 100% | 2025-10-06 | 2025-10-08 |  | TurboSys | 29DM24 | Ruroci¹g | Budowa | Roboty | Krzyszto | Automaty | PM100 | Zespó³-I | Blok | Normalny | Pakiet | L2 |  |  |
| 29DM24-033 |  | Monta¿ ruroci¹gów – Sekcja 04 | 8.7d | 2026-05-27 A | 2026-06-09 A | 29DM24-032, 29DM24-014 SS+9d | 100% | 2026-05-25 | 2026-06-03 |  | TurboSys | 29DM24 | Ruroci¹g | Budowa | Roboty | Krzyszto | Automaty | PM000 | Zespó³-W | Blok | Normalny | Pakiet | L2 | Rev A |  |
| 29DM24-034 |  | Próba ciœnieniowa – Sekcja 04 | 6d | 2026-06-08 A | 2026-06-16 A | 29DM24-033 | 100% | 2026-06-04 | 2026-06-11 |  | TurboSys | 29DM24 | Ruroci¹g | Budowa | Roboty | Krzyszto | Automaty | PM000 | Zespó³-I | Blok | Wysoki | Pakiet | L2 |  |  |
| 29DM24-035 |  | Izolacje – Sekcja 04 | 4d | 2026-06-17 A | 2026-06-25 A | 29DM24-034 | 100% | 2026-06-12 | 2026-06-17 |  | TurboSys | 29DM24 | Ruroci¹g | Budowa | Roboty | Krzyszto | Automaty | PM000 | Zespó³-K | Blok | Normalny | Pakiet | L2 |  | Uzgodnione na koordynacji |
| 29DM24-036 |  | Malowanie i oznakowanie – Sekcja 04 | 4d | 2026-06-19 A | 2026-06-26 A | 29DM24-035 FF+2d | 100% | 2026-06-16 | 2026-06-19 |  | TurboSys | 29DM24 | Ruroci¹g | Budowa | Roboty | Krzyszto | Automaty | PM000 | Zespó³-K | Blok | Normalny | Pakiet | L2 |  |  |
|  | SEKCJA 05 | **Sekcja 05** |  | 2025-10-10 | 2026-06-29 |  |  |  |  |  |  |  |  |  |  |  |  |  |  |  |  |  |  |  |  |
| 29DM24-039 |  | Prefabrykacja ruroci¹gów – Sekcja 05 | 8.8d | 2025-10-10 A | 2025-10-21 A | 29DM24-012, 29DM24-032 SS+5d | 100% | 2025-10-13 | 2025-10-22 |  | TurboSys | 29DM24 | Ruroci¹g | Budowa | Roboty | Krzyszto | Automaty | PM000 | Zespó³-W | Blok | Krytyczn | Pakiet | L2 |  |  |
| 29DM24-040 |  | Monta¿ ruroci¹gów – Sekcja 05 | 13.5d | 2026-05-18 A | 2026-06-08 A | 29DM24-039, 29DM24-014 SS+4d | 100% | 2026-05-18 | 2026-06-03 |  | TurboSys | 29DM24 | Ruroci¹g | Budowa | Roboty | Krzyszto | Automaty | PM000 | Zespó³-W | Blok | Niski | Pakiet | L2 | Rev B | Czeka na dostawê |
| 29DM24-041 |  | Próba ciœnieniowa – Sekcja 05 | 5d | 2026-06-08 A | 2026-06-12 A | 29DM24-040 | 100% | 2026-06-04 | 2026-06-10 |  | TurboSys | 29DM24 | Ruroci¹g | Budowa | Roboty | Krzyszto | Automaty | PM200 | Zespó³-E | Blok | Normalny | Pakiet | L2 | Rev B | Czeka na dostawê |
| 29DM24-042 |  | Izolacje – Sekcja 05 | 10d | 2026-06-12 A | 2026-06-26 A | 29DM24-041 | 100% | 2026-06-11 | 2026-06-24 |  | TurboSys | 29DM24 | Ruroci¹g | Budowa | Roboty | Krzyszto | Automaty | PM000 | Zespó³-K | Blok | Normalny | Pakiet | L2 |  | Uzgodnione na koordynacji |
| 29DM24-043 |  | Malowanie i oznakowanie – Sekcja 05 | 7d | 2026-06-19 A | 2026-06-29 A | 29DM24-042 FF+2d | 100% | 2026-06-18 | 2026-06-26 |  | TurboSys | 29DM24 | Ruroci¹g | Budowa | Roboty | Krzyszto | Automaty | PM000 | Zespó³-K | Blok | Wysoki | Pakiet | L2 |  |  |
|  | SEKCJA 06 | **Sekcja 06** |  | 2025-10-22 | 2026-07-17 |  |  |  |  |  |  |  |  |  |  |  |  |  |  |  |  |  |  |  |  |
|  | PODSEKCJA | **Podsekcja 06.A** |  | 2025-10-22 | 2026-07-17 |  |  |  |  |  |  |  |  |  |  |  |  |  |  |  |  |  |  |  |  |
| 29DM24-044 |  | Prefabrykacja ruroci¹gów – Sekcja 06 | 3d | 2025-10-22 A | 2025-10-27 A | 29DM24-012, 29DM24-039 SS+5d | 100% | 2025-10-20 | 2025-10-22 |  | TurboSys | 29DM24 | Ruroci¹g | Budowa | Roboty | Krzyszto | Automaty | PM000 | Zespó³-W | Blok | Normalny | Pakiet | L2 |  |  |
| 29DM24-045 |  | Monta¿ ruroci¹gów – Sekcja 06 | 25d | 2026-05-20 A | 2026-06-24 A | 29DM24-044, 29DM24-014 SS+6d | 100% | 2026-05-20 | 2026-06-23 |  | TurboSys | 29DM24 | Ruroci¹g | Budowa | Roboty | Krzyszto | Automaty | PM000 | Zespó³-W | Blok | Normalny | Pakiet | L2 |  |  |
| 29DM24-046 |  | Próba ciœnieniowa – Sekcja 06 | 2d | 2026-06-29 A | 2026-07-03 A | 29DM24-045 | 100% | 2026-06-24 | 2026-06-25 | Kalendarz 6-dniowy | TurboSys | 29DM24 | Ruroci¹g | Budowa | Roboty | Krzyszto | Automaty | PM000 | Zespó³-W | Blok | Wysoki | Pakiet | L2 | Rev C |  |
| 29DM24-047 |  | Izolacje – Sekcja 06 | 12d | 2026-07-01 A | 2026-07-17 A | 29DM24-046 | 100% | 2026-06-26 | 2026-07-13 |  | TurboSys | 29DM24 | Ruroci¹g | Budowa | Roboty | Krzyszto | Automaty | PM000 | Zespó³-W | Blok | Normalny | Pakiet | L2 |  |  |
| 29DM24-048 |  | Malowanie i oznakowanie – Sekcja 06 | 4d | 2026-07-14 A | 2026-07-17 A | 29DM24-047 FF+2d | 100% | 2026-07-10 | 2026-07-15 |  | TurboSys | 29DM24 | Ruroci¹g | Budowa | Roboty | Krzyszto | Automaty | PM000 | Zespó³-W | Blok | Normalny | Pakiet | L2 |  |  |
|  | SEKCJA 07 | **Sekcja 07** |  | 2025-10-30 | 2026-07-14 |  |  |  |  |  |  |  |  |  |  |  |  |  |  |  |  |  |  |  |  |
| 29DM24-051 |  | Prefabrykacja ruroci¹gów – Sekcja 07 | 3d | 2025-10-30 A | 2025-11-06 A | 29DM24-012, 29DM24-044 SS+5d | 100% | 2025-10-27 | 2025-10-29 |  | TurboSys | 29DM24 | Ruroci¹g | Budowa | Roboty | Krzyszto | Automaty | PM000 | Zespó³-W | Blok | Normalny | Pakiet | L2 |  | Do weryfikacji z wykonawc¹ |
| 29DM24-052 |  | Monta¿ ruroci¹gów – Sekcja 07 | 24.6d | 2026-05-26 A | 2026-07-01 A | 29DM24-051, 29DM24-014 SS+10d | 100% | 2026-05-26 | 2026-06-26 | Kalendarz 6-dniowy | TurboSys | 29DM24 | Ruroci¹g | Budowa | Roboty | Krzyszto | Automaty | PM000 | Zespó³-W | Blok | Normalny | Pakiet | L2 |  |  |
| 29DM24-053 |  | Próba ciœnieniowa – Sekcja 07 | 2d | 2026-06-26 A | 2026-06-29 A | 29DM24-052 | 100% | 2026-06-29 | 2026-06-30 |  | TurboSys | 29DM24 | Ruroci¹g | Budowa | Roboty | Krzyszto | Automaty | PM000 | Zespó³-W | Blok | Normalny | Pakiet | L2 |  |  |
| 29DM24-055 |  | Malowanie i oznakowanie – Sekcja 07 | 7d | 2026-07-01 A | 2026-07-14 A | 29DM24-054 FF+2d | 100% | 2026-06-30 | 2026-07-08 |  | TurboSys | 29DM24 | Ruroci¹g | Budowa | Roboty | Krzyszto | Automaty | PM000 | Zespó³-W | Blok | Normalny | Pakiet | L2 |  |  |
| 29DM24-054 |  | Izolacje – Sekcja 07 | 4d | 2026-07-06 A | 2026-07-14 A | 29DM24-053 | 100% | 2026-07-01 | 2026-07-06 |  | TurboSys | 29DM24 | Ruroci¹g | Budowa | Roboty | Krzyszto | Automaty | PM000 | Zespó³-K | Blok | Wysoki | Pakiet | L2 | Rev B | Do weryfikacji z wykonawc¹ |

| ID | WBS | Activity | Duration | Start | Finish | Predecessors | Complete | Planned start | Planned finish | Calendar | AC_Wykonawca | AC_Obiekt | AC_Dyscyplina | AC_Faza | AC_Zakres | AC_Opiekun | AC_Obszar | AC_PP_PM | AC_Zespol | AC_Blok | AC_Priorytet | AC_Pakiet | AC_Poziom | Uwagi harmonogramisty | Rewizja dokumentu |
| --- | --- | --- | --- | --- | --- | --- | --- | --- | --- | --- | --- | --- | --- | --- | --- | --- | --- | --- | --- | --- | --- | --- | --- | --- | --- |
|  | SEKCJA 08 | **Sekcja 08** |  | 2025-11-05 | 2026-06-17 |  |  |  |  |  |  |  |  |  |  |  |  |  |  |  |  |  |  |  |  |
| 29DM24-056 |  | Prefabrykacja ruroci¹gów – Sekcja 08 | 9.3d | 2025-11-05 A | 2025-11-19 A | 29DM24-012, 29DM24-051 SS+5d | 100% | 2025-11-03 | 2025-11-13 |  | TurboSys | 29DM24 | Ruroci¹g | Budowa | Roboty | Krzyszto | Automaty | PM000 | Zespó³-W | Blok | Normalny | Pakiet | L2 |  |  |
| 29DM24-057 |  | Monta¿ ruroci¹gów – Sekcja 08 | 5.8d | 2026-05-22 A | 2026-05-28 A | 29DM24-056, 29DM24-014 SS+8d | 100% |  |  |  | TurboSys | 29DM24 | Ruroci¹g | Budowa | Roboty | Krzyszto | Automaty | PM000 | Zespó³-I | Blok | Normalny | Pakiet | L2 | Uzgodnione na koordynacji |  |
| 29DM24-058 |  | Próba ciœnieniowa – Sekcja 08 | 6d | 2026-05-29 A | 2026-06-08 A | 29DM24-057 | 100% | 2026-05-29 | 2026-06-05 |  | TurboSys | 29DM24 | Ruroci¹g | Budowa | Roboty | Krzyszto | Automaty | PM000 | Zespó³-K | Blok | Normalny | Pakiet | L2 |  | Rev B |
| 29DM24-059 |  | Izolacje – Sekcja 08 | 5d | 2026-06-09 A | 2026-06-15 A | 29DM24-058 | 100% | 2026-06-08 | 2026-06-12 |  | TurboSys | 29DM24 | Ruroci¹g | Budowa | Roboty | Krzyszto | Automaty | PM000 | Zespó³-K | Blok | Normalny | Pakiet | L2 | Ryzyko opóŸnienia | Rev A |
| 29DM24-060 |  | Malowanie i oznakowanie – Sekcja 08 | 3d | 2026-06-12 A | 2026-06-17 A | 29DM24-059 FF+2d | 100% | 2026-06-12 | 2026-06-16 |  | TurboSys | 29DM24 | Ruroci¹g | Budowa | Roboty | Krzyszto | Automaty | PM000 | Zespó³-W | Blok | Wysoki | Pakiet | L2 |  |  |
|  | SEKCJA 09 | **Sekcja 09** |  | 2025-11-10 | 2026-06-24 |  |  |  |  |  |  |  |  |  |  |  |  |  |  |  |  |  |  |  |  |
|  | PODSEKCJA | **Podsekcja 09.A** |  | 2025-11-10 | 2026-06-24 |  |  |  |  |  |  |  |  |  |  |  |  |  |  |  |  |  |  |  |  |
| 29DM24-063 |  | Prefabrykacja ruroci¹gów – Sekcja 09 | 11.3d | 2025-11-10 A | 2025-11-24 A | 29DM24-012, 29DM24-056 SS+5d | 100% |  |  | Kalendarz 6-dniowy | TurboSys | 29DM24 | Ruroci¹g | Budowa | Roboty | Krzyszto | Automaty | PM000 | Zespó³-K | Blok | Normalny | Pakiet | L2 |  |  |
| 29DM24-064 |  | Monta¿ ruroci¹gów – Sekcja 09 | 11.8d | 2026-05-15 A | 2026-05-29 A | 29DM24-063, 29DM24-014 SS+2d | 100% | 2026-05-14 | 2026-05-28 |  | TurboSys | 29DM24 | Ruroci¹g | Budowa | Roboty | Krzyszto | Automaty | PM000 | Zespó³-K | Blok | Normalny | Pakiet | L2 | Ryzyko opóŸnienia | Rev B |
| 29DM24-066 |  | Izolacje – Sekcja 09 | 12d | 2026-06-02 A | 2026-06-17 A | 29DM24-065 | 100% |  |  |  | TurboSys | 29DM24 | Ruroci¹g | Budowa | Roboty | Krzyszto | Automaty | PM000 | Zespó³-W | Blok | Normalny | Pakiet | L2 |  | Rev B |
| 29DM24-065 |  | Próba ciœnieniowa – Sekcja 09 | 2d | 2026-06-03 A | 2026-06-09 A | 29DM24-064 | 100% | 2026-05-29 | 2026-06-01 |  | TurboSys | 29DM24 | Ruroci¹g | Budowa | Roboty | Krzyszto | Automaty | PM000 | Zespó³-W | Blok | Normalny | Pakiet | L2 |  | Rev C |
| 29DM24-067 |  | Malowanie i oznakowanie – Sekcja 09 | 4d | 2026-06-19 A | 2026-06-24 A | 29DM24-066 FF+2d | 100% | 2026-06-16 | 2026-06-19 |  | TurboSys | 29DM24 | Ruroci¹g | Budowa | Roboty | Krzyszto | Automaty | PM000 | Zespó³-K | Blok | Wysoki | Pakiet | L2 |  |  |
|  | SEKCJA 10 | **Sekcja 10** |  | 2025-11-19 | 2026-06-18 |  |  |  |  |  |  |  |  |  |  |  |  |  |  |  |  |  |  |  |  |
| 29DM24-068 |  | Prefabrykacja ruroci¹gów – Sekcja 10 | 6.3d | 2025-11-19 A | 2025-12-01 A | 29DM24-012, 29DM24-063 SS+5d | 100% | 2025-11-17 | 2025-11-24 |  | TurboSys | 29DM24 | Ruroci¹g | Budowa | Roboty | Krzyszto | Automaty | PM000 | Zespó³-W | Blok | Normalny | Pakiet | L2 | Czeka na dostawê |  |
| 29DM24-069 |  | Monta¿ ruroci¹gów – Sekcja 10 | 6.2d | 2026-05-28 A | 2026-06-08 A | 29DM24-068, 29DM24-014 SS+10d | 100% | 2026-05-26 | 2026-06-02 |  | TurboSys | 29DM24 | Ruroci¹g | Budowa | Roboty | Krzyszto | Automaty | PM000 | Zespó³-W | Blok | Niski | Pakiet | L2 | Ryzyko opóŸnienia |  |
| 29DM24-071 |  | Izolacje – Sekcja 10 | 5d | 2026-06-04 A | 2026-06-11 A | 29DM24-070 | 100% | 2026-06-05 | 2026-06-11 |  | TurboSys | 29DM24 | Ruroci¹g | Budowa | Roboty | Krzyszto | Automaty | PM100 | Zespó³-E | Blok | Normalny | Pakiet | L2 | Czeka na dostawê |  |
| 29DM24-070 |  | Próba ciœnieniowa – Sekcja 10 | 2d | 2026-06-08 A | 2026-06-11 A | 29DM24-069 | 100% | 2026-06-03 | 2026-06-04 |  | TurboSys | 29DM24 | Ruroci¹g | Budowa | Roboty | Krzyszto | Automaty | PM000 | Zespó³-W | Blok | Krytyczn | Pakiet | L2 |  |  |
| 29DM24-072 |  | Malowanie i oznakowanie – Sekcja 10 | 3d | 2026-06-15 A | 2026-06-18 A | 29DM24-071 FF+2d | 100% | 2026-06-11 | 2026-06-15 |  | TurboSys | 29DM24 | Ruroci¹g | Budowa | Roboty | Krzyszto | Automaty | PM000 | Zespó³-E | Blok | Normalny | Pakiet | L2 |  |  |
|  | SEKCJA 11 | **Sekcja 11** |  | 2025-11-27 | 2026-06-19 |  |  |  |  |  |  |  |  |  |  |  |  |  |  |  |  |  |  |  |  |
| 29DM24-075 |  | Prefabrykacja ruroci¹gów – Sekcja 11 | 12.7d | 2025-11-27 A | 2025-12-12 A | 29DM24-012, 29DM24-068 SS+5d | 100% | 2025-11-24 | 2025-12-09 |  | TurboSys | 29DM24 | Ruroci¹g | Budowa | Roboty | Krzyszto | Automaty | PM000 | Zespó³-K | Blok | Normalny | Pakiet | L2 | Bez uwag |  |
| 29DM24-076 |  | Monta¿ ruroci¹gów – Sekcja 11 | 8.7d | 2026-05-27 A | 2026-06-08 A | 29DM24-075, 29DM24-014 SS+8d | 100% | 2026-05-22 | 2026-06-02 | Kalendarz 6-dniowy | TurboSys | 29DM24 | Ruroci¹g | Budowa | Roboty | Krzyszto | Automaty | PM000 | Zespó³-W | Blok | Normalny | Pakiet | L2 |  |  |
| 29DM24-078 |  | Izolacje – Sekcja 11 | 8d | 2026-06-04 A | 2026-06-17 A | 29DM24-077 | 100% | 2026-06-05 | 2026-06-16 |  | TurboSys | 29DM24 | Ruroci¹g | Budowa | Roboty | Krzyszto | Automaty | PM000 | Zespó³-W | Blok | Wysoki | Pakiet | L2 | Ryzyko opóŸnienia |  |
| 29DM24-077 |  | Próba ciœnieniowa – Sekcja 11 | 2d | 2026-06-05 A | 2026-06-11 A | 29DM24-076 | 100% | 2026-06-03 | 2026-06-04 |  | TurboSys | 29DM24 | Ruroci¹g | Budowa | Roboty | Krzyszto | Automaty | PM000 | Zespó³-K | Blok | Normalny | Pakiet | L2 |  |  |
| 29DM24-079 |  | Malowanie i oznakowanie – Sekcja 11 | 8d | 2026-06-09 A | 2026-06-19 A | 29DM24-078 FF+2d | 100% | 2026-06-09 | 2026-06-18 |  | TurboSys | 29DM24 | Ruroci¹g | Budowa | Roboty | Krzyszto | Automaty | PM000 | Zespó³-W | Blok | Normalny | Pakiet | L2 |  |  |

| ID | WBS | Activity | Duration | Start | Finish | Predecessors | Complete | Planned start | Planned finish | Calendar | Uwagi harmonogramisty | AC_Wykonawca | AC_Obiekt | AC_Dyscyplina | AC_Faza | AC_Zakres | AC_Opiekun | AC_Obszar | AC_PP_PM | AC_Zespol | AC_Blok | AC_Priorytet | AC_Pakiet | AC_Poziom | Rewizja dokumentu |
| --- | --- | --- | --- | --- | --- | --- | --- | --- | --- | --- | --- | --- | --- | --- | --- | --- | --- | --- | --- | --- | --- | --- | --- | --- | --- |
|  | SEKCJA 12 | **Sekcja 12** |  | 2025-11-28 | 2026-07-22 |  |  |  |  |  |  |  |  |  |  |  |  |  |  |  |  |  |  |  |  |
|  | PODSEKCJA | **Podsekcja 12.A** |  | 2025-11-28 | 2026-07-22 |  |  |  |  |  |  |  |  |  |  |  |  |  |  |  |  |  |  |  |  |
| 29DM24-080 |  | Prefabrykacja ruroci¹gów – Sekcja 12 | 12.4d | 2025-11-28 A | 2025-12-17 A | 29DM24-012, 29DM24-075 SS+5d | 100% | 2025-12-01 | 2025-12-16 |  | Uzgodnione na koordynacji | TurboSys | 29DM24 | Ruroci¹g | Budowa | Roboty | Krzyszto | Automaty | PM000 | Zespó³-W | Blok | Wysoki | Pakiet | L2 |  |
| 29DM24-081 |  | Monta¿ ruroci¹gów – Sekcja 12 | 23.4d | 2026-05-22 A | 2026-06-26 A | 29DM24-080, 29DM24-014 SS+8d | 100% | 2026-05-22 | 2026-06-23 |  | Bez uwag | TurboSys | 29DM24 | Ruroci¹g | Budowa | Roboty | Krzyszto | Automaty | PM000 | Zespó³-W | Blok | Normalny | Pakiet | L2 |  |
| 29DM24-082 |  | Próba ciœnieniowa – Sekcja 12 | 4d | 2026-06-25 A | 2026-06-30 A | 29DM24-081 | 100% | 2026-06-24 | 2026-06-29 |  | Czeka na dostawê | TurboSys | 29DM24 | Ruroci¹g | Budowa | Roboty | Krzyszto | Automaty | PM000 | Zespó³-W | Blok | Wysoki | Pakiet | L2 |  |
| 29DM24-083 |  | Izolacje – Sekcja 12 | 10d | 2026-07-02 A | 2026-07-16 A | 29DM24-082 | 100% | 2026-06-30 | 2026-07-13 |  |  | TurboSys | 29DM24 | Ruroci¹g | Budowa | Roboty | Krzyszto | Automaty | PM000 | Zespó³-K | Blok | Niski | Pakiet | L2 |  |
| 29DM24-084 |  | Malowanie i oznakowanie – Sekcja 12 | 6d | 2026-07-10 A | 2026-07-22 A | 29DM24-083 FF+2d | 100% | 2026-07-08 | 2026-07-15 |  |  | TurboSys | 29DM24 | Ruroci¹g | Budowa | Roboty | Krzyszto | Automaty | PM000 | Zespó³-K | Blok | Normalny | Pakiet | L2 | Rev B |
|  | SEKCJA 13 | **Sekcja 13** |  | 2025-12-10 | 2026-06-16 |  |  |  |  |  |  |  |  |  |  |  |  |  |  |  |  |  |  |  |  |
| 29DM24-087 |  | Prefabrykacja ruroci¹gów – Sekcja 13 | 11.1d | 2025-12-10 A | 2025-12-25 A | 29DM24-012, 29DM24-080 SS+5d | 100% | 2025-12-08 | 2025-12-22 |  | Bez uwag | TurboSys | 29DM24 | Ruroci¹g | Budowa | Roboty | Krzyszto | Automaty | PM000 | Zespó³-W | Blok | Wysoki | Pakiet | L2 |  |
| 29DM24-088 |  | Monta¿ ruroci¹gów – Sekcja 13 | 12.8d | 2026-05-12 A | 2026-05-28 A | 29DM24-087, 29DM24-014 SS | 100% | 2026-05-12 | 2026-05-27 |  | Ryzyko opóŸnienia | TurboSys | 29DM24 | Ruroci¹g | Budowa | Roboty | Krzyszto | Automaty | PM000 | Zespó³-K | Blok | Normalny | Pakiet | L2 | Rev A |
| 29DM24-089 |  | Próba ciœnieniowa – Sekcja 13 | 5d | 2026-06-01 A | 2026-06-08 A | 29DM24-088 | 100% | 2026-05-28 | 2026-06-03 |  |  | TurboSys | 29DM24 | Ruroci¹g | Budowa | Roboty | Krzyszto | Automaty | PM000 | Zespó³-K | Blok | Normalny | Pakiet | L2 |  |
| 29DM24-091 |  | Malowanie i oznakowanie – Sekcja 13 | 6d | 2026-06-03 A | 2026-06-12 A | 29DM24-090 FF+2d | 100% | 2026-06-04 | 2026-06-11 |  |  | TurboSys | 29DM24 | Ruroci¹g | Budowa | Roboty | Krzyszto | Automaty | PM000 | Zespó³-K | Blok | Normalny | Pakiet | L2 |  |
| 29DM24-090 |  | Izolacje – Sekcja 13 | 4d | 2026-06-09 A | 2026-06-16 A | 29DM24-089 | 100% | 2026-06-04 | 2026-06-09 | Kalendarz 6-dniowy |  | TurboSys | 29DM24 | Ruroci¹g | Budowa | Roboty | Krzyszto | Automaty | PM000 | Zespó³-W | Blok | Normalny | Pakiet | L2 | Rev A |
|  | SEKCJA 14 | **Sekcja 14** |  | 2025-12-16 | 2026-06-16 |  |  |  |  |  |  |  |  |  |  |  |  |  |  |  |  |  |  |  |  |
| 29DM24-092 |  | Prefabrykacja ruroci¹gów – Sekcja 14 | 11.6d | 2025-12-16 A | 2025-12-30 A | 29DM24-012, 29DM24-087 SS+5d | 100% | 2025-12-15 | 2025-12-29 |  |  | TurboSys | 29DM24 | Ruroci¹g | Budowa | Roboty | Krzyszto | Automaty | PM300 | Zespó³-E | Blok | Normalny | Pakiet | L2 |  |
| 29DM24-093 |  | Monta¿ ruroci¹gów – Sekcja 14 | 8.4d | 2026-05-22 A | 2026-06-02 A | 29DM24-092, 29DM24-014 SS+5d | 100% | 2026-05-19 | 2026-05-28 |  |  | TurboSys | 29DM24 | Ruroci¹g | Budowa | Roboty | Krzyszto | Automaty | PM000 | Zespó³-W | Blok | Normalny | Pakiet | L2 |  |
| 29DM24-094 |  | Próba ciœnieniowa – Sekcja 14 | 4d | 2026-06-02 A | 2026-06-09 A | 29DM24-093 | 100% | 2026-05-29 | 2026-06-03 |  |  | TurboSys | 29DM24 | Ruroci¹g | Budowa | Roboty | Krzyszto | Automaty | PM000 | Zespó³-W | Blok | Wysoki | Pakiet | L2 |  |
| 29DM24-095 |  | Izolacje – Sekcja 14 | 6d | 2026-06-08 A | 2026-06-16 A | 29DM24-094 | 100% | 2026-06-04 | 2026-06-11 |  | Bez uwag | TurboSys | 29DM24 | Ruroci¹g | Budowa | Roboty | Krzyszto | Automaty | PM000 | Zespó³-W | Blok | Normalny | Pakiet | L2 |  |
| 29DM24-096 |  | Malowanie i oznakowanie – Sekcja 14 | 5d | 2026-06-08 A | 2026-06-16 A | 29DM24-095 FF+2d | 100% | 2026-06-09 | 2026-06-15 |  |  | TurboSys | 29DM24 | Ruroci¹g | Budowa | Roboty | Krzyszto | Automaty | PM000 | Zespó³-W | Blok | Normalny | Pakiet | L2 | Rev A |
|  | SEKCJA 15 | **Sekcja 15** |  | 2025-12-19 | 2026-06-29 |  |  |  |  |  |  |  |  |  |  |  |  |  |  |  |  |  |  |  |  |
|  | PODSEKCJA | **Podsekcja 15.A** |  | 2025-12-19 | 2026-06-29 |  |  |  |  |  |  |  |  |  |  |  |  |  |  |  |  |  |  |  |  |
| 29DM24-099 |  | Prefabrykacja ruroci¹gów – Sekcja 15 | 12.3d | 2025-12-19 A | 2026-01-05 A | 29DM24-012, 29DM24-092 SS+5d | 100% | 2025-12-22 | 2026-01-06 |  |  | TurboSys | 29DM24 | Ruroci¹g | Budowa | Roboty | Krzyszto | Automaty | PM000 | Zespó³-K | Blok | Normalny | Pakiet | L2 |  |
| 29DM24-100 |  | Monta¿ ruroci¹gów – Sekcja 15 | 11.3d | 2026-05-21 A | 2026-06-04 A | 29DM24-099, 29DM24-014 SS+6d | 100% | 2026-05-20 | 2026-06-03 |  |  | TurboSys | 29DM24 | Ruroci¹g | Budowa | Roboty | Krzyszto | Automaty | PM200 | Zespó³-E | Blok | Normalny | Pakiet | L2 |  |
| 29DM24-101 |  | Próba ciœnieniowa – Sekcja 15 | 6d | 2026-06-03 A | 2026-06-10 A | 29DM24-100 | 100% | 2026-06-04 | 2026-06-11 |  |  | TurboSys | 29DM24 | Ruroci¹g | Budowa | Roboty | Krzyszto | Automaty | PM000 | Zespó³-W | Blok | Normalny | Pakiet | L2 |  |
| 29DM24-102 |  | Izolacje – Sekcja 15 | 8d | 2026-06-16 A | 2026-06-26 A | 29DM24-101 | 100% | 2026-06-12 | 2026-06-23 |  |  | TurboSys | 29DM24 | Ruroci¹g | Budowa | Roboty | Krzyszto | Automaty | PM000 | Zespó³-E | Blok | Wysoki | Pakiet | L2 | Rev A |
| 29DM24-103 |  | Malowanie i oznakowanie – Sekcja 15 | 7d | 2026-06-16 A | 2026-06-29 A | 29DM24-102 FF+2d | 100% | 2026-06-17 | 2026-06-25 |  |  | TurboSys | 29DM24 | Ruroci¹g | Budowa | Roboty | Krzyszto | Automaty | PM000 | Zespó³-W | Blok | Normalny | Pakiet | L2 |  |

| ID | WBS | Activity | Duration | Start | Finish | Predecessors | Complete | Planned start | Planned finish | Rewizja dokumentu | AC_Wykonawca | AC_Obiekt | AC_Dyscyplina | AC_Faza | AC_Zakres | AC_Opiekun | AC_Obszar | AC_PP_PM | AC_Zespol | AC_Blok | AC_Priorytet | AC_Pakiet | AC_Poziom | Uwagi harmonogramisty |
| --- | --- | --- | --- | --- | --- | --- | --- | --- | --- | --- | --- | --- | --- | --- | --- | --- | --- | --- | --- | --- | --- | --- | --- | --- |
|  | SEKCJA 16 | **Sekcja 16** |  | 2025-12-31 | 2026-06-10 |  |  |  |  |  |  |  |  |  |  |  |  |  |  |  |  |  |  |  |
| 29DM24-104 |  | Prefabrykacja ruroci¹gów – Sekcja 16 | 7.3d | 2025-12-31 A | 2026-01-13 A | 29DM24-012, 29DM24-099 SS+5d | 100% | 2025-12-29 | 2026-01-06 | Rev B | TurboSys | 29DM24 | Ruroci¹g | Budowa | Roboty | Krzyszto | Automaty | PM000 | Zespó³-W | Blok | Niski | Pakiet | L2 |  |
| 29DM24-105 |  | Monta¿ ruroci¹gów – Sekcja 16 | 7.4d | 2026-05-25 A | 2026-06-05 A | 29DM24-104, 29DM24-014 SS+7d | 100% | 2026-05-21 | 2026-05-29 |  | TurboSys | 29DM24 | Ruroci¹g | Budowa | Roboty | Krzyszto | Automaty | PM000 | Zespó³-W | Blok | Normalny | Pakiet | L2 |  |
| 29DM24-106 |  | Próba ciœnieniowa – Sekcja 16 | 3d | 2026-06-02 A | 2026-06-05 A | 29DM24-105 | 100% | 2026-06-01 | 2026-06-03 | Rev B | TurboSys | 29DM24 | Ruroci¹g | Budowa | Roboty | Krzyszto | Automaty | PM000 | Zespó³-W | Blok | Krytyczn | Pakiet | L2 | Ryzyko opóŸnienia |
| 29DM24-107 |  | Izolacje – Sekcja 16 | 3d | 2026-06-04 A | 2026-06-09 A | 29DM24-106 | 100% | 2026-06-04 | 2026-06-08 |  | TurboSys | 29DM24 | Ruroci¹g | Budowa | Roboty | Krzyszto | Automaty | PM000 | Zespó³-K | Blok | Normalny | Pakiet | L2 |  |
| 29DM24-108 |  | Malowanie i oznakowanie – Sekcja 16 | 3d | 2026-06-08 A | 2026-06-10 A | 29DM24-107 FF+2d | 100% |  |  |  | TurboSys | 29DM24 | Ruroci¹g | Budowa | Roboty | Krzyszto | Automaty | PM000 | Zespó³-K | Blok | Normalny | Pakiet | L2 | Do weryfikacji z wykonawc¹ |
|  | SEKCJA 17 | **Sekcja 17** |  | 2026-01-05 | 2026-06-26 |  |  |  |  |  |  |  |  |  |  |  |  |  |  |  |  |  |  |  |
| 29DM24-111 |  | Prefabrykacja ruroci¹gów – Sekcja 17 | 12.2d | 2026-01-05 A | 2026-01-21 A | 29DM24-012, 29DM24-104 SS+5d | 100% | 2026-01-05 | 2026-01-20 | Rev C | TurboSys | 29DM24 | Ruroci¹g | Budowa | Roboty | Krzyszto | Automaty | PM000 | Zespó³-K | Blok | Niski | Pakiet | L2 | Czeka na dostawê |
| 29DM24-112 |  | Monta¿ ruroci¹gów – Sekcja 17 | 11.2d | 2026-05-20 A | 2026-06-04 A | 29DM24-111, 29DM24-014 SS+5d | 100% | 2026-05-19 | 2026-06-02 | Rev B | TurboSys | 29DM24 | Ruroci¹g | Budowa | Roboty | Krzyszto | Automaty | PM000 | Zespó³-W | Blok | Niski | Pakiet | L2 |  |
| 29DM24-113 |  | Próba ciœnieniowa – Sekcja 17 | 5d | 2026-06-04 A | 2026-06-11 A | 29DM24-112 | 100% | 2026-06-03 | 2026-06-09 | Rev A | TurboSys | 29DM24 | Ruroci¹g | Budowa | Roboty | Krzyszto | Automaty | PM000 | Zespó³-W | Blok | Wysoki | Pakiet | L2 |  |
| 29DM24-114 |  | Izolacje – Sekcja 17 | 7d | 2026-06-15 A | 2026-06-26 A | 29DM24-113 | 100% | 2026-06-10 | 2026-06-18 | Rev B | TurboSys | 29DM24 | Ruroci¹g | Budowa | Roboty | Krzyszto | Automaty | PM000 | Zespó³-K | Blok | Normalny | Pakiet | L2 | Ryzyko opóŸnienia |
| 29DM24-115 |  | Malowanie i oznakowanie – Sekcja 17 | 2d | 2026-06-22 A | 2026-06-25 A | 29DM24-114 FF+2d | 100% | 2026-06-19 | 2026-06-22 |  | TurboSys | 29DM24 | Ruroci¹g | Budowa | Roboty | Krzyszto | Automaty | PM000 | Zespó³-W | Blok | Normalny | Pakiet | L2 |  |
|  | SEKCJA 18 | **Sekcja 18** |  | 2026-01-13 | 2026-06-25 |  |  |  |  |  |  |  |  |  |  |  |  |  |  |  |  |  |  |  |
|  | PODSEKCJA | **Podsekcja 18.A** |  | 2026-01-13 | 2026-06-25 |  |  |  |  |  |  |  |  |  |  |  |  |  |  |  |  |  |  |  |
| 29DM24-116 |  | Prefabrykacja ruroci¹gów – Sekcja 18 | 11.9d | 2026-01-13 A | 2026-01-28 A | 29DM24-012, 29DM24-111 SS+5d | 100% | 2026-01-12 | 2026-01-26 | Rev C | TurboSys | 29DM24 | Ruroci¹g | Budowa | Roboty | Krzyszto | Automaty | PM000 | Zespó³-W | Blok | Normalny | Pakiet | L2 |  |
| 29DM24-117 |  | Monta¿ ruroci¹gów – Sekcja 18 | 6.1d | 2026-05-22 A | 2026-05-29 A | 29DM24-116, 29DM24-014 SS+7d | 100% | 2026-05-21 | 2026-05-28 | Rev A | TurboSys | 29DM24 | Ruroci¹g | Budowa | Roboty | Krzyszto | Automaty | PM000 | Zespó³-E | Blok | Normalny | Pakiet | L2 | Uzgodnione na koordynacji |
| 29DM24-118 |  | Próba ciœnieniowa – Sekcja 18 | 3d | 2026-05-28 A | 2026-06-03 A | 29DM24-117 | 100% | 2026-05-29 | 2026-06-02 |  | TurboSys | 29DM24 | Ruroci¹g | Budowa | Roboty | Krzyszto | Automaty | PM000 | Zespó³-W | Blok | Normalny | Pakiet | L2 |  |
| 29DM24-119 |  | Izolacje – Sekcja 18 | 11d | 2026-06-03 A | 2026-06-19 A | 29DM24-118 | 100% | 2026-06-03 | 2026-06-17 |  | TurboSys | 29DM24 | Ruroci¹g | Budowa | Roboty | Krzyszto | Automaty | PM000 | Zespó³-K | Blok | Normalny | Pakiet | L2 |  |
| 29DM24-120 |  | Malowanie i oznakowanie – Sekcja 18 | 2d | 2026-06-19 A | 2026-06-25 A | 29DM24-119 FF+2d | 100% | 2026-06-18 | 2026-06-19 | Rev B | TurboSys | 29DM24 | Ruroci¹g | Budowa | Roboty | Krzyszto | Automaty | PM000 | Zespó³-K | Blok | Normalny | Pakiet | L2 |  |
|  | SEKCJA 19 | **Sekcja 19** |  | 2026-01-20 | 2026-07-02 |  |  |  |  |  |  |  |  |  |  |  |  |  |  |  |  |  |  |  |
| 29DM24-123 |  | Prefabrykacja ruroci¹gów – Sekcja 19 | 7.3d | 2026-01-20 A | 2026-01-29 A | 29DM24-012, 29DM24-116 SS+5d | 100% | 2026-01-19 | 2026-01-27 |  | TurboSys | 29DM24 | Ruroci¹g | Budowa | Roboty | Krzyszto | Automaty | PM000 | Zespó³-K | Blok | Normalny | Pakiet | L2 |  |
| 29DM24-124 |  | Monta¿ ruroci¹gów – Sekcja 19 | 22.4d | 2026-05-19 A | 2026-06-19 A | 29DM24-123, 29DM24-014 SS+5d | 100% | 2026-05-19 | 2026-06-17 |  | TurboSys | 29DM24 | Ruroci¹g | Budowa | Roboty | Krzyszto | Automaty | PM000 | Zespó³-W | Blok | Niski | Pakiet | L2 | Czeka na dostawê |
| 29DM24-125 |  | Próba ciœnieniowa – Sekcja 19 | 3d | 2026-06-19 A | 2026-06-24 A | 29DM24-124 | 100% | 2026-06-18 | 2026-06-22 | Rev B | TurboSys | 29DM24 | Ruroci¹g | Budowa | Roboty | Krzyszto | Automaty | PM000 | Zespó³-W | Blok | Normalny | Pakiet | L2 |  |
| 29DM24-126 |  | Izolacje – Sekcja 19 | 5d | 2026-06-22 A | 2026-06-26 A | 29DM24-125 | 100% | 2026-06-23 | 2026-06-29 |  | TurboSys | 29DM24 | Ruroci¹g | Budowa | Roboty | Krzyszto | Automaty | PM000 | Zespó³-W | Blok | Normalny | Pakiet | L2 |  |
| 29DM24-127 |  | Malowanie i oznakowanie – Sekcja 19 | 8d | 2026-06-22 A | 2026-07-02 A | 29DM24-126 FF+2d | 100% | 2026-06-22 | 2026-07-01 |  | TurboSys | 29DM24 | Ruroci¹g | Budowa | Roboty | Krzyszto | Automaty | PM000 | Zespó³-K | Blok | Normalny | Pakiet | L2 |  |

| ID | WBS | Activity | Duration | Start | Finish | Predecessors | Complete | Planned start | Planned finish | Calendar | Uwagi harmonogramisty | AC_Wykonawca | AC_Obiekt | AC_Dyscyplina | AC_Faza | AC_Zakres | AC_Opiekun | AC_Obszar | AC_PP_PM | AC_Zespol | AC_Blok | AC_Priorytet | AC_Pakiet | AC_Poziom | Rewizja dokumentu |
| --- | --- | --- | --- | --- | --- | --- | --- | --- | --- | --- | --- | --- | --- | --- | --- | --- | --- | --- | --- | --- | --- | --- | --- | --- | --- |
|  | SEKCJA 20 | **Sekcja 20** |  | 2026-01-23 | 2026-06-30 |  |  |  |  |  |  |  |  |  |  |  |  |  |  |  |  |  |  |  |  |
| 29DM24-128 |  | Prefabrykacja ruroci¹gów – Sekcja 20 | 9.7d | 2026-01-23 A | 2026-02-09 A | 29DM24-012, 29DM24-123 SS+5d | 100% | 2026-01-26 | 2026-02-05 |  | Uzgodnione na koordynacji | TurboSys | 29DM24 | Ruroci¹g | Budowa | Roboty | Krzyszto | Automaty | PM000 | Zespó³-K | Blok | Normalny | Pakiet | L2 |  |
| 29DM24-129 |  | Monta¿ ruroci¹gów – Sekcja 20 | 8.8d | 2026-05-27 A | 2026-06-10 A | 29DM24-128, 29DM24-014 SS+10d | 100% | 2026-05-26 | 2026-06-04 | Kalendarz 6-dniowy |  | TurboSys | 29DM24 | Ruroci¹g | Budowa | Roboty | Krzyszto | Automaty | PM000 | Zespó³-W | Blok | Normalny | Pakiet | L2 |  |
| 29DM24-130 |  | Próba ciœnieniowa – Sekcja 20 | 6d | 2026-06-09 A | 2026-06-16 A | 29DM24-129 | 100% | 2026-06-05 | 2026-06-12 |  |  | TurboSys | 29DM24 | Ruroci¹g | Budowa | Roboty | Krzyszto | Automaty | PM000 | Zespó³-K | Blok | Niski | Pakiet | L2 |  |
| 29DM24-131 |  | Izolacje – Sekcja 20 | 10d | 2026-06-12 A | 2026-06-26 A | 29DM24-130 | 100% | 2026-06-15 | 2026-06-26 |  | Ryzyko opóŸnienia | TurboSys | 29DM24 | Ruroci¹g | Budowa | Roboty | Krzyszto | Automaty | PM000 | Zespó³-W | Blok | Normalny | Pakiet | L2 |  |
| 29DM24-132 |  | Malowanie i oznakowanie – Sekcja 20 | 3d | 2026-06-26 A | 2026-06-30 A | 29DM24-131 FF+2d | 100% |  |  |  |  | TurboSys | 29DM24 | Ruroci¹g | Budowa | Roboty | Krzyszto | Automaty | PM000 | Zespó³-K | Blok | Normalny | Pakiet | L2 |  |
|  | SEKCJA 21 | **Sekcja 21** |  | 2026-02-04 | 2026-07-07 |  |  |  |  |  |  |  |  |  |  |  |  |  |  |  |  |  |  |  |  |
|  | PODSEKCJA | **Podsekcja 21.A** |  | 2026-02-04 | 2026-07-07 |  |  |  |  |  |  |  |  |  |  |  |  |  |  |  |  |  |  |  |  |
| 29DM24-135 |  | Prefabrykacja ruroci¹gów – Sekcja 21 | 14.7d | 2026-02-04 A | 2026-02-26 A | 29DM24-012, 29DM24-128 SS+5d | 100% | 2026-02-02 | 2026-02-19 |  |  | TurboSys | 29DM24 | Ruroci¹g | Budowa | Roboty | Krzyszto | Automaty | PM000 | Zespó³-W | Blok | Normalny | Pakiet | L2 |  |
| 29DM24-136 |  | Monta¿ ruroci¹gów – Sekcja 21 | 17.5d | 2026-05-22 A | 2026-06-15 A | 29DM24-135, 29DM24-014 SS+8d | 100% |  |  |  |  | TurboSys | 29DM24 | Ruroci¹g | Budowa | Roboty | Krzyszto | Automaty | PM000 | Zespó³-K | Blok | Normalny | Pakiet | L2 |  |
| 29DM24-137 |  | Próba ciœnieniowa – Sekcja 21 | 4d | 2026-06-15 A | 2026-06-19 A | 29DM24-136 | 100% | 2026-06-16 | 2026-06-19 |  |  | TurboSys | 29DM24 | Ruroci¹g | Budowa | Roboty | Krzyszto | Automaty | PM300 | Zespó³-E | Blok | Normalny | Pakiet | L2 | Rev B |
| 29DM24-138 |  | Izolacje – Sekcja 21 | 10d | 2026-06-19 A | 2026-07-03 A | 29DM24-137 | 100% | 2026-06-22 | 2026-07-03 |  |  | TurboSys | 29DM24 | Ruroci¹g | Budowa | Roboty | Krzyszto | Automaty | PM000 | Zespó³-K | Blok | Wysoki | Pakiet | L2 |  |
| 29DM24-139 |  | Malowanie i oznakowanie – Sekcja 21 | 5d | 2026-06-30 A | 2026-07-07 A | 29DM24-138 FF+2d | 100% | 2026-07-01 | 2026-07-07 |  |  | TurboSys | 29DM24 | Ruroci¹g | Budowa | Roboty | Krzyszto | Automaty | PM000 | Zespó³-K | Blok | Normalny | Pakiet | L2 |  |
|  | SEKCJA 22 | **Sekcja 22** |  | 2026-02-11 | 2026-07-01 |  |  |  |  |  |  |  |  |  |  |  |  |  |  |  |  |  |  |  |  |
| 29DM24-140 |  | Prefabrykacja ruroci¹gów – Sekcja 22 | 7.2d | 2026-02-11 A | 2026-02-20 A | 29DM24-012, 29DM24-135 SS+5d | 100% | 2026-02-09 | 2026-02-17 |  | Do weryfikacji z wykonawc¹ | TurboSys | 29DM24 | Ruroci¹g | Budowa | Roboty | Krzyszto | Automaty | PM000 | Zespó³-K | Blok | Normalny | Pakiet | L2 |  |
| 29DM24-141 |  | Monta¿ ruroci¹gów – Sekcja 22 | 16.9d | 2026-05-18 A | 2026-06-08 A | 29DM24-140, 29DM24-014 SS+3d | 100% | 2026-05-15 | 2026-06-05 |  |  | TurboSys | 29DM24 | Ruroci¹g | Budowa | Roboty | Krzyszto | Automaty | PM000 | Zespó³-K | Blok | Normalny | Pakiet | L2 | Rev A |
| 29DM24-142 |  | Próba ciœnieniowa – Sekcja 22 | 6d | 2026-06-11 A | 2026-06-19 A | 29DM24-141 | 100% | 2026-06-08 | 2026-06-15 |  |  | TurboSys | 29DM24 | Ruroci¹g | Budowa | Roboty | Krzyszto | Automaty | PM000 | Zespó³-W | Blok | Normalny | Pakiet | L2 | Rev C |
| 29DM24-143 |  | Izolacje – Sekcja 22 | 7d | 2026-06-17 A | 2026-06-29 A | 29DM24-142 | 100% | 2026-06-16 | 2026-06-24 |  |  | TurboSys | 29DM24 | Ruroci¹g | Budowa | Roboty | Krzyszto | Automaty | PM000 | Zespó³-K | Blok | Normalny | Pakiet | L2 |  |
| 29DM24-144 |  | Malowanie i oznakowanie – Sekcja 22 | 3d | 2026-06-29 A | 2026-07-01 A | 29DM24-143 FF+2d | 100% | 2026-06-24 | 2026-06-26 |  | Bez uwag | TurboSys | 29DM24 | Ruroci¹g | Budowa | Roboty | Krzyszto | Automaty | PM000 | Zespó³-W | Blok | Normalny | Pakiet | L2 | Rev C |
|  | SEKCJA 23 | **Sekcja 23** |  | 2026-02-17 | 2026-06-24 |  |  |  |  |  |  |  |  |  |  |  |  |  |  |  |  |  |  |  |  |
| 29DM24-147 |  | Prefabrykacja ruroci¹gów – Sekcja 23 | 14.5d | 2026-02-17 A | 2026-03-10 A | 29DM24-012, 29DM24-140 SS+5d | 100% | 2026-02-16 | 2026-03-05 |  | Bez uwag | TurboSys | 29DM24 | Ruroci¹g | Budowa | Roboty | Krzyszto | Automaty | PM000 | Zespó³-K | Blok | Normalny | Pakiet | L2 |  |
| 29DM24-148 |  | Monta¿ ruroci¹gów – Sekcja 23 | 8.8d | 2026-05-19 A | 2026-06-02 A | 29DM24-147, 29DM24-014 SS+4d | 100% | 2026-05-18 | 2026-05-27 |  |  | TurboSys | 29DM24 | Ruroci¹g | Budowa | Roboty | Krzyszto | Automaty | PM000 | Zespó³-K | Blok | Normalny | Pakiet | L2 |  |
| 29DM24-149 |  | Próba ciœnieniowa – Sekcja 23 | 2d | 2026-05-27 A | 2026-06-02 A | 29DM24-148 | 100% | 2026-05-28 | 2026-05-29 |  |  | TurboSys | 29DM24 | Ruroci¹g | Budowa | Roboty | Krzyszto | Automaty | PM000 | Zespó³-K | Blok | Normalny | Pakiet | L2 |  |
| 29DM24-150 |  | Izolacje – Sekcja 23 | 11d | 2026-06-04 A | 2026-06-22 A | 29DM24-149 | 100% | 2026-06-01 | 2026-06-15 |  |  | TurboSys | 29DM24 | Ruroci¹g | Budowa | Roboty | Krzyszto | Automaty | PM000 | Zespó³-W | Blok | Normalny | Pakiet | L2 | Rev B |
| 29DM24-151 |  | Malowanie i oznakowanie – Sekcja 23 | 8d | 2026-06-11 A | 2026-06-24 A | 29DM24-150 FF+2d | 100% | 2026-06-08 | 2026-06-17 |  |  | TurboSys | 29DM24 | Ruroci¹g | Budowa | Roboty | Krzyszto | Automaty | PM000 | Zespó³-K | Blok | Wysoki | Pakiet | L2 |  |

| ID | WBS | Activity | Duration | Start | Finish | Predecessors | Complete | Planned start | Planned finish | Calendar | AC_Wykonawca | AC_Obiekt | AC_Dyscyplina | AC_Faza | AC_Zakres | AC_Opiekun | AC_Obszar | AC_PP_PM | AC_Zespol | AC_Blok | AC_Priorytet | AC_Pakiet | AC_Poziom | Uwagi harmonogramisty | Rewizja dokumentu |
| --- | --- | --- | --- | --- | --- | --- | --- | --- | --- | --- | --- | --- | --- | --- | --- | --- | --- | --- | --- | --- | --- | --- | --- | --- | --- |
|  | SEKCJA 24 | **Sekcja 24** |  | 2026-02-26 | 2026-06-18 |  |  |  |  |  |  |  |  |  |  |  |  |  |  |  |  |  |  |  |  |
|  | PODSEKCJA | **Podsekcja 24.A** |  | 2026-02-26 | 2026-06-18 |  |  |  |  |  |  |  |  |  |  |  |  |  |  |  |  |  |  |  |  |
| 29DM24-152 |  | Prefabrykacja ruroci¹gów – Sekcja 24 | 6.5d | 2026-02-26 A | 2026-03-06 A | 29DM24-012, 29DM24-147 SS+5d | 100% | 2026-02-23 | 2026-03-02 | Kalendarz 6-dniowy | TurboSys | 29DM24 | Ruroci¹g | Budowa | Roboty | Krzyszto | Automaty | PM000 | Zespó³-K | Blok | Wysoki | Pakiet | L2 |  |  |
| 29DM24-153 |  | Monta¿ ruroci¹gów – Sekcja 24 | 11.9d | 2026-05-13 A | 2026-05-27 A | 29DM24-152, 29DM24-014 SS | 100% | 2026-05-12 | 2026-05-26 |  | TurboSys | 29DM24 | Ruroci¹g | Budowa | Roboty | Krzyszto | Automaty | PM000 | Zespó³-K | Blok | Normalny | Pakiet | L2 | Czeka na dostawê |  |
| 29DM24-154 |  | Próba ciœnieniowa – Sekcja 24 | 2d | 2026-05-28 A | 2026-06-01 A | 29DM24-153 | 100% | 2026-05-27 | 2026-05-28 |  | TurboSys | 29DM24 | Ruroci¹g | Budowa | Roboty | Krzyszto | Automaty | PM000 | Zespó³-W | Blok | Normalny | Pakiet | L2 | Czeka na dostawê | Rev C |
| 29DM24-155 |  | Izolacje – Sekcja 24 | 12d | 2026-06-02 A | 2026-06-18 A | 29DM24-154 | 100% | 2026-05-29 | 2026-06-15 |  | TurboSys | 29DM24 | Ruroci¹g | Budowa | Roboty | Krzyszto | Automaty | PM000 | Zespó³-K | Blok | Normalny | Pakiet | L2 |  |  |
| 29DM24-156 |  | Malowanie i oznakowanie – Sekcja 24 | 8d | 2026-06-08 A | 2026-06-17 A | 29DM24-155 FF+2d | 100% |  |  |  | TurboSys | 29DM24 | Ruroci¹g | Budowa | Roboty | Krzyszto | Automaty | PM000 | Zespó³-K | Blok | Normalny | Pakiet | L2 |  | Rev B |
|  | SEKCJA 25 | **Sekcja 25** |  | 2026-03-03 | 2026-07-22 |  |  |  |  |  |  |  |  |  |  |  |  |  |  |  |  |  |  |  |  |
| 29DM24-159 |  | Prefabrykacja ruroci¹gów – Sekcja 25 | 3.3d | 2026-03-03 A | 2026-03-10 A | 29DM24-012, 29DM24-152 SS+5d | 100% | 2026-03-02 | 2026-03-04 |  | TurboSys | 29DM24 | Ruroci¹g | Budowa | Roboty | Krzyszto | Automaty | PM000 | Zespó³-W | Blok | Normalny | Pakiet | L2 |  |  |
| 29DM24-160 |  | Monta¿ ruroci¹gów – Sekcja 25 | 20.1d | 2026-05-29 A | 2026-06-26 A | 29DM24-159, 29DM24-014 SS+10d | 100% | 2026-05-26 | 2026-06-22 |  | TurboSys | 29DM24 | Ruroci¹g | Budowa | Roboty | Krzyszto | Automaty | PM000 | Zespó³-K | Blok | Normalny | Pakiet | L2 |  |  |
| 29DM24-161 |  | Próba ciœnieniowa – Sekcja 25 | 6d | 2026-06-25 A | 2026-07-03 A | 29DM24-160 | 100% | 2026-06-23 | 2026-06-30 |  | TurboSys | 29DM24 | Ruroci¹g | Budowa | Roboty | Krzyszto | Automaty | PM000 | Zespó³-W | Blok | Wysoki | Pakiet | L2 |  |  |
| 29DM24-162 |  | Izolacje – Sekcja 25 | 12d | 2026-07-02 A | 2026-07-22 A | 29DM24-161 | 100% | 2026-07-01 | 2026-07-16 | Kalendarz 6-dniowy | TurboSys | 29DM24 | Ruroci¹g | Budowa | Roboty | Krzyszto | Automaty | PM000 | Zespó³-W | Blok | Wysoki | Pakiet | L2 | Do weryfikacji z wykonawc¹ |  |
| 29DM24-163 |  | Malowanie i oznakowanie – Sekcja 25 | 2d | 2026-07-17 A | 2026-07-21 A | 29DM24-162 FF+2d | 100% | 2026-07-17 | 2026-07-20 | Kalendarz 6-dniowy | TurboSys | 29DM24 | Ruroci¹g | Budowa | Roboty | Krzyszto | Automaty | PM100 | Zespó³-E | Blok | Normalny | Pakiet | L2 |  |  |
|  | SEKCJA 26 | **Sekcja 26** |  | 2026-03-12 | 2026-06-29 |  |  |  |  |  |  |  |  |  |  |  |  |  |  |  |  |  |  |  |  |
| 29DM24-164 |  | Prefabrykacja ruroci¹gów – Sekcja 26 | 4.8d | 2026-03-12 A | 2026-03-17 A | 29DM24-012, 29DM24-159 SS+5d | 100% | 2026-03-09 | 2026-03-12 |  | TurboSys | 29DM24 | Ruroci¹g | Budowa | Roboty | Krzyszto | Automaty | PM100 | Zespó³-E | Blok | Normalny | Pakiet | L2 |  |  |
| 29DM24-165 |  | Monta¿ ruroci¹gów – Sekcja 26 | 20.6d | 2026-05-18 A | 2026-06-15 A | 29DM24-164, 29DM24-014 SS+1d | 100% | 2026-05-13 | 2026-06-09 |  | TurboSys | 29DM24 | Ruroci¹g | Budowa | Roboty | Krzyszto | Automaty | PM000 | Zespó³-W | Blok | Normalny | Pakiet | L2 |  | Rev B |
| 29DM24-166 |  | Próba ciœnieniowa – Sekcja 26 | 6d | 2026-06-09 A | 2026-06-18 A | 29DM24-165 | 100% | 2026-06-10 | 2026-06-17 |  | TurboSys | 29DM24 | Ruroci¹g | Budowa | Roboty | Krzyszto | Automaty | PM000 | Zespó³-K | Blok | Wysoki | Pakiet | L2 |  |  |
| 29DM24-167 |  | Izolacje – Sekcja 26 | 5d | 2026-06-17 A | 2026-06-25 A | 29DM24-166 | 100% | 2026-06-18 | 2026-06-24 |  | TurboSys | 29DM24 | Ruroci¹g | Budowa | Roboty | Krzyszto | Automaty | PM000 | Zespó³-K | Blok | Normalny | Pakiet | L2 |  | Rev A |
| 29DM24-168 |  | Malowanie i oznakowanie – Sekcja 26 | 5d | 2026-06-23 A | 2026-06-29 A | 29DM24-167 FF+2d | 100% | 2026-06-22 | 2026-06-26 |  | TurboSys | 29DM24 | Ruroci¹g | Budowa | Roboty | Krzyszto | Automaty | PM000 | Zespó³-K | Blok | Normalny | Pakiet | L2 |  | Rev B |
|  | SEKCJA 27 | **Sekcja 27** |  | 2026-03-16 | 2026-06-30 |  |  |  |  |  |  |  |  |  |  |  |  |  |  |  |  |  |  |  |  |
|  | PODSEKCJA | **Podsekcja 27.A** |  | 2026-03-16 | 2026-06-30 |  |  |  |  |  |  |  |  |  |  |  |  |  |  |  |  |  |  |  |  |
| 29DM24-171 |  | Prefabrykacja ruroci¹gów – Sekcja 27 | 3.7d | 2026-03-16 A | 2026-03-18 A | 29DM24-012, 29DM24-164 SS+5d | 100% |  |  |  | TurboSys | 29DM24 | Ruroci¹g | Budowa | Roboty | Krzyszto | Automaty | PM000 | Zespó³-W | Blok | Normalny | Pakiet | L2 |  | Rev C |
| 29DM24-172 |  | Monta¿ ruroci¹gów – Sekcja 27 | 13.8d | 2026-05-27 A | 2026-06-16 A | 29DM24-171, 29DM24-014 SS+9d | 100% | 2026-05-25 | 2026-06-10 |  | TurboSys | 29DM24 | Ruroci¹g | Budowa | Roboty | Krzyszto | Automaty | PM000 | Zespó³-K | Blok | Normalny | Pakiet | L2 |  |  |
| 29DM24-173 |  | Próba ciœnieniowa – Sekcja 27 | 3d | 2026-06-12 A | 2026-06-19 A | 29DM24-172 | 100% | 2026-06-11 | 2026-06-15 |  | TurboSys | 29DM24 | Ruroci¹g | Budowa | Roboty | Krzyszto | Automaty | PM000 | Zespó³-W | Blok | Wysoki | Pakiet | L2 |  |  |
| 29DM24-175 |  | Malowanie i oznakowanie – Sekcja 27 | 8d | 2026-06-16 A | 2026-06-26 A | 29DM24-174 FF+2d | 100% | 2026-06-17 | 2026-06-26 |  | TurboSys | 29DM24 | Ruroci¹g | Budowa | Roboty | Krzyszto | Automaty | PM000 | Zespó³-W | Blok | Normalny | Pakiet | L2 | Bez uwag |  |
| 29DM24-174 |  | Izolacje – Sekcja 27 | 7d | 2026-06-19 A | 2026-06-30 A | 29DM24-173 | 100% | 2026-06-16 | 2026-06-24 |  | TurboSys | 29DM24 | Ruroci¹g | Budowa | Roboty | Krzyszto | Automaty | PM000 | Zespó³-W | Blok | Niski | Pakiet | L2 | Bez uwag |  |

| ID | WBS | Activity | Type | Duration | Start | Finish | Predecessors | Complete | Remaining | Actual start | Actual finish | Planned start | Planned finish | Total float | Free float | Calendar | Rewizja dokumentu | AC_Wykonawca | AC_Obiekt | AC_Dyscyplina | AC_Faza | AC_Zakres | AC_Opiekun | AC_Obszar | AC_PP_PM | AC_Zespol | AC_Blok | AC_Priorytet | AC_Pakiet | AC_Poziom | Uwagi harmonogramisty |
| --- | --- | --- | --- | --- | --- | --- | --- | --- | --- | --- | --- | --- | --- | --- | --- | --- | --- | --- | --- | --- | --- | --- | --- | --- | --- | --- | --- | --- | --- | --- | --- |
|  | PROJ | **Projektowanie** |  |  | 2025-01-13 | 2025-06-19 |  |  |  |  |  |  |  |  |  |  |  |  |  |  |  |  |  |  |  |  |  |  |  |  |  |
|  | DOKUMENTAC | **Dokumentacja** |  |  | 2025-01-13 | 2025-06-19 |  |  |  |  |  |  |  |  |  |  |  |  |  |  |  |  |  |  |  |  |  |  |  |  |  |
| 29DM24-001 |  | Projekt wykonawczy – Uk³ady pomiarowe |  | 74d | 2025-01-13 A | 2025-04-24 A |  | 100% |  |  |  | 2025-01-08 | 2025-04-21 |  |  |  | Rev B | TurboSys | 29DM24 | Budowlan | Projekto | Projekt | Krzyszto | Automaty | PM000 | Zespó³-K | Blok | Wysoki | Pakiet | L2 |  |
| 29DM24-002 |  | Uzgodnienie dokumentacji z Inwestorem |  | 30d | 2025-04-23 A | 2025-06-05 A | 29DM24-001 | 100% |  |  |  | 2025-04-22 | 2025-06-02 |  |  |  |  | TurboSys | 29DM24 | Budowlan | Projekto | Projekt | Krzyszto | Automaty | PM300 | Zespó³-E | Blok | Wysoki | Pakiet | L2 |  |
| 29DM24-003 |  | Zatwierdzenie dokumentacji do realizacji |  | 9d | 2025-06-03 A | 2025-06-18 A | 29DM24-002 | 100% |  |  |  | 2025-06-03 | 2025-06-13 |  |  |  |  | TurboSys | 29DM24 | Budowlan | Projekto | Projekt | Krzyszto | Automaty | PM000 | Zespó³-W | Blok | Normalny | Pakiet | L2 | Bez uwag |
| 29DM24-004 |  | KM: Dokumentacja zatwierdzona – Uk³ady pomiarowe | milestone | 0d | 2025-06-19 A | 2025-06-19 | 29DM24-003 | 100% |  |  | 2025-06-18 | 2025-06-16 | 2025-06-16 |  |  |  |  | TurboSys | 29DM24 | Budowlan | Projekto | Kamieñ | Krzyszto | Automaty | PM000 | Zespó³-K | Blok | Normalny | Pakiet | L1 |  |
|  | ROZR | **Rozruch** |  |  | 2026-07-17 | 2026-09-10 |  |  |  |  |  |  |  |  |  |  |  |  |  |  |  |  |  |  |  |  |  |  |  |  |  |
|  | ROZRUCH | **Rozruch** |  |  | 2026-07-17 | 2026-09-10 |  |  |  |  |  |  |  |  |  |  |  |  |  |  |  |  |  |  |  |  |  |  |  |  |  |
| 29DM24-178 |  | Przegl¹d gotowoœci do rozruchu |  | 3d | 2026-07-17 A | 2026-07-23 A | 29DM24-177, 29DM24-019, 29DM24-024, 29DM24-026 | 100% |  |  |  | 2026-07-20 | 2026-07-22 |  |  |  | Rev A | TurboSys | 29DM24 | Rozruch | Rozruch | Rozruch | Krzyszto | Automaty | PM000 | Zespó³-I | Blok | Normalny | Pakiet | L2 |  |
| 29DM24-179 |  | Rozruch na zimno |  | 12d | 2026-07-28 A | 2026-08-13 A | 29DM24-178 | 100% |  |  |  | 2026-07-23 | 2026-08-07 |  |  |  | Rev B | TurboSys | 29DM24 | Rozruch | Rozruch | Rozruch | Krzyszto | Automaty | PM000 | Zespó³-W | Blok | Normalny | Pakiet | L2 |  |
| 29DM24-180 |  | Rozruch na gor¹co / próby ruchowe |  | 21d | 2026-08-11 A | 2026-09-08 A | 29DM24-179 | 100% |  |  |  | 2026-08-10 | 2026-09-07 |  |  |  |  | TurboSys | 29DM24 | Rozruch | Rozruch | Rozruch | Krzyszto | Automaty | PM000 | Zespó³-W | Blok | Wysoki | Pakiet | L2 | Do weryfikacji z wykonawc¹ |
| 29DM24-181 |  | KM: Odbiór koñcowy – Uk³ady pomiarowe | milestone | 0d | 2026-09-10 | 2026-09-10 A | 29DM24-180 | 100% |  | 2026-09-11 |  | 2026-09-08 | 2026-09-08 |  |  |  |  | TurboSys | 29DM24 | Rozruch | Rozruch | Kamieñ | Krzyszto | Automaty | PM000 | Zespó³-W | Blok | Normalny | Pakiet | L1 |  |
|  | ZAKU | **Zakupy** |  |  | 2025-02-10 | 2026-05-19 |  |  |  |  |  |  |  |  |  |  |  |  |  |  |  |  |  |  |  |  |  |  |  |  |  |
|  | DOSTAWY | **Dostawy** |  |  | 2025-06-26 | 2026-05-19 |  |  |  |  |  |  |  |  |  |  |  |  |  |  |  |  |  |  |  |  |  |  |  |  |  |
| 29DM24-008 |  | Produkcja u dostawcy |  | 204d | 2025-06-26 A | 2026-04-07 A | 29DM24-007 | 100% |  |  |  | 2025-06-25 | 2026-04-06 |  |  |  | Rev C | TurboSys | 29DM24 | Mechanic | Zakupy | Dostawa | Krzyszto | Automaty | PM000 | Zespó³-W | Blok | Normalny | Pakiet | L2 |  |
| 29DM24-009 |  | Testy FAT |  | 10d | 2026-04-06 A | 2026-04-20 A | 29DM24-008 | 100% |  |  |  | 2026-04-07 | 2026-04-20 |  |  | Kalendarz 6-dniowy |  | TurboSys | 29DM24 | Mechanic | Zakupy | Dostawa | Krzyszto | Automaty | PM000 | Zespó³-K | Blok | Krytyczn | Pakiet | L2 |  |
| 29DM24-010 |  | Transport i dostawa na plac budowy |  | 15d | 2026-04-24 A | 2026-05-19 A | 29DM24-009 | 100% |  |  |  | 2026-04-21 | 2026-05-11 |  |  |  |  | TurboSys | 29DM24 | Mechanic | Zakupy | Dostawa | Krzyszto | Automaty | PM000 | Zespó³-K | Blok | Normalny | Pakiet | L2 |  |
| 29DM24-011 |  | KM: Dostawa na budowê – Uk³ady pomiarowe | milestone | 0d | 2026-05-12 A | 2026-05-12 | 29DM24-010 | 100% |  |  | 2026-05-11 |  |  |  |  |  | Rev A | TurboSys | 29DM24 | Mechanic | Zakupy | Kamieñ | Krzyszto | Automaty | PM000 | Zespó³-W | Blok | Normalny | Pakiet | L1 |  |
|  | ZAMÓWIENIA | **Zamówienia** |  |  | 2025-02-10 | 2025-06-30 |  |  |  |  |  |  |  |  |  |  |  |  |  |  |  |  |  |  |  |  |  |  |  |  |  |
| 29DM24-005 |  | Zapytanie ofertowe |  | 17d | 2025-02-10 A | 2025-03-05 A | 29DM24-001 SS+20d | 100% |  |  |  | 2025-02-05 | 2025-02-27 |  |  |  |  | TurboSys | 29DM24 | Mechanic | Zakupy | Dostawa | Krzyszto | Automaty | PM000 | Zespó³-K | Blok | Normalny | Pakiet | L2 | Ryzyko opóŸnienia |
| 29DM24-006 |  | Analiza i wybór ofert |  | 12d | 2025-02-27 A | 2025-03-17 A | 29DM24-005 | 100% |  |  |  | 2025-02-28 | 2025-03-17 |  |  |  | Rev A | TurboSys | 29DM24 | Mechanic | Zakupy | Dostawa | Krzyszto | Automaty | PM000 | Zespó³-K | Blok | Normalny | Pakiet | L2 |  |
| 29DM24-007 |  | Zawarcie umowy / zamówienie |  | 7d | 2025-06-19 A | 2025-06-30 A | 29DM24-006, 29DM24-004 SS, 16TC84-004 (other project) FS+6d | 100% |  |  |  | 2025-06-16 | 2025-06-24 |  |  |  |  | TurboSys | 29DM24 | Mechanic | Zakupy | Dostawa | Krzyszto | Automaty | PM000 | Zespó³-W | Blok | Niski | Pakiet | L1 |  |
|  | INFRASTRUKTU | **Infrastruktura i BOP** |  |  | 2025-01-10 | 2028-03-01 |  |  |  |  |  |  |  |  |  |  |  |  |  |  |  |  |  |  |  |  |  |  |  |  |  |
|  | 15XQ71 | **15XQ71 – Zbiornik oleju** |  |  | 2025-05-14 | 2027-01-15 |  |  |  |  |  |  |  |  |  |  |  |  |  |  |  |  |  |  |  |  |  |  |  |  |  |
|  | BUDO | **Budowa** |  |  | 2025-10-20 | 2026-11-18 |  |  |  |  |  |  |  |  |  |  |  |  |  |  |  |  |  |  |  |  |  |  |  |  |  |
|  | AKPIA | **AKPiA** |  |  | 2026-09-10 | 2026-10-29 |  |  |  |  |  |  |  |  |  |  |  |  |  |  |  |  |  |  |  |  |  |  |  |  |  |
| 15XQ71-068 |  | Monta¿ uk³adów AKPiA |  | 33d | 2026-09-10 A | 2026-10-29 | 15XQ71-014 SS+5d | 47% | 17.6d |  |  | 2026-09-09 | 2026-10-23 | 337.6d | 0d |  | Rev C | GdanskSt | 15XQ71 | AKPiA | Budowa | Roboty | Agnieszk | Infrastr | PM000 | Zespó³-K | Blok | Normalny | Pakiet | L2 | Do weryfikacji z wykonawc¹ |

| ID | WBS | Activity | Type | Duration | Start | Finish | Predecessors | Complete | Remaining | Planned start | Planned finish | Total float | Free float | Calendar | AC_Wykonawca | AC_Obiekt | AC_Dyscyplina | AC_Faza | AC_Zakres | AC_Opiekun | AC_Obszar | AC_PP_PM | AC_Zespol | AC_Blok | AC_Priorytet | AC_Pakiet | AC_Poziom | Uwagi harmonogramisty | Rewizja dokumentu |
| --- | --- | --- | --- | --- | --- | --- | --- | --- | --- | --- | --- | --- | --- | --- | --- | --- | --- | --- | --- | --- | --- | --- | --- | --- | --- | --- | --- | --- | --- |
|  | ELEKTRYKA | **Elektryka** |  |  | 2026-09-16 | 2026-10-27 |  |  |  |  |  |  |  |  |  |  |  |  |  |  |  |  |  |  |  |  |  |  |  |
| 15XQ71-061 |  | Uk³adanie kabli – trasa 08 |  | 12d | 2026-09-16 A | 2026-10-02 A | 15XQ71-014 SS+10d | 100% |  | 2026-09-16 | 2026-10-01 |  |  |  | GdanskSt | 15XQ71 | Elektryc | Budowa | Roboty | Agnieszk | Infrastr | PM000 | Zespó³-W | Blok | Wysoki | Pakiet | L2 |  |  |
| 15XQ71-037 |  | Uk³adanie kabli – trasa 04 |  | 18d | 2026-09-18 A | 2026-10-27 | 15XQ71-014 SS+10d | 12% | 15.9d | 2026-09-16 | 2026-10-09 | 398.6d | 0d |  | GdanskSt | 15XQ71 | Elektryc | Budowa | Roboty | Agnieszk | Infrastr | PM000 | Zespó³-K | Blok | Normalny | Pakiet | L2 |  |  |
| 15XQ71-049 |  | Uk³adanie kabli – trasa 06 |  | 10d | 2026-09-18 A | 2026-10-02 A | 15XQ71-014 SS+10d | 100% |  | 2026-09-16 | 2026-09-29 |  |  |  | GdanskSt | 15XQ71 | Elektryc | Budowa | Roboty | Agnieszk | Infrastr | PM000 | Zespó³-W | Blok | Normalny | Pakiet | L2 | Uzgodnione na koordynacji |  |
| 15XQ71-025 |  | Uk³adanie kabli – trasa 02 |  | 15d | 2026-09-22 A | 2026-10-13 | 15XQ71-014 SS+10d | 65% | 5.3d | 2026-09-16 | 2026-10-06 | 347.6d | 0d |  | GdanskSt | 15XQ71 | Elektryc | Budowa | Roboty | Agnieszk | Infrastr | PM000 | Zespó³-W | Blok | Normalny | Pakiet | L2 | Do weryfikacji z wykonawc¹ |  |
| 15XQ71-062 |  | Pod³¹czenia i pomiary – trasa 08 |  | 9d | 2026-09-22 A | 2026-10-06 A | 15XQ71-061 FF | 100% |  | 2026-09-21 | 2026-10-01 |  |  |  | GdanskSt | 15XQ71 | Elektryc | Budowa | Roboty | Agnieszk | Infrastr | PM000 | Zespó³-I | Blok | Normalny | Pakiet | L2 |  |  |
| 15XQ71-050 |  | Pod³¹czenia i pomiary – trasa 06 |  | 8d | 2026-09-23 A | 2026-09-29 A | 15XQ71-049 FF | 100% |  | 2026-09-18 | 2026-09-29 |  |  | Kalendarz 6-dniowy | GdanskSt | 15XQ71 | Elektryc | Budowa | Roboty | Agnieszk | Infrastr | PM000 | Zespó³-K | Blok | Normalny | Pakiet | L2 | Bez uwag |  |
| 15XQ71-026 |  | Pod³¹czenia i pomiary – trasa 02 |  | 4d | 2026-10-02 A | 2026-10-07 | 15XQ71-025 FF | 62% | 1.5d | 2026-10-01 | 2026-10-06 | 350.6d | 0d |  | GdanskSt | 15XQ71 | Elektryc | Budowa | Roboty | Agnieszk | Infrastr | PM000 | Zespó³-K | Blok | Normalny | Pakiet | L2 |  | Rev C |
| 15XQ71-038 |  | Pod³¹czenia i pomiary – trasa 04 |  | 4d | 2026-10-07 A | 2026-10-07 | 15XQ71-037 FF | 60% | 1.6d | 2026-10-06 | 2026-10-09 | 399.6d | 0d |  | GdanskSt | 15XQ71 | Elektryc | Budowa | Roboty | Agnieszk | Infrastr | PM000 | Zespó³-W | Blok | Normalny | Pakiet | L2 |  |  |
|  | MONTA¯ | **Monta¿** |  |  | 2026-01-09 | 2026-10-30 |  |  |  |  |  |  |  |  |  |  |  |  |  |  |  |  |  |  |  |  |  |  |  |
| 15XQ71-013 |  | Monta¿ konstrukcji stalowych |  | 30d | 2026-01-09 A | 2026-02-23 A | 15XQ71-012 | 100% |  | 2026-01-08 | 2026-02-18 |  |  |  | GdanskSt | 15XQ71 | Mechanic | Budowa | Roboty | Agnieszk | Infrastr | PM000 | Zespó³-K | Blok | Normalny | Pakiet | L2 |  |  |
| 15XQ71-014 |  | Monta¿ urz¹dzeñ g³ównych |  | 22d | 2026-09-04 A | 2026-10-06 A | 15XQ71-013, 15XQ71-011 | 100% |  | 2026-09-02 | 2026-10-01 |  |  |  | GdanskSt | 15XQ71 | Mechanic | Budowa | Roboty | Agnieszk | Infrastr | PM000 | Zespó³-K | Blok | Normalny | Pakiet | L2 | Uzgodnione na koordynacji |  |
| 15XQ71-069 |  | KM: Zakoñczenie monta¿u – Zbiornik oleju | milestone | 0d | 2026-10-30 | 2026-10-30 | 15XQ71-060, 15XQ71-062, 15XQ71-067, 15XQ71-068, 15XQ71-014 |  |  | 2026-10-26 | 2026-10-26 | 334d | 0d |  | GdanskSt | 15XQ71 | Mechanic | Budowa | Kamieñ | Agnieszk | Infrastr | PM000 | Zespó³-W | Blok | Normalny | Pakiet | L2 |  |  |
|  | ROBOTY BUD | **Roboty budowlane** |  |  | 2025-10-20 | 2026-01-13 |  |  |  |  |  |  |  |  |  |  |  |  |  |  |  |  |  |  |  |  |  |  |  |
| 15XQ71-012 |  | Fundamenty i roboty ziemne |  | 59d | 2025-10-20 A | 2026-01-13 A | 15XQ71-007 FS+12d | 100% |  | 2025-10-17 | 2026-01-07 |  |  |  | GdanskSt | 15XQ71 | Budowlan | Budowa | Roboty | Agnieszk | Infrastr | PM000 | Zespó³-K | Blok | Normalny | Pakiet | L2 | Bez uwag |  |
|  | RUROCI¥GI | **Ruroci¹gi** |  |  | 2026-01-13 | 2026-11-18 |  |  |  |  |  |  |  |  |  |  |  |  |  |  |  |  |  |  |  |  |  |  |  |
|  | SEKCJA 01 | **Sekcja 01** |  |  | 2026-01-13 | 2026-10-05 |  |  |  |  |  |  |  |  |  |  |  |  |  |  |  |  |  |  |  |  |  |  |  |
| 15XQ71-015 |  | Prefabrykacja ruroci¹gów – Sekcja 01 |  | 3.2d | 2026-01-13 A | 2026-01-19 A | 15XQ71-012 | 100% |  | 2026-01-08 | 2026-01-12 |  |  |  | GdanskSt | 15XQ71 | Ruroci¹g | Budowa | Roboty | Agnieszk | Infrastr | PM000 | Zespó³-W | Blok | Normalny | Pakiet | L2 | Uzgodnione na koordynacji |  |
| 15XQ71-016 |  | Monta¿ ruroci¹gów – Sekcja 01 |  | 5.1d | 2026-09-17 A | 2026-09-28 A | 15XQ71-015, 15XQ71-014 SS+8d | 100% |  | 2026-09-14 | 2026-09-18 |  |  |  | GdanskSt | 15XQ71 | Ruroci¹g | Budowa | Roboty | Agnieszk | Infrastr | PM200 | Zespó³-E | Blok | Normalny | Pakiet | L2 |  |  |
| 15XQ71-017 |  | Próba ciœnieniowa – Sekcja 01 |  | 3d | 2026-09-22 A | 2026-09-24 A | 15XQ71-016 | 100% |  | 2026-09-21 | 2026-09-23 |  |  |  | GdanskSt | 15XQ71 | Ruroci¹g | Budowa | Roboty | Agnieszk | Infrastr | PM000 | Zespó³-W | Blok | Normalny | Pakiet | L2 |  |  |
| 15XQ71-018 |  | Izolacje – Sekcja 01 |  | 5d | 2026-09-24 A | 2026-10-01 A | 15XQ71-017 | 100% |  | 2026-09-24 | 2026-09-30 |  |  |  | GdanskSt | 15XQ71 | Ruroci¹g | Budowa | Roboty | Agnieszk | Infrastr | PM000 | Zespó³-W | Blok | Normalny | Pakiet | L2 |  | Rev A |
| 15XQ71-019 |  | Malowanie i oznakowanie – Sekcja 01 |  | 5d | 2026-09-25 A | 2026-10-05 A | 15XQ71-018 FF+2d | 100% |  | 2026-09-28 | 2026-10-02 |  |  |  | GdanskSt | 15XQ71 | Ruroci¹g | Budowa | Roboty | Agnieszk | Infrastr | PM000 | Zespó³-K | Blok | Normalny | Pakiet | L2 |  | Rev C |
|  | SEKCJA 02 | **Sekcja 02** |  |  | 2026-01-20 | 2026-10-06 |  |  |  |  |  |  |  |  |  |  |  |  |  |  |  |  |  |  |  |  |  |  |  |
| 15XQ71-020 |  | Prefabrykacja ruroci¹gów – Sekcja 02 |  | 9.4d | 2026-01-20 A | 2026-02-03 A | 15XQ71-012, 15XQ71-015 SS+5d | 100% |  | 2026-01-15 | 2026-01-27 |  |  |  | GdanskSt | 15XQ71 | Ruroci¹g | Budowa | Roboty | Agnieszk | Infrastr | PM000 | Zespó³-W | Blok | Wysoki | Pakiet | L2 |  |  |
| 15XQ71-021 |  | Monta¿ ruroci¹gów – Sekcja 02 |  | 10.1d | 2026-09-14 A | 2026-09-25 A | 15XQ71-020, 15XQ71-014 SS+6d | 100% |  | 2026-09-10 | 2026-09-23 |  |  |  | GdanskSt | 15XQ71 | Ruroci¹g | Budowa | Roboty | Agnieszk | Infrastr | PM000 | Zespó³-W | Blok | Wysoki | Pakiet | L2 |  |  |
| 15XQ71-022 |  | Próba ciœnieniowa – Sekcja 02 |  | 2d | 2026-09-23 A | 2026-09-25 A | 15XQ71-021 | 100% |  | 2026-09-24 | 2026-09-25 |  |  | Kalendarz 6-dniowy | GdanskSt | 15XQ71 | Ruroci¹g | Budowa | Roboty | Agnieszk | Infrastr | PM000 | Zespó³-W | Blok | Normalny | Pakiet | L2 | Uzgodnione na koordynacji |  |
| 15XQ71-023 |  | Izolacje – Sekcja 02 |  | 3d | 2026-09-30 A | 2026-09-29 A | 15XQ71-022 | 100% |  | 2026-09-28 | 2026-09-30 |  |  |  | GdanskSt | 15XQ71 | Ruroci¹g | Budowa | Roboty | Agnieszk | Infrastr | PM000 | Zespó³-K | Blok | Normalny | Pakiet | L2 |  | Rev C |
| 15XQ71-024 |  | Malowanie i oznakowanie – Sekcja 02 |  | 5d | 2026-09-30 A | 2026-10-06 A | 15XQ71-023 FF+2d | 100% |  | 2026-09-28 | 2026-10-02 |  |  |  | GdanskSt | 15XQ71 | Ruroci¹g | Budowa | Roboty | Agnieszk | Infrastr | PM000 | Zespó³-W | Blok | Normalny | Pakiet | L2 | Bez uwag |  |

| ID | WBS | Activity | Duration | Start | Finish | Predecessors | Complete | Remaining | Planned start | Planned finish | Total float | Free float | Calendar | AC_Wykonawca | AC_Obiekt | AC_Dyscyplina | AC_Faza | AC_Zakres | AC_Opiekun | AC_Obszar | AC_PP_PM | AC_Zespol | AC_Blok | AC_Priorytet | AC_Pakiet | AC_Poziom | Uwagi harmonogramisty | Rewizja dokumentu |
| --- | --- | --- | --- | --- | --- | --- | --- | --- | --- | --- | --- | --- | --- | --- | --- | --- | --- | --- | --- | --- | --- | --- | --- | --- | --- | --- | --- | --- |
|  | SEKCJA 03 | **Sekcja 03** |  | 2026-01-22 | 2026-10-16 |  |  |  |  |  |  |  |  |  |  |  |  |  |  |  |  |  |  |  |  |  |  |  |
|  | PODSEKCJA | **Podsekcja 03.A** |  | 2026-01-22 | 2026-10-16 |  |  |  |  |  |  |  |  |  |  |  |  |  |  |  |  |  |  |  |  |  |  |  |
| 15XQ71-027 |  | Prefabrykacja ruroci¹gów – Sekcja 03 | 11.1d | 2026-01-22 A | 2026-02-09 A | 15XQ71-012, 15XQ71-020 SS+5d | 100% |  | 2026-01-22 | 2026-02-05 |  |  |  | GdanskSt | 15XQ71 | Ruroci¹g | Budowa | Roboty | Agnieszk | Infrastr | PM000 | Zespó³-W | Blok | Normalny | Pakiet | L2 |  |  |
| 15XQ71-028 |  | Monta¿ ruroci¹gów – Sekcja 03 | 9.8d | 2026-09-15 A | 2026-09-25 A | 15XQ71-027, 15XQ71-014 SS+9d | 100% |  |  |  |  |  |  | GdanskSt | 15XQ71 | Ruroci¹g | Budowa | Roboty | Agnieszk | Infrastr | PM000 | Zespó³-W | Blok | Normalny | Pakiet | L2 |  |  |
| 15XQ71-029 |  | Próba ciœnieniowa – Sekcja 03 | 2d | 2026-09-28 A | 2026-09-30 A | 15XQ71-028 | 100% |  | 2026-09-28 | 2026-09-29 |  |  |  | GdanskSt | 15XQ71 | Ruroci¹g | Budowa | Roboty | Agnieszk | Infrastr | PM000 | Zespó³-K | Blok | Wysoki | Pakiet | L2 | Bez uwag |  |
| 15XQ71-030 |  | Izolacje – Sekcja 03 | 8d | 2026-10-02 A | 2026-10-07 | 15XQ71-029 | 88% | 1d | 2026-09-30 | 2026-10-09 | 395.8d | 0d |  | GdanskSt | 15XQ71 | Ruroci¹g | Budowa | Roboty | Agnieszk | Infrastr | PM000 | Zespó³-W | Blok | Normalny | Pakiet | L2 |  |  |
| 15XQ71-031 |  | Malowanie i oznakowanie – Sekcja 03 | 8d | 2026-10-07 | 2026-10-16 | 15XQ71-030 FF+2d |  |  | 2026-10-02 | 2026-10-13 | 395.6d | 0d |  | GdanskSt | 15XQ71 | Ruroci¹g | Budowa | Roboty | Agnieszk | Infrastr | PM100 | Zespó³-I | Blok | Normalny | Pakiet | L2 | Czeka na dostawê | Rev A |
|  | SEKCJA 04 | **Sekcja 04** |  | 2026-01-28 | 2026-11-18 |  |  |  |  |  |  |  |  |  |  |  |  |  |  |  |  |  |  |  |  |  |  |  |
| 15XQ71-032 |  | Prefabrykacja ruroci¹gów – Sekcja 04 | 7.9d | 2026-01-28 A | 2026-02-10 A | 15XQ71-012, 15XQ71-027 SS+5d | 100% |  | 2026-01-29 | 2026-02-06 |  |  | Kalendarz 6-dniowy | GdanskSt | 15XQ71 | Ruroci¹g | Budowa | Roboty | Agnieszk | Infrastr | PM000 | Zespó³-K | Blok | Normalny | Pakiet | L2 |  |  |
| 15XQ71-033 |  | Monta¿ ruroci¹gów – Sekcja 04 | 24.3d | 2026-09-07 A | 2026-11-04 | 15XQ71-032, 15XQ71-014 SS+3d | 13% | 21.2d | 2026-09-07 | 2026-10-08 | 391.3d | 0d |  | GdanskSt | 15XQ71 | Ruroci¹g | Budowa | Roboty | Agnieszk | Infrastr | PM000 | Zespó³-K | Blok | Normalny | Pakiet | L2 |  |  |
| 15XQ71-034 |  | Próba ciœnieniowa – Sekcja 04 | 5d | 2026-11-05 | 2026-11-11 | 15XQ71-033 |  |  | 2026-10-09 | 2026-10-15 | 372.4d | 0d |  | GdanskSt | 15XQ71 | Ruroci¹g | Budowa | Roboty | Agnieszk | Infrastr | PM000 | Zespó³-E | Blok | Normalny | Pakiet | L2 |  |  |
| 15XQ71-035 |  | Izolacje – Sekcja 04 | 3d | 2026-11-12 | 2026-11-16 | 15XQ71-034 |  |  | 2026-10-16 | 2026-10-20 | 372.4d | 0d |  | GdanskSt | 15XQ71 | Ruroci¹g | Budowa | Roboty | Agnieszk | Infrastr | PM000 | Zespó³-K | Blok | Normalny | Pakiet | L2 | Bez uwag | Rev C |
| 15XQ71-036 |  | Malowanie i oznakowanie – Sekcja 04 | 4d | 2026-11-13 | 2026-11-18 | 15XQ71-035 FF+2d |  |  | 2026-10-19 | 2026-10-22 | 372.4d | 0d |  | GdanskSt | 15XQ71 | Ruroci¹g | Budowa | Roboty | Agnieszk | Infrastr | PM000 | Zespó³-W | Blok | Normalny | Pakiet | L2 |  |  |
|  | SEKCJA 05 | **Sekcja 05** |  | 2026-02-04 | 2026-10-12 |  |  |  |  |  |  |  |  |  |  |  |  |  |  |  |  |  |  |  |  |  |  |  |
| 15XQ71-039 |  | Prefabrykacja ruroci¹gów – Sekcja 05 | 3.2d | 2026-02-04 A | 2026-02-09 A | 15XQ71-012, 15XQ71-032 SS+5d | 100% |  | 2026-02-05 | 2026-02-09 |  |  |  | GdanskSt | 15XQ71 | Ruroci¹g | Budowa | Roboty | Agnieszk | Infrastr | PM000 | Zespó³-K | Blok | Normalny | Pakiet | L2 | Czeka na dostawê |  |
| 15XQ71-040 |  | Monta¿ ruroci¹gów – Sekcja 05 | 19.3d | 2026-09-02 A | 2026-09-30 A | 15XQ71-039, 15XQ71-014 SS | 100% |  | 2026-09-02 | 2026-09-28 |  |  |  | GdanskSt | 15XQ71 | Ruroci¹g | Budowa | Roboty | Agnieszk | Infrastr | PM000 | Zespó³-W | Blok | Niski | Pakiet | L2 |  | Rev C |
| 15XQ71-041 |  | Próba ciœnieniowa – Sekcja 05 | 5d | 2026-09-30 A | 2026-10-06 A | 15XQ71-040 | 100% |  | 2026-09-29 | 2026-10-05 |  |  |  | GdanskSt | 15XQ71 | Ruroci¹g | Budowa | Roboty | Agnieszk | Infrastr | PM000 | Zespó³-K | Blok | Normalny | Pakiet | L2 |  |  |
| 15XQ71-042 |  | Izolacje – Sekcja 05 | 11d | 2026-10-07 A | 2026-10-08 | 15XQ71-041 | 81% | 2.1d | 2026-10-06 | 2026-10-20 | 390.6d | 0d |  | GdanskSt | 15XQ71 | Ruroci¹g | Budowa | Roboty | Agnieszk | Infrastr | PM000 | Zespó³-E | Blok | Wysoki | Pakiet | L2 |  |  |
| 15XQ71-043 |  | Malowanie i oznakowanie – Sekcja 05 | 3d | 2026-10-08 | 2026-10-12 | 15XQ71-042 FF+2d |  |  | 2026-10-20 | 2026-10-22 | 399.5d | 0d |  | GdanskSt | 15XQ71 | Ruroci¹g | Budowa | Roboty | Agnieszk | Infrastr | PM000 | Zespó³-W | Blok | Normalny | Pakiet | L2 |  | Rev C |
|  | SEKCJA 06 | **Sekcja 06** |  | 2026-02-17 | 2026-10-23 |  |  |  |  |  |  |  |  |  |  |  |  |  |  |  |  |  |  |  |  |  |  |  |
|  | PODSEKCJA | **Podsekcja 06.A** |  | 2026-02-17 | 2026-10-23 |  |  |  |  |  |  |  |  |  |  |  |  |  |  |  |  |  |  |  |  |  |  |  |
| 15XQ71-044 |  | Prefabrykacja ruroci¹gów – Sekcja 06 | 3.8d | 2026-02-17 A | 2026-02-19 A | 15XQ71-012, 15XQ71-039 SS+5d | 100% |  | 2026-02-12 | 2026-02-16 |  |  |  | GdanskSt | 15XQ71 | Ruroci¹g | Budowa | Roboty | Agnieszk | Infrastr | PM000 | Zespó³-W | Blok | Wysoki | Pakiet | L2 |  | Rev C |
| 15XQ71-045 |  | Monta¿ ruroci¹gów – Sekcja 06 | 19.6d | 2026-09-04 A | 2026-10-01 A | 15XQ71-044, 15XQ71-014 SS+2d | 100% |  | 2026-09-04 | 2026-09-30 |  |  |  | GdanskSt | 15XQ71 | Ruroci¹g | Budowa | Roboty | Agnieszk | Infrastr | PM000 | Zespó³-K | Blok | Normalny | Pakiet | L2 |  |  |
| 15XQ71-046 |  | Próba ciœnieniowa – Sekcja 06 | 4d | 2026-10-02 A | 2026-10-08 | 15XQ71-045 | 50% | 2d | 2026-10-01 | 2026-10-06 | 391d | 0d |  | GdanskSt | 15XQ71 | Ruroci¹g | Budowa | Roboty | Agnieszk | Infrastr | PM000 | Zespó³-K | Blok | Normalny | Pakiet | L2 |  |  |
| 15XQ71-047 |  | Izolacje – Sekcja 06 | 9d | 2026-10-09 | 2026-10-21 | 15XQ71-046 |  |  | 2026-10-07 | 2026-10-19 | 390.6d | 0d |  | GdanskSt | 15XQ71 | Ruroci¹g | Budowa | Roboty | Agnieszk | Infrastr | PM000 | Zespó³-W | Blok | Niski | Pakiet | L2 |  | Rev B |
| 15XQ71-048 |  | Malowanie i oznakowanie – Sekcja 06 | 6d | 2026-10-16 | 2026-10-23 | 15XQ71-047 FF+2d |  |  | 2026-10-14 | 2026-10-21 | 390.6d | 0d |  | GdanskSt | 15XQ71 | Ruroci¹g | Budowa | Roboty | Agnieszk | Infrastr | PM000 | Zespó³-K | Blok | Normalny | Pakiet | L2 |  |  |

| ID | WBS | Activity | Type | Duration | Start | Finish | Predecessors | Complete | Remaining | Actual finish | Planned start | Planned finish | Total float | Free float | Calendar | AC_Wykonawca | AC_Obiekt | AC_Dyscyplina | AC_Faza | AC_Zakres | AC_Opiekun | AC_Obszar | AC_PP_PM | AC_Zespol | AC_Blok | AC_Priorytet | AC_Pakiet | AC_Poziom | Uwagi harmonogramisty | Rewizja dokumentu |
| --- | --- | --- | --- | --- | --- | --- | --- | --- | --- | --- | --- | --- | --- | --- | --- | --- | --- | --- | --- | --- | --- | --- | --- | --- | --- | --- | --- | --- | --- | --- |
|  | SEKCJA 07 | **Sekcja 07** |  |  | 2026-02-23 | 2026-11-05 |  |  |  |  |  |  |  |  |  |  |  |  |  |  |  |  |  |  |  |  |  |  |  |  |
| 15XQ71-051 |  | Prefabrykacja ruroci¹gów – Sekcja 07 |  | 7d | 2026-02-23 A | 2026-03-04 A | 15XQ71-012, 15XQ71-044 SS+5d | 100% |  |  | 2026-02-19 | 2026-02-27 |  |  |  | GdanskSt | 15XQ71 | Ruroci¹g | Budowa | Roboty | Agnieszk | Infrastr | PM000 | Zespó³-W | Blok | Normalny | Pakiet | L2 |  |  |
| 15XQ71-052 |  | Monta¿ ruroci¹gów – Sekcja 07 |  | 20.6d | 2026-09-18 A | 2026-10-19 | 15XQ71-051, 15XQ71-014 SS+8d | 52% | 9.9d |  | 2026-09-14 | 2026-10-09 | 383d | 0d |  | GdanskSt | 15XQ71 | Ruroci¹g | Budowa | Roboty | Agnieszk | Infrastr | PM000 | Zespó³-K | Blok | Normalny | Pakiet | L2 |  |  |
| 15XQ71-053 |  | Próba ciœnieniowa – Sekcja 07 |  | 4d | 2026-10-20 | 2026-10-23 | 15XQ71-052 |  |  |  | 2026-10-12 | 2026-10-15 | 380.7d | 0d |  | GdanskSt | 15XQ71 | Ruroci¹g | Budowa | Roboty | Agnieszk | Infrastr | PM000 | Zespó³-W | Blok | Normalny | Pakiet | L2 | Ryzyko opóŸnienia |  |
| 15XQ71-054 |  | Izolacje – Sekcja 07 |  | 7d | 2026-10-26 | 2026-11-03 | 15XQ71-053 |  |  |  | 2026-10-16 | 2026-10-26 | 380.7d | 0d |  | GdanskSt | 15XQ71 | Ruroci¹g | Budowa | Roboty | Agnieszk | Infrastr | PM000 | Zespó³-W | Blok | Niski | Pakiet | L2 |  |  |
| 15XQ71-055 |  | Malowanie i oznakowanie – Sekcja 07 |  | 4d | 2026-11-02 | 2026-11-05 | 15XQ71-054 FF+2d |  |  |  | 2026-10-23 | 2026-10-28 | 380.7d | 0d |  | GdanskSt | 15XQ71 | Ruroci¹g | Budowa | Roboty | Agnieszk | Infrastr | PM000 | Zespó³-K | Blok | Niski | Pakiet | L2 |  |  |
|  | SEKCJA 08 | **Sekcja 08** |  |  | 2026-02-25 | 2026-10-08 |  |  |  |  |  |  |  |  |  |  |  |  |  |  |  |  |  |  |  |  |  |  |  |  |
| 15XQ71-056 |  | Prefabrykacja ruroci¹gów – Sekcja 08 |  | 10.8d | 2026-02-25 A | 2026-03-11 A | 15XQ71-012, 15XQ71-051 SS+5d | 100% |  |  | 2026-02-26 | 2026-03-11 |  |  |  | GdanskSt | 15XQ71 | Ruroci¹g | Budowa | Roboty | Agnieszk | Infrastr | PM100 | Zespó³-I | Blok | Niski | Pakiet | L2 |  |  |
| 15XQ71-057 |  | Monta¿ ruroci¹gów – Sekcja 08 |  | 19.9d | 2026-09-04 A | 2026-09-29 A | 15XQ71-056, 15XQ71-014 SS | 100% |  |  | 2026-09-02 | 2026-09-28 |  |  |  | GdanskSt | 15XQ71 | Ruroci¹g | Budowa | Roboty | Agnieszk | Infrastr | PM000 | Zespó³-W | Blok | Krytyczn | Pakiet | L2 |  |  |
| 15XQ71-058 |  | Próba ciœnieniowa – Sekcja 08 |  | 5d | 2026-09-29 A | 2026-10-08 | 15XQ71-057 | 60% | 2d |  | 2026-09-29 | 2026-10-05 | 345.7d | 0d |  | GdanskSt | 15XQ71 | Ruroci¹g | Budowa | Roboty | Agnieszk | Infrastr | PM000 | Zespó³-K | Blok | Niski | Pakiet | L2 | Bez uwag |  |
| 15XQ71-059 |  | Izolacje – Sekcja 08 |  | 4d | 2026-10-06 A | 2026-10-07 | 15XQ71-058 | 75% | 1d |  | 2026-10-06 | 2026-10-09 | 345.7d | 0d |  | GdanskSt | 15XQ71 | Ruroci¹g | Budowa | Roboty | Agnieszk | Infrastr | PM000 | Zespó³-W | Blok | Normalny | Pakiet | L2 |  |  |
| 15XQ71-060 |  | Malowanie i oznakowanie – Sekcja 08 |  | 6d | 2026-10-06 A | 2026-10-07 | 15XQ71-059 FF+2d | 83% | 1d |  | 2026-10-06 | 2026-10-13 | 345.7d | 0d | Kalendarz 6-dniowy | GdanskSt | 15XQ71 | Ruroci¹g | Budowa | Roboty | Agnieszk | Infrastr | PM000 | Zespó³-K | Blok | Niski | Pakiet | L2 |  |  |
|  | SEKCJA 09 | **Sekcja 09** |  |  | 2026-03-04 | 2026-10-06 |  |  |  |  |  |  |  |  |  |  |  |  |  |  |  |  |  |  |  |  |  |  |  |  |
|  | PODSEKCJA | **Podsekcja 09.A** |  |  | 2026-03-04 | 2026-10-06 |  |  |  |  |  |  |  |  |  |  |  |  |  |  |  |  |  |  |  |  |  |  |  |  |
| 15XQ71-063 |  | Prefabrykacja ruroci¹gów – Sekcja 09 |  | 7.9d | 2026-03-04 A | 2026-03-17 A | 15XQ71-012, 15XQ71-056 SS+5d | 100% |  |  | 2026-03-05 | 2026-03-13 |  |  |  | GdanskSt | 15XQ71 | Ruroci¹g | Budowa | Roboty | Agnieszk | Infrastr | PM000 | Zespó³-K | Blok | Krytyczn | Pakiet | L2 |  |  |
| 15XQ71-064 |  | Monta¿ ruroci¹gów – Sekcja 09 |  | 8.3d | 2026-09-03 A | 2026-09-14 A | 15XQ71-063, 15XQ71-014 SS+2d | 100% |  |  | 2026-09-04 | 2026-09-15 |  |  |  | GdanskSt | 15XQ71 | Ruroci¹g | Budowa | Roboty | Agnieszk | Infrastr | PM000 | Zespó³-W | Blok | Normalny | Pakiet | L2 |  |  |
| 15XQ71-065 |  | Próba ciœnieniowa – Sekcja 09 |  | 6d | 2026-09-21 A | 2026-09-29 A | 15XQ71-064 | 100% |  |  | 2026-09-16 | 2026-09-23 |  |  |  | GdanskSt | 15XQ71 | Ruroci¹g | Budowa | Roboty | Agnieszk | Infrastr | PM000 | Zespó³-W | Blok | Normalny | Pakiet | L2 |  |  |
| 15XQ71-066 |  | Izolacje – Sekcja 09 |  | 3d | 2026-09-23 A | 2026-09-29 A | 15XQ71-065 | 100% |  |  | 2026-09-24 | 2026-09-28 |  |  |  | GdanskSt | 15XQ71 | Ruroci¹g | Budowa | Roboty | Agnieszk | Infrastr | PM000 | Zespó³-W | Blok | Normalny | Pakiet | L2 |  | Rev C |
| 15XQ71-067 |  | Malowanie i oznakowanie – Sekcja 09 |  | 2d | 2026-10-02 A | 2026-10-06 A | 15XQ71-066 FF+2d | 100% |  |  | 2026-09-29 | 2026-09-30 |  |  |  | GdanskSt | 15XQ71 | Ruroci¹g | Budowa | Roboty | Agnieszk | Infrastr | PM000 | Zespó³-K | Blok | Normalny | Pakiet | L2 |  | Rev A |
|  | PROJ | **Projektowanie** |  |  | 2025-05-14 | 2025-09-24 |  |  |  |  |  |  |  |  |  |  |  |  |  |  |  |  |  |  |  |  |  |  |  |  |
|  | DOKUMENTAC | **Dokumentacja** |  |  | 2025-05-14 | 2025-09-24 |  |  |  |  |  |  |  |  |  |  |  |  |  |  |  |  |  |  |  |  |  |  |  |  |
| 15XQ71-001 |  | Projekt wykonawczy – Zbiornik oleju |  | 73d | 2025-05-14 A | 2025-08-26 A |  | 100% |  |  | 2025-05-12 | 2025-08-20 |  |  |  | GdanskSt | 15XQ71 | Budowlan | Projekto | Projekt | Agnieszk | Infrastr | PM000 | Zespó³-W | Blok | Normalny | Pakiet | L2 |  |  |
| 15XQ71-002 |  | Uzgodnienie dokumentacji z Inwestorem |  | 12d | 2025-08-20 A | 2025-09-09 A | 15XQ71-001 | 100% |  |  | 2025-08-21 | 2025-09-05 |  |  | Kalendarz 6-dniowy | GdanskSt | 15XQ71 | Budowlan | Projekto | Projekt | Agnieszk | Infrastr | PM000 | Zespó³-W | Blok | Niski | Pakiet | L2 |  |  |
| 15XQ71-003 |  | Zatwierdzenie dokumentacji do realizacji |  | 10d | 2025-09-09 A | 2025-09-24 A | 15XQ71-002 | 100% |  |  | 2025-09-08 | 2025-09-19 |  |  | Kalendarz 6-dniowy | GdanskSt | 15XQ71 | Budowlan | Projekto | Projekt | Agnieszk | Infrastr | PM000 | Zespó³-K | Blok | Normalny | Pakiet | L2 |  |  |
| 15XQ71-004 |  | KM: Dokumentacja zatwierdzona – Zbiornik oleju | milestone | 0d | 2025-09-24 A | 2025-09-24 | 15XQ71-003 | 100% |  | 2025-09-23 | 2025-09-22 | 2025-09-22 |  |  |  | GdanskSt | 15XQ71 | Budowlan | Projekto | Kamieñ | Agnieszk | Infrastr | PM000 | Zespó³-K | Blok | Normalny | Pakiet | L1 |  |  |

| ID | WBS | Activity | Type | Duration | Start | Finish | Predecessors | Complete | Actual finish | Planned start | Planned finish | Total float | Free float | Calendar | AC_Wykonawca | AC_Obiekt | AC_Dyscyplina | AC_Faza | AC_Zakres | AC_Opiekun | AC_Obszar | AC_PP_PM | AC_Zespol | AC_Blok | AC_Priorytet | AC_Pakiet | AC_Poziom | Rewizja dokumentu | Uwagi harmonogramisty |
| --- | --- | --- | --- | --- | --- | --- | --- | --- | --- | --- | --- | --- | --- | --- | --- | --- | --- | --- | --- | --- | --- | --- | --- | --- | --- | --- | --- | --- | --- |
|  | ROZR | **Rozruch** |  |  | 2026-11-18 | 2027-01-15 |  |  |  |  |  |  |  |  |  |  |  |  |  |  |  |  |  |  |  |  |  |  |  |
|  | ROZRUCH | **Rozruch** |  |  | 2026-11-18 | 2027-01-15 |  |  |  |  |  |  |  |  |  |  |  |  |  |  |  |  |  |  |  |  |  |  |  |
| 15XQ71-070 |  | Przegl¹d gotowoœci do rozruchu |  | 8d | 2026-11-18 | 2026-11-27 | 15XQ71-069, 15XQ71-019, 15XQ71-024, 15XQ71-026 |  |  | 2026-10-26 | 2026-11-04 | 321.6d | 0d |  | GdanskSt | 15XQ71 | Rozruch | Rozruch | Rozruch | Agnieszk | Infrastr | PM100 | Zespó³-I | Blok | Normalny | Pakiet | L2 |  |  |
| 15XQ71-071 |  | Rozruch na zimno |  | 9d | 2026-11-30 | 2026-12-10 | 15XQ71-070 |  |  | 2026-11-05 | 2026-11-17 | 321.6d | 0d |  | GdanskSt | 15XQ71 | Rozruch | Rozruch | Rozruch | Agnieszk | Infrastr | PM000 | Zespó³-W | Blok | Normalny | Pakiet | L2 |  |  |
| 15XQ71-072 |  | Rozruch na gor¹co / próby ruchowe |  | 25d | 2026-12-11 | 2027-01-14 | 15XQ71-071 |  |  | 2026-11-18 | 2026-12-22 | 321.6d | 0d |  | GdanskSt | 15XQ71 | Rozruch | Rozruch | Rozruch | Agnieszk | Infrastr | PM000 | Zespó³-W | Blok | Normalny | Pakiet | L2 |  |  |
| 15XQ71-073 |  | KM: Odbiór koñcowy – Zbiornik oleju | milestone | 0d | 2027-01-15 | 2027-01-15 | 15XQ71-072 |  |  | 2026-12-23 | 2026-12-23 | 321.6d | 0d |  | GdanskSt | 15XQ71 | Rozruch | Rozruch | Kamieñ | Agnieszk | Infrastr | PM000 | Zespó³-K | Blok | Normalny | Pakiet | L1 |  |  |
|  | ZAKU | **Zakupy** |  |  | 2025-06-10 | 2026-09-03 |  |  |  |  |  |  |  |  |  |  |  |  |  |  |  |  |  |  |  |  |  |  |  |
|  | DOSTAWY | **Dostawy** |  |  | 2025-09-30 | 2026-09-03 |  |  |  |  |  |  |  |  |  |  |  |  |  |  |  |  |  |  |  |  |  |  |  |
| 15XQ71-008 |  | Produkcja u dostawcy |  | 227d | 2025-09-30 A | 2026-08-17 A | 15XQ71-007 | 100% |  | 2025-10-01 | 2026-08-13 |  |  |  | GdanskSt | 15XQ71 | Mechanic | Zakupy | Dostawa | Agnieszk | Infrastr | PM000 | Zespó³-W | Blok | Normalny | Pakiet | L2 |  |  |
| 15XQ71-009 |  | Testy FAT |  | 3d | 2026-08-19 A | 2026-08-21 A | 15XQ71-008 | 100% |  | 2026-08-14 | 2026-08-18 |  |  |  | GdanskSt | 15XQ71 | Mechanic | Zakupy | Dostawa | Agnieszk | Infrastr | PM200 | Zespó³-E | Blok | Normalny | Pakiet | L2 |  |  |
| 15XQ71-010 |  | Transport i dostawa na plac budowy |  | 10d | 2026-08-20 A | 2026-09-03 A | 15XQ71-009 | 100% |  | 2026-08-19 | 2026-09-01 |  |  |  | GdanskSt | 15XQ71 | Mechanic | Zakupy | Dostawa | Agnieszk | Infrastr | PM000 | Zespó³-W | Blok | Normalny | Pakiet | L2 | Rev B |  |
| 15XQ71-011 |  | KM: Dostawa na budowê – Zbiornik oleju | milestone | 0d | 2026-09-01 A | 2026-09-01 | 15XQ71-010 | 100% | 2026-08-31 | 2026-09-02 | 2026-09-02 |  |  |  | GdanskSt | 15XQ71 | Mechanic | Zakupy | Kamieñ | Agnieszk | Infrastr | PM000 | Zespó³-W | Blok | Normalny | Pakiet | L1 |  |  |
|  | ZAMÓWIENIA | **Zamówienia** |  |  | 2025-06-10 | 2025-10-03 |  |  |  |  |  |  |  |  |  |  |  |  |  |  |  |  |  |  |  |  |  |  |  |
| 15XQ71-005 |  | Zapytanie ofertowe |  | 17d | 2025-06-10 A | 2025-07-04 A | 15XQ71-001 SS+20d | 100% |  | 2025-06-09 | 2025-07-01 |  |  |  | GdanskSt | 15XQ71 | Mechanic | Zakupy | Dostawa | Agnieszk | Infrastr | PM000 | Zespó³-K | Blok | Krytyczn | Pakiet | L2 |  |  |
| 15XQ71-006 |  | Analiza i wybór ofert |  | 20d | 2025-07-07 A | 2025-08-05 A | 15XQ71-005 | 100% |  | 2025-07-02 | 2025-07-29 |  |  |  | GdanskSt | 15XQ71 | Mechanic | Zakupy | Dostawa | Agnieszk | Infrastr | PM000 | Zespó³-K | Blok | Normalny | Pakiet | L2 | Rev C | Czeka na dostawê |
| 15XQ71-007 |  | Zawarcie umowy / zamówienie |  | 7d | 2025-09-25 A | 2025-10-03 A | 15XQ71-006, 15XQ71-004 SS, 18TY85-004 (other project) SS+7d | 100% |  | 2025-09-22 | 2025-09-30 |  |  | Kalendarz 6-dniowy | GdanskSt | 15XQ71 | Mechanic | Zakupy | Dostawa | Agnieszk | Infrastr | PM000 | Zespó³-I | Blok | Normalny | Pakiet | L1 |  |  |
|  | 19WP38 | **19WP38 – Stacja redukcyjno-pomiarowa gazu** |  |  | 2025-04-11 | 2026-07-20 |  |  |  |  |  |  |  |  |  |  |  |  |  |  |  |  |  |  |  |  |  |  |  |
|  | BUDO | **Budowa** |  |  | 2025-11-19 | 2026-06-04 |  |  |  |  |  |  |  |  |  |  |  |  |  |  |  |  |  |  |  |  |  |  |  |
|  | AKPIA | **AKPiA** |  |  | 2026-04-13 | 2026-05-08 |  |  |  |  |  |  |  |  |  |  |  |  |  |  |  |  |  |  |  |  |  |  |  |
| 19WP38-063 |  | Monta¿ uk³adów AKPiA |  | 20d | 2026-04-13 A | 2026-05-08 A | 19WP38-014 SS+5d | 100% |  | 2026-04-14 | 2026-05-11 |  |  |  | GdanskSt | 19WP38 | AKPiA | Budowa | Roboty | Magdalen | Infrastr | PM000 | Zespó³-K | Wspólne | Normalny | Pakiet | L2 |  |  |
|  | ELEKTRYKA | **Elektryka** |  |  | 2026-04-20 | 2026-05-25 |  |  |  |  |  |  |  |  |  |  |  |  |  |  |  |  |  |  |  |  |  |  |  |
| 19WP38-025 |  | Uk³adanie kabli – trasa 02 |  | 4d | 2026-04-20 A | 2026-04-28 A | 19WP38-014 SS+10d | 100% |  | 2026-04-21 | 2026-04-24 |  |  |  | GdanskSt | 19WP38 | Elektryc | Budowa | Roboty | Magdalen | Infrastr | PM000 | Zespó³-K | Wspólne | Krytyczn | Pakiet | L2 |  |  |
| 19WP38-037 |  | Uk³adanie kabli – trasa 04 |  | 7d | 2026-04-20 A | 2026-04-29 A | 19WP38-014 SS+10d | 100% |  | 2026-04-21 | 2026-04-29 |  |  |  | GdanskSt | 19WP38 | Elektryc | Budowa | Roboty | Magdalen | Infrastr | PM000 | Zespó³-K | Wspólne | Normalny | Pakiet | L2 |  |  |
| 19WP38-026 |  | Pod³¹czenia i pomiary – trasa 02 |  | 4d | 2026-04-21 A | 2026-04-27 A | 19WP38-025 FF | 100% |  | 2026-04-21 | 2026-04-24 |  |  |  | GdanskSt | 19WP38 | Elektryc | Budowa | Roboty | Magdalen | Infrastr | PM000 | Zespó³-K | Wspólne | Krytyczn | Pakiet | L2 |  |  |
| 19WP38-061 |  | Uk³adanie kabli – trasa 08 |  | 13d | 2026-04-21 A | 2026-05-11 A | 19WP38-014 SS+10d | 100% |  | 2026-04-21 | 2026-05-07 |  |  |  | GdanskSt | 19WP38 | Elektryc | Budowa | Roboty | Magdalen | Infrastr | PM000 | Zespó³-K | Wspólne | Normalny | Pakiet | L2 |  |  |
| 19WP38-038 |  | Pod³¹czenia i pomiary – trasa 04 |  | 6d | 2026-04-24 A | 2026-05-05 A | 19WP38-037 FF | 100% |  | 2026-04-22 | 2026-04-29 |  |  |  | GdanskSt | 19WP38 | Elektryc | Budowa | Roboty | Magdalen | Infrastr | PM000 | Zespó³-W | Wspólne | Normalny | Pakiet | L2 | Rev B | Czeka na dostawê |
| 19WP38-049 |  | Uk³adanie kabli – trasa 06 |  | 20d | 2026-04-24 A | 2026-05-25 A | 19WP38-014 SS+10d | 100% |  | 2026-04-21 | 2026-05-18 |  |  |  | GdanskSt | 19WP38 | Elektryc | Budowa | Roboty | Magdalen | Infrastr | PM000 | Zespó³-K | Wspólne | Niski | Pakiet | L2 | Rev C | Czeka na dostawê |
| 19WP38-062 |  | Pod³¹czenia i pomiary – trasa 08 |  | 5d | 2026-04-30 A | 2026-05-06 A | 19WP38-061 FF | 100% |  | 2026-05-01 | 2026-05-07 |  |  |  | GdanskSt | 19WP38 | Elektryc | Budowa | Roboty | Magdalen | Infrastr | PM000 | Zespó³-K | Wspólne | Niski | Pakiet | L2 |  |  |
| 19WP38-050 |  | Pod³¹czenia i pomiary – trasa 06 |  | 6d | 2026-05-13 A | 2026-05-21 A | 19WP38-049 FF | 100% |  | 2026-05-11 | 2026-05-18 |  |  |  | GdanskSt | 19WP38 | Elektryc | Budowa | Roboty | Magdalen | Infrastr | PM000 | Zespó³-W | Wspólne | Wysoki | Pakiet | L2 | Rev A |  |

| ID | WBS | Activity | Type | Duration | Start | Finish | Predecessors | Complete | Actual finish | Planned start | Planned finish | Calendar | AC_Wykonawca | AC_Obiekt | AC_Dyscyplina | AC_Faza | AC_Zakres | AC_Opiekun | AC_Obszar | AC_PP_PM | AC_Zespol | AC_Blok | AC_Priorytet | AC_Pakiet | AC_Poziom | Uwagi harmonogramisty | Rewizja dokumentu |
| --- | --- | --- | --- | --- | --- | --- | --- | --- | --- | --- | --- | --- | --- | --- | --- | --- | --- | --- | --- | --- | --- | --- | --- | --- | --- | --- | --- |
|  | MONTA¯ | **Monta¿** |  |  | 2025-12-19 | 2026-05-29 |  |  |  |  |  |  |  |  |  |  |  |  |  |  |  |  |  |  |  |  |  |
| 19WP38-013 |  | Monta¿ konstrukcji stalowych |  | 27d | 2025-12-19 A | 2026-01-27 A | 19WP38-012 | 100% |  | 2025-12-16 | 2026-01-21 |  | GdanskSt | 19WP38 | Mechanic | Budowa | Roboty | Magdalen | Infrastr | PM000 | Zespó³-K | Wspólne | Normalny | Pakiet | L2 |  |  |
| 19WP38-014 |  | Monta¿ urz¹dzeñ g³ównych |  | 38d | 2026-04-07 A | 2026-05-29 A | 19WP38-013, 19WP38-011 | 100% |  | 2026-04-07 | 2026-05-28 |  | GdanskSt | 19WP38 | Mechanic | Budowa | Roboty | Magdalen | Infrastr | PM000 | Zespó³-K | Wspólne | Normalny | Pakiet | L2 | Do weryfikacji z wykonawc¹ | Rev A |
| 19WP38-064 |  | KM: Zakoñczenie monta¿u – Stacja redukcyjno-pomiarowa gazu | milestone | 0d | 2026-05-28 A | 2026-05-28 | 19WP38-055, 19WP38-060, 19WP38-062, 19WP38-063, 19WP38-014 | 100% | 2026-05-27 | 2026-05-29 | 2026-05-29 |  | GdanskSt | 19WP38 | Mechanic | Budowa | Kamieñ | Magdalen | Infrastr | PM000 | Zespó³-W | Wspólne | Normalny | Pakiet | L2 |  |  |
|  | ROBOTY BUD | **Roboty budowlane** |  |  | 2025-11-19 | 2025-12-18 |  |  |  |  |  |  |  |  |  |  |  |  |  |  |  |  |  |  |  |  |  |
| 19WP38-012 |  | Fundamenty i roboty ziemne |  | 20d | 2025-11-19 A | 2025-12-18 A | 19WP38-007 FS+11d | 100% |  | 2025-11-18 | 2025-12-15 |  | GdanskSt | 19WP38 | Budowlan | Budowa | Roboty | Magdalen | Infrastr | PM100 | Zespó³-I | Wspólne | Normalny | Pakiet | L2 | Bez uwag |  |
|  | RUROCI¥GI | **Ruroci¹gi** |  |  | 2025-12-19 | 2026-06-04 |  |  |  |  |  |  |  |  |  |  |  |  |  |  |  |  |  |  |  |  |  |
|  | SEKCJA 01 | **Sekcja 01** |  |  | 2025-12-19 | 2026-05-05 |  |  |  |  |  |  |  |  |  |  |  |  |  |  |  |  |  |  |  |  |  |
| 19WP38-015 |  | Prefabrykacja ruroci¹gów – Sekcja 01 |  | 12.2d | 2025-12-19 A | 2026-01-07 A | 19WP38-012 | 100% |  | 2025-12-16 | 2025-12-31 |  | GdanskSt | 19WP38 | Ruroci¹g | Budowa | Roboty | Magdalen | Infrastr | PM000 | Zespó³-W | Wspólne | Normalny | Pakiet | L2 |  |  |
| 19WP38-016 |  | Monta¿ ruroci¹gów – Sekcja 01 |  | 14d | 2026-04-06 A | 2026-04-27 A | 19WP38-015, 19WP38-014 SS | 100% |  | 2026-04-07 | 2026-04-24 |  | GdanskSt | 19WP38 | Ruroci¹g | Budowa | Roboty | Magdalen | Infrastr | PM000 | Zespó³-W | Wspólne | Normalny | Pakiet | L2 | Bez uwag |  |
| 19WP38-018 |  | Izolacje – Sekcja 01 |  | 4d | 2026-04-28 A | 2026-05-01 A | 19WP38-017 | 100% |  | 2026-04-29 | 2026-05-04 |  | GdanskSt | 19WP38 | Ruroci¹g | Budowa | Roboty | Magdalen | Infrastr | PM000 | Zespó³-W | Wspólne | Normalny | Pakiet | L2 |  | Rev B |
| 19WP38-017 |  | Próba ciœnieniowa – Sekcja 01 |  | 2d | 2026-04-30 A | 2026-05-05 A | 19WP38-016 | 100% |  | 2026-04-27 | 2026-04-28 |  | GdanskSt | 19WP38 | Ruroci¹g | Budowa | Roboty | Magdalen | Infrastr | PM000 | Zespó³-W | Wspólne | Normalny | Pakiet | L2 |  |  |
| 19WP38-019 |  | Malowanie i oznakowanie – Sekcja 01 |  | 4d | 2026-04-30 A | 2026-05-05 A | 19WP38-018 FF+2d | 100% |  | 2026-05-01 | 2026-05-06 |  | GdanskSt | 19WP38 | Ruroci¹g | Budowa | Roboty | Magdalen | Infrastr | PM000 | Zespó³-K | Wspólne | Normalny | Pakiet | L2 |  | Rev C |
|  | SEKCJA 02 | **Sekcja 02** |  |  | 2025-12-23 | 2026-05-28 |  |  |  |  |  |  |  |  |  |  |  |  |  |  |  |  |  |  |  |  |  |
| 19WP38-020 |  | Prefabrykacja ruroci¹gów – Sekcja 02 |  | 14.6d | 2025-12-23 A | 2026-01-13 A | 19WP38-012, 19WP38-015 SS+5d | 100% |  | 2025-12-23 | 2026-01-09 |  | GdanskSt | 19WP38 | Ruroci¹g | Budowa | Roboty | Magdalen | Infrastr | PM000 | Zespó³-K | Wspólne | Wysoki | Pakiet | L2 |  | Rev B |
| 19WP38-021 |  | Monta¿ ruroci¹gów – Sekcja 02 |  | 19.1d | 2026-04-10 A | 2026-05-06 A | 19WP38-020, 19WP38-014 SS+2d | 100% |  | 2026-04-09 | 2026-05-05 |  | GdanskSt | 19WP38 | Ruroci¹g | Budowa | Roboty | Magdalen | Infrastr | PM000 | Zespó³-W | Wspólne | Normalny | Pakiet | L2 |  | Rev A |
| 19WP38-022 |  | Próba ciœnieniowa – Sekcja 02 |  | 5d | 2026-05-06 A | 2026-05-12 A | 19WP38-021 | 100% |  |  |  |  | GdanskSt | 19WP38 | Ruroci¹g | Budowa | Roboty | Magdalen | Infrastr | PM300 | Zespó³-I | Wspólne | Normalny | Pakiet | L2 |  |  |
| 19WP38-023 |  | Izolacje – Sekcja 02 |  | 7d | 2026-05-15 A | 2026-05-28 A | 19WP38-022 | 100% |  | 2026-05-13 | 2026-05-21 |  | GdanskSt | 19WP38 | Ruroci¹g | Budowa | Roboty | Magdalen | Infrastr | PM000 | Zespó³-K | Wspólne | Niski | Pakiet | L2 | Do weryfikacji z wykonawc¹ |  |
| 19WP38-024 |  | Malowanie i oznakowanie – Sekcja 02 |  | 8d | 2026-05-18 A | 2026-05-28 A | 19WP38-023 FF+2d | 100% |  | 2026-05-14 | 2026-05-25 |  | GdanskSt | 19WP38 | Ruroci¹g | Budowa | Roboty | Magdalen | Infrastr | PM000 | Zespó³-K | Wspólne | Normalny | Pakiet | L2 |  |  |
|  | SEKCJA 03 | **Sekcja 03** |  |  | 2026-01-02 | 2026-06-04 |  |  |  |  |  |  |  |  |  |  |  |  |  |  |  |  |  |  |  |  |  |
|  | PODSEKCJA | **Podsekcja 03.A** |  |  | 2026-01-02 | 2026-06-04 |  |  |  |  |  |  |  |  |  |  |  |  |  |  |  |  |  |  |  |  |  |
| 19WP38-027 |  | Prefabrykacja ruroci¹gów – Sekcja 03 |  | 13.2d | 2026-01-02 A | 2026-01-22 A | 19WP38-012, 19WP38-020 SS+5d | 100% |  | 2025-12-30 | 2026-01-15 |  | GdanskSt | 19WP38 | Ruroci¹g | Budowa | Roboty | Magdalen | Infrastr | PM200 | Zespó³-I | Wspólne | Normalny | Pakiet | L2 |  |  |
| 19WP38-028 |  | Monta¿ ruroci¹gów – Sekcja 03 |  | 22.2d | 2026-04-15 A | 2026-05-15 A | 19WP38-027, 19WP38-014 SS+4d | 100% |  | 2026-04-13 | 2026-05-12 |  | GdanskSt | 19WP38 | Ruroci¹g | Budowa | Roboty | Magdalen | Infrastr | PM000 | Zespó³-W | Wspólne | Niski | Pakiet | L2 |  | Rev A |
| 19WP38-030 |  | Izolacje – Sekcja 03 |  | 9d | 2026-05-15 A | 2026-05-28 A | 19WP38-029 | 100% |  | 2026-05-15 | 2026-05-27 | Kalendarz 6-dniowy | GdanskSt | 19WP38 | Ruroci¹g | Budowa | Roboty | Magdalen | Infrastr | PM000 | Zespó³-W | Wspólne | Normalny | Pakiet | L2 |  |  |
| 19WP38-029 |  | Próba ciœnieniowa – Sekcja 03 |  | 2d | 2026-05-18 A | 2026-05-21 A | 19WP38-028 | 100% |  | 2026-05-13 | 2026-05-14 |  | GdanskSt | 19WP38 | Ruroci¹g | Budowa | Roboty | Magdalen | Infrastr | PM000 | Zespó³-W | Wspólne | Normalny | Pakiet | L2 |  |  |
| 19WP38-031 |  | Malowanie i oznakowanie – Sekcja 03 |  | 7d | 2026-05-22 A | 2026-06-04 A | 19WP38-030 FF+2d | 100% |  | 2026-05-21 | 2026-05-29 | Kalendarz 6-dniowy | GdanskSt | 19WP38 | Ruroci¹g | Budowa | Roboty | Magdalen | Infrastr | PM000 | Zespó³-W | Wspólne | Normalny | Pakiet | L2 |  |  |

| ID | WBS | Activity | Duration | Start | Finish | Predecessors | Complete | Planned start | Planned finish | Uwagi harmonogramisty | AC_Wykonawca | AC_Obiekt | AC_Dyscyplina | AC_Faza | AC_Zakres | AC_Opiekun | AC_Obszar | AC_PP_PM | AC_Zespol | AC_Blok | AC_Priorytet | AC_Pakiet | AC_Poziom | Rewizja dokumentu |
| --- | --- | --- | --- | --- | --- | --- | --- | --- | --- | --- | --- | --- | --- | --- | --- | --- | --- | --- | --- | --- | --- | --- | --- | --- |
|  | SEKCJA 04 | **Sekcja 04** |  | 2026-01-05 | 2026-05-22 |  |  |  |  |  |  |  |  |  |  |  |  |  |  |  |  |  |  |  |
| 19WP38-032 |  | Prefabrykacja ruroci¹gów – Sekcja 04 | 13.6d | 2026-01-05 A | 2026-01-26 A | 19WP38-012, 19WP38-027 SS+5d | 100% | 2026-01-06 | 2026-01-22 | Bez uwag | GdanskSt | 19WP38 | Ruroci¹g | Budowa | Roboty | Magdalen | Infrastr | PM100 | Zespó³-I | Wspólne | Normalny | Pakiet | L2 |  |
| 19WP38-033 |  | Monta¿ ruroci¹gów – Sekcja 04 | 17.6d | 2026-04-09 A | 2026-05-05 A | 19WP38-032, 19WP38-014 SS+1d | 100% | 2026-04-08 | 2026-04-30 |  | GdanskSt | 19WP38 | Ruroci¹g | Budowa | Roboty | Magdalen | Infrastr | PM000 | Zespó³-W | Wspólne | Normalny | Pakiet | L2 | Rev B |
| 19WP38-034 |  | Próba ciœnieniowa – Sekcja 04 | 3d | 2026-05-06 A | 2026-05-11 A | 19WP38-033 | 100% | 2026-05-01 | 2026-05-05 |  | GdanskSt | 19WP38 | Ruroci¹g | Budowa | Roboty | Magdalen | Infrastr | PM000 | Zespó³-W | Wspólne | Normalny | Pakiet | L2 |  |
| 19WP38-035 |  | Izolacje – Sekcja 04 | 11d | 2026-05-07 A | 2026-05-21 A | 19WP38-034 | 100% | 2026-05-06 | 2026-05-20 | Czeka na dostawê | GdanskSt | 19WP38 | Ruroci¹g | Budowa | Roboty | Magdalen | Infrastr | PM000 | Zespó³-I | Wspólne | Normalny | Pakiet | L2 |  |
| 19WP38-036 |  | Malowanie i oznakowanie – Sekcja 04 | 8d | 2026-05-12 A | 2026-05-22 A | 19WP38-035 FF+2d | 100% | 2026-05-13 | 2026-05-22 |  | GdanskSt | 19WP38 | Ruroci¹g | Budowa | Roboty | Magdalen | Infrastr | PM000 | Zespó³-K | Wspólne | Wysoki | Pakiet | L2 | Rev C |
|  | SEKCJA 05 | **Sekcja 05** |  | 2026-01-15 | 2026-05-07 |  |  |  |  |  |  |  |  |  |  |  |  |  |  |  |  |  |  |  |
| 19WP38-039 |  | Prefabrykacja ruroci¹gów – Sekcja 05 | 13.7d | 2026-01-15 A | 2026-02-05 A | 19WP38-012, 19WP38-032 SS+5d | 100% | 2026-01-13 | 2026-01-29 |  | GdanskSt | 19WP38 | Ruroci¹g | Budowa | Roboty | Magdalen | Infrastr | PM000 | Zespó³-W | Wspólne | Normalny | Pakiet | L2 |  |
| 19WP38-040 |  | Monta¿ ruroci¹gów – Sekcja 05 | 8.5d | 2026-04-07 A | 2026-04-20 A | 19WP38-039, 19WP38-014 SS+1d | 100% | 2026-04-08 | 2026-04-17 |  | GdanskSt | 19WP38 | Ruroci¹g | Budowa | Roboty | Magdalen | Infrastr | PM000 | Zespó³-W | Wspólne | Normalny | Pakiet | L2 |  |
| 19WP38-041 |  | Próba ciœnieniowa – Sekcja 05 | 6d | 2026-04-23 A | 2026-04-30 A | 19WP38-040 | 100% | 2026-04-20 | 2026-04-27 | Uzgodnione na koordynacji | GdanskSt | 19WP38 | Ruroci¹g | Budowa | Roboty | Magdalen | Infrastr | PM200 | Zespó³-I | Wspólne | Normalny | Pakiet | L2 | Rev C |
| 19WP38-042 |  | Izolacje – Sekcja 05 | 4d | 2026-04-27 A | 2026-04-30 A | 19WP38-041 | 100% | 2026-04-28 | 2026-05-01 | Do weryfikacji z wykonawc¹ | GdanskSt | 19WP38 | Ruroci¹g | Budowa | Roboty | Magdalen | Infrastr | PM000 | Zespó³-W | Wspólne | Niski | Pakiet | L2 |  |
| 19WP38-043 |  | Malowanie i oznakowanie – Sekcja 05 | 2d | 2026-05-01 A | 2026-05-07 A | 19WP38-042 FF+2d | 100% | 2026-05-04 | 2026-05-05 |  | GdanskSt | 19WP38 | Ruroci¹g | Budowa | Roboty | Magdalen | Infrastr | PM000 | Zespó³-W | Wspólne | Normalny | Pakiet | L2 |  |
|  | SEKCJA 06 | **Sekcja 06** |  | 2026-01-22 | 2026-05-14 |  |  |  |  |  |  |  |  |  |  |  |  |  |  |  |  |  |  |  |
|  | PODSEKCJA | **Podsekcja 06.A** |  | 2026-01-22 | 2026-05-14 |  |  |  |  |  |  |  |  |  |  |  |  |  |  |  |  |  |  |  |
| 19WP38-044 |  | Prefabrykacja ruroci¹gów – Sekcja 06 | 9.8d | 2026-01-22 A | 2026-02-04 A | 19WP38-012, 19WP38-039 SS+5d | 100% | 2026-01-20 | 2026-01-30 | Do weryfikacji z wykonawc¹ | GdanskSt | 19WP38 | Ruroci¹g | Budowa | Roboty | Magdalen | Infrastr | PM000 | Zespó³-K | Wspólne | Normalny | Pakiet | L2 |  |
| 19WP38-045 |  | Monta¿ ruroci¹gów – Sekcja 06 | 8.1d | 2026-04-10 A | 2026-04-24 A | 19WP38-044, 19WP38-014 SS | 100% | 2026-04-07 | 2026-04-16 |  | GdanskSt | 19WP38 | Ruroci¹g | Budowa | Roboty | Magdalen | Infrastr | PM000 | Zespó³-K | Wspólne | Wysoki | Pakiet | L2 |  |
| 19WP38-046 |  | Próba ciœnieniowa – Sekcja 06 | 3d | 2026-04-22 A | 2026-04-27 A | 19WP38-045 | 100% | 2026-04-17 | 2026-04-21 | Ryzyko opóŸnienia | GdanskSt | 19WP38 | Ruroci¹g | Budowa | Roboty | Magdalen | Infrastr | PM000 | Zespó³-W | Wspólne | Normalny | Pakiet | L2 |  |
| 19WP38-047 |  | Izolacje – Sekcja 06 | 9d | 2026-04-27 A | 2026-05-07 A | 19WP38-046 | 100% | 2026-04-22 | 2026-05-04 | Bez uwag | GdanskSt | 19WP38 | Ruroci¹g | Budowa | Roboty | Magdalen | Infrastr | PM000 | Zespó³-K | Wspólne | Normalny | Pakiet | L2 | Rev C |
| 19WP38-048 |  | Malowanie i oznakowanie – Sekcja 06 | 3d | 2026-05-07 A | 2026-05-14 A | 19WP38-047 FF+2d | 100% | 2026-05-04 | 2026-05-06 |  | GdanskSt | 19WP38 | Ruroci¹g | Budowa | Roboty | Magdalen | Infrastr | PM000 | Zespó³-W | Wspólne | Niski | Pakiet | L2 |  |
|  | SEKCJA 07 | **Sekcja 07** |  | 2026-01-29 | 2026-06-02 |  |  |  |  |  |  |  |  |  |  |  |  |  |  |  |  |  |  |  |
| 19WP38-051 |  | Prefabrykacja ruroci¹gów – Sekcja 07 | 7.7d | 2026-01-29 A | 2026-02-10 A | 19WP38-012, 19WP38-044 SS+5d | 100% | 2026-01-27 | 2026-02-04 |  | GdanskSt | 19WP38 | Ruroci¹g | Budowa | Roboty | Magdalen | Infrastr | PM000 | Zespó³-W | Wspólne | Normalny | Pakiet | L2 |  |
| 19WP38-052 |  | Monta¿ ruroci¹gów – Sekcja 07 | 18.1d | 2026-04-17 A | 2026-05-12 A | 19WP38-051, 19WP38-014 SS+6d | 100% | 2026-04-15 | 2026-05-08 |  | GdanskSt | 19WP38 | Ruroci¹g | Budowa | Roboty | Magdalen | Infrastr | PM000 | Zespó³-K | Wspólne | Normalny | Pakiet | L2 |  |
| 19WP38-053 |  | Próba ciœnieniowa – Sekcja 07 | 6d | 2026-05-11 A | 2026-05-18 A | 19WP38-052 | 100% |  |  |  | GdanskSt | 19WP38 | Ruroci¹g | Budowa | Roboty | Magdalen | Infrastr | PM000 | Zespó³-K | Wspólne | Normalny | Pakiet | L2 |  |
| 19WP38-055 |  | Malowanie i oznakowanie – Sekcja 07 | 7d | 2026-05-20 A | 2026-05-29 A | 19WP38-054 FF+2d | 100% | 2026-05-19 | 2026-05-27 |  | GdanskSt | 19WP38 | Ruroci¹g | Budowa | Roboty | Magdalen | Infrastr | PM000 | Zespó³-W | Wspólne | Normalny | Pakiet | L2 |  |
| 19WP38-054 |  | Izolacje – Sekcja 07 | 5d | 2026-05-22 A | 2026-06-02 A | 19WP38-053 | 100% | 2026-05-19 | 2026-05-25 |  | GdanskSt | 19WP38 | Ruroci¹g | Budowa | Roboty | Magdalen | Infrastr | PM000 | Zespó³-K | Wspólne | Normalny | Pakiet | L2 |  |

| ID | WBS | Activity | Type | Duration | Start | Finish | Predecessors | Complete | Actual start | Actual finish | Planned start | Planned finish | Calendar | AC_Wykonawca | AC_Obiekt | AC_Dyscyplina | AC_Faza | AC_Zakres | AC_Opiekun | AC_Obszar | AC_PP_PM | AC_Zespol | AC_Blok | AC_Priorytet | AC_Pakiet | AC_Poziom | Uwagi harmonogramisty | Rewizja dokumentu |
| --- | --- | --- | --- | --- | --- | --- | --- | --- | --- | --- | --- | --- | --- | --- | --- | --- | --- | --- | --- | --- | --- | --- | --- | --- | --- | --- | --- | --- |
|  | SEKCJA 08 | **Sekcja 08** |  |  | 2026-02-03 | 2026-05-26 |  |  |  |  |  |  |  |  |  |  |  |  |  |  |  |  |  |  |  |  |  |  |
| 19WP38-056 |  | Prefabrykacja ruroci¹gów – Sekcja 08 |  | 14.7d | 2026-02-03 A | 2026-02-24 A | 19WP38-012, 19WP38-051 SS+5d | 100% |  |  | 2026-02-03 | 2026-02-20 |  | GdanskSt | 19WP38 | Ruroci¹g | Budowa | Roboty | Magdalen | Infrastr | PM000 | Zespó³-W | Wspólne | Normalny | Pakiet | L2 |  |  |
| 19WP38-057 |  | Monta¿ ruroci¹gów – Sekcja 08 |  | 17.5d | 2026-04-21 A | 2026-05-14 A | 19WP38-056, 19WP38-014 SS+9d | 100% |  |  | 2026-04-20 | 2026-05-12 |  | GdanskSt | 19WP38 | Ruroci¹g | Budowa | Roboty | Magdalen | Infrastr | PM000 | Zespó³-W | Wspólne | Krytyczn | Pakiet | L2 | Do weryfikacji z wykonawc¹ |  |
| 19WP38-058 |  | Próba ciœnieniowa – Sekcja 08 |  | 3d | 2026-05-18 A | 2026-05-21 A | 19WP38-057 | 100% |  |  | 2026-05-13 | 2026-05-15 |  | GdanskSt | 19WP38 | Ruroci¹g | Budowa | Roboty | Magdalen | Infrastr | PM000 | Zespó³-K | Wspólne | Normalny | Pakiet | L2 |  |  |
| 19WP38-059 |  | Izolacje – Sekcja 08 |  | 3d | 2026-05-18 A | 2026-05-20 A | 19WP38-058 | 100% |  |  |  |  |  | GdanskSt | 19WP38 | Ruroci¹g | Budowa | Roboty | Magdalen | Infrastr | PM000 | Zespó³-W | Wspólne | Normalny | Pakiet | L2 | Bez uwag |  |
| 19WP38-060 |  | Malowanie i oznakowanie – Sekcja 08 |  | 5d | 2026-05-19 A | 2026-05-26 A | 19WP38-059 FF+2d | 100% |  |  | 2026-05-18 | 2026-05-22 |  | GdanskSt | 19WP38 | Ruroci¹g | Budowa | Roboty | Magdalen | Infrastr | PM000 | Zespó³-W | Wspólne | Normalny | Pakiet | L2 |  | Rev A |
|  | PROJ | **Projektowanie** |  |  | 2025-04-11 | 2025-10-22 |  |  |  |  |  |  |  |  |  |  |  |  |  |  |  |  |  |  |  |  |  |  |
|  | DOKUMENTAC | **Dokumentacja** |  |  | 2025-04-11 | 2025-10-22 |  |  |  |  |  |  |  |  |  |  |  |  |  |  |  |  |  |  |  |  |  |  |
| 19WP38-001 |  | Projekt wykonawczy – Stacja redukcyjno-pomiarowa gazu |  | 108d | 2025-04-11 A | 2025-09-11 A |  | 100% |  |  | 2025-04-11 | 2025-09-09 |  | GdanskSt | 19WP38 | Budowlan | Projekto | Projekt | Magdalen | Infrastr | PM000 | Zespó³-K | Wspólne | Normalny | Pakiet | L2 |  |  |
| 19WP38-002 |  | Uzgodnienie dokumentacji z Inwestorem |  | 14d | 2025-09-09 A | 2025-10-01 A | 19WP38-001 | 100% |  |  | 2025-09-10 | 2025-09-29 |  | GdanskSt | 19WP38 | Budowlan | Projekto | Projekt | Magdalen | Infrastr | PM000 | Zespó³-K | Wspólne | Normalny | Pakiet | L2 |  |  |
| 19WP38-003 |  | Zatwierdzenie dokumentacji do realizacji |  | 15d | 2025-09-30 A | 2025-10-21 A | 19WP38-002 | 100% |  |  | 2025-09-30 | 2025-10-20 |  | GdanskSt | 19WP38 | Budowlan | Projekto | Projekt | Magdalen | Infrastr | PM000 | Zespó³-W | Wspólne | Normalny | Pakiet | L2 |  |  |
| 19WP38-004 |  | KM: Dokumentacja zatwierdzona – Stacja redukcyjno-pomiarowa gazu | milestone | 0d | 2025-10-22 A | 2025-10-22 | 19WP38-003 | 100% |  | 2025-10-21 | 2025-10-21 | 2025-10-21 | Kalendarz 6-dniowy | GdanskSt | 19WP38 | Budowlan | Projekto | Kamieñ | Magdalen | Infrastr | PM000 | Zespó³-W | Wspólne | Wysoki | Pakiet | L1 |  |  |
|  | ROZR | **Rozruch** |  |  | 2026-06-01 | 2026-07-20 |  |  |  |  |  |  |  |  |  |  |  |  |  |  |  |  |  |  |  |  |  |  |
|  | ROZRUCH | **Rozruch** |  |  | 2026-06-01 | 2026-07-20 |  |  |  |  |  |  |  |  |  |  |  |  |  |  |  |  |  |  |  |  |  |  |
| 19WP38-065 |  | Przegl¹d gotowoœci do rozruchu |  | 5d | 2026-06-01 A | 2026-06-10 A | 19WP38-064, 19WP38-019, 19WP38-024, 19WP38-026 | 100% |  |  | 2026-05-29 | 2026-06-04 |  | GdanskSt | 19WP38 | Rozruch | Rozruch | Rozruch | Magdalen | Infrastr | PM000 | Zespó³-K | Wspólne | Normalny | Pakiet | L2 |  |  |
| 19WP38-066 |  | Rozruch na zimno |  | 12d | 2026-06-04 A | 2026-06-22 A | 19WP38-065 | 100% |  |  | 2026-06-05 | 2026-06-22 |  | GdanskSt | 19WP38 | Rozruch | Rozruch | Rozruch | Magdalen | Infrastr | PM000 | Zespó³-W | Wspólne | Normalny | Pakiet | L2 | Do weryfikacji z wykonawc¹ |  |
| 19WP38-067 |  | Rozruch na gor¹co / próby ruchowe |  | 15d | 2026-06-25 A | 2026-07-20 A | 19WP38-066 | 100% |  |  | 2026-06-23 | 2026-07-13 |  | GdanskSt | 19WP38 | Rozruch | Rozruch | Rozruch | Magdalen | Infrastr | PM000 | Zespó³-E | Wspólne | Normalny | Pakiet | L2 |  |  |
| 19WP38-068 |  | KM: Odbiór koñcowy – Stacja redukcyjno-pomiarowa gazu | milestone | 0d | 2026-07-13 | 2026-07-13 A | 19WP38-067 | 100% | 2026-07-14 |  | 2026-07-14 | 2026-07-14 | Kalendarz 6-dniowy | GdanskSt | 19WP38 | Rozruch | Rozruch | Kamieñ | Magdalen | Infrastr | PM000 | Zespó³-W | Wspólne | Niski | Pakiet | L1 |  | Rev B |
|  | ZAKU | **Zakupy** |  |  | 2025-05-14 | 2026-04-09 |  |  |  |  |  |  |  |  |  |  |  |  |  |  |  |  |  |  |  |  |  |  |
|  | DOSTAWY | **Dostawy** |  |  | 2025-11-06 | 2026-04-09 |  |  |  |  |  |  |  |  |  |  |  |  |  |  |  |  |  |  |  |  |  |  |
| 19WP38-008 |  | Produkcja u dostawcy |  | 64d | 2025-11-06 A | 2026-02-05 A | 19WP38-007 | 100% |  |  | 2025-11-03 | 2026-01-29 |  | GdanskSt | 19WP38 | Mechanic | Zakupy | Dostawa | Magdalen | Infrastr | PM000 | Zespó³-K | Wspólne | Normalny | Pakiet | L2 |  |  |
| 19WP38-009 |  | Testy FAT |  | 10d | 2026-02-02 A | 2026-02-13 A | 19WP38-008 | 100% |  |  | 2026-01-30 | 2026-02-12 |  | GdanskSt | 19WP38 | Mechanic | Zakupy | Dostawa | Magdalen | Infrastr | PM000 | Zespó³-W | Wspólne | Normalny | Pakiet | L2 |  |  |
| 19WP38-010 |  | Transport i dostawa na plac budowy |  | 37d | 2026-02-16 A | 2026-04-07 A | 19WP38-009 | 100% |  |  | 2026-02-13 | 2026-04-06 | Kalendarz 6-dniowy | GdanskSt | 19WP38 | Mechanic | Zakupy | Dostawa | Magdalen | Infrastr | PM000 | Zespó³-K | Wspólne | Normalny | Pakiet | L2 | Do weryfikacji z wykonawc¹ | Rev A |
| 19WP38-011 |  | KM: Dostawa na budowê – Stacja redukcyjno-pomiarowa gazu | milestone | 0d | 2026-04-09 A | 2026-04-09 | 19WP38-010 | 100% |  | 2026-04-08 | 2026-04-07 | 2026-04-07 |  | GdanskSt | 19WP38 | Mechanic | Zakupy | Kamieñ | Magdalen | Infrastr | PM200 | Zespó³-E | Wspólne | Normalny | Pakiet | L1 |  | Rev C |

| ID | WBS | Activity | Type | Duration | Start | Finish | Predecessors | Complete | Remaining | Planned start | Planned finish | Total float | Free float | Calendar | AC_Wykonawca | AC_Obiekt | AC_Dyscyplina | AC_Faza | AC_Zakres | AC_Opiekun | AC_Obszar | AC_PP_PM | AC_Zespol | AC_Blok | AC_Priorytet | AC_Pakiet | AC_Poziom | Uwagi harmonogramisty | Rewizja dokumentu |
| --- | --- | --- | --- | --- | --- | --- | --- | --- | --- | --- | --- | --- | --- | --- | --- | --- | --- | --- | --- | --- | --- | --- | --- | --- | --- | --- | --- | --- | --- |
|  | ZAMÓWIENIA | **Zamówienia** |  |  | 2025-05-14 | 2025-11-05 |  |  |  |  |  |  |  |  |  |  |  |  |  |  |  |  |  |  |  |  |  |  |  |
| 19WP38-005 |  | Zapytanie ofertowe |  | 18d | 2025-05-14 A | 2025-06-10 A | 19WP38-001 SS+20d | 100% |  | 2025-05-09 | 2025-06-03 |  |  |  | GdanskSt | 19WP38 | Mechanic | Zakupy | Dostawa | Magdalen | Infrastr | PM000 | Zespó³-K | Wspólne | Normalny | Pakiet | L2 |  |  |
| 19WP38-006 |  | Analiza i wybór ofert |  | 19d | 2025-06-06 A | 2025-07-03 A | 19WP38-005 | 100% |  | 2025-06-04 | 2025-06-30 |  |  | Kalendarz 6-dniowy | GdanskSt | 19WP38 | Mechanic | Zakupy | Dostawa | Magdalen | Infrastr | PM000 | Zespó³-K | Wspólne | Normalny | Pakiet | L2 | Ryzyko opóŸnienia |  |
| 19WP38-007 |  | Zawarcie umowy / zamówienie |  | 9d | 2025-10-22 A | 2025-11-05 A | 19WP38-006, 19WP38-004 SS, 12PB41-004 (other project) SS+4d | 100% |  | 2025-10-21 | 2025-10-31 |  |  |  | GdanskSt | 19WP38 | Mechanic | Zakupy | Dostawa | Magdalen | Infrastr | PM000 | Zespó³-E | Wspólne | Wysoki | Pakiet | L1 |  |  |
|  | 25DF82 | **25DF82 – Wentylacja i klimatyzacja** |  |  | 2025-06-16 | 2027-03-05 |  |  |  |  |  |  |  |  |  |  |  |  |  |  |  |  |  |  |  |  |  |  |  |
|  | BUDO | **Budowa** |  |  | 2025-10-31 | 2027-01-06 |  |  |  |  |  |  |  |  |  |  |  |  |  |  |  |  |  |  |  |  |  |  |  |
|  | AKPIA | **AKPiA** |  |  | 2026-09-04 | 2026-09-29 |  |  |  |  |  |  |  |  |  |  |  |  |  |  |  |  |  |  |  |  |  |  |  |
| 25DF82-099 |  | Monta¿ uk³adów AKPiA |  | 17d | 2026-09-04 A | 2026-09-29 A | 25DF82-014 SS+5d | 100% |  | 2026-09-04 | 2026-09-28 |  |  |  | Kablex | 25DF82 | AKPiA | Budowa | Roboty | Tomasz | Infrastr | PM000 | Zespó³-W | Blok | Normalny | Pakiet | L2 | Ryzyko opóŸnienia |  |
|  | ELEKTRYKA | **Elektryka** |  |  | 2026-09-10 | 2026-10-22 |  |  |  |  |  |  |  |  |  |  |  |  |  |  |  |  |  |  |  |  |  |  |  |
| 25DF82-062 |  | Pod³¹czenia i pomiary – trasa 08 |  | 8d | 2026-09-10 A | 2026-09-21 A | 25DF82-061 FF | 100% |  | 2026-09-11 | 2026-09-22 |  |  |  | Kablex | 25DF82 | Elektryc | Budowa | Roboty | Tomasz | Infrastr | PM000 | Zespó³-W | Blok | Wysoki | Pakiet | L2 | Do weryfikacji z wykonawc¹ | Rev A |
| 25DF82-061 |  | Uk³adanie kabli – trasa 08 |  | 8d | 2026-09-11 A | 2026-09-24 A | 25DF82-014 SS+10d | 100% |  | 2026-09-11 | 2026-09-22 |  |  |  | Kablex | 25DF82 | Elektryc | Budowa | Roboty | Tomasz | Infrastr | PM000 | Zespó³-E | Blok | Normalny | Pakiet | L2 |  |  |
| 25DF82-097 |  | Uk³adanie kabli – trasa 14 |  | 11d | 2026-09-11 A | 2026-09-29 A | 25DF82-014 SS+10d | 100% |  | 2026-09-11 | 2026-09-25 |  |  |  | Kablex | 25DF82 | Elektryc | Budowa | Roboty | Tomasz | Infrastr | PM000 | Zespó³-K | Blok | Normalny | Pakiet | L2 |  | Rev B |
| 25DF82-025 |  | Uk³adanie kabli – trasa 02 |  | 10d | 2026-09-14 A | 2026-09-29 A | 25DF82-014 SS+10d | 100% |  | 2026-09-11 | 2026-09-24 |  |  |  | Kablex | 25DF82 | Elektryc | Budowa | Roboty | Tomasz | Infrastr | PM000 | Zespó³-W | Blok | Normalny | Pakiet | L2 |  | Rev B |
| 25DF82-037 |  | Uk³adanie kabli – trasa 04 |  | 17d | 2026-09-15 A | 2026-10-22 | 25DF82-014 SS+10d | 29% | 12d | 2026-09-11 | 2026-10-05 | 402.6d | 0d |  | Kablex | 25DF82 | Elektryc | Budowa | Roboty | Tomasz | Infrastr | PM000 | Zespó³-W | Blok | Wysoki | Pakiet | L2 |  |  |
| 25DF82-073 |  | Uk³adanie kabli – trasa 10 |  | 14d | 2026-09-15 A | 2026-10-06 A | 25DF82-014 SS+10d | 100% |  | 2026-09-11 | 2026-09-30 |  |  |  | Kablex | 25DF82 | Elektryc | Budowa | Roboty | Tomasz | Infrastr | PM000 | Zespó³-K | Blok | Normalny | Pakiet | L2 |  |  |
| 25DF82-049 |  | Uk³adanie kabli – trasa 06 |  | 14d | 2026-09-16 A | 2026-10-05 A | 25DF82-014 SS+10d | 100% |  | 2026-09-11 | 2026-09-30 |  |  |  | Kablex | 25DF82 | Elektryc | Budowa | Roboty | Tomasz | Infrastr | PM000 | Zespó³-W | Blok | Wysoki | Pakiet | L2 |  | Rev C |
| 25DF82-085 |  | Uk³adanie kabli – trasa 12 |  | 6d | 2026-09-16 A | 2026-09-25 A | 25DF82-014 SS+10d | 100% |  | 2026-09-11 | 2026-09-18 |  |  |  | Kablex | 25DF82 | Elektryc | Budowa | Roboty | Tomasz | Infrastr | PM000 | Zespó³-W | Blok | Normalny | Pakiet | L2 |  | Rev B |
| 25DF82-074 |  | Pod³¹czenia i pomiary – trasa 10 |  | 9d | 2026-09-18 A | 2026-10-02 A | 25DF82-073 FF | 100% |  | 2026-09-18 | 2026-09-30 |  |  |  | Kablex | 25DF82 | Elektryc | Budowa | Roboty | Tomasz | Infrastr | PM000 | Zespó³-K | Blok | Normalny | Pakiet | L2 | Czeka na dostawê |  |
| 25DF82-086 |  | Pod³¹czenia i pomiary – trasa 12 |  | 3d | 2026-09-18 A | 2026-09-24 A | 25DF82-085 FF | 100% |  | 2026-09-16 | 2026-09-18 |  |  |  | Kablex | 25DF82 | Elektryc | Budowa | Roboty | Tomasz | Infrastr | PM000 | Zespó³-W | Blok | Normalny | Pakiet | L2 |  |  |
| 25DF82-026 |  | Pod³¹czenia i pomiary – trasa 02 |  | 5d | 2026-09-22 A | 2026-09-29 A | 25DF82-025 FF | 100% |  | 2026-09-18 | 2026-09-24 |  |  |  | Kablex | 25DF82 | Elektryc | Budowa | Roboty | Tomasz | Infrastr | PM000 | Zespó³-W | Blok | Normalny | Pakiet | L2 | Ryzyko opóŸnienia |  |
| 25DF82-050 |  | Pod³¹czenia i pomiary – trasa 06 |  | 8d | 2026-09-22 A | 2026-10-01 A | 25DF82-049 FF | 100% |  | 2026-09-21 | 2026-09-30 |  |  |  | Kablex | 25DF82 | Elektryc | Budowa | Roboty | Tomasz | Infrastr | PM000 | Zespó³-W | Blok | Wysoki | Pakiet | L2 |  |  |
| 25DF82-098 |  | Pod³¹czenia i pomiary – trasa 14 |  | 7d | 2026-09-22 A | 2026-09-29 A | 25DF82-097 FF | 100% |  | 2026-09-17 | 2026-09-25 |  |  |  | Kablex | 25DF82 | Elektryc | Budowa | Roboty | Tomasz | Infrastr | PM000 | Zespó³-K | Blok | Normalny | Pakiet | L2 | Uzgodnione na koordynacji | Rev C |
| 25DF82-038 |  | Pod³¹czenia i pomiary – trasa 04 |  | 3d | 2026-10-06 A | 2026-10-06 A | 25DF82-037 FF | 100% |  | 2026-10-01 | 2026-10-05 |  |  |  | Kablex | 25DF82 | Elektryc | Budowa | Roboty | Tomasz | Infrastr | PM000 | Zespó³-W | Blok | Normalny | Pakiet | L2 |  |  |
|  | MONTA¯ | **Monta¿** |  |  | 2025-12-02 | 2027-01-06 |  |  |  |  |  |  |  |  |  |  |  |  |  |  |  |  |  |  |  |  |  |  |  |
| 25DF82-013 |  | Monta¿ konstrukcji stalowych |  | 32d | 2025-12-02 A | 2026-01-19 A | 25DF82-012 | 100% |  | 2025-12-03 | 2026-01-15 |  |  |  | Kablex | 25DF82 | Mechanic | Budowa | Roboty | Tomasz | Infrastr | PM000 | Zespó³-K | Blok | Normalny | Pakiet | L2 |  |  |
| 25DF82-014 |  | Monta¿ urz¹dzeñ g³ównych |  | 65d | 2026-10-07 | 2027-01-05 | 25DF82-013, 25DF82-011 |  |  | 2026-08-28 | 2026-11-26 | 286.6d | 0d |  | Kablex | 25DF82 | Mechanic | Budowa | Roboty | Tomasz | Infrastr | PM000 | Zespó³-W | Blok | Normalny | Pakiet | L2 |  | Rev B |
| 25DF82-100 |  | KM: Zakoñczenie monta¿u – Wentylacja i klimatyzacja | milestone | 0d | 2027-01-06 | 2027-01-06 | 25DF82-091, 25DF82-096, 25DF82-098, 25DF82-099, 25DF82-014 |  |  | 2026-11-27 | 2026-11-27 | 286.6d | 0d |  | Kablex | 25DF82 | Mechanic | Budowa | Kamieñ | Tomasz | Infrastr | PM000 | Zespó³-K | Blok | Wysoki | Pakiet | L2 |  |  |

| ID | WBS | Activity | Duration | Start | Finish | Predecessors | Complete | Remaining | Planned start | Planned finish | Total float | Free float | Calendar | Rewizja dokumentu | AC_Wykonawca | AC_Obiekt | AC_Dyscyplina | AC_Faza | AC_Zakres | AC_Opiekun | AC_Obszar | AC_PP_PM | AC_Zespol | AC_Blok | AC_Priorytet | AC_Pakiet | AC_Poziom | Uwagi harmonogramisty |
| --- | --- | --- | --- | --- | --- | --- | --- | --- | --- | --- | --- | --- | --- | --- | --- | --- | --- | --- | --- | --- | --- | --- | --- | --- | --- | --- | --- | --- |
|  | ROBOTY BUD | **Roboty budowlane** |  | 2025-10-31 | 2025-12-08 |  |  |  |  |  |  |  |  |  |  |  |  |  |  |  |  |  |  |  |  |  |  |  |
| 25DF82-012 |  | Fundamenty i roboty ziemne | 24d | 2025-10-31 A | 2025-12-08 A | 25DF82-007 FS+14d | 100% |  | 2025-10-30 | 2025-12-02 |  |  |  | Rev B | Kablex | 25DF82 | Budowlan | Budowa | Roboty | Tomasz | Infrastr | PM000 | Zespó³-W | Blok | Niski | Pakiet | L2 |  |
|  | RUROCI¥GI | **Ruroci¹gi** |  | 2025-12-02 | 2026-11-30 |  |  |  |  |  |  |  |  |  |  |  |  |  |  |  |  |  |  |  |  |  |  |  |
|  | SEKCJA 01 | **Sekcja 01** |  | 2025-12-02 | 2026-11-10 |  |  |  |  |  |  |  |  |  |  |  |  |  |  |  |  |  |  |  |  |  |  |  |
| 25DF82-015 |  | Prefabrykacja ruroci¹gów – Sekcja 01 | 4d | 2025-12-02 A | 2025-12-10 A | 25DF82-012 | 100% |  | 2025-12-03 | 2025-12-08 |  |  |  | Rev A | Kablex | 25DF82 | Ruroci¹g | Budowa | Roboty | Tomasz | Infrastr | PM000 | Zespó³-K | Blok | Normalny | Pakiet | L2 |  |
| 25DF82-016 |  | Monta¿ ruroci¹gów – Sekcja 01 | 17.7d | 2026-09-07 A | 2026-09-29 A | 25DF82-015, 25DF82-014 SS+6d | 100% |  |  |  |  |  |  |  | Kablex | 25DF82 | Ruroci¹g | Budowa | Roboty | Tomasz | Infrastr | PM000 | Zespó³-E | Blok | Wysoki | Pakiet | L2 |  |
| 25DF82-017 |  | Próba ciœnieniowa – Sekcja 01 | 6d | 2026-10-05 A | 2026-10-12 | 25DF82-016 | 30% | 4.2d | 2026-09-30 | 2026-10-07 | 341.9d | 0d |  | Rev B | Kablex | 25DF82 | Ruroci¹g | Budowa | Roboty | Tomasz | Infrastr | PM000 | Zespó³-K | Blok | Normalny | Pakiet | L2 | Ryzyko opóŸnienia |
| 25DF82-018 |  | Izolacje – Sekcja 01 | 3d | 2026-11-04 | 2026-11-06 | 25DF82-017 |  |  | 2026-10-08 | 2026-10-12 | 326.6d | 0d |  |  | Kablex | 25DF82 | Ruroci¹g | Budowa | Roboty | Tomasz | Infrastr | PM300 | Zespó³-E | Blok | Normalny | Pakiet | L2 |  |
| 25DF82-019 |  | Malowanie i oznakowanie – Sekcja 01 | 4d | 2026-11-05 | 2026-11-10 | 25DF82-018 FF+2d |  |  | 2026-10-09 | 2026-10-14 | 326.6d | 0d |  |  | Kablex | 25DF82 | Ruroci¹g | Budowa | Roboty | Tomasz | Infrastr | PM000 | Zespó³-W | Blok | Normalny | Pakiet | L2 |  |
|  | SEKCJA 02 | **Sekcja 02** |  | 2025-12-11 | 2026-10-06 |  |  |  |  |  |  |  |  |  |  |  |  |  |  |  |  |  |  |  |  |  |  |  |
| 25DF82-020 |  | Prefabrykacja ruroci¹gów – Sekcja 02 | 10d | 2025-12-11 A | 2025-12-29 A | 25DF82-012, 25DF82-015 SS+5d | 100% |  | 2025-12-10 | 2025-12-23 |  |  |  | Rev C | Kablex | 25DF82 | Ruroci¹g | Budowa | Roboty | Tomasz | Infrastr | PM000 | Zespó³-W | Blok | Normalny | Pakiet | L2 |  |
| 25DF82-021 |  | Monta¿ ruroci¹gów – Sekcja 02 | 14.5d | 2026-09-01 A | 2026-09-18 A | 25DF82-020, 25DF82-014 SS | 100% |  | 2026-08-28 | 2026-09-16 |  |  |  | Rev C | Kablex | 25DF82 | Ruroci¹g | Budowa | Roboty | Tomasz | Infrastr | PM000 | Zespó³-K | Blok | Normalny | Pakiet | L2 |  |
| 25DF82-022 |  | Próba ciœnieniowa – Sekcja 02 | 2d | 2026-09-16 A | 2026-09-22 A | 25DF82-021 | 100% |  | 2026-09-17 | 2026-09-18 |  |  |  |  | Kablex | 25DF82 | Ruroci¹g | Budowa | Roboty | Tomasz | Infrastr | PM000 | Zespó³-W | Blok | Normalny | Pakiet | L2 |  |
| 25DF82-023 |  | Izolacje – Sekcja 02 | 8d | 2026-09-24 A | 2026-10-06 A | 25DF82-022 | 100% |  | 2026-09-21 | 2026-09-30 |  |  |  | Rev C | Kablex | 25DF82 | Ruroci¹g | Budowa | Roboty | Tomasz | Infrastr | PM000 | Zespó³-W | Blok | Normalny | Pakiet | L2 |  |
| 25DF82-024 |  | Malowanie i oznakowanie – Sekcja 02 | 6d | 2026-09-30 A | 2026-10-06 A | 25DF82-023 FF+2d | 100% |  | 2026-09-25 | 2026-10-02 |  |  |  |  | Kablex | 25DF82 | Ruroci¹g | Budowa | Roboty | Tomasz | Infrastr | PM300 | Zespó³-I | Blok | Normalny | Pakiet | L2 |  |
|  | SEKCJA 03 | **Sekcja 03** |  | 2025-12-16 | 2026-10-19 |  |  |  |  |  |  |  |  |  |  |  |  |  |  |  |  |  |  |  |  |  |  |  |
|  | PODSEKCJA | **Podsekcja 03.A** |  | 2025-12-16 | 2026-10-19 |  |  |  |  |  |  |  |  |  |  |  |  |  |  |  |  |  |  |  |  |  |  |  |
| 25DF82-027 |  | Prefabrykacja ruroci¹gów – Sekcja 03 | 10.3d | 2025-12-16 A | 2025-12-31 A | 25DF82-012, 25DF82-020 SS+5d | 100% |  | 2025-12-17 | 2025-12-30 |  |  |  | Rev B | Kablex | 25DF82 | Ruroci¹g | Budowa | Roboty | Tomasz | Infrastr | PM000 | Zespó³-W | Blok | Normalny | Pakiet | L2 |  |
| 25DF82-028 |  | Monta¿ ruroci¹gów – Sekcja 03 | 22.8d | 2026-09-01 A | 2026-10-01 A | 25DF82-027, 25DF82-014 SS+1d | 100% |  | 2026-08-31 | 2026-09-29 |  |  |  |  | Kablex | 25DF82 | Ruroci¹g | Budowa | Roboty | Tomasz | Infrastr | PM000 | Zespó³-W | Blok | Normalny | Pakiet | L2 | Bez uwag |
| 25DF82-029 |  | Próba ciœnieniowa – Sekcja 03 | 2d | 2026-09-29 A | 2026-10-02 A | 25DF82-028 | 100% |  | 2026-09-30 | 2026-10-01 |  |  |  |  | Kablex | 25DF82 | Ruroci¹g | Budowa | Roboty | Tomasz | Infrastr | PM000 | Zespó³-K | Blok | Normalny | Pakiet | L2 |  |
| 25DF82-030 |  | Izolacje – Sekcja 03 | 10d | 2026-10-06 A | 2026-10-15 | 25DF82-029 | 29% | 7.1d | 2026-10-02 | 2026-10-15 | 391.8d | 0d |  |  | Kablex | 25DF82 | Ruroci¹g | Budowa | Roboty | Tomasz | Infrastr | PM000 | Zespó³-W | Blok | Wysoki | Pakiet | L2 | Bez uwag |
| 25DF82-031 |  | Malowanie i oznakowanie – Sekcja 03 | 6d | 2026-10-12 | 2026-10-19 | 25DF82-030 FF+2d |  |  |  |  | 394.5d | 0d |  |  | Kablex | 25DF82 | Ruroci¹g | Budowa | Roboty | Tomasz | Infrastr | PM000 | Zespó³-W | Blok | Wysoki | Pakiet | L2 |  |
|  | SEKCJA 04 | **Sekcja 04** |  | 2025-12-29 | 2026-10-16 |  |  |  |  |  |  |  |  |  |  |  |  |  |  |  |  |  |  |  |  |  |  |  |
| 25DF82-032 |  | Prefabrykacja ruroci¹gów – Sekcja 04 | 14.4d | 2025-12-29 A | 2026-01-20 A | 25DF82-012, 25DF82-027 SS+5d | 100% |  | 2025-12-24 | 2026-01-12 |  |  |  |  | Kablex | 25DF82 | Ruroci¹g | Budowa | Roboty | Tomasz | Infrastr | PM000 | Zespó³-K | Blok | Normalny | Pakiet | L2 |  |
| 25DF82-033 |  | Monta¿ ruroci¹gów – Sekcja 04 | 12.2d | 2026-09-14 A | 2026-09-30 A | 25DF82-032, 25DF82-014 SS+10d | 100% |  | 2026-09-11 | 2026-09-28 |  |  |  |  | Kablex | 25DF82 | Ruroci¹g | Budowa | Roboty | Tomasz | Infrastr | PM000 | Zespó³-E | Blok | Normalny | Pakiet | L2 | Czeka na dostawê |
| 25DF82-034 |  | Próba ciœnieniowa – Sekcja 04 | 5d | 2026-09-30 A | 2026-10-06 A | 25DF82-033 | 100% |  | 2026-09-29 | 2026-10-05 |  |  |  |  | Kablex | 25DF82 | Ruroci¹g | Budowa | Roboty | Tomasz | Infrastr | PM000 | Zespó³-K | Blok | Normalny | Pakiet | L2 |  |
| 25DF82-035 |  | Izolacje – Sekcja 04 | 8d | 2026-10-07 A | 2026-10-14 | 25DF82-034 | 21% | 6.3d | 2026-10-06 | 2026-10-15 | 393.6d | 0d |  |  | Kablex | 25DF82 | Ruroci¹g | Budowa | Roboty | Tomasz | Infrastr | PM100 | Zespó³-I | Blok | Wysoki | Pakiet | L2 |  |
| 25DF82-036 |  | Malowanie i oznakowanie – Sekcja 04 | 5d | 2026-10-12 | 2026-10-16 | 25DF82-035 FF+2d |  |  | 2026-10-13 | 2026-10-19 | 395.3d | 0d | Kalendarz 6-dniowy | Rev B | Kablex | 25DF82 | Ruroci¹g | Budowa | Roboty | Tomasz | Infrastr | PM100 | Zespó³-E | Blok | Wysoki | Pakiet | L2 |  |

| ID | WBS | Activity | Duration | Start | Finish | Predecessors | Complete | Remaining | Planned start | Planned finish | Total float | Free float | Calendar | AC_Wykonawca | AC_Obiekt | AC_Dyscyplina | AC_Faza | AC_Zakres | AC_Opiekun | AC_Obszar | AC_PP_PM | AC_Zespol | AC_Blok | AC_Priorytet | AC_Pakiet | AC_Poziom | Uwagi harmonogramisty | Rewizja dokumentu |
| --- | --- | --- | --- | --- | --- | --- | --- | --- | --- | --- | --- | --- | --- | --- | --- | --- | --- | --- | --- | --- | --- | --- | --- | --- | --- | --- | --- | --- |
|  | SEKCJA 05 | **Sekcja 05** |  | 2026-01-01 | 2026-10-15 |  |  |  |  |  |  |  |  |  |  |  |  |  |  |  |  |  |  |  |  |  |  |  |
| 25DF82-039 |  | Prefabrykacja ruroci¹gów – Sekcja 05 | 5.7d | 2026-01-01 A | 2026-01-07 A | 25DF82-012, 25DF82-032 SS+5d | 100% |  | 2025-12-31 | 2026-01-06 |  |  |  | Kablex | 25DF82 | Ruroci¹g | Budowa | Roboty | Tomasz | Infrastr | PM000 | Zespó³-K | Blok | Normalny | Pakiet | L2 |  |  |
| 25DF82-040 |  | Monta¿ ruroci¹gów – Sekcja 05 | 12d | 2026-09-10 A | 2026-09-28 A | 25DF82-039, 25DF82-014 SS+8d | 100% |  | 2026-09-09 | 2026-09-24 |  |  |  | Kablex | 25DF82 | Ruroci¹g | Budowa | Roboty | Tomasz | Infrastr | PM000 | Zespó³-K | Blok | Normalny | Pakiet | L2 | Bez uwag |  |
| 25DF82-041 |  | Próba ciœnieniowa – Sekcja 05 | 2d | 2026-09-24 A | 2026-09-29 A | 25DF82-040 | 100% |  | 2026-09-25 | 2026-09-28 |  |  |  | Kablex | 25DF82 | Ruroci¹g | Budowa | Roboty | Tomasz | Infrastr | PM000 | Zespó³-W | Blok | Normalny | Pakiet | L2 |  |  |
| 25DF82-042 |  | Izolacje – Sekcja 05 | 10d | 2026-10-02 A | 2026-10-13 | 25DF82-041 | 45% | 5.5d | 2026-09-29 | 2026-10-12 | 394.6d | 0d |  | Kablex | 25DF82 | Ruroci¹g | Budowa | Roboty | Tomasz | Infrastr | PM000 | Zespó³-W | Blok | Normalny | Pakiet | L2 |  |  |
| 25DF82-043 |  | Malowanie i oznakowanie – Sekcja 05 | 5d | 2026-10-09 | 2026-10-15 | 25DF82-042 FF+2d |  |  | 2026-10-08 | 2026-10-14 | 396.1d | 0d |  | Kablex | 25DF82 | Ruroci¹g | Budowa | Roboty | Tomasz | Infrastr | PM000 | Zespó³-K | Blok | Normalny | Pakiet | L2 | Uzgodnione na koordynacji |  |
|  | SEKCJA 06 | **Sekcja 06** |  | 2026-01-07 | 2026-09-29 |  |  |  |  |  |  |  |  |  |  |  |  |  |  |  |  |  |  |  |  |  |  |  |
|  | PODSEKCJA | **Podsekcja 06.A** |  | 2026-01-07 | 2026-09-29 |  |  |  |  |  |  |  |  |  |  |  |  |  |  |  |  |  |  |  |  |  |  |  |
| 25DF82-044 |  | Prefabrykacja ruroci¹gów – Sekcja 06 | 7.3d | 2026-01-07 A | 2026-01-15 A | 25DF82-012, 25DF82-039 SS+5d | 100% |  |  |  |  |  | Kalendarz 6-dniowy | Kablex | 25DF82 | Ruroci¹g | Budowa | Roboty | Tomasz | Infrastr | PM000 | Zespó³-K | Blok | Normalny | Pakiet | L2 | Czeka na dostawê | Rev A |
| 25DF82-045 |  | Monta¿ ruroci¹gów – Sekcja 06 | 7.2d | 2026-09-03 A | 2026-09-11 A | 25DF82-044, 25DF82-014 SS+5d | 100% |  | 2026-09-04 | 2026-09-14 |  |  |  | Kablex | 25DF82 | Ruroci¹g | Budowa | Roboty | Tomasz | Infrastr | PM000 | Zespó³-K | Blok | Normalny | Pakiet | L2 |  |  |
| 25DF82-046 |  | Próba ciœnieniowa – Sekcja 06 | 4d | 2026-09-17 A | 2026-09-24 A | 25DF82-045 | 100% |  | 2026-09-15 | 2026-09-18 |  |  |  | Kablex | 25DF82 | Ruroci¹g | Budowa | Roboty | Tomasz | Infrastr | PM100 | Zespó³-E | Blok | Normalny | Pakiet | L2 |  |  |
| 25DF82-047 |  | Izolacje – Sekcja 06 | 3d | 2026-09-23 A | 2026-09-29 A | 25DF82-046 | 100% |  | 2026-09-21 | 2026-09-23 |  |  | Kalendarz 6-dniowy | Kablex | 25DF82 | Ruroci¹g | Budowa | Roboty | Tomasz | Infrastr | PM000 | Zespó³-K | Blok | Wysoki | Pakiet | L2 |  |  |
| 25DF82-048 |  | Malowanie i oznakowanie – Sekcja 06 | 2d | 2026-09-29 A | 2026-09-29 A | 25DF82-047 FF+2d | 100% |  | 2026-09-24 | 2026-09-25 |  |  |  | Kablex | 25DF82 | Ruroci¹g | Budowa | Roboty | Tomasz | Infrastr | PM000 | Zespó³-W | Blok | Niski | Pakiet | L2 |  |  |
|  | SEKCJA 07 | **Sekcja 07** |  | 2026-01-14 | 2026-11-30 |  |  |  |  |  |  |  |  |  |  |  |  |  |  |  |  |  |  |  |  |  |  |  |
| 25DF82-051 |  | Prefabrykacja ruroci¹gów – Sekcja 07 | 13.7d | 2026-01-14 A | 2026-02-02 A | 25DF82-012, 25DF82-044 SS+5d | 100% |  | 2026-01-14 | 2026-01-30 |  |  |  | Kablex | 25DF82 | Ruroci¹g | Budowa | Roboty | Tomasz | Infrastr | PM000 | Zespó³-K | Blok | Normalny | Pakiet | L2 | Bez uwag |  |
| 25DF82-052 |  | Monta¿ ruroci¹gów – Sekcja 07 | 16d | 2026-09-14 A | 2026-09-29 A | 25DF82-051, 25DF82-014 SS+9d | 100% |  | 2026-09-10 | 2026-10-01 |  |  |  | Kablex | 25DF82 | Ruroci¹g | Budowa | Roboty | Tomasz | Infrastr | PM000 | Zespó³-W | Blok | Wysoki | Pakiet | L2 |  | Rev A |
| 25DF82-053 |  | Próba ciœnieniowa – Sekcja 07 | 6d | 2026-10-02 A | 2026-10-07 | 25DF82-052 | 77% | 1.4d | 2026-10-02 | 2026-10-09 | 392.6d | 0d |  | Kablex | 25DF82 | Ruroci¹g | Budowa | Roboty | Tomasz | Infrastr | PM000 | Zespó³-W | Blok | Normalny | Pakiet | L2 |  |  |
| 25DF82-054 |  | Izolacje – Sekcja 07 | 6d | 2026-11-19 | 2026-11-26 | 25DF82-053 |  |  | 2026-10-12 | 2026-10-19 | 364.6d | 0d |  | Kablex | 25DF82 | Ruroci¹g | Budowa | Roboty | Tomasz | Infrastr | PM000 | Zespó³-I | Blok | Wysoki | Pakiet | L2 |  |  |
| 25DF82-055 |  | Malowanie i oznakowanie – Sekcja 07 | 2d | 2026-11-27 | 2026-11-30 | 25DF82-054 FF+2d |  |  | 2026-10-20 | 2026-10-21 | 364.6d | 0d |  | Kablex | 25DF82 | Ruroci¹g | Budowa | Roboty | Tomasz | Infrastr | PM000 | Zespó³-W | Blok | Normalny | Pakiet | L2 |  | Rev C |
|  | SEKCJA 08 | **Sekcja 08** |  | 2026-01-26 | 2026-10-16 |  |  |  |  |  |  |  |  |  |  |  |  |  |  |  |  |  |  |  |  |  |  |  |
| 25DF82-056 |  | Prefabrykacja ruroci¹gów – Sekcja 08 | 11.2d | 2026-01-26 A | 2026-02-11 A | 25DF82-012, 25DF82-051 SS+5d | 100% |  | 2026-01-21 | 2026-02-04 |  |  |  | Kablex | 25DF82 | Ruroci¹g | Budowa | Roboty | Tomasz | Infrastr | PM000 | Zespó³-W | Blok | Normalny | Pakiet | L2 | Bez uwag |  |
| 25DF82-057 |  | Monta¿ ruroci¹gów – Sekcja 08 | 14d | 2026-09-08 A | 2026-09-29 A | 25DF82-056, 25DF82-014 SS+5d | 100% |  | 2026-09-04 | 2026-09-23 |  |  |  | Kablex | 25DF82 | Ruroci¹g | Budowa | Roboty | Tomasz | Infrastr | PM000 | Zespó³-W | Blok | Normalny | Pakiet | L2 |  | Rev B |
| 25DF82-058 |  | Próba ciœnieniowa – Sekcja 08 | 5d | 2026-09-25 A | 2026-10-05 A | 25DF82-057 | 100% |  | 2026-09-24 | 2026-09-30 |  |  |  | Kablex | 25DF82 | Ruroci¹g | Budowa | Roboty | Tomasz | Infrastr | PM000 | Zespó³-K | Blok | Normalny | Pakiet | L2 |  |  |
| 25DF82-059 |  | Izolacje – Sekcja 08 | 10d | 2026-10-06 A | 2026-10-14 | 25DF82-058 | 37% | 6.3d | 2026-10-01 | 2026-10-14 | 392.6d | 0d |  | Kablex | 25DF82 | Ruroci¹g | Budowa | Roboty | Tomasz | Infrastr | PM000 | Zespó³-K | Blok | Normalny | Pakiet | L2 |  |  |
| 25DF82-060 |  | Malowanie i oznakowanie – Sekcja 08 | 7d | 2026-10-08 | 2026-10-16 | 25DF82-059 FF+2d |  |  |  |  | 395.3d | 0d |  | Kablex | 25DF82 | Ruroci¹g | Budowa | Roboty | Tomasz | Infrastr | PM000 | Zespó³-W | Blok | Normalny | Pakiet | L2 | Do weryfikacji z wykonawc¹ |  |

| ID | WBS | Activity | Duration | Start | Finish | Predecessors | Complete | Remaining | Planned start | Planned finish | Total float | Free float | AC_Wykonawca | AC_Obiekt | AC_Dyscyplina | AC_Faza | AC_Zakres | AC_Opiekun | AC_Obszar | AC_PP_PM | AC_Zespol | AC_Blok | AC_Priorytet | AC_Pakiet | AC_Poziom | Rewizja dokumentu | Uwagi harmonogramisty |
| --- | --- | --- | --- | --- | --- | --- | --- | --- | --- | --- | --- | --- | --- | --- | --- | --- | --- | --- | --- | --- | --- | --- | --- | --- | --- | --- | --- |
|  | SEKCJA 09 | **Sekcja 09** |  | 2026-01-27 | 2026-10-09 |  |  |  |  |  |  |  |  |  |  |  |  |  |  |  |  |  |  |  |  |  |  |
|  | PODSEKCJA | **Podsekcja 09.A** |  | 2026-01-27 | 2026-10-09 |  |  |  |  |  |  |  |  |  |  |  |  |  |  |  |  |  |  |  |  |  |  |
| 25DF82-063 |  | Prefabrykacja ruroci¹gów – Sekcja 09 | 12.1d | 2026-01-27 A | 2026-02-12 A | 25DF82-012, 25DF82-056 SS+5d | 100% |  | 2026-01-28 | 2026-02-12 |  |  | Kablex | 25DF82 | Ruroci¹g | Budowa | Roboty | Tomasz | Infrastr | PM100 | Zespó³-I | Blok | Normalny | Pakiet | L2 |  |  |
| 25DF82-064 |  | Monta¿ ruroci¹gów – Sekcja 09 | 11.3d | 2026-09-04 A | 2026-09-23 A | 25DF82-063, 25DF82-014 SS+3d | 100% |  | 2026-09-02 | 2026-09-16 |  |  | Kablex | 25DF82 | Ruroci¹g | Budowa | Roboty | Tomasz | Infrastr | PM000 | Zespó³-W | Blok | Niski | Pakiet | L2 |  |  |
| 25DF82-065 |  | Próba ciœnieniowa – Sekcja 09 | 2d | 2026-09-18 A | 2026-09-23 A | 25DF82-064 | 100% |  | 2026-09-17 | 2026-09-18 |  |  | Kablex | 25DF82 | Ruroci¹g | Budowa | Roboty | Tomasz | Infrastr | PM000 | Zespó³-W | Blok | Normalny | Pakiet | L2 | Rev B |  |
| 25DF82-066 |  | Izolacje – Sekcja 09 | 11d | 2026-09-24 A | 2026-10-06 A | 25DF82-065 | 100% |  | 2026-09-21 | 2026-10-05 |  |  | Kablex | 25DF82 | Ruroci¹g | Budowa | Roboty | Tomasz | Infrastr | PM000 | Zespó³-W | Blok | Krytyczn | Pakiet | L2 |  |  |
| 25DF82-067 |  | Malowanie i oznakowanie – Sekcja 09 | 7d | 2026-10-02 A | 2026-10-09 | 25DF82-066 FF+2d | 57% | 3d | 2026-09-29 | 2026-10-07 | 399.3d | 0d | Kablex | 25DF82 | Ruroci¹g | Budowa | Roboty | Tomasz | Infrastr | PM000 | Zespó³-K | Blok | Wysoki | Pakiet | L2 |  |  |
|  | SEKCJA 10 | **Sekcja 10** |  | 2026-02-06 | 2026-11-23 |  |  |  |  |  |  |  |  |  |  |  |  |  |  |  |  |  |  |  |  |  |  |
| 25DF82-068 |  | Prefabrykacja ruroci¹gów – Sekcja 10 | 3.5d | 2026-02-06 A | 2026-02-13 A | 25DF82-012, 25DF82-063 SS+5d | 100% |  | 2026-02-04 | 2026-02-06 |  |  | Kablex | 25DF82 | Ruroci¹g | Budowa | Roboty | Tomasz | Infrastr | PM200 | Zespó³-E | Blok | Normalny | Pakiet | L2 | Rev C |  |
| 25DF82-069 |  | Monta¿ ruroci¹gów – Sekcja 10 | 24.5d | 2026-09-07 A | 2026-10-09 | 25DF82-068, 25DF82-014 SS+3d | 87% | 3.3d | 2026-09-02 | 2026-10-05 | 383.1d | 0d | Kablex | 25DF82 | Ruroci¹g | Budowa | Roboty | Tomasz | Infrastr | PM000 | Zespó³-E | Blok | Wysoki | Pakiet | L2 |  |  |
| 25DF82-070 |  | Próba ciœnieniowa – Sekcja 10 | 4d | 2026-10-29 | 2026-11-03 | 25DF82-069 |  |  | 2026-10-06 | 2026-10-09 | 369.6d | 0d | Kablex | 25DF82 | Ruroci¹g | Budowa | Roboty | Tomasz | Infrastr | PM000 | Zespó³-W | Blok | Normalny | Pakiet | L2 |  |  |
| 25DF82-071 |  | Izolacje – Sekcja 10 | 12d | 2026-11-04 | 2026-11-19 | 25DF82-070 |  |  | 2026-10-12 | 2026-10-27 | 369.6d | 0d | Kablex | 25DF82 | Ruroci¹g | Budowa | Roboty | Tomasz | Infrastr | PM000 | Zespó³-W | Blok | Niski | Pakiet | L2 |  |  |
| 25DF82-072 |  | Malowanie i oznakowanie – Sekcja 10 | 7d | 2026-11-13 | 2026-11-23 | 25DF82-071 FF+2d |  |  | 2026-10-21 | 2026-10-29 | 369.6d | 0d | Kablex | 25DF82 | Ruroci¹g | Budowa | Roboty | Tomasz | Infrastr | PM000 | Zespó³-W | Blok | Normalny | Pakiet | L2 |  |  |
|  | SEKCJA 11 | **Sekcja 11** |  | 2026-02-13 | 2026-09-29 |  |  |  |  |  |  |  |  |  |  |  |  |  |  |  |  |  |  |  |  |  |  |
| 25DF82-075 |  | Prefabrykacja ruroci¹gów – Sekcja 11 | 7.1d | 2026-02-13 A | 2026-02-26 A | 25DF82-012, 25DF82-068 SS+5d | 100% |  | 2026-02-11 | 2026-02-19 |  |  | Kablex | 25DF82 | Ruroci¹g | Budowa | Roboty | Tomasz | Infrastr | PM000 | Zespó³-E | Blok | Wysoki | Pakiet | L2 | Rev C |  |
| 25DF82-076 |  | Monta¿ ruroci¹gów – Sekcja 11 | 9.5d | 2026-09-01 A | 2026-09-15 A | 25DF82-075, 25DF82-014 SS+3d | 100% |  | 2026-09-02 | 2026-09-14 |  |  | Kablex | 25DF82 | Ruroci¹g | Budowa | Roboty | Tomasz | Infrastr | PM000 | Zespó³-K | Blok | Normalny | Pakiet | L2 |  |  |
| 25DF82-077 |  | Próba ciœnieniowa – Sekcja 11 | 3d | 2026-09-14 A | 2026-09-18 A | 25DF82-076 | 100% |  | 2026-09-15 | 2026-09-17 |  |  | Kablex | 25DF82 | Ruroci¹g | Budowa | Roboty | Tomasz | Infrastr | PM000 | Zespó³-K | Blok | Normalny | Pakiet | L2 |  |  |
| 25DF82-078 |  | Izolacje – Sekcja 11 | 6d | 2026-09-23 A | 2026-09-29 A | 25DF82-077 | 100% |  | 2026-09-18 | 2026-09-25 |  |  | Kablex | 25DF82 | Ruroci¹g | Budowa | Roboty | Tomasz | Infrastr | PM000 | Zespó³-W | Blok | Normalny | Pakiet | L2 |  | Ryzyko opóŸnienia |
| 25DF82-079 |  | Malowanie i oznakowanie – Sekcja 11 | 4d | 2026-09-24 A | 2026-09-29 A | 25DF82-078 FF+2d | 100% |  |  |  |  |  | Kablex | 25DF82 | Ruroci¹g | Budowa | Roboty | Tomasz | Infrastr | PM100 | Zespó³-E | Blok | Normalny | Pakiet | L2 |  |  |
|  | SEKCJA 12 | **Sekcja 12** |  | 2026-02-20 | 2026-10-09 |  |  |  |  |  |  |  |  |  |  |  |  |  |  |  |  |  |  |  |  |  |  |
|  | PODSEKCJA | **Podsekcja 12.A** |  | 2026-02-20 | 2026-10-09 |  |  |  |  |  |  |  |  |  |  |  |  |  |  |  |  |  |  |  |  |  |  |
| 25DF82-080 |  | Prefabrykacja ruroci¹gów – Sekcja 12 | 6.1d | 2026-02-20 A | 2026-03-02 A | 25DF82-012, 25DF82-075 SS+5d | 100% |  | 2026-02-18 | 2026-02-25 |  |  | Kablex | 25DF82 | Ruroci¹g | Budowa | Roboty | Tomasz | Infrastr | PM000 | Zespó³-K | Blok | Normalny | Pakiet | L2 |  |  |
| 25DF82-081 |  | Monta¿ ruroci¹gów – Sekcja 12 | 18.2d | 2026-08-28 A | 2026-09-22 A | 25DF82-080, 25DF82-014 SS+1d | 100% |  | 2026-08-31 | 2026-09-23 |  |  | Kablex | 25DF82 | Ruroci¹g | Budowa | Roboty | Tomasz | Infrastr | PM000 | Zespó³-K | Blok | Normalny | Pakiet | L2 |  |  |
| 25DF82-082 |  | Próba ciœnieniowa – Sekcja 12 | 5d | 2026-09-24 A | 2026-10-02 A | 25DF82-081 | 100% |  | 2026-09-24 | 2026-09-30 |  |  | Kablex | 25DF82 | Ruroci¹g | Budowa | Roboty | Tomasz | Infrastr | PM000 | Zespó³-I | Blok | Krytyczn | Pakiet | L2 |  |  |
| 25DF82-083 |  | Izolacje – Sekcja 12 | 5d | 2026-10-02 A | 2026-10-07 | 25DF82-082 | 80% | 1d | 2026-10-01 | 2026-10-07 | 399.4d | 0d | Kablex | 25DF82 | Ruroci¹g | Budowa | Roboty | Tomasz | Infrastr | PM000 | Zespó³-W | Blok | Wysoki | Pakiet | L2 |  | Czeka na dostawê |
| 25DF82-084 |  | Malowanie i oznakowanie – Sekcja 12 | 3d | 2026-10-07 | 2026-10-09 | 25DF82-083 FF+2d |  |  |  |  | 400.6d | 0d | Kablex | 25DF82 | Ruroci¹g | Budowa | Roboty | Tomasz | Infrastr | PM000 | Zespó³-W | Blok | Normalny | Pakiet | L2 |  |  |

| ID | WBS | Activity | Type | Duration | Start | Finish | Predecessors | Complete | Remaining | Actual finish | Planned start | Planned finish | Total float | Free float | AC_Wykonawca | AC_Obiekt | AC_Dyscyplina | AC_Faza | AC_Zakres | AC_Opiekun | AC_Obszar | AC_PP_PM | AC_Zespol | AC_Blok | AC_Priorytet | AC_Pakiet | AC_Poziom | Uwagi harmonogramisty | Rewizja dokumentu |
| --- | --- | --- | --- | --- | --- | --- | --- | --- | --- | --- | --- | --- | --- | --- | --- | --- | --- | --- | --- | --- | --- | --- | --- | --- | --- | --- | --- | --- | --- |
|  | SEKCJA 13 | **Sekcja 13** |  |  | 2026-03-02 | 2026-10-05 |  |  |  |  |  |  |  |  |  |  |  |  |  |  |  |  |  |  |  |  |  |  |  |
| 25DF82-087 |  | Prefabrykacja ruroci¹gów – Sekcja 13 |  | 6.1d | 2026-03-02 A | 2026-03-12 A | 25DF82-012, 25DF82-080 SS+5d | 100% |  |  | 2026-02-25 | 2026-03-04 |  |  | Kablex | 25DF82 | Ruroci¹g | Budowa | Roboty | Tomasz | Infrastr | PM000 | Zespó³-W | Blok | Normalny | Pakiet | L2 |  |  |
| 25DF82-088 |  | Monta¿ ruroci¹gów – Sekcja 13 |  | 7.4d | 2026-09-09 A | 2026-09-17 A | 25DF82-087, 25DF82-014 SS+9d | 100% |  |  | 2026-09-10 | 2026-09-18 |  |  | Kablex | 25DF82 | Ruroci¹g | Budowa | Roboty | Tomasz | Infrastr | PM000 | Zespó³-K | Blok | Normalny | Pakiet | L2 |  |  |
| 25DF82-089 |  | Próba ciœnieniowa – Sekcja 13 |  | 2d | 2026-09-22 A | 2026-09-23 A | 25DF82-088 | 100% |  |  | 2026-09-21 | 2026-09-22 |  |  | Kablex | 25DF82 | Ruroci¹g | Budowa | Roboty | Tomasz | Infrastr | PM000 | Zespó³-K | Blok | Niski | Pakiet | L2 |  |  |
| 25DF82-090 |  | Izolacje – Sekcja 13 |  | 4d | 2026-09-28 A | 2026-09-29 A | 25DF82-089 | 100% |  |  | 2026-09-23 | 2026-09-28 |  |  | Kablex | 25DF82 | Ruroci¹g | Budowa | Roboty | Tomasz | Infrastr | PM000 | Zespó³-W | Blok | Normalny | Pakiet | L2 |  |  |
| 25DF82-091 |  | Malowanie i oznakowanie – Sekcja 13 |  | 3d | 2026-09-28 A | 2026-10-05 A | 25DF82-090 FF+2d | 100% |  |  | 2026-09-28 | 2026-09-30 |  |  | Kablex | 25DF82 | Ruroci¹g | Budowa | Roboty | Tomasz | Infrastr | PM000 | Zespó³-K | Blok | Wysoki | Pakiet | L2 |  |  |
|  | SEKCJA 14 | **Sekcja 14** |  |  | 2026-03-06 | 2026-10-19 |  |  |  |  |  |  |  |  |  |  |  |  |  |  |  |  |  |  |  |  |  |  |  |
| 25DF82-092 |  | Prefabrykacja ruroci¹gów – Sekcja 14 |  | 7.3d | 2026-03-06 A | 2026-03-19 A | 25DF82-012, 25DF82-087 SS+5d | 100% |  |  | 2026-03-04 | 2026-03-12 |  |  | Kablex | 25DF82 | Ruroci¹g | Budowa | Roboty | Tomasz | Infrastr | PM000 | Zespó³-W | Blok | Niski | Pakiet | L2 |  |  |
| 25DF82-093 |  | Monta¿ ruroci¹gów – Sekcja 14 |  | 21.9d | 2026-09-04 A | 2026-10-05 A | 25DF82-092, 25DF82-014 SS+5d | 100% |  |  | 2026-09-04 | 2026-10-02 |  |  | Kablex | 25DF82 | Ruroci¹g | Budowa | Roboty | Tomasz | Infrastr | PM000 | Zespó³-W | Blok | Normalny | Pakiet | L2 | Bez uwag | Rev B |
| 25DF82-094 |  | Próba ciœnieniowa – Sekcja 14 |  | 4d | 2026-10-06 A | 2026-10-08 | 25DF82-093 | 28% | 2.9d |  | 2026-10-05 | 2026-10-08 | 340.7d | 0d | Kablex | 25DF82 | Ruroci¹g | Budowa | Roboty | Tomasz | Infrastr | PM300 | Zespó³-E | Blok | Wysoki | Pakiet | L2 |  |  |
| 25DF82-095 |  | Izolacje – Sekcja 14 |  | 5d | 2026-10-09 | 2026-10-15 | 25DF82-094 |  |  |  |  |  | 341.7d | 0d | Kablex | 25DF82 | Ruroci¹g | Budowa | Roboty | Tomasz | Infrastr | PM000 | Zespó³-K | Blok | Normalny | Pakiet | L2 |  | Rev B |
| 25DF82-096 |  | Malowanie i oznakowanie – Sekcja 14 |  | 7d | 2026-10-09 | 2026-10-19 | 25DF82-095 FF+2d |  |  |  |  |  | 341.7d | 0d | Kablex | 25DF82 | Ruroci¹g | Budowa | Roboty | Tomasz | Infrastr | PM000 | Zespó³-K | Blok | Wysoki | Pakiet | L2 |  |  |
|  | PROJ | **Projektowanie** |  |  | 2025-06-16 | 2025-09-29 |  |  |  |  |  |  |  |  |  |  |  |  |  |  |  |  |  |  |  |  |  |  |  |
|  | DOKUMENTAC | **Dokumentacja** |  |  | 2025-06-16 | 2025-09-29 |  |  |  |  |  |  |  |  |  |  |  |  |  |  |  |  |  |  |  |  |  |  |  |
| 25DF82-001 |  | Projekt wykonawczy – Wentylacja i klimatyzacja |  | 41d | 2025-06-16 A | 2025-08-14 A |  | 100% |  |  | 2025-06-12 | 2025-08-07 |  |  | Kablex | 25DF82 | Budowlan | Projekto | Projekt | Tomasz | Infrastr | PM000 | Zespó³-K | Blok | Normalny | Pakiet | L2 | Uzgodnione na koordynacji |  |
| 25DF82-002 |  | Uzgodnienie dokumentacji z Inwestorem |  | 26d | 2025-08-12 A | 2025-09-17 A | 25DF82-001 | 100% |  |  | 2025-08-08 | 2025-09-12 |  |  | Kablex | 25DF82 | Budowlan | Projekto | Projekt | Tomasz | Infrastr | PM000 | Zespó³-K | Blok | Normalny | Pakiet | L2 |  |  |
| 25DF82-003 |  | Zatwierdzenie dokumentacji do realizacji |  | 7d | 2025-09-17 A | 2025-09-29 A | 25DF82-002 | 100% |  |  | 2025-09-15 | 2025-09-23 |  |  | Kablex | 25DF82 | Budowlan | Projekto | Projekt | Tomasz | Infrastr | PM000 | Zespó³-W | Blok | Wysoki | Pakiet | L2 |  |  |
| 25DF82-004 |  | KM: Dokumentacja zatwierdzona – Wentylacja i klimatyzacja | milestone | 0d | 2025-09-23 A | 2025-09-23 | 25DF82-003 | 100% |  | 2025-09-22 | 2025-09-24 | 2025-09-24 |  |  | Kablex | 25DF82 | Budowlan | Projekto | Kamieñ | Tomasz | Infrastr | PM000 | Zespó³-W | Blok | Normalny | Pakiet | L1 |  |  |
|  | ROZR | **Rozruch** |  |  | 2027-01-06 | 2027-03-05 |  |  |  |  |  |  |  |  |  |  |  |  |  |  |  |  |  |  |  |  |  |  |  |
|  | ROZRUCH | **Rozruch** |  |  | 2027-01-06 | 2027-03-05 |  |  |  |  |  |  |  |  |  |  |  |  |  |  |  |  |  |  |  |  |  |  |  |
| 25DF82-101 |  | Przegl¹d gotowoœci do rozruchu |  | 6d | 2027-01-06 | 2027-01-13 | 25DF82-100, 25DF82-019, 25DF82-024, 25DF82-026 |  |  |  | 2026-11-27 | 2026-12-04 | 286.6d | 0d | Kablex | 25DF82 | Rozruch | Rozruch | Rozruch | Tomasz | Infrastr | PM000 | Zespó³-W | Blok | Normalny | Pakiet | L2 |  |  |
| 25DF82-102 |  | Rozruch na zimno |  | 12d | 2027-01-14 | 2027-01-29 | 25DF82-101 |  |  |  | 2026-12-07 | 2026-12-22 | 286.6d | 0d | Kablex | 25DF82 | Rozruch | Rozruch | Rozruch | Tomasz | Infrastr | PM000 | Zespó³-K | Blok | Normalny | Pakiet | L2 | Uzgodnione na koordynacji |  |
| 25DF82-103 |  | Rozruch na gor¹co / próby ruchowe |  | 24d | 2027-02-01 | 2027-03-04 | 25DF82-102 |  |  |  | 2026-12-23 | 2027-01-25 | 286.6d | 0d | Kablex | 25DF82 | Rozruch | Rozruch | Rozruch | Tomasz | Infrastr | PM000 | Zespó³-W | Blok | Krytyczn | Pakiet | L2 |  |  |
| 25DF82-104 |  | KM: Odbiór koñcowy – Wentylacja i klimatyzacja | milestone | 0d | 2027-03-05 | 2027-03-05 | 25DF82-103 |  |  |  | 2027-01-26 | 2027-01-26 | 286.6d | 0d | Kablex | 25DF82 | Rozruch | Rozruch | Kamieñ | Tomasz | Infrastr | PM000 | Zespó³-K | Blok | Normalny | Pakiet | L1 |  |  |

| ID | WBS | Activity | Type | Duration | Start | Finish | Predecessors | Complete | Actual finish | Planned start | Planned finish | Calendar | Uwagi harmonogramisty | Rewizja dokumentu | AC_Wykonawca | AC_Obiekt | AC_Dyscyplina | AC_Faza | AC_Zakres | AC_Opiekun | AC_Obszar | AC_PP_PM | AC_Zespol | AC_Blok | AC_Priorytet | AC_Pakiet | AC_Poziom |
| --- | --- | --- | --- | --- | --- | --- | --- | --- | --- | --- | --- | --- | --- | --- | --- | --- | --- | --- | --- | --- | --- | --- | --- | --- | --- | --- | --- |
|  | ZAKU | **Zakupy** |  |  | 2025-07-09 | 2026-08-28 |  |  |  |  |  |  |  |  |  |  |  |  |  |  |  |  |  |  |  |  |  |
|  | DOSTAWY | **Dostawy** |  |  | 2025-10-14 | 2026-08-28 |  |  |  |  |  |  |  |  |  |  |  |  |  |  |  |  |  |  |  |  |  |
| 25DF82-008 |  | Produkcja u dostawcy |  | 202d | 2025-10-14 A | 2026-07-22 A | 25DF82-007 | 100% |  | 2025-10-10 | 2026-07-20 |  | Czeka na dostawê | Rev A | Kablex | 25DF82 | Mechanic | Zakupy | Dostawa | Tomasz | Infrastr | PM100 | Zespó³-I | Blok | Normalny | Pakiet | L2 |
| 25DF82-009 |  | Testy FAT |  | 8d | 2026-07-24 A | 2026-08-07 A | 25DF82-008 | 100% |  | 2026-07-21 | 2026-07-30 |  | Do weryfikacji z wykonawc¹ |  | Kablex | 25DF82 | Mechanic | Zakupy | Dostawa | Tomasz | Infrastr | PM000 | Zespó³-K | Blok | Wysoki | Pakiet | L2 |
| 25DF82-010 |  | Transport i dostawa na plac budowy |  | 20d | 2026-08-03 A | 2026-08-28 A | 25DF82-009 | 100% |  | 2026-07-31 | 2026-08-27 |  |  | Rev A | Kablex | 25DF82 | Mechanic | Zakupy | Dostawa | Tomasz | Infrastr | PM000 | Zespó³-W | Blok | Niski | Pakiet | L2 |
| 25DF82-011 |  | KM: Dostawa na budowê – Wentylacja i klimatyzacja | milestone | 0d | 2026-08-28 A | 2026-08-28 | 25DF82-010 | 100% | 2026-08-27 |  |  |  | Bez uwag |  | Kablex | 25DF82 | Mechanic | Zakupy | Kamieñ | Tomasz | Infrastr | PM000 | Zespó³-K | Blok | Niski | Pakiet | L1 |
|  | ZAMÓWIENIA | **Zamówienia** |  |  | 2025-07-09 | 2025-10-17 |  |  |  |  |  |  |  |  |  |  |  |  |  |  |  |  |  |  |  |  |  |
| 25DF82-005 |  | Zapytanie ofertowe |  | 17d | 2025-07-09 A | 2025-08-05 A | 25DF82-001 SS+20d | 100% |  | 2025-07-10 | 2025-08-01 |  | Ryzyko opóŸnienia |  | Kablex | 25DF82 | Mechanic | Zakupy | Dostawa | Tomasz | Infrastr | PM000 | Zespó³-W | Blok | Normalny | Pakiet | L2 |
| 25DF82-006 |  | Analiza i wybór ofert |  | 19d | 2025-08-05 A | 2025-09-03 A | 25DF82-005 | 100% |  | 2025-08-04 | 2025-08-28 |  |  | Rev C | Kablex | 25DF82 | Mechanic | Zakupy | Dostawa | Tomasz | Infrastr | PM000 | Zespó³-W | Blok | Normalny | Pakiet | L2 |
| 25DF82-007 |  | Zawarcie umowy / zamówienie |  | 7d | 2025-10-06 A | 2025-10-17 A | 25DF82-006, 25DF82-004 SS, 10BW45-004 (other project) SF+15d | 100% |  | 2025-10-01 | 2025-10-09 |  |  |  | Kablex | 25DF82 | Mechanic | Zakupy | Dostawa | Tomasz | Infrastr | PM000 | Zespó³-K | Blok | Normalny | Pakiet | L1 |
|  | 25ND89 | **25ND89 – Instalacje przeciwpo¿arowe** |  |  | 2025-01-10 | 2026-07-30 |  |  |  |  |  |  |  |  |  |  |  |  |  |  |  |  |  |  |  |  |  |
|  | BUDO | **Budowa** |  |  | 2025-10-24 | 2026-06-19 |  |  |  |  |  |  |  |  |  |  |  |  |  |  |  |  |  |  |  |  |  |
|  | AKPIA | **AKPiA** |  |  | 2026-04-28 | 2026-05-11 |  |  |  |  |  |  |  |  |  |  |  |  |  |  |  |  |  |  |  |  |  |
| 25ND89-099 |  | Monta¿ uk³adów AKPiA |  | 10d | 2026-04-28 A | 2026-05-11 A | 25ND89-014 SS+5d | 100% |  | 2026-04-24 | 2026-05-07 |  |  |  | Pomorski | 25ND89 | AKPiA | Budowa | Roboty | Micha³ | Infrastr | PM000 | Zespó³-K | Wspólne | Niski | Pakiet | L2 |
|  | ELEKTRYKA | **Elektryka** |  |  | 2026-04-28 | 2026-05-28 |  |  |  |  |  |  |  |  |  |  |  |  |  |  |  |  |  |  |  |  |  |
| 25ND89-086 |  | Pod³¹czenia i pomiary – trasa 12 |  | 10d | 2026-04-28 A | 2026-05-13 A | 25ND89-085 FF | 100% |  | 2026-04-27 | 2026-05-08 |  |  |  | Pomorski | 25ND89 | Elektryc | Budowa | Roboty | Micha³ | Infrastr | PM000 | Zespó³-K | Wspólne | Krytyczn | Pakiet | L2 |
| 25ND89-049 |  | Uk³adanie kabli – trasa 06 |  | 17d | 2026-04-30 A | 2026-05-27 A | 25ND89-014 SS+10d | 100% |  | 2026-05-01 | 2026-05-25 |  | Do weryfikacji z wykonawc¹ |  | Pomorski | 25ND89 | Elektryc | Budowa | Roboty | Micha³ | Infrastr | PM000 | Zespó³-W | Wspólne | Normalny | Pakiet | L2 |
| 25ND89-085 |  | Uk³adanie kabli – trasa 12 |  | 6d | 2026-04-30 A | 2026-05-11 A | 25ND89-014 SS+10d | 100% |  | 2026-05-01 | 2026-05-08 | Kalendarz 6-dniowy |  |  | Pomorski | 25ND89 | Elektryc | Budowa | Roboty | Micha³ | Infrastr | PM000 | Zespó³-W | Wspólne | Normalny | Pakiet | L2 |
| 25ND89-061 |  | Uk³adanie kabli – trasa 08 |  | 7d | 2026-05-01 A | 2026-05-12 A | 25ND89-014 SS+10d | 100% |  | 2026-05-01 | 2026-05-11 |  | Bez uwag | Rev C | Pomorski | 25ND89 | Elektryc | Budowa | Roboty | Micha³ | Infrastr | PM000 | Zespó³-W | Wspólne | Niski | Pakiet | L2 |
| 25ND89-025 |  | Uk³adanie kabli – trasa 02 |  | 10d | 2026-05-05 A | 2026-05-18 A | 25ND89-014 SS+10d | 100% |  | 2026-05-01 | 2026-05-14 |  |  |  | Pomorski | 25ND89 | Elektryc | Budowa | Roboty | Micha³ | Infrastr | PM000 | Zespó³-K | Wspólne | Normalny | Pakiet | L2 |
| 25ND89-037 |  | Uk³adanie kabli – trasa 04 |  | 13d | 2026-05-05 A | 2026-05-26 A | 25ND89-014 SS+10d | 100% |  | 2026-05-01 | 2026-05-19 |  | Czeka na dostawê |  | Pomorski | 25ND89 | Elektryc | Budowa | Roboty | Micha³ | Infrastr | PM000 | Zespó³-K | Wspólne | Normalny | Pakiet | L2 |
| 25ND89-073 |  | Uk³adanie kabli – trasa 10 |  | 12d | 2026-05-06 A | 2026-05-25 A | 25ND89-014 SS+10d | 100% |  | 2026-05-01 | 2026-05-18 |  | Czeka na dostawê |  | Pomorski | 25ND89 | Elektryc | Budowa | Roboty | Micha³ | Infrastr | PM000 | Zespó³-W | Wspólne | Niski | Pakiet | L2 |
| 25ND89-097 |  | Uk³adanie kabli – trasa 14 |  | 10d | 2026-05-06 A | 2026-05-22 A | 25ND89-014 SS+10d | 100% |  | 2026-05-01 | 2026-05-14 |  | Czeka na dostawê | Rev B | Pomorski | 25ND89 | Elektryc | Budowa | Roboty | Micha³ | Infrastr | PM000 | Zespó³-W | Wspólne | Wysoki | Pakiet | L2 |
| 25ND89-062 |  | Pod³¹czenia i pomiary – trasa 08 |  | 5d | 2026-05-08 A | 2026-05-15 A | 25ND89-061 FF | 100% |  | 2026-05-05 | 2026-05-11 |  | Uzgodnione na koordynacji |  | Pomorski | 25ND89 | Elektryc | Budowa | Roboty | Micha³ | Infrastr | PM000 | Zespó³-W | Wspólne | Normalny | Pakiet | L2 |
| 25ND89-026 |  | Pod³¹czenia i pomiary – trasa 02 |  | 4d | 2026-05-11 A | 2026-05-14 A | 25ND89-025 FF | 100% |  |  |  |  |  |  | Pomorski | 25ND89 | Elektryc | Budowa | Roboty | Micha³ | Infrastr | PM000 | Zespó³-W | Wspólne | Normalny | Pakiet | L2 |
| 25ND89-074 |  | Pod³¹czenia i pomiary – trasa 10 |  | 8d | 2026-05-11 A | 2026-05-25 A | 25ND89-073 FF | 100% |  | 2026-05-07 | 2026-05-18 |  | Czeka na dostawê | Rev B | Pomorski | 25ND89 | Elektryc | Budowa | Roboty | Micha³ | Infrastr | PM000 | Zespó³-K | Wspólne | Wysoki | Pakiet | L2 |
| 25ND89-098 |  | Pod³¹czenia i pomiary – trasa 14 |  | 6d | 2026-05-12 A | 2026-05-21 A | 25ND89-097 FF | 100% |  | 2026-05-07 | 2026-05-14 |  |  | Rev A | Pomorski | 25ND89 | Elektryc | Budowa | Roboty | Micha³ | Infrastr | PM000 | Zespó³-W | Wspólne | Normalny | Pakiet | L2 |
| 25ND89-038 |  | Pod³¹czenia i pomiary – trasa 04 |  | 4d | 2026-05-15 A | 2026-05-21 A | 25ND89-037 FF | 100% |  | 2026-05-14 | 2026-05-19 | Kalendarz 6-dniowy |  | Rev B | Pomorski | 25ND89 | Elektryc | Budowa | Roboty | Micha³ | Infrastr | PM000 | Zespó³-W | Wspólne | Wysoki | Pakiet | L2 |
| 25ND89-050 |  | Pod³¹czenia i pomiary – trasa 06 |  | 4d | 2026-05-25 A | 2026-05-28 A | 25ND89-049 FF | 100% |  | 2026-05-20 | 2026-05-25 |  |  | Rev B | Pomorski | 25ND89 | Elektryc | Budowa | Roboty | Micha³ | Infrastr | PM000 | Zespó³-K | Wspólne | Normalny | Pakiet | L2 |

| ID | WBS | Activity | Type | Duration | Start | Finish | Predecessors | Complete | Actual finish | Planned start | Planned finish | Uwagi harmonogramisty | AC_Wykonawca | AC_Obiekt | AC_Dyscyplina | AC_Faza | AC_Zakres | AC_Opiekun | AC_Obszar | AC_PP_PM | AC_Zespol | AC_Blok | AC_Priorytet | AC_Pakiet | AC_Poziom | Rewizja dokumentu |
| --- | --- | --- | --- | --- | --- | --- | --- | --- | --- | --- | --- | --- | --- | --- | --- | --- | --- | --- | --- | --- | --- | --- | --- | --- | --- | --- |
|  | MONTA¯ | **Monta¿** |  |  | 2026-01-13 | 2026-06-10 |  |  |  |  |  |  |  |  |  |  |  |  |  |  |  |  |  |  |  |  |
| 25ND89-013 |  | Monta¿ konstrukcji stalowych |  | 25d | 2026-01-13 A | 2026-02-17 A | 25ND89-012 | 100% |  | 2026-01-12 | 2026-02-13 | Do weryfikacji z wykonawc¹ | Pomorski | 25ND89 | Mechanic | Budowa | Roboty | Micha³ | Infrastr | PM000 | Zespó³-K | Wspólne | Normalny | Pakiet | L2 |  |
| 25ND89-014 |  | Monta¿ urz¹dzeñ g³ównych |  | 36d | 2026-04-21 A | 2026-06-10 A | 25ND89-013, 25ND89-011 | 100% |  | 2026-04-17 | 2026-06-05 | Do weryfikacji z wykonawc¹ | Pomorski | 25ND89 | Mechanic | Budowa | Roboty | Micha³ | Infrastr | PM000 | Zespó³-K | Wspólne | Normalny | Pakiet | L2 |  |
| 25ND89-100 |  | KM: Zakoñczenie monta¿u – Instalacje przeciwpo¿arowe | milestone | 0d | 2026-06-08 A | 2026-06-08 | 25ND89-091, 25ND89-096, 25ND89-098, 25ND89-099, 25ND89-014 | 100% | 2026-06-05 |  |  | Czeka na dostawê | Pomorski | 25ND89 | Mechanic | Budowa | Kamieñ | Micha³ | Infrastr | PM000 | Zespó³-W | Wspólne | Niski | Pakiet | L2 |  |
|  | ROBOTY BUD | **Roboty budowlane** |  |  | 2025-10-24 | 2026-01-09 |  |  |  |  |  |  |  |  |  |  |  |  |  |  |  |  |  |  |  |  |
| 25ND89-012 |  | Fundamenty i roboty ziemne |  | 56d | 2025-10-24 A | 2026-01-09 A | 25ND89-007 FS+12d | 100% |  |  |  | Bez uwag | Pomorski | 25ND89 | Budowlan | Budowa | Roboty | Micha³ | Infrastr | PM200 | Zespó³-I | Wspólne | Normalny | Pakiet | L2 |  |
|  | RUROCI¥GI | **Ruroci¹gi** |  |  | 2026-01-13 | 2026-06-19 |  |  |  |  |  |  |  |  |  |  |  |  |  |  |  |  |  |  |  |  |
|  | SEKCJA 01 | **Sekcja 01** |  |  | 2026-01-13 | 2026-06-11 |  |  |  |  |  |  |  |  |  |  |  |  |  |  |  |  |  |  |  |  |
| 25ND89-015 |  | Prefabrykacja ruroci¹gów – Sekcja 01 |  | 3.2d | 2026-01-13 A | 2026-01-15 A | 25ND89-012 | 100% |  | 2026-01-12 | 2026-01-14 |  | Pomorski | 25ND89 | Ruroci¹g | Budowa | Roboty | Micha³ | Infrastr | PM000 | Zespó³-W | Wspólne | Niski | Pakiet | L2 |  |
| 25ND89-016 |  | Monta¿ ruroci¹gów – Sekcja 01 |  | 19.1d | 2026-04-24 A | 2026-05-21 A | 25ND89-015, 25ND89-014 SS+6d | 100% |  | 2026-04-27 | 2026-05-21 | Czeka na dostawê | Pomorski | 25ND89 | Ruroci¹g | Budowa | Roboty | Micha³ | Infrastr | PM000 | Zespó³-K | Wspólne | Normalny | Pakiet | L2 | Rev A |
| 25ND89-017 |  | Próba ciœnieniowa – Sekcja 01 |  | 2d | 2026-05-25 A | 2026-05-28 A | 25ND89-016 | 100% |  | 2026-05-22 | 2026-05-25 |  | Pomorski | 25ND89 | Ruroci¹g | Budowa | Roboty | Micha³ | Infrastr | PM000 | Zespó³-W | Wspólne | Niski | Pakiet | L2 | Rev A |
| 25ND89-018 |  | Izolacje – Sekcja 01 |  | 7d | 2026-05-28 A | 2026-06-05 A | 25ND89-017 | 100% |  | 2026-05-26 | 2026-06-03 | Uzgodnione na koordynacji | Pomorski | 25ND89 | Ruroci¹g | Budowa | Roboty | Micha³ | Infrastr | PM000 | Zespó³-K | Wspólne | Normalny | Pakiet | L2 | Rev C |
| 25ND89-019 |  | Malowanie i oznakowanie – Sekcja 01 |  | 7d | 2026-06-02 A | 2026-06-11 A | 25ND89-018 FF+2d | 100% |  | 2026-05-28 | 2026-06-05 |  | Pomorski | 25ND89 | Ruroci¹g | Budowa | Roboty | Micha³ | Infrastr | PM000 | Zespó³-K | Wspólne | Normalny | Pakiet | L2 |  |
|  | SEKCJA 02 | **Sekcja 02** |  |  | 2026-01-20 | 2026-06-08 |  |  |  |  |  |  |  |  |  |  |  |  |  |  |  |  |  |  |  |  |
| 25ND89-020 |  | Prefabrykacja ruroci¹gów – Sekcja 02 |  | 14.8d | 2026-01-20 A | 2026-02-11 A | 25ND89-012, 25ND89-015 SS+5d | 100% |  | 2026-01-19 | 2026-02-05 |  | Pomorski | 25ND89 | Ruroci¹g | Budowa | Roboty | Micha³ | Infrastr | PM000 | Zespó³-W | Wspólne | Wysoki | Pakiet | L2 |  |
| 25ND89-021 |  | Monta¿ ruroci¹gów – Sekcja 02 |  | 13.2d | 2026-04-23 A | 2026-05-12 A | 25ND89-020, 25ND89-014 SS+5d | 100% |  | 2026-04-24 | 2026-05-12 |  | Pomorski | 25ND89 | Ruroci¹g | Budowa | Roboty | Micha³ | Infrastr | PM000 | Zespó³-W | Wspólne | Wysoki | Pakiet | L2 |  |
| 25ND89-022 |  | Próba ciœnieniowa – Sekcja 02 |  | 6d | 2026-05-13 A | 2026-05-21 A | 25ND89-021 | 100% |  | 2026-05-13 | 2026-05-20 | Uzgodnione na koordynacji | Pomorski | 25ND89 | Ruroci¹g | Budowa | Roboty | Micha³ | Infrastr | PM000 | Zespó³-W | Wspólne | Wysoki | Pakiet | L2 |  |
| 25ND89-023 |  | Izolacje – Sekcja 02 |  | 10d | 2026-05-25 A | 2026-06-08 A | 25ND89-022 | 100% |  | 2026-05-21 | 2026-06-03 |  | Pomorski | 25ND89 | Ruroci¹g | Budowa | Roboty | Micha³ | Infrastr | PM000 | Zespó³-K | Wspólne | Niski | Pakiet | L2 |  |
| 25ND89-024 |  | Malowanie i oznakowanie – Sekcja 02 |  | 4d | 2026-06-03 A | 2026-06-08 A | 25ND89-023 FF+2d | 100% |  | 2026-06-02 | 2026-06-05 |  | Pomorski | 25ND89 | Ruroci¹g | Budowa | Roboty | Micha³ | Infrastr | PM300 | Zespó³-E | Wspólne | Normalny | Pakiet | L2 |  |
|  | SEKCJA 03 | **Sekcja 03** |  |  | 2026-01-26 | 2026-06-12 |  |  |  |  |  |  |  |  |  |  |  |  |  |  |  |  |  |  |  |  |
|  | PODSEKCJA | **Podsekcja 03.A** |  |  | 2026-01-26 | 2026-06-12 |  |  |  |  |  |  |  |  |  |  |  |  |  |  |  |  |  |  |  |  |
| 25ND89-027 |  | Prefabrykacja ruroci¹gów – Sekcja 03 |  | 10d | 2026-01-26 A | 2026-02-10 A | 25ND89-012, 25ND89-020 SS+5d | 100% |  | 2026-01-26 | 2026-02-06 |  | Pomorski | 25ND89 | Ruroci¹g | Budowa | Roboty | Micha³ | Infrastr | PM000 | Zespó³-K | Wspólne | Normalny | Pakiet | L2 |  |
| 25ND89-028 |  | Monta¿ ruroci¹gów – Sekcja 03 |  | 20.6d | 2026-05-01 A | 2026-05-28 A | 25ND89-027, 25ND89-014 SS+10d | 100% |  |  |  |  | Pomorski | 25ND89 | Ruroci¹g | Budowa | Roboty | Micha³ | Infrastr | PM000 | Zespó³-W | Wspólne | Normalny | Pakiet | L2 |  |
| 25ND89-029 |  | Próba ciœnieniowa – Sekcja 03 |  | 4d | 2026-05-29 A | 2026-06-03 A | 25ND89-028 | 100% |  |  |  |  | Pomorski | 25ND89 | Ruroci¹g | Budowa | Roboty | Micha³ | Infrastr | PM000 | Zespó³-W | Wspólne | Normalny | Pakiet | L2 |  |
| 25ND89-030 |  | Izolacje – Sekcja 03 |  | 3d | 2026-06-04 A | 2026-06-09 A | 25ND89-029 | 100% |  | 2026-06-04 | 2026-06-08 |  | Pomorski | 25ND89 | Ruroci¹g | Budowa | Roboty | Micha³ | Infrastr | PM000 | Zespó³-K | Wspólne | Normalny | Pakiet | L2 | Rev C |
| 25ND89-031 |  | Malowanie i oznakowanie – Sekcja 03 |  | 5d | 2026-06-04 A | 2026-06-12 A | 25ND89-030 FF+2d | 100% |  | 2026-06-04 | 2026-06-10 | Uzgodnione na koordynacji | Pomorski | 25ND89 | Ruroci¹g | Budowa | Roboty | Micha³ | Infrastr | PM000 | Zespó³-W | Wspólne | Normalny | Pakiet | L2 |  |

| ID | WBS | Activity | Duration | Start | Finish | Predecessors | Complete | Planned start | Planned finish | Calendar | AC_Wykonawca | AC_Obiekt | AC_Dyscyplina | AC_Faza | AC_Zakres | AC_Opiekun | AC_Obszar | AC_PP_PM | AC_Zespol | AC_Blok | AC_Priorytet | AC_Pakiet | AC_Poziom | Uwagi harmonogramisty | Rewizja dokumentu |
| --- | --- | --- | --- | --- | --- | --- | --- | --- | --- | --- | --- | --- | --- | --- | --- | --- | --- | --- | --- | --- | --- | --- | --- | --- | --- |
|  | SEKCJA 04 | **Sekcja 04** |  | 2026-02-05 | 2026-06-02 |  |  |  |  |  |  |  |  |  |  |  |  |  |  |  |  |  |  |  |  |
| 25ND89-032 |  | Prefabrykacja ruroci¹gów – Sekcja 04 | 7.3d | 2026-02-05 A | 2026-02-16 A | 25ND89-012, 25ND89-027 SS+5d | 100% | 2026-02-02 | 2026-02-10 |  | Pomorski | 25ND89 | Ruroci¹g | Budowa | Roboty | Micha³ | Infrastr | PM000 | Zespó³-I | Wspólne | Wysoki | Pakiet | L2 |  |  |
| 25ND89-033 |  | Monta¿ ruroci¹gów – Sekcja 04 | 6.3d | 2026-05-05 A | 2026-05-14 A | 25ND89-032, 25ND89-014 SS+10d | 100% | 2026-05-01 | 2026-05-08 |  | Pomorski | 25ND89 | Ruroci¹g | Budowa | Roboty | Micha³ | Infrastr | PM000 | Zespó³-W | Wspólne | Normalny | Pakiet | L2 | Do weryfikacji z wykonawc¹ |  |
| 25ND89-034 |  | Próba ciœnieniowa – Sekcja 04 | 3d | 2026-05-14 A | 2026-05-20 A | 25ND89-033 | 100% | 2026-05-11 | 2026-05-13 |  | Pomorski | 25ND89 | Ruroci¹g | Budowa | Roboty | Micha³ | Infrastr | PM000 | Zespó³-K | Wspólne | Normalny | Pakiet | L2 |  |  |
| 25ND89-035 |  | Izolacje – Sekcja 04 | 12d | 2026-05-18 A | 2026-06-02 A | 25ND89-034 | 100% | 2026-05-14 | 2026-05-29 | Kalendarz 6-dniowy | Pomorski | 25ND89 | Ruroci¹g | Budowa | Roboty | Micha³ | Infrastr | PM100 | Zespó³-I | Wspólne | Normalny | Pakiet | L2 |  |  |
| 25ND89-036 |  | Malowanie i oznakowanie – Sekcja 04 | 6d | 2026-05-25 A | 2026-06-02 A | 25ND89-035 FF+2d | 100% | 2026-05-26 | 2026-06-02 |  | Pomorski | 25ND89 | Ruroci¹g | Budowa | Roboty | Micha³ | Infrastr | PM000 | Zespó³-W | Wspólne | Normalny | Pakiet | L2 |  |  |
|  | SEKCJA 05 | **Sekcja 05** |  | 2026-02-10 | 2026-05-28 |  |  |  |  |  |  |  |  |  |  |  |  |  |  |  |  |  |  |  |  |
| 25ND89-039 |  | Prefabrykacja ruroci¹gów – Sekcja 05 | 7.6d | 2026-02-10 A | 2026-02-18 A | 25ND89-012, 25ND89-032 SS+5d | 100% | 2026-02-09 | 2026-02-17 |  | Pomorski | 25ND89 | Ruroci¹g | Budowa | Roboty | Micha³ | Infrastr | PM000 | Zespó³-K | Wspólne | Normalny | Pakiet | L2 |  |  |
| 25ND89-040 |  | Monta¿ ruroci¹gów – Sekcja 05 | 12.4d | 2026-04-29 A | 2026-05-15 A | 25ND89-039, 25ND89-014 SS+5d | 100% | 2026-04-24 | 2026-05-11 |  | Pomorski | 25ND89 | Ruroci¹g | Budowa | Roboty | Micha³ | Infrastr | PM000 | Zespó³-K | Wspólne | Normalny | Pakiet | L2 |  | Rev B |
| 25ND89-041 |  | Próba ciœnieniowa – Sekcja 05 | 2d | 2026-05-13 A | 2026-05-18 A | 25ND89-040 | 100% | 2026-05-12 | 2026-05-13 | Kalendarz 6-dniowy | Pomorski | 25ND89 | Ruroci¹g | Budowa | Roboty | Micha³ | Infrastr | PM000 | Zespó³-W | Wspólne | Normalny | Pakiet | L2 |  | Rev C |
| 25ND89-042 |  | Izolacje – Sekcja 05 | 8d | 2026-05-15 A | 2026-05-28 A | 25ND89-041 | 100% | 2026-05-14 | 2026-05-25 | Kalendarz 6-dniowy | Pomorski | 25ND89 | Ruroci¹g | Budowa | Roboty | Micha³ | Infrastr | PM000 | Zespó³-W | Wspólne | Normalny | Pakiet | L2 |  |  |
| 25ND89-043 |  | Malowanie i oznakowanie – Sekcja 05 | 3d | 2026-05-25 A | 2026-05-28 A | 25ND89-042 FF+2d | 100% | 2026-05-25 | 2026-05-27 |  | Pomorski | 25ND89 | Ruroci¹g | Budowa | Roboty | Micha³ | Infrastr | PM000 | Zespó³-W | Wspólne | Niski | Pakiet | L2 |  |  |
|  | SEKCJA 06 | **Sekcja 06** |  | 2026-02-17 | 2026-06-11 |  |  |  |  |  |  |  |  |  |  |  |  |  |  |  |  |  |  |  |  |
|  | PODSEKCJA | **Podsekcja 06.A** |  | 2026-02-17 | 2026-06-11 |  |  |  |  |  |  |  |  |  |  |  |  |  |  |  |  |  |  |  |  |
| 25ND89-044 |  | Prefabrykacja ruroci¹gów – Sekcja 06 | 14.2d | 2026-02-17 A | 2026-03-06 A | 25ND89-012, 25ND89-039 SS+5d | 100% | 2026-02-16 | 2026-03-05 |  | Pomorski | 25ND89 | Ruroci¹g | Budowa | Roboty | Micha³ | Infrastr | PM000 | Zespó³-K | Wspólne | Normalny | Pakiet | L2 |  | Rev B |
| 25ND89-045 |  | Monta¿ ruroci¹gów – Sekcja 06 | 22.1d | 2026-04-17 A | 2026-05-20 A | 25ND89-044, 25ND89-014 SS+1d | 100% | 2026-04-20 | 2026-05-19 |  | Pomorski | 25ND89 | Ruroci¹g | Budowa | Roboty | Micha³ | Infrastr | PM000 | Zespó³-K | Wspólne | Normalny | Pakiet | L2 |  |  |
| 25ND89-046 |  | Próba ciœnieniowa – Sekcja 06 | 4d | 2026-05-19 A | 2026-05-22 A | 25ND89-045 | 100% | 2026-05-20 | 2026-05-25 |  | Pomorski | 25ND89 | Ruroci¹g | Budowa | Roboty | Micha³ | Infrastr | PM000 | Zespó³-W | Wspólne | Normalny | Pakiet | L2 |  | Rev A |
| 25ND89-047 |  | Izolacje – Sekcja 06 | 10d | 2026-05-27 A | 2026-06-11 A | 25ND89-046 | 100% | 2026-05-26 | 2026-06-08 |  | Pomorski | 25ND89 | Ruroci¹g | Budowa | Roboty | Micha³ | Infrastr | PM000 | Zespó³-W | Wspólne | Niski | Pakiet | L2 |  | Rev B |
| 25ND89-048 |  | Malowanie i oznakowanie – Sekcja 06 | 6d | 2026-06-02 A | 2026-06-10 A | 25ND89-047 FF+2d | 100% | 2026-06-03 | 2026-06-10 |  | Pomorski | 25ND89 | Ruroci¹g | Budowa | Roboty | Micha³ | Infrastr | PM000 | Zespó³-W | Wspólne | Normalny | Pakiet | L2 | Do weryfikacji z wykonawc¹ |  |
|  | SEKCJA 07 | **Sekcja 07** |  | 2026-02-23 | 2026-06-02 |  |  |  |  |  |  |  |  |  |  |  |  |  |  |  |  |  |  |  |  |
| 25ND89-051 |  | Prefabrykacja ruroci¹gów – Sekcja 07 | 15d | 2026-02-23 A | 2026-03-17 A | 25ND89-012, 25ND89-044 SS+5d | 100% | 2026-02-23 | 2026-03-13 |  | Pomorski | 25ND89 | Ruroci¹g | Budowa | Roboty | Micha³ | Infrastr | PM000 | Zespó³-K | Wspólne | Wysoki | Pakiet | L2 |  | Rev A |
| 25ND89-052 |  | Monta¿ ruroci¹gów – Sekcja 07 | 12.6d | 2026-04-27 A | 2026-05-14 A | 25ND89-051, 25ND89-014 SS+6d | 100% | 2026-04-27 | 2026-05-12 |  | Pomorski | 25ND89 | Ruroci¹g | Budowa | Roboty | Micha³ | Infrastr | PM000 | Zespó³-W | Wspólne | Normalny | Pakiet | L2 | Czeka na dostawê |  |
| 25ND89-053 |  | Próba ciœnieniowa – Sekcja 07 | 5d | 2026-05-14 A | 2026-05-22 A | 25ND89-052 | 100% | 2026-05-13 | 2026-05-19 |  | Pomorski | 25ND89 | Ruroci¹g | Budowa | Roboty | Micha³ | Infrastr | PM000 | Zespó³-W | Wspólne | Wysoki | Pakiet | L2 | Do weryfikacji z wykonawc¹ |  |
| 25ND89-054 |  | Izolacje – Sekcja 07 | 3d | 2026-05-19 A | 2026-05-22 A | 25ND89-053 | 100% | 2026-05-20 | 2026-05-22 |  | Pomorski | 25ND89 | Ruroci¹g | Budowa | Roboty | Micha³ | Infrastr | PM000 | Zespó³-W | Wspólne | Normalny | Pakiet | L2 | Ryzyko opóŸnienia | Rev B |
| 25ND89-055 |  | Malowanie i oznakowanie – Sekcja 07 | 8d | 2026-05-19 A | 2026-06-02 A | 25ND89-054 FF+2d | 100% | 2026-05-15 | 2026-05-26 |  | Pomorski | 25ND89 | Ruroci¹g | Budowa | Roboty | Micha³ | Infrastr | PM000 | Zespó³-K | Wspólne | Normalny | Pakiet | L2 |  |  |

| ID | WBS | Activity | Duration | Start | Finish | Predecessors | Complete | Planned start | Planned finish | AC_Wykonawca | AC_Obiekt | AC_Dyscyplina | AC_Faza | AC_Zakres | AC_Opiekun | AC_Obszar | AC_PP_PM | AC_Zespol | AC_Blok | AC_Priorytet | AC_Pakiet | AC_Poziom | Uwagi harmonogramisty | Rewizja dokumentu |
| --- | --- | --- | --- | --- | --- | --- | --- | --- | --- | --- | --- | --- | --- | --- | --- | --- | --- | --- | --- | --- | --- | --- | --- | --- |
|  | SEKCJA 08 | **Sekcja 08** |  | 2026-03-03 | 2026-06-03 |  |  |  |  |  |  |  |  |  |  |  |  |  |  |  |  |  |  |  |
| 25ND89-056 |  | Prefabrykacja ruroci¹gów – Sekcja 08 | 12.5d | 2026-03-03 A | 2026-03-20 A | 25ND89-012, 25ND89-051 SS+5d | 100% | 2026-03-02 | 2026-03-17 | Pomorski | 25ND89 | Ruroci¹g | Budowa | Roboty | Micha³ | Infrastr | PM200 | Zespó³-E | Wspólne | Niski | Pakiet | L2 |  |  |
| 25ND89-057 |  | Monta¿ ruroci¹gów – Sekcja 08 | 12d | 2026-04-30 A | 2026-05-19 A | 25ND89-056, 25ND89-014 SS+9d | 100% | 2026-04-30 | 2026-05-15 | Pomorski | 25ND89 | Ruroci¹g | Budowa | Roboty | Micha³ | Infrastr | PM200 | Zespó³-I | Wspólne | Normalny | Pakiet | L2 |  |  |
| 25ND89-058 |  | Próba ciœnieniowa – Sekcja 08 | 2d | 2026-05-15 A | 2026-05-20 A | 25ND89-057 | 100% | 2026-05-18 | 2026-05-19 | Pomorski | 25ND89 | Ruroci¹g | Budowa | Roboty | Micha³ | Infrastr | PM000 | Zespó³-W | Wspólne | Normalny | Pakiet | L2 |  |  |
| 25ND89-059 |  | Izolacje – Sekcja 08 | 5d | 2026-05-20 A | 2026-05-29 A | 25ND89-058 | 100% | 2026-05-20 | 2026-05-26 | Pomorski | 25ND89 | Ruroci¹g | Budowa | Roboty | Micha³ | Infrastr | PM000 | Zespó³-W | Wspólne | Normalny | Pakiet | L2 | Ryzyko opóŸnienia |  |
| 25ND89-060 |  | Malowanie i oznakowanie – Sekcja 08 | 6d | 2026-05-22 A | 2026-06-03 A | 25ND89-059 FF+2d | 100% | 2026-05-21 | 2026-05-28 | Pomorski | 25ND89 | Ruroci¹g | Budowa | Roboty | Micha³ | Infrastr | PM000 | Zespó³-W | Wspólne | Normalny | Pakiet | L2 |  |  |
|  | SEKCJA 09 | **Sekcja 09** |  | 2026-03-10 | 2026-06-15 |  |  |  |  |  |  |  |  |  |  |  |  |  |  |  |  |  |  |  |
|  | PODSEKCJA | **Podsekcja 09.A** |  | 2026-03-10 | 2026-06-15 |  |  |  |  |  |  |  |  |  |  |  |  |  |  |  |  |  |  |  |
| 25ND89-063 |  | Prefabrykacja ruroci¹gów – Sekcja 09 | 14.7d | 2026-03-10 A | 2026-03-31 A | 25ND89-012, 25ND89-056 SS+5d | 100% | 2026-03-09 | 2026-03-26 | Pomorski | 25ND89 | Ruroci¹g | Budowa | Roboty | Micha³ | Infrastr | PM000 | Zespó³-K | Wspólne | Normalny | Pakiet | L2 | Uzgodnione na koordynacji |  |
| 25ND89-064 |  | Monta¿ ruroci¹gów – Sekcja 09 | 21d | 2026-05-01 A | 2026-06-02 A | 25ND89-063, 25ND89-014 SS+8d | 100% | 2026-04-29 | 2026-05-27 | Pomorski | 25ND89 | Ruroci¹g | Budowa | Roboty | Micha³ | Infrastr | PM000 | Zespó³-K | Wspólne | Wysoki | Pakiet | L2 |  |  |
| 25ND89-065 |  | Próba ciœnieniowa – Sekcja 09 | 2d | 2026-06-01 A | 2026-06-05 A | 25ND89-064 | 100% | 2026-05-28 | 2026-05-29 | Pomorski | 25ND89 | Ruroci¹g | Budowa | Roboty | Micha³ | Infrastr | PM000 | Zespó³-I | Wspólne | Normalny | Pakiet | L2 |  |  |
| 25ND89-066 |  | Izolacje – Sekcja 09 | 4d | 2026-06-01 A | 2026-06-08 A | 25ND89-065 | 100% | 2026-06-01 | 2026-06-04 | Pomorski | 25ND89 | Ruroci¹g | Budowa | Roboty | Micha³ | Infrastr | PM000 | Zespó³-W | Wspólne | Wysoki | Pakiet | L2 |  |  |
| 25ND89-067 |  | Malowanie i oznakowanie – Sekcja 09 | 6d | 2026-06-03 A | 2026-06-15 A | 25ND89-066 FF+2d | 100% | 2026-06-01 | 2026-06-08 | Pomorski | 25ND89 | Ruroci¹g | Budowa | Roboty | Micha³ | Infrastr | PM000 | Zespó³-K | Wspólne | Normalny | Pakiet | L2 |  |  |
|  | SEKCJA 10 | **Sekcja 10** |  | 2026-03-19 | 2026-06-16 |  |  |  |  |  |  |  |  |  |  |  |  |  |  |  |  |  |  |  |
| 25ND89-068 |  | Prefabrykacja ruroci¹gów – Sekcja 10 | 9.8d | 2026-03-19 A | 2026-04-01 A | 25ND89-012, 25ND89-063 SS+5d | 100% | 2026-03-16 | 2026-03-26 | Pomorski | 25ND89 | Ruroci¹g | Budowa | Roboty | Micha³ | Infrastr | PM000 | Zespó³-W | Wspólne | Normalny | Pakiet | L2 |  |  |
| 25ND89-069 |  | Monta¿ ruroci¹gów – Sekcja 10 | 14.1d | 2026-04-30 A | 2026-05-19 A | 25ND89-068, 25ND89-014 SS+9d | 100% |  |  | Pomorski | 25ND89 | Ruroci¹g | Budowa | Roboty | Micha³ | Infrastr | PM000 | Zespó³-W | Wspólne | Normalny | Pakiet | L2 | Ryzyko opóŸnienia | Rev A |
| 25ND89-070 |  | Próba ciœnieniowa – Sekcja 10 | 4d | 2026-05-22 A | 2026-05-27 A | 25ND89-069 | 100% | 2026-05-20 | 2026-05-25 | Pomorski | 25ND89 | Ruroci¹g | Budowa | Roboty | Micha³ | Infrastr | PM000 | Zespó³-K | Wspólne | Normalny | Pakiet | L2 | Bez uwag |  |
| 25ND89-071 |  | Izolacje – Sekcja 10 | 12d | 2026-05-25 A | 2026-06-10 A | 25ND89-070 | 100% | 2026-05-26 | 2026-06-10 | Pomorski | 25ND89 | Ruroci¹g | Budowa | Roboty | Micha³ | Infrastr | PM000 | Zespó³-K | Wspólne | Normalny | Pakiet | L2 | Bez uwag |  |
| 25ND89-072 |  | Malowanie i oznakowanie – Sekcja 10 | 2d | 2026-06-11 A | 2026-06-16 A | 25ND89-071 FF+2d | 100% | 2026-06-11 | 2026-06-12 | Pomorski | 25ND89 | Ruroci¹g | Budowa | Roboty | Micha³ | Infrastr | PM000 | Zespó³-W | Wspólne | Wysoki | Pakiet | L2 | Ryzyko opóŸnienia |  |
|  | SEKCJA 11 | **Sekcja 11** |  | 2026-03-24 | 2026-06-04 |  |  |  |  |  |  |  |  |  |  |  |  |  |  |  |  |  |  |  |
| 25ND89-075 |  | Prefabrykacja ruroci¹gów – Sekcja 11 | 9d | 2026-03-24 A | 2026-04-07 A | 25ND89-012, 25ND89-068 SS+5d | 100% | 2026-03-23 | 2026-04-02 | Pomorski | 25ND89 | Ruroci¹g | Budowa | Roboty | Micha³ | Infrastr | PM000 | Zespó³-W | Wspólne | Wysoki | Pakiet | L2 |  |  |
| 25ND89-076 |  | Monta¿ ruroci¹gów – Sekcja 11 | 16.6d | 2026-05-06 A | 2026-06-01 A | 25ND89-075, 25ND89-014 SS+10d | 100% | 2026-05-01 | 2026-05-22 | Pomorski | 25ND89 | Ruroci¹g | Budowa | Roboty | Micha³ | Infrastr | PM000 | Zespó³-K | Wspólne | Krytyczn | Pakiet | L2 |  |  |
| 25ND89-077 |  | Próba ciœnieniowa – Sekcja 11 | 2d | 2026-05-22 A | 2026-05-25 A | 25ND89-076 | 100% | 2026-05-25 | 2026-05-26 | Pomorski | 25ND89 | Ruroci¹g | Budowa | Roboty | Micha³ | Infrastr | PM000 | Zespó³-K | Wspólne | Normalny | Pakiet | L2 |  |  |
| 25ND89-079 |  | Malowanie i oznakowanie – Sekcja 11 | 8d | 2026-05-25 A | 2026-06-04 A | 25ND89-078 FF+2d | 100% | 2026-05-25 | 2026-06-03 | Pomorski | 25ND89 | Ruroci¹g | Budowa | Roboty | Micha³ | Infrastr | PM000 | Zespó³-W | Wspólne | Wysoki | Pakiet | L2 |  |  |
| 25ND89-078 |  | Izolacje – Sekcja 11 | 4d | 2026-05-28 A | 2026-06-04 A | 25ND89-077 | 100% | 2026-05-27 | 2026-06-01 | Pomorski | 25ND89 | Ruroci¹g | Budowa | Roboty | Micha³ | Infrastr | PM000 | Zespó³-K | Wspólne | Wysoki | Pakiet | L2 |  |  |

| ID | WBS | Activity | Type | Duration | Start | Finish | Predecessors | Complete | Actual finish | Planned start | Planned finish | Uwagi harmonogramisty | AC_Wykonawca | AC_Obiekt | AC_Dyscyplina | AC_Faza | AC_Zakres | AC_Opiekun | AC_Obszar | AC_PP_PM | AC_Zespol | AC_Blok | AC_Priorytet | AC_Pakiet | AC_Poziom | Rewizja dokumentu |
| --- | --- | --- | --- | --- | --- | --- | --- | --- | --- | --- | --- | --- | --- | --- | --- | --- | --- | --- | --- | --- | --- | --- | --- | --- | --- | --- |
|  | SEKCJA 12 | **Sekcja 12** |  |  | 2026-03-31 | 2026-06-19 |  |  |  |  |  |  |  |  |  |  |  |  |  |  |  |  |  |  |  |  |
|  | PODSEKCJA | **Podsekcja 12.A** |  |  | 2026-03-31 | 2026-06-19 |  |  |  |  |  |  |  |  |  |  |  |  |  |  |  |  |  |  |  |  |
| 25ND89-080 |  | Prefabrykacja ruroci¹gów – Sekcja 12 |  | 8.9d | 2026-03-31 A | 2026-04-09 A | 25ND89-012, 25ND89-075 SS+5d | 100% |  | 2026-03-30 | 2026-04-08 | Uzgodnione na koordynacji | Pomorski | 25ND89 | Ruroci¹g | Budowa | Roboty | Micha³ | Infrastr | PM000 | Zespó³-W | Wspólne | Krytyczn | Pakiet | L2 |  |
| 25ND89-081 |  | Monta¿ ruroci¹gów – Sekcja 12 |  | 21.8d | 2026-04-27 A | 2026-05-27 A | 25ND89-080, 25ND89-014 SS+4d | 100% |  | 2026-04-23 | 2026-05-21 |  | Pomorski | 25ND89 | Ruroci¹g | Budowa | Roboty | Micha³ | Infrastr | PM000 | Zespó³-K | Wspólne | Normalny | Pakiet | L2 |  |
| 25ND89-082 |  | Próba ciœnieniowa – Sekcja 12 |  | 5d | 2026-05-26 A | 2026-06-04 A | 25ND89-081 | 100% |  | 2026-05-22 | 2026-05-28 |  | Pomorski | 25ND89 | Ruroci¹g | Budowa | Roboty | Micha³ | Infrastr | PM000 | Zespó³-K | Wspólne | Krytyczn | Pakiet | L2 | Rev A |
| 25ND89-083 |  | Izolacje – Sekcja 12 |  | 12d | 2026-06-02 A | 2026-06-17 A | 25ND89-082 | 100% |  | 2026-05-29 | 2026-06-15 | Do weryfikacji z wykonawc¹ | Pomorski | 25ND89 | Ruroci¹g | Budowa | Roboty | Micha³ | Infrastr | PM000 | Zespó³-K | Wspólne | Normalny | Pakiet | L2 |  |
| 25ND89-084 |  | Malowanie i oznakowanie – Sekcja 12 |  | 8d | 2026-06-05 A | 2026-06-19 A | 25ND89-083 FF+2d | 100% |  | 2026-06-08 | 2026-06-17 |  | Pomorski | 25ND89 | Ruroci¹g | Budowa | Roboty | Micha³ | Infrastr | PM000 | Zespó³-K | Wspólne | Normalny | Pakiet | L2 |  |
|  | SEKCJA 13 | **Sekcja 13** |  |  | 2026-04-03 | 2026-06-01 |  |  |  |  |  |  |  |  |  |  |  |  |  |  |  |  |  |  |  |  |
| 25ND89-087 |  | Prefabrykacja ruroci¹gów – Sekcja 13 |  | 7.2d | 2026-04-03 A | 2026-04-13 A | 25ND89-012, 25ND89-080 SS+5d | 100% |  | 2026-04-06 | 2026-04-14 |  | Pomorski | 25ND89 | Ruroci¹g | Budowa | Roboty | Micha³ | Infrastr | PM000 | Zespó³-W | Wspólne | Wysoki | Pakiet | L2 |  |
| 25ND89-088 |  | Monta¿ ruroci¹gów – Sekcja 13 |  | 6.7d | 2026-05-05 A | 2026-05-14 A | 25ND89-087, 25ND89-014 SS+9d | 100% |  | 2026-04-30 | 2026-05-07 |  | Pomorski | 25ND89 | Ruroci¹g | Budowa | Roboty | Micha³ | Infrastr | PM000 | Zespó³-W | Wspólne | Normalny | Pakiet | L2 | Rev C |
| 25ND89-089 |  | Próba ciœnieniowa – Sekcja 13 |  | 2d | 2026-05-11 A | 2026-05-15 A | 25ND89-088 | 100% |  | 2026-05-08 | 2026-05-11 |  | Pomorski | 25ND89 | Ruroci¹g | Budowa | Roboty | Micha³ | Infrastr | PM000 | Zespó³-K | Wspólne | Normalny | Pakiet | L2 |  |
| 25ND89-090 |  | Izolacje – Sekcja 13 |  | 10d | 2026-05-11 A | 2026-05-22 A | 25ND89-089 | 100% |  | 2026-05-12 | 2026-05-25 |  | Pomorski | 25ND89 | Ruroci¹g | Budowa | Roboty | Micha³ | Infrastr | PM000 | Zespó³-W | Wspólne | Normalny | Pakiet | L2 |  |
| 25ND89-091 |  | Malowanie i oznakowanie – Sekcja 13 |  | 7d | 2026-05-21 A | 2026-06-01 A | 25ND89-090 FF+2d | 100% |  | 2026-05-19 | 2026-05-27 | Ryzyko opóŸnienia | Pomorski | 25ND89 | Ruroci¹g | Budowa | Roboty | Micha³ | Infrastr | PM000 | Zespó³-W | Wspólne | Normalny | Pakiet | L2 |  |
|  | SEKCJA 14 | **Sekcja 14** |  |  | 2026-04-13 | 2026-06-09 |  |  |  |  |  |  |  |  |  |  |  |  |  |  |  |  |  |  |  |  |
| 25ND89-092 |  | Prefabrykacja ruroci¹gów – Sekcja 14 |  | 15d | 2026-04-13 A | 2026-05-01 A | 25ND89-012, 25ND89-087 SS+5d | 100% |  |  |  |  | Pomorski | 25ND89 | Ruroci¹g | Budowa | Roboty | Micha³ | Infrastr | PM000 | Zespó³-W | Wspólne | Normalny | Pakiet | L2 |  |
| 25ND89-093 |  | Monta¿ ruroci¹gów – Sekcja 14 |  | 8d | 2026-05-05 A | 2026-05-14 A | 25ND89-092, 25ND89-014 SS+7d | 100% |  | 2026-05-04 | 2026-05-13 |  | Pomorski | 25ND89 | Ruroci¹g | Budowa | Roboty | Micha³ | Infrastr | PM000 | Zespó³-W | Wspólne | Normalny | Pakiet | L2 | Rev C |
| 25ND89-094 |  | Próba ciœnieniowa – Sekcja 14 |  | 3d | 2026-05-15 A | 2026-05-21 A | 25ND89-093 | 100% |  | 2026-05-14 | 2026-05-18 |  | Pomorski | 25ND89 | Ruroci¹g | Budowa | Roboty | Micha³ | Infrastr | PM000 | Zespó³-K | Wspólne | Wysoki | Pakiet | L2 | Rev C |
| 25ND89-095 |  | Izolacje – Sekcja 14 |  | 11d | 2026-05-20 A | 2026-06-04 A | 25ND89-094 | 100% |  | 2026-05-19 | 2026-06-02 |  | Pomorski | 25ND89 | Ruroci¹g | Budowa | Roboty | Micha³ | Infrastr | PM000 | Zespó³-W | Wspólne | Normalny | Pakiet | L2 |  |
| 25ND89-096 |  | Malowanie i oznakowanie – Sekcja 14 |  | 2d | 2026-06-05 A | 2026-06-09 A | 25ND89-095 FF+2d | 100% |  | 2026-06-03 | 2026-06-04 | Uzgodnione na koordynacji | Pomorski | 25ND89 | Ruroci¹g | Budowa | Roboty | Micha³ | Infrastr | PM000 | Zespó³-W | Wspólne | Normalny | Pakiet | L2 | Rev A |
|  | PROJ | **Projektowanie** |  |  | 2025-01-10 | 2025-07-04 |  |  |  |  |  |  |  |  |  |  |  |  |  |  |  |  |  |  |  |  |
|  | DOKUMENTAC | **Dokumentacja** |  |  | 2025-01-10 | 2025-07-04 |  |  |  |  |  |  |  |  |  |  |  |  |  |  |  |  |  |  |  |  |
| 25ND89-001 |  | Projekt wykonawczy – Instalacje przeciwpo¿arowe |  | 91d | 2025-01-10 A | 2025-05-16 A |  | 100% |  | 2025-01-07 | 2025-05-13 |  | Pomorski | 25ND89 | Budowlan | Projekto | Projekt | Micha³ | Infrastr | PM000 | Zespó³-K | Wspólne | Wysoki | Pakiet | L2 | Rev A |
| 25ND89-002 |  | Uzgodnienie dokumentacji z Inwestorem |  | 23d | 2025-05-15 A | 2025-06-16 A | 25ND89-001 | 100% |  | 2025-05-14 | 2025-06-13 | Ryzyko opóŸnienia | Pomorski | 25ND89 | Budowlan | Projekto | Projekt | Micha³ | Infrastr | PM000 | Zespó³-K | Wspólne | Normalny | Pakiet | L2 |  |
| 25ND89-003 |  | Zatwierdzenie dokumentacji do realizacji |  | 11d | 2025-06-13 A | 2025-07-02 A | 25ND89-002 | 100% |  | 2025-06-16 | 2025-06-30 |  | Pomorski | 25ND89 | Budowlan | Projekto | Projekt | Micha³ | Infrastr | PM000 | Zespó³-W | Wspólne | Normalny | Pakiet | L2 |  |
| 25ND89-004 |  | KM: Dokumentacja zatwierdzona – Instalacje przeciwpo¿arowe | milestone | 0d | 2025-07-04 A | 2025-07-04 | 25ND89-003 | 100% | 2025-07-03 | 2025-07-01 | 2025-07-01 |  | Pomorski | 25ND89 | Budowlan | Projekto | Kamieñ | Micha³ | Infrastr | PM000 | Zespó³-W | Wspólne | Normalny | Pakiet | L1 | Rev B |

| ID | WBS | Activity | Type | Duration | Start | Finish | Predecessors | Complete | Actual start | Actual finish | Planned start | Planned finish | Total float | Free float | Calendar | Uwagi harmonogramisty | AC_Wykonawca | AC_Obiekt | AC_Dyscyplina | AC_Faza | AC_Zakres | AC_Opiekun | AC_Obszar | AC_PP_PM | AC_Zespol | AC_Blok | AC_Priorytet | AC_Pakiet | AC_Poziom | Rewizja dokumentu |
| --- | --- | --- | --- | --- | --- | --- | --- | --- | --- | --- | --- | --- | --- | --- | --- | --- | --- | --- | --- | --- | --- | --- | --- | --- | --- | --- | --- | --- | --- | --- |
|  | ROZR | **Rozruch** |  |  | 2026-06-08 | 2026-07-30 |  |  |  |  |  |  |  |  |  |  |  |  |  |  |  |  |  |  |  |  |  |  |  |  |
|  | ROZRUCH | **Rozruch** |  |  | 2026-06-08 | 2026-07-30 |  |  |  |  |  |  |  |  |  |  |  |  |  |  |  |  |  |  |  |  |  |  |  |  |
| 25ND89-101 |  | Przegl¹d gotowoœci do rozruchu |  | 7d | 2026-06-08 A | 2026-06-16 A | 25ND89-100, 25ND89-019, 25ND89-024, 25ND89-026 | 100% |  |  |  |  |  |  |  | Czeka na dostawê | Pomorski | 25ND89 | Rozruch | Rozruch | Rozruch | Micha³ | Infrastr | PM000 | Zespó³-W | Wspólne | Normalny | Pakiet | L2 |  |
| 25ND89-102 |  | Rozruch na zimno |  | 7d | 2026-06-22 A | 2026-07-02 A | 25ND89-101 | 100% |  |  | 2026-06-17 | 2026-06-25 |  |  |  |  | Pomorski | 25ND89 | Rozruch | Rozruch | Rozruch | Micha³ | Infrastr | PM000 | Zespó³-W | Wspólne | Normalny | Pakiet | L2 | Rev B |
| 25ND89-103 |  | Rozruch na gor¹co / próby ruchowe |  | 24d | 2026-06-25 A | 2026-07-30 A | 25ND89-102 | 100% |  |  | 2026-06-26 | 2026-07-29 |  |  |  | Uzgodnione na koordynacji | Pomorski | 25ND89 | Rozruch | Rozruch | Rozruch | Micha³ | Infrastr | PM200 | Zespó³-E | Wspólne | Normalny | Pakiet | L2 | Rev A |
| 25ND89-104 |  | KM: Odbiór koñcowy – Instalacje przeciwpo¿arowe | milestone | 0d | 2026-07-28 | 2026-07-28 A | 25ND89-103 | 100% | 2026-07-29 |  | 2026-07-30 | 2026-07-30 |  |  |  | Bez uwag | Pomorski | 25ND89 | Rozruch | Rozruch | Kamieñ | Micha³ | Infrastr | PM000 | Zespó³-W | Wspólne | Normalny | Pakiet | L1 |  |
|  | ZAKU | **Zakupy** |  |  | 2025-02-03 | 2026-04-20 |  |  |  |  |  |  |  |  |  |  |  |  |  |  |  |  |  |  |  |  |  |  |  |  |
|  | DOSTAWY | **Dostawy** |  |  | 2025-10-08 | 2026-04-20 |  |  |  |  |  |  |  |  |  |  |  |  |  |  |  |  |  |  |  |  |  |  |  |  |
| 25ND89-008 |  | Produkcja u dostawcy |  | 121d | 2025-10-08 A | 2026-03-27 A | 25ND89-007 | 100% |  |  | 2025-10-08 | 2026-03-25 |  |  |  |  | Pomorski | 25ND89 | Mechanic | Zakupy | Dostawa | Micha³ | Infrastr | PM000 | Zespó³-W | Wspólne | Normalny | Pakiet | L2 |  |
| 25ND89-009 |  | Testy FAT |  | 5d | 2026-03-31 A | 2026-04-09 A | 25ND89-008 | 100% |  |  | 2026-03-26 | 2026-04-01 |  |  |  | Czeka na dostawê | Pomorski | 25ND89 | Mechanic | Zakupy | Dostawa | Micha³ | Infrastr | PM000 | Zespó³-W | Wspólne | Normalny | Pakiet | L2 |  |
| 25ND89-010 |  | Transport i dostawa na plac budowy |  | 11d | 2026-04-02 A | 2026-04-16 A | 25ND89-009 | 100% |  |  |  |  |  |  |  |  | Pomorski | 25ND89 | Mechanic | Zakupy | Dostawa | Micha³ | Infrastr | PM000 | Zespó³-K | Wspólne | Normalny | Pakiet | L2 |  |
| 25ND89-011 |  | KM: Dostawa na budowê – Instalacje przeciwpo¿arowe | milestone | 0d | 2026-04-20 A | 2026-04-20 | 25ND89-010 | 100% |  | 2026-04-17 | 2026-04-17 | 2026-04-17 |  |  |  |  | Pomorski | 25ND89 | Mechanic | Zakupy | Kamieñ | Micha³ | Infrastr | PM000 | Zespó³-W | Wspólne | Normalny | Pakiet | L1 | Rev A |
|  | ZAMÓWIENIA | **Zamówienia** |  |  | 2025-02-03 | 2025-10-14 |  |  |  |  |  |  |  |  |  |  |  |  |  |  |  |  |  |  |  |  |  |  |  |  |
| 25ND89-005 |  | Zapytanie ofertowe |  | 19d | 2025-02-03 A | 2025-02-28 A | 25ND89-001 SS+20d | 100% |  |  | 2025-02-04 | 2025-02-28 |  |  |  |  | Pomorski | 25ND89 | Mechanic | Zakupy | Dostawa | Micha³ | Infrastr | PM000 | Zespó³-K | Wspólne | Niski | Pakiet | L2 |  |
| 25ND89-006 |  | Analiza i wybór ofert |  | 15d | 2025-02-28 A | 2025-03-25 A | 25ND89-005 | 100% |  |  | 2025-03-03 | 2025-03-21 |  |  | Kalendarz 6-dniowy | Uzgodnione na koordynacji | Pomorski | 25ND89 | Mechanic | Zakupy | Dostawa | Micha³ | Infrastr | PM000 | Zespó³-W | Wspólne | Normalny | Pakiet | L2 | Rev C |
| 25ND89-007 |  | Zawarcie umowy / zamówienie |  | 5d | 2025-10-06 A | 2025-10-14 A | 25ND89-006, 25ND89-004 SS, 12FX78-004 (other project) SS+11d | 100% |  |  | 2025-10-01 | 2025-10-07 |  |  |  |  | Pomorski | 25ND89 | Mechanic | Zakupy | Dostawa | Micha³ | Infrastr | PM000 | Zespó³-K | Wspólne | Wysoki | Pakiet | L1 |  |
|  | 26CG51 | **26CG51 – Ogrodzenie i monitoring** |  |  | 2025-05-07 | 2028-03-01 |  |  |  |  |  |  |  |  |  |  |  |  |  |  |  |  |  |  |  |  |  |  |  |  |
|  | BUDO | **Budowa** |  |  | 2025-10-14 | 2028-01-06 |  |  |  |  |  |  |  |  |  |  |  |  |  |  |  |  |  |  |  |  |  |  |  |  |
|  | AKPIA | **AKPiA** |  |  | 2027-11-08 | 2027-11-19 |  |  |  |  |  |  |  |  |  |  |  |  |  |  |  |  |  |  |  |  |  |  |  |  |
| 26CG51-116 |  | Monta¿ uk³adów AKPiA |  | 10d | 2027-11-08 | 2027-11-19 | 26CG51-014 SS+5d |  |  |  | 2026-12-24 | 2027-01-06 | 62.3d | 0d |  |  | Izoterm | 26CG51 | AKPiA | Budowa | Roboty | Katarzyn | Infrastr | PM000 | Zespó³-K | Blok | Normalny | Pakiet | L2 | Rev C |
|  | ELEKTRYKA | **Elektryka** |  |  | 2027-11-15 | 2027-12-08 |  |  |  |  |  |  |  |  |  |  |  |  |  |  |  |  |  |  |  |  |  |  |  |  |
| 26CG51-025 |  | Uk³adanie kabli – trasa 02 |  | 11d | 2027-11-15 | 2027-11-29 | 26CG51-014 SS+10d |  |  |  | 2026-12-31 | 2027-01-14 | 56.3d | 0d |  |  | Izoterm | 26CG51 | Elektryc | Budowa | Roboty | Katarzyn | Infrastr | PM000 | Zespó³-K | Blok | Wysoki | Pakiet | L2 |  |
| 26CG51-037 |  | Uk³adanie kabli – trasa 04 |  | 18d | 2027-11-15 | 2027-12-08 | 26CG51-014 SS+10d |  |  |  | 2026-12-31 | 2027-01-25 | 97.3d | 0d |  | Do weryfikacji z wykonawc¹ | Izoterm | 26CG51 | Elektryc | Budowa | Roboty | Katarzyn | Infrastr | PM000 | Zespó³-K | Blok | Normalny | Pakiet | L2 |  |
| 26CG51-049 |  | Uk³adanie kabli – trasa 06 |  | 8d | 2027-11-15 | 2027-11-24 | 26CG51-014 SS+10d |  |  |  | 2026-12-31 | 2027-01-11 | 107.3d | 0d |  |  | Izoterm | 26CG51 | Elektryc | Budowa | Roboty | Katarzyn | Infrastr | PM000 | Zespó³-K | Blok | Normalny | Pakiet | L2 |  |
| 26CG51-050 |  | Pod³¹czenia i pomiary – trasa 06 |  | 8d | 2027-11-15 | 2027-11-24 | 26CG51-049 FF |  |  |  | 2026-12-31 | 2027-01-11 | 107.3d | 0d |  | Do weryfikacji z wykonawc¹ | Izoterm | 26CG51 | Elektryc | Budowa | Roboty | Katarzyn | Infrastr | PM000 | Zespó³-E | Blok | Normalny | Pakiet | L2 |  |
| 26CG51-061 |  | Uk³adanie kabli – trasa 08 |  | 14d | 2027-11-15 | 2027-12-02 | 26CG51-014 SS+10d |  |  |  | 2026-12-31 | 2027-01-19 | 101.3d | 0d |  | Ryzyko opóŸnienia | Izoterm | 26CG51 | Elektryc | Budowa | Roboty | Katarzyn | Infrastr | PM000 | Zespó³-K | Blok | Normalny | Pakiet | L2 |  |
| 26CG51-073 |  | Uk³adanie kabli – trasa 10 |  | 17d | 2027-11-15 | 2027-12-07 | 26CG51-014 SS+10d |  |  |  | 2026-12-31 | 2027-01-22 | 98.3d | 0d |  | Ryzyko opóŸnienia | Izoterm | 26CG51 | Elektryc | Budowa | Roboty | Katarzyn | Infrastr | PM000 | Zespó³-K | Blok | Normalny | Pakiet | L2 | Rev B |
| 26CG51-085 |  | Uk³adanie kabli – trasa 12 |  | 13d | 2027-11-15 | 2027-12-01 | 26CG51-014 SS+10d |  |  |  | 2026-12-31 | 2027-01-18 | 102.3d | 0d |  |  | Izoterm | 26CG51 | Elektryc | Budowa | Roboty | Katarzyn | Infrastr | PM000 | Zespó³-W | Blok | Normalny | Pakiet | L2 |  |
| 26CG51-097 |  | Uk³adanie kabli – trasa 14 |  | 17d | 2027-11-15 | 2027-12-07 | 26CG51-014 SS+10d |  |  |  | 2026-12-31 | 2027-01-22 | 98.3d | 0d |  | Czeka na dostawê | Izoterm | 26CG51 | Elektryc | Budowa | Roboty | Katarzyn | Infrastr | PM200 | Zespó³-E | Blok | Normalny | Pakiet | L2 |  |
| 26CG51-109 |  | Uk³adanie kabli – trasa 16 |  | 8d | 2027-11-15 | 2027-11-24 | 26CG51-014 SS+10d |  |  |  | 2026-12-31 | 2027-01-11 | 59.3d | 0d |  |  | Izoterm | 26CG51 | Elektryc | Budowa | Roboty | Katarzyn | Infrastr | PM000 | Zespó³-W | Blok | Normalny | Pakiet | L2 |  |
| 26CG51-110 |  | Pod³¹czenia i pomiary – trasa 16 |  | 5d | 2027-11-18 | 2027-11-24 | 26CG51-109 FF |  |  |  | 2027-01-05 | 2027-01-11 | 59.3d | 0d |  |  | Izoterm | 26CG51 | Elektryc | Budowa | Roboty | Katarzyn | Infrastr | PM000 | Zespó³-K | Blok | Normalny | Pakiet | L2 |  |
| 26CG51-086 |  | Pod³¹czenia i pomiary – trasa 12 |  | 6d | 2027-11-24 | 2027-12-01 | 26CG51-085 FF |  |  |  | 2027-01-11 | 2027-01-18 | 102.3d | 0d | Kalendarz 6-dniowy |  | Izoterm | 26CG51 | Elektryc | Budowa | Roboty | Katarzyn | Infrastr | PM000 | Zespó³-W | Blok | Wysoki | Pakiet | L2 |  |
| 26CG51-026 |  | Pod³¹czenia i pomiary – trasa 02 |  | 3d | 2027-11-25 | 2027-11-29 | 26CG51-025 FF |  |  |  | 2027-01-12 | 2027-01-14 | 56.3d | 0d |  |  | Izoterm | 26CG51 | Elektryc | Budowa | Roboty | Katarzyn | Infrastr | PM000 | Zespó³-K | Blok | Normalny | Pakiet | L2 | Rev A |
| 26CG51-062 |  | Pod³¹czenia i pomiary – trasa 08 |  | 6d | 2027-11-25 | 2027-12-02 | 26CG51-061 FF |  |  |  | 2027-01-12 | 2027-01-19 | 101.3d | 0d |  |  | Izoterm | 26CG51 | Elektryc | Budowa | Roboty | Katarzyn | Infrastr | PM000 | Zespó³-W | Blok | Normalny | Pakiet | L2 |  |
| 26CG51-074 |  | Pod³¹czenia i pomiary – trasa 10 |  | 9d | 2027-11-25 | 2027-12-07 | 26CG51-073 FF |  |  |  | 2027-01-12 | 2027-01-22 | 98.3d | 0d |  |  | Izoterm | 26CG51 | Elektryc | Budowa | Roboty | Katarzyn | Infrastr | PM200 | Zespó³-I | Blok | Wysoki | Pakiet | L2 | Rev B |
| 26CG51-098 |  | Pod³¹czenia i pomiary – trasa 14 |  | 7d | 2027-11-29 | 2027-12-07 | 26CG51-097 FF |  |  |  | 2027-01-14 | 2027-01-22 | 98.3d | 0d |  | Bez uwag | Izoterm | 26CG51 | Elektryc | Budowa | Roboty | Katarzyn | Infrastr | PM100 | Zespó³-E | Blok | Niski | Pakiet | L2 |  |
| 26CG51-038 |  | Pod³¹czenia i pomiary – trasa 04 |  | 6d | 2027-12-01 | 2027-12-08 | 26CG51-037 FF |  |  |  | 2027-01-18 | 2027-01-25 | 97.3d | 0d |  |  | Izoterm | 26CG51 | Elektryc | Budowa | Roboty | Katarzyn | Infrastr | PM000 | Zespó³-W | Blok | Normalny | Pakiet | L2 | Rev B |

| ID | WBS | Activity | Type | Duration | Start | Finish | Predecessors | Complete | Planned start | Planned finish | Total float | Free float | Calendar | AC_Wykonawca | AC_Obiekt | AC_Dyscyplina | AC_Faza | AC_Zakres | AC_Opiekun | AC_Obszar | AC_PP_PM | AC_Zespol | AC_Blok | AC_Priorytet | AC_Pakiet | AC_Poziom | Uwagi harmonogramisty | Rewizja dokumentu |
| --- | --- | --- | --- | --- | --- | --- | --- | --- | --- | --- | --- | --- | --- | --- | --- | --- | --- | --- | --- | --- | --- | --- | --- | --- | --- | --- | --- | --- |
|  | MONTA¯ | **Monta¿** |  |  | 2025-12-17 | 2028-01-06 |  |  |  |  |  |  |  |  |  |  |  |  |  |  |  |  |  |  |  |  |  |  |
| 26CG51-013 |  | Monta¿ konstrukcji stalowych |  | 38d | 2025-12-17 A | 2026-02-06 A | 26CG51-012 | 100% | 2025-12-16 | 2026-02-05 |  |  |  | Izoterm | 26CG51 | Mechanic | Budowa | Roboty | Katarzyn | Infrastr | PM000 | Zespó³-W | Blok | Normalny | Pakiet | L2 |  |  |
| 26CG51-014 |  | Monta¿ urz¹dzeñ g³ównych |  | 35d | 2027-11-01 | 2027-12-17 | 26CG51-013, 26CG51-011 |  | 2026-12-17 | 2027-02-03 | 27.9d | 0d |  | Izoterm | 26CG51 | Mechanic | Budowa | Roboty | Katarzyn | Infrastr | PM000 | Zespó³-I | Blok | Wysoki | Pakiet | L2 |  |  |
| 26CG51-117 |  | KM: Zakoñczenie monta¿u – Ogrodzenie i monitoring | milestone | 0d | 2028-01-06 | 2028-01-06 | 26CG51-108, 26CG51-110, 26CG51-115, 26CG51-116, 26CG51-014 |  | 2027-02-23 | 2027-02-23 | 29.3d | 0d | Kalendarz 6-dniowy | Izoterm | 26CG51 | Mechanic | Budowa | Kamieñ | Katarzyn | Infrastr | PM000 | Zespó³-W | Blok | Niski | Pakiet | L2 |  |  |
|  | ROBOTY BUD | **Roboty budowlane** |  |  | 2025-10-14 | 2025-12-22 |  |  |  |  |  |  |  |  |  |  |  |  |  |  |  |  |  |  |  |  |  |  |
| 26CG51-012 |  | Fundamenty i roboty ziemne |  | 47d | 2025-10-14 A | 2025-12-22 A | 26CG51-007 FS+4d | 100% | 2025-10-10 | 2025-12-15 |  |  |  | Izoterm | 26CG51 | Budowlan | Budowa | Roboty | Katarzyn | Infrastr | PM000 | Zespó³-W | Blok | Normalny | Pakiet | L2 |  |  |
|  | RUROCI¥GI | **Ruroci¹gi** |  |  | 2025-12-18 | 2028-01-06 |  |  |  |  |  |  |  |  |  |  |  |  |  |  |  |  |  |  |  |  |  |  |
|  | SEKCJA 01 | **Sekcja 01** |  |  | 2025-12-18 | 2028-01-06 |  |  |  |  |  |  |  |  |  |  |  |  |  |  |  |  |  |  |  |  |  |  |
| 26CG51-015 |  | Prefabrykacja ruroci¹gów – Sekcja 01 |  | 4.8d | 2025-12-18 A | 2025-12-25 A | 26CG51-012 | 100% | 2025-12-16 | 2025-12-19 |  |  |  | Izoterm | 26CG51 | Ruroci¹g | Budowa | Roboty | Katarzyn | Infrastr | PM000 | Zespó³-K | Blok | Normalny | Pakiet | L2 |  |  |
| 26CG51-016 |  | Monta¿ ruroci¹gów – Sekcja 01 |  | 21.4d | 2027-11-15 | 2027-12-13 | 26CG51-015, 26CG51-014 SS+10d |  | 2026-12-31 | 2027-01-28 | 27.9d | 0d |  | Izoterm | 26CG51 | Ruroci¹g | Budowa | Roboty | Katarzyn | Infrastr | PM000 | Zespó³-W | Blok | Normalny | Pakiet | L2 |  |  |
| 26CG51-017 |  | Próba ciœnieniowa – Sekcja 01 |  | 5d | 2027-12-14 | 2027-12-20 | 26CG51-016 |  | 2027-01-29 | 2027-02-04 | 27.9d | 0d |  | Izoterm | 26CG51 | Ruroci¹g | Budowa | Roboty | Katarzyn | Infrastr | PM000 | Zespó³-K | Blok | Normalny | Pakiet | L2 |  |  |
| 26CG51-018 |  | Izolacje – Sekcja 01 |  | 11d | 2027-12-21 | 2028-01-04 | 26CG51-017 |  | 2027-02-05 | 2027-02-19 | 27.9d | 0d |  | Izoterm | 26CG51 | Ruroci¹g | Budowa | Roboty | Katarzyn | Infrastr | PM000 | Zespó³-K | Blok | Niski | Pakiet | L2 |  |  |
| 26CG51-019 |  | Malowanie i oznakowanie – Sekcja 01 |  | 8d | 2027-12-28 | 2028-01-06 | 26CG51-018 FF+2d |  | 2027-02-12 | 2027-02-23 | 27.9d | 0d |  | Izoterm | 26CG51 | Ruroci¹g | Budowa | Roboty | Katarzyn | Infrastr | PM000 | Zespó³-W | Blok | Normalny | Pakiet | L2 | Bez uwag |  |
|  | SEKCJA 02 | **Sekcja 02** |  |  | 2025-12-25 | 2027-12-14 |  |  |  |  |  |  |  |  |  |  |  |  |  |  |  |  |  |  |  |  |  |  |
| 26CG51-020 |  | Prefabrykacja ruroci¹gów – Sekcja 02 |  | 5.5d | 2025-12-25 A | 2026-01-02 A | 26CG51-012, 26CG51-015 SS+5d | 100% | 2025-12-23 | 2025-12-29 |  |  |  | Izoterm | 26CG51 | Ruroci¹g | Budowa | Roboty | Katarzyn | Infrastr | PM100 | Zespó³-E | Blok | Normalny | Pakiet | L2 |  |  |
| 26CG51-021 |  | Monta¿ ruroci¹gów – Sekcja 02 |  | 19.6d | 2027-11-04 | 2027-11-30 | 26CG51-020, 26CG51-014 SS+3d |  | 2026-12-22 | 2027-01-15 | 44.7d | 0d |  | Izoterm | 26CG51 | Ruroci¹g | Budowa | Roboty | Katarzyn | Infrastr | PM000 | Zespó³-W | Blok | Normalny | Pakiet | L2 |  |  |
| 26CG51-022 |  | Próba ciœnieniowa – Sekcja 02 |  | 2d | 2027-12-01 | 2027-12-02 | 26CG51-021 |  | 2027-01-18 | 2027-01-19 | 44.7d | 0d |  | Izoterm | 26CG51 | Ruroci¹g | Budowa | Roboty | Katarzyn | Infrastr | PM000 | Zespó³-K | Blok | Normalny | Pakiet | L2 |  |  |
| 26CG51-023 |  | Izolacje – Sekcja 02 |  | 6d | 2027-12-03 | 2027-12-10 | 26CG51-022 |  | 2027-01-20 | 2027-01-27 | 44.7d | 0d |  | Izoterm | 26CG51 | Ruroci¹g | Budowa | Roboty | Katarzyn | Infrastr | PM000 | Zespó³-W | Blok | Normalny | Pakiet | L2 |  |  |
| 26CG51-024 |  | Malowanie i oznakowanie – Sekcja 02 |  | 3d | 2027-12-10 | 2027-12-14 | 26CG51-023 FF+2d |  | 2027-01-27 | 2027-01-29 | 44.7d | 0d |  | Izoterm | 26CG51 | Ruroci¹g | Budowa | Roboty | Katarzyn | Infrastr | PM000 | Zespó³-K | Blok | Normalny | Pakiet | L2 | Ryzyko opóŸnienia |  |
|  | SEKCJA 03 | **Sekcja 03** |  |  | 2026-01-02 | 2027-12-21 |  |  |  |  |  |  |  |  |  |  |  |  |  |  |  |  |  |  |  |  |  |  |
|  | PODSEKCJA | **Podsekcja 03.A** |  |  | 2026-01-02 | 2027-12-21 |  |  |  |  |  |  |  |  |  |  |  |  |  |  |  |  |  |  |  |  |  |  |
| 26CG51-027 |  | Prefabrykacja ruroci¹gów – Sekcja 03 |  | 3.9d | 2026-01-02 A | 2026-01-09 A | 26CG51-012, 26CG51-020 SS+5d | 100% | 2025-12-30 | 2026-01-01 |  |  |  | Izoterm | 26CG51 | Ruroci¹g | Budowa | Roboty | Katarzyn | Infrastr | PM000 | Zespó³-K | Blok | Wysoki | Pakiet | L2 |  | Rev B |
| 26CG51-028 |  | Monta¿ ruroci¹gów – Sekcja 03 |  | 7.5d | 2027-11-15 | 2027-11-23 | 26CG51-027, 26CG51-014 SS+10d |  | 2026-12-31 | 2027-01-08 | 87.8d | 0d |  | Izoterm | 26CG51 | Ruroci¹g | Budowa | Roboty | Katarzyn | Infrastr | PM000 | Zespó³-W | Blok | Normalny | Pakiet | L2 | Ryzyko opóŸnienia | Rev A |
| 26CG51-029 |  | Próba ciœnieniowa – Sekcja 03 |  | 6d | 2027-11-24 | 2027-12-01 | 26CG51-028 |  | 2027-01-11 | 2027-01-18 | 87.8d | 0d | Kalendarz 6-dniowy | Izoterm | 26CG51 | Ruroci¹g | Budowa | Roboty | Katarzyn | Infrastr | PM000 | Zespó³-W | Blok | Normalny | Pakiet | L2 | Bez uwag |  |
| 26CG51-030 |  | Izolacje – Sekcja 03 |  | 12d | 2027-12-02 | 2027-12-17 | 26CG51-029 |  | 2027-01-19 | 2027-02-03 | 87.8d | 0d |  | Izoterm | 26CG51 | Ruroci¹g | Budowa | Roboty | Katarzyn | Infrastr | PM000 | Zespó³-W | Blok | Normalny | Pakiet | L2 |  |  |
| 26CG51-031 |  | Malowanie i oznakowanie – Sekcja 03 |  | 6d | 2027-12-14 | 2027-12-21 | 26CG51-030 FF+2d |  | 2027-01-29 | 2027-02-05 | 87.8d | 0d |  | Izoterm | 26CG51 | Ruroci¹g | Budowa | Roboty | Katarzyn | Infrastr | PM000 | Zespó³-K | Blok | Normalny | Pakiet | L2 |  |  |

| ID | WBS | Activity | Duration | Start | Finish | Predecessors | Complete | Planned start | Planned finish | Total float | Free float | Calendar | Uwagi harmonogramisty | AC_Wykonawca | AC_Obiekt | AC_Dyscyplina | AC_Faza | AC_Zakres | AC_Opiekun | AC_Obszar | AC_PP_PM | AC_Zespol | AC_Blok | AC_Priorytet | AC_Pakiet | AC_Poziom | Rewizja dokumentu |
| --- | --- | --- | --- | --- | --- | --- | --- | --- | --- | --- | --- | --- | --- | --- | --- | --- | --- | --- | --- | --- | --- | --- | --- | --- | --- | --- | --- |
|  | SEKCJA 04 | **Sekcja 04** |  | 2026-01-09 | 2027-12-14 |  |  |  |  |  |  |  |  |  |  |  |  |  |  |  |  |  |  |  |  |  |  |
| 26CG51-032 |  | Prefabrykacja ruroci¹gów – Sekcja 04 | 4.4d | 2026-01-09 A | 2026-01-19 A | 26CG51-012, 26CG51-027 SS+5d | 100% | 2026-01-06 | 2026-01-09 |  |  |  | Bez uwag | Izoterm | 26CG51 | Ruroci¹g | Budowa | Roboty | Katarzyn | Infrastr | PM000 | Zespó³-W | Blok | Normalny | Pakiet | L2 |  |
| 26CG51-033 |  | Monta¿ ruroci¹gów – Sekcja 04 | 5.5d | 2027-11-12 | 2027-11-18 | 26CG51-032, 26CG51-014 SS+9d |  | 2026-12-30 | 2027-01-05 | 92.8d | 0d | Kalendarz 6-dniowy |  | Izoterm | 26CG51 | Ruroci¹g | Budowa | Roboty | Katarzyn | Infrastr | PM000 | Zespó³-K | Blok | Niski | Pakiet | L2 |  |
| 26CG51-034 |  | Próba ciœnieniowa – Sekcja 04 | 5d | 2027-11-19 | 2027-11-25 | 26CG51-033 |  | 2027-01-06 | 2027-01-12 | 92.8d | 0d |  |  | Izoterm | 26CG51 | Ruroci¹g | Budowa | Roboty | Katarzyn | Infrastr | PM100 | Zespó³-E | Blok | Niski | Pakiet | L2 | Rev A |
| 26CG51-035 |  | Izolacje – Sekcja 04 | 11d | 2027-11-26 | 2027-12-10 | 26CG51-034 |  | 2027-01-13 | 2027-01-27 | 92.8d | 0d |  |  | Izoterm | 26CG51 | Ruroci¹g | Budowa | Roboty | Katarzyn | Infrastr | PM000 | Zespó³-K | Blok | Normalny | Pakiet | L2 |  |
| 26CG51-036 |  | Malowanie i oznakowanie – Sekcja 04 | 2d | 2027-12-13 | 2027-12-14 | 26CG51-035 FF+2d |  | 2027-01-28 | 2027-01-29 | 92.8d | 0d |  |  | Izoterm | 26CG51 | Ruroci¹g | Budowa | Roboty | Katarzyn | Infrastr | PM000 | Zespó³-I | Blok | Normalny | Pakiet | L2 |  |
|  | SEKCJA 05 | **Sekcja 05** |  | 2026-01-14 | 2027-12-20 |  |  |  |  |  |  |  |  |  |  |  |  |  |  |  |  |  |  |  |  |  |  |
| 26CG51-039 |  | Prefabrykacja ruroci¹gów – Sekcja 05 | 13.8d | 2026-01-14 A | 2026-02-03 A | 26CG51-012, 26CG51-032 SS+5d | 100% | 2026-01-13 | 2026-01-29 |  |  | Kalendarz 6-dniowy | Ryzyko opóŸnienia | Izoterm | 26CG51 | Ruroci¹g | Budowa | Roboty | Katarzyn | Infrastr | PM000 | Zespó³-K | Blok | Normalny | Pakiet | L2 | Rev C |
| 26CG51-040 |  | Monta¿ ruroci¹gów – Sekcja 05 | 18.2d | 2027-11-02 | 2027-11-25 | 26CG51-039, 26CG51-014 SS+1d |  | 2026-12-18 | 2027-01-12 | 89.1d | 0d | Kalendarz 6-dniowy |  | Izoterm | 26CG51 | Ruroci¹g | Budowa | Roboty | Katarzyn | Infrastr | PM000 | Zespó³-K | Blok | Normalny | Pakiet | L2 | Rev B |
| 26CG51-041 |  | Próba ciœnieniowa – Sekcja 05 | 4d | 2027-11-26 | 2027-12-01 | 26CG51-040 |  | 2027-01-13 | 2027-01-18 | 89.1d | 0d |  |  | Izoterm | 26CG51 | Ruroci¹g | Budowa | Roboty | Katarzyn | Infrastr | PM000 | Zespó³-W | Blok | Normalny | Pakiet | L2 |  |
| 26CG51-042 |  | Izolacje – Sekcja 05 | 11d | 2027-12-02 | 2027-12-16 | 26CG51-041 |  | 2027-01-19 | 2027-02-02 | 89.1d | 0d |  |  | Izoterm | 26CG51 | Ruroci¹g | Budowa | Roboty | Katarzyn | Infrastr | PM000 | Zespó³-W | Blok | Wysoki | Pakiet | L2 |  |
| 26CG51-043 |  | Malowanie i oznakowanie – Sekcja 05 | 4d | 2027-12-15 | 2027-12-20 | 26CG51-042 FF+2d |  | 2027-02-01 | 2027-02-04 | 89.1d | 0d |  |  | Izoterm | 26CG51 | Ruroci¹g | Budowa | Roboty | Katarzyn | Infrastr | PM300 | Zespó³-E | Blok | Normalny | Pakiet | L2 |  |
|  | SEKCJA 06 | **Sekcja 06** |  | 2026-01-23 | 2027-11-22 |  |  |  |  |  |  |  |  |  |  |  |  |  |  |  |  |  |  |  |  |  |  |
|  | PODSEKCJA | **Podsekcja 06.A** |  | 2026-01-23 | 2027-11-22 |  |  |  |  |  |  |  |  |  |  |  |  |  |  |  |  |  |  |  |  |  |  |
| 26CG51-044 |  | Prefabrykacja ruroci¹gów – Sekcja 06 | 8d | 2026-01-23 A | 2026-02-03 A | 26CG51-012, 26CG51-039 SS+5d | 100% | 2026-01-20 | 2026-01-29 |  |  | Kalendarz 6-dniowy |  | Izoterm | 26CG51 | Ruroci¹g | Budowa | Roboty | Katarzyn | Infrastr | PM000 | Zespó³-W | Blok | Wysoki | Pakiet | L2 | Rev B |
| 26CG51-045 |  | Monta¿ ruroci¹gów – Sekcja 06 | 6.6d | 2027-11-01 | 2027-11-08 | 26CG51-044, 26CG51-014 SS |  | 2026-12-17 | 2026-12-24 | 108.7d | 0d |  |  | Izoterm | 26CG51 | Ruroci¹g | Budowa | Roboty | Katarzyn | Infrastr | PM000 | Zespó³-K | Blok | Normalny | Pakiet | L2 |  |
| 26CG51-046 |  | Próba ciœnieniowa – Sekcja 06 | 2d | 2027-11-09 | 2027-11-10 | 26CG51-045 |  | 2026-12-25 | 2026-12-28 | 108.7d | 0d |  |  | Izoterm | 26CG51 | Ruroci¹g | Budowa | Roboty | Katarzyn | Infrastr | PM000 | Zespó³-W | Blok | Normalny | Pakiet | L2 |  |
| 26CG51-047 |  | Izolacje – Sekcja 06 | 6d | 2027-11-11 | 2027-11-18 | 26CG51-046 |  | 2026-12-29 | 2027-01-05 | 108.7d | 0d | Kalendarz 6-dniowy |  | Izoterm | 26CG51 | Ruroci¹g | Budowa | Roboty | Katarzyn | Infrastr | PM000 | Zespó³-K | Blok | Niski | Pakiet | L2 |  |
| 26CG51-048 |  | Malowanie i oznakowanie – Sekcja 06 | 6d | 2027-11-15 | 2027-11-22 | 26CG51-047 FF+2d |  | 2026-12-31 | 2027-01-07 | 108.7d | 0d | Kalendarz 6-dniowy | Uzgodnione na koordynacji | Izoterm | 26CG51 | Ruroci¹g | Budowa | Roboty | Katarzyn | Infrastr | PM000 | Zespó³-W | Blok | Normalny | Pakiet | L2 |  |
|  | SEKCJA 07 | **Sekcja 07** |  | 2026-01-29 | 2028-01-03 |  |  |  |  |  |  |  |  |  |  |  |  |  |  |  |  |  |  |  |  |  |  |
| 26CG51-051 |  | Prefabrykacja ruroci¹gów – Sekcja 07 | 5.6d | 2026-01-29 A | 2026-02-05 A | 26CG51-012, 26CG51-044 SS+5d | 100% | 2026-01-27 | 2026-02-02 |  |  |  |  | Izoterm | 26CG51 | Ruroci¹g | Budowa | Roboty | Katarzyn | Infrastr | PM000 | Zespó³-W | Blok | Wysoki | Pakiet | L2 |  |
| 26CG51-052 |  | Monta¿ ruroci¹gów – Sekcja 07 | 24.5d | 2027-11-03 | 2027-12-06 | 26CG51-051, 26CG51-014 SS+2d |  | 2026-12-21 | 2027-01-21 | 78.8d | 0d |  |  | Izoterm | 26CG51 | Ruroci¹g | Budowa | Roboty | Katarzyn | Infrastr | PM000 | Zespó³-K | Blok | Normalny | Pakiet | L2 |  |
| 26CG51-053 |  | Próba ciœnieniowa – Sekcja 07 | 6d | 2027-12-07 | 2027-12-14 | 26CG51-052 |  | 2027-01-22 | 2027-01-29 | 78.8d | 0d |  | Uzgodnione na koordynacji | Izoterm | 26CG51 | Ruroci¹g | Budowa | Roboty | Katarzyn | Infrastr | PM000 | Zespó³-W | Blok | Normalny | Pakiet | L2 |  |
| 26CG51-054 |  | Izolacje – Sekcja 07 | 12d | 2027-12-15 | 2027-12-30 | 26CG51-053 |  | 2027-02-01 | 2027-02-16 | 78.8d | 0d |  |  | Izoterm | 26CG51 | Ruroci¹g | Budowa | Roboty | Katarzyn | Infrastr | PM000 | Zespó³-W | Blok | Normalny | Pakiet | L2 |  |
| 26CG51-055 |  | Malowanie i oznakowanie – Sekcja 07 | 3d | 2027-12-30 | 2028-01-03 | 26CG51-054 FF+2d |  | 2027-02-16 | 2027-02-18 | 78.8d | 0d | Kalendarz 6-dniowy |  | Izoterm | 26CG51 | Ruroci¹g | Budowa | Roboty | Katarzyn | Infrastr | PM000 | Zespó³-W | Blok | Normalny | Pakiet | L2 |  |

| ID | WBS | Activity | Duration | Start | Finish | Predecessors | Complete | Planned start | Planned finish | Total float | Free float | Calendar | Rewizja dokumentu | AC_Wykonawca | AC_Obiekt | AC_Dyscyplina | AC_Faza | AC_Zakres | AC_Opiekun | AC_Obszar | AC_PP_PM | AC_Zespol | AC_Blok | AC_Priorytet | AC_Pakiet | AC_Poziom | Uwagi harmonogramisty |
| --- | --- | --- | --- | --- | --- | --- | --- | --- | --- | --- | --- | --- | --- | --- | --- | --- | --- | --- | --- | --- | --- | --- | --- | --- | --- | --- | --- |
|  | SEKCJA 08 | **Sekcja 08** |  | 2026-02-05 | 2027-12-14 |  |  |  |  |  |  |  |  |  |  |  |  |  |  |  |  |  |  |  |  |  |  |
| 26CG51-056 |  | Prefabrykacja ruroci¹gów – Sekcja 08 | 4.2d | 2026-02-05 A | 2026-02-11 A | 26CG51-012, 26CG51-051 SS+5d | 100% | 2026-02-03 | 2026-02-06 |  |  |  | Rev B | Izoterm | 26CG51 | Ruroci¹g | Budowa | Roboty | Katarzyn | Infrastr | PM000 | Zespó³-K | Blok | Normalny | Pakiet | L2 |  |
| 26CG51-057 |  | Monta¿ ruroci¹gów – Sekcja 08 | 21.4d | 2027-11-05 | 2027-12-03 | 26CG51-056, 26CG51-014 SS+4d |  | 2026-12-23 | 2027-01-20 | 92.9d | 0d |  |  | Izoterm | 26CG51 | Ruroci¹g | Budowa | Roboty | Katarzyn | Infrastr | PM000 | Zespó³-W | Blok | Normalny | Pakiet | L2 |  |
| 26CG51-058 |  | Próba ciœnieniowa – Sekcja 08 | 2d | 2027-12-06 | 2027-12-07 | 26CG51-057 |  | 2027-01-21 | 2027-01-22 | 92.9d | 0d |  |  | Izoterm | 26CG51 | Ruroci¹g | Budowa | Roboty | Katarzyn | Infrastr | PM000 | Zespó³-E | Blok | Normalny | Pakiet | L2 |  |
| 26CG51-060 |  | Malowanie i oznakowanie – Sekcja 08 | 6d | 2027-12-07 | 2027-12-14 | 26CG51-059 FF+2d |  | 2027-01-22 | 2027-01-29 | 92.9d | 0d |  |  | Izoterm | 26CG51 | Ruroci¹g | Budowa | Roboty | Katarzyn | Infrastr | PM000 | Zespó³-K | Blok | Wysoki | Pakiet | L2 |  |
| 26CG51-059 |  | Izolacje – Sekcja 08 | 3d | 2027-12-08 | 2027-12-10 | 26CG51-058 |  | 2027-01-25 | 2027-01-27 | 92.9d | 0d | Kalendarz 6-dniowy |  | Izoterm | 26CG51 | Ruroci¹g | Budowa | Roboty | Katarzyn | Infrastr | PM000 | Zespó³-K | Blok | Niski | Pakiet | L2 | Czeka na dostawê |
|  | SEKCJA 09 | **Sekcja 09** |  | 2026-02-13 | 2027-12-16 |  |  |  |  |  |  |  |  |  |  |  |  |  |  |  |  |  |  |  |  |  |  |
|  | PODSEKCJA | **Podsekcja 09.A** |  | 2026-02-13 | 2027-12-16 |  |  |  |  |  |  |  |  |  |  |  |  |  |  |  |  |  |  |  |  |  |  |
| 26CG51-063 |  | Prefabrykacja ruroci¹gów – Sekcja 09 | 6.8d | 2026-02-13 A | 2026-02-25 A | 26CG51-012, 26CG51-056 SS+5d | 100% | 2026-02-10 | 2026-02-17 |  |  |  |  | Izoterm | 26CG51 | Ruroci¹g | Budowa | Roboty | Katarzyn | Infrastr | PM000 | Zespó³-K | Blok | Normalny | Pakiet | L2 |  |
| 26CG51-064 |  | Monta¿ ruroci¹gów – Sekcja 09 | 22.8d | 2027-11-02 | 2027-12-02 | 26CG51-063, 26CG51-014 SS+1d |  | 2026-12-18 | 2027-01-18 | 91.5d | 0d |  |  | Izoterm | 26CG51 | Ruroci¹g | Budowa | Roboty | Katarzyn | Infrastr | PM000 | Zespó³-W | Blok | Normalny | Pakiet | L2 |  |
| 26CG51-065 |  | Próba ciœnieniowa – Sekcja 09 | 4d | 2027-12-03 | 2027-12-08 | 26CG51-064 |  | 2027-01-19 | 2027-01-22 | 91.5d | 0d |  | Rev A | Izoterm | 26CG51 | Ruroci¹g | Budowa | Roboty | Katarzyn | Infrastr | PM000 | Zespó³-K | Blok | Wysoki | Pakiet | L2 |  |
| 26CG51-066 |  | Izolacje – Sekcja 09 | 4d | 2027-12-09 | 2027-12-14 | 26CG51-065 |  | 2027-01-25 | 2027-01-28 | 91.5d | 0d |  | Rev C | Izoterm | 26CG51 | Ruroci¹g | Budowa | Roboty | Katarzyn | Infrastr | PM000 | Zespó³-W | Blok | Normalny | Pakiet | L2 |  |
| 26CG51-067 |  | Malowanie i oznakowanie – Sekcja 09 | 5d | 2027-12-10 | 2027-12-16 | 26CG51-066 FF+2d |  | 2027-01-26 | 2027-02-01 | 91.5d | 0d |  |  | Izoterm | 26CG51 | Ruroci¹g | Budowa | Roboty | Katarzyn | Infrastr | PM000 | Zespó³-K | Blok | Normalny | Pakiet | L2 |  |
|  | SEKCJA 10 | **Sekcja 10** |  | 2026-02-19 | 2027-12-15 |  |  |  |  |  |  |  |  |  |  |  |  |  |  |  |  |  |  |  |  |  |  |
| 26CG51-068 |  | Prefabrykacja ruroci¹gów – Sekcja 10 | 8.4d | 2026-02-19 A | 2026-03-02 A | 26CG51-012, 26CG51-063 SS+5d | 100% | 2026-02-17 | 2026-02-26 |  |  |  |  | Izoterm | 26CG51 | Ruroci¹g | Budowa | Roboty | Katarzyn | Infrastr | PM000 | Zespó³-K | Blok | Normalny | Pakiet | L2 |  |
| 26CG51-069 |  | Monta¿ ruroci¹gów – Sekcja 10 | 10.5d | 2027-11-08 | 2027-11-19 | 26CG51-068, 26CG51-014 SS+5d |  | 2026-12-24 | 2027-01-06 | 91.8d | 0d |  |  | Izoterm | 26CG51 | Ruroci¹g | Budowa | Roboty | Katarzyn | Infrastr | PM000 | Zespó³-W | Blok | Normalny | Pakiet | L2 |  |
| 26CG51-070 |  | Próba ciœnieniowa – Sekcja 10 | 5d | 2027-11-22 | 2027-11-26 | 26CG51-069 |  | 2027-01-07 | 2027-01-13 | 91.8d | 0d |  |  | Izoterm | 26CG51 | Ruroci¹g | Budowa | Roboty | Katarzyn | Infrastr | PM000 | Zespó³-W | Blok | Normalny | Pakiet | L2 |  |
| 26CG51-071 |  | Izolacje – Sekcja 10 | 11d | 2027-11-29 | 2027-12-13 | 26CG51-070 |  | 2027-01-14 | 2027-01-28 | 91.8d | 0d |  |  | Izoterm | 26CG51 | Ruroci¹g | Budowa | Roboty | Katarzyn | Infrastr | PM000 | Zespó³-K | Blok | Normalny | Pakiet | L2 |  |
| 26CG51-072 |  | Malowanie i oznakowanie – Sekcja 10 | 4d | 2027-12-10 | 2027-12-15 | 26CG51-071 FF+2d |  | 2027-01-27 | 2027-02-01 | 91.8d | 0d |  |  | Izoterm | 26CG51 | Ruroci¹g | Budowa | Roboty | Katarzyn | Infrastr | PM000 | Zespó³-W | Blok | Normalny | Pakiet | L2 |  |
|  | SEKCJA 11 | **Sekcja 11** |  | 2026-02-23 | 2027-11-30 |  |  |  |  |  |  |  |  |  |  |  |  |  |  |  |  |  |  |  |  |  |  |
| 26CG51-075 |  | Prefabrykacja ruroci¹gów – Sekcja 11 | 8.1d | 2026-02-23 A | 2026-03-05 A | 26CG51-012, 26CG51-068 SS+5d | 100% | 2026-02-24 | 2026-03-05 |  |  |  |  | Izoterm | 26CG51 | Ruroci¹g | Budowa | Roboty | Katarzyn | Infrastr | PM000 | Zespó³-W | Blok | Normalny | Pakiet | L2 |  |
| 26CG51-076 |  | Monta¿ ruroci¹gów – Sekcja 11 | 8.8d | 2027-11-01 | 2027-11-11 | 26CG51-075, 26CG51-014 SS |  | 2026-12-17 | 2026-12-28 | 103.5d | 0d |  |  | Izoterm | 26CG51 | Ruroci¹g | Budowa | Roboty | Katarzyn | Infrastr | PM000 | Zespó³-K | Blok | Normalny | Pakiet | L2 |  |
| 26CG51-077 |  | Próba ciœnieniowa – Sekcja 11 | 2d | 2027-11-12 | 2027-11-15 | 26CG51-076 |  | 2026-12-29 | 2026-12-30 | 103.5d | 0d |  | Rev A | Izoterm | 26CG51 | Ruroci¹g | Budowa | Roboty | Katarzyn | Infrastr | PM000 | Zespó³-W | Blok | Normalny | Pakiet | L2 |  |
| 26CG51-078 |  | Izolacje – Sekcja 11 | 9d | 2027-11-16 | 2027-11-26 | 26CG51-077 |  | 2026-12-31 | 2027-01-12 | 103.5d | 0d |  |  | Izoterm | 26CG51 | Ruroci¹g | Budowa | Roboty | Katarzyn | Infrastr | PM000 | Zespó³-K | Blok | Normalny | Pakiet | L2 |  |
| 26CG51-079 |  | Malowanie i oznakowanie – Sekcja 11 | 7d | 2027-11-22 | 2027-11-30 | 26CG51-078 FF+2d |  | 2027-01-06 | 2027-01-14 | 103.5d | 0d |  |  | Izoterm | 26CG51 | Ruroci¹g | Budowa | Roboty | Katarzyn | Infrastr | PM000 | Zespó³-W | Blok | Wysoki | Pakiet | L2 |  |

| ID | WBS | Activity | Duration | Start | Finish | Predecessors | Complete | Planned start | Planned finish | Total float | Free float | Rewizja dokumentu | AC_Wykonawca | AC_Obiekt | AC_Dyscyplina | AC_Faza | AC_Zakres | AC_Opiekun | AC_Obszar | AC_PP_PM | AC_Zespol | AC_Blok | AC_Priorytet | AC_Pakiet | AC_Poziom | Uwagi harmonogramisty |
| --- | --- | --- | --- | --- | --- | --- | --- | --- | --- | --- | --- | --- | --- | --- | --- | --- | --- | --- | --- | --- | --- | --- | --- | --- | --- | --- |
|  | SEKCJA 12 | **Sekcja 12** |  | 2026-03-02 | 2027-12-21 |  |  |  |  |  |  |  |  |  |  |  |  |  |  |  |  |  |  |  |  |  |
|  | PODSEKCJA | **Podsekcja 12.A** |  | 2026-03-02 | 2027-12-21 |  |  |  |  |  |  |  |  |  |  |  |  |  |  |  |  |  |  |  |  |  |
| 26CG51-080 |  | Prefabrykacja ruroci¹gów – Sekcja 12 | 13d | 2026-03-02 A | 2026-03-19 A | 26CG51-012, 26CG51-075 SS+5d | 100% | 2026-03-03 | 2026-03-19 |  |  | Rev B | Izoterm | 26CG51 | Ruroci¹g | Budowa | Roboty | Katarzyn | Infrastr | PM000 | Zespó³-W | Blok | Normalny | Pakiet | L2 |  |
| 26CG51-081 |  | Monta¿ ruroci¹gów – Sekcja 12 | 15.6d | 2027-11-10 | 2027-11-30 | 26CG51-080, 26CG51-014 SS+7d |  | 2026-12-28 | 2027-01-15 | 87.7d | 0d |  | Izoterm | 26CG51 | Ruroci¹g | Budowa | Roboty | Katarzyn | Infrastr | PM000 | Zespó³-W | Blok | Normalny | Pakiet | L2 |  |
| 26CG51-082 |  | Próba ciœnieniowa – Sekcja 12 | 3d | 2027-12-01 | 2027-12-03 | 26CG51-081 |  | 2027-01-18 | 2027-01-20 | 87.7d | 0d |  | Izoterm | 26CG51 | Ruroci¹g | Budowa | Roboty | Katarzyn | Infrastr | PM000 | Zespó³-W | Blok | Normalny | Pakiet | L2 |  |
| 26CG51-083 |  | Izolacje – Sekcja 12 | 10d | 2027-12-06 | 2027-12-17 | 26CG51-082 |  | 2027-01-21 | 2027-02-03 | 87.7d | 0d |  | Izoterm | 26CG51 | Ruroci¹g | Budowa | Roboty | Katarzyn | Infrastr | PM000 | Zespó³-W | Blok | Wysoki | Pakiet | L2 |  |
| 26CG51-084 |  | Malowanie i oznakowanie – Sekcja 12 | 5d | 2027-12-15 | 2027-12-21 | 26CG51-083 FF+2d |  | 2027-02-01 | 2027-02-05 | 87.7d | 0d |  | Izoterm | 26CG51 | Ruroci¹g | Budowa | Roboty | Katarzyn | Infrastr | PM000 | Zespó³-W | Blok | Normalny | Pakiet | L2 |  |
|  | SEKCJA 13 | **Sekcja 13** |  | 2026-03-10 | 2027-12-31 |  |  |  |  |  |  |  |  |  |  |  |  |  |  |  |  |  |  |  |  |  |
| 26CG51-087 |  | Prefabrykacja ruroci¹gów – Sekcja 13 | 5.2d | 2026-03-10 A | 2026-03-17 A | 26CG51-012, 26CG51-080 SS+5d | 100% | 2026-03-10 | 2026-03-16 |  |  | Rev B | Izoterm | 26CG51 | Ruroci¹g | Budowa | Roboty | Katarzyn | Infrastr | PM000 | Zespó³-K | Blok | Normalny | Pakiet | L2 | Czeka na dostawê |
| 26CG51-088 |  | Monta¿ ruroci¹gów – Sekcja 13 | 16.1d | 2027-11-15 | 2027-12-06 | 26CG51-087, 26CG51-014 SS+10d |  | 2026-12-31 | 2027-01-21 | 80.2d | 0d |  | Izoterm | 26CG51 | Ruroci¹g | Budowa | Roboty | Katarzyn | Infrastr | PM000 | Zespó³-W | Blok | Normalny | Pakiet | L2 |  |
| 26CG51-089 |  | Próba ciœnieniowa – Sekcja 13 | 5d | 2027-12-07 | 2027-12-13 | 26CG51-088 |  | 2027-01-22 | 2027-01-28 | 80.2d | 0d |  | Izoterm | 26CG51 | Ruroci¹g | Budowa | Roboty | Katarzyn | Infrastr | PM000 | Zespó³-W | Blok | Normalny | Pakiet | L2 |  |
| 26CG51-090 |  | Izolacje – Sekcja 13 | 12d | 2027-12-14 | 2027-12-29 | 26CG51-089 |  | 2027-01-29 | 2027-02-15 | 80.2d | 0d |  | Izoterm | 26CG51 | Ruroci¹g | Budowa | Roboty | Katarzyn | Infrastr | PM000 | Zespó³-K | Blok | Normalny | Pakiet | L2 |  |
| 26CG51-091 |  | Malowanie i oznakowanie – Sekcja 13 | 8d | 2027-12-22 | 2027-12-31 | 26CG51-090 FF+2d |  | 2027-02-08 | 2027-02-17 | 80.2d | 0d |  | Izoterm | 26CG51 | Ruroci¹g | Budowa | Roboty | Katarzyn | Infrastr | PM000 | Zespó³-K | Blok | Niski | Pakiet | L2 |  |
|  | SEKCJA 14 | **Sekcja 14** |  | 2026-03-19 | 2027-12-09 |  |  |  |  |  |  |  |  |  |  |  |  |  |  |  |  |  |  |  |  |  |
| 26CG51-092 |  | Prefabrykacja ruroci¹gów – Sekcja 14 | 11.8d | 2026-03-19 A | 2026-04-02 A | 26CG51-012, 26CG51-087 SS+5d | 100% | 2026-03-17 | 2026-03-31 |  |  |  | Izoterm | 26CG51 | Ruroci¹g | Budowa | Roboty | Katarzyn | Infrastr | PM000 | Zespó³-W | Blok | Wysoki | Pakiet | L2 | Bez uwag |
| 26CG51-093 |  | Monta¿ ruroci¹gów – Sekcja 14 | 12.5d | 2027-11-10 | 2027-11-25 | 26CG51-092, 26CG51-014 SS+7d |  | 2026-12-28 | 2027-01-12 | 95.8d | 0d | Rev B | Izoterm | 26CG51 | Ruroci¹g | Budowa | Roboty | Katarzyn | Infrastr | PM000 | Zespó³-W | Blok | Normalny | Pakiet | L2 | Ryzyko opóŸnienia |
| 26CG51-094 |  | Próba ciœnieniowa – Sekcja 14 | 4d | 2027-11-26 | 2027-12-01 | 26CG51-093 |  | 2027-01-13 | 2027-01-18 | 95.8d | 0d | Rev A | Izoterm | 26CG51 | Ruroci¹g | Budowa | Roboty | Katarzyn | Infrastr | PM000 | Zespó³-W | Blok | Krytyczn | Pakiet | L2 | Do weryfikacji z wykonawc¹ |
| 26CG51-095 |  | Izolacje – Sekcja 14 | 4d | 2027-12-02 | 2027-12-07 | 26CG51-094 |  | 2027-01-19 | 2027-01-22 | 95.8d | 0d |  | Izoterm | 26CG51 | Ruroci¹g | Budowa | Roboty | Katarzyn | Infrastr | PM000 | Zespó³-W | Blok | Normalny | Pakiet | L2 | Ryzyko opóŸnienia |
| 26CG51-096 |  | Malowanie i oznakowanie – Sekcja 14 | 4d | 2027-12-06 | 2027-12-09 | 26CG51-095 FF+2d |  | 2027-01-21 | 2027-01-26 | 95.8d | 0d | Rev A | Izoterm | 26CG51 | Ruroci¹g | Budowa | Roboty | Katarzyn | Infrastr | PM000 | Zespó³-W | Blok | Wysoki | Pakiet | L2 | Czeka na dostawê |
|  | SEKCJA 15 | **Sekcja 15** |  | 2026-03-27 | 2027-12-23 |  |  |  |  |  |  |  |  |  |  |  |  |  |  |  |  |  |  |  |  |  |
|  | PODSEKCJA | **Podsekcja 15.A** |  | 2026-03-27 | 2027-12-23 |  |  |  |  |  |  |  |  |  |  |  |  |  |  |  |  |  |  |  |  |  |
| 26CG51-099 |  | Prefabrykacja ruroci¹gów – Sekcja 15 | 6.5d | 2026-03-27 A | 2026-04-08 A | 26CG51-012, 26CG51-092 SS+5d | 100% | 2026-03-24 | 2026-03-31 |  |  |  | Izoterm | 26CG51 | Ruroci¹g | Budowa | Roboty | Katarzyn | Infrastr | PM000 | Zespó³-W | Blok | Niski | Pakiet | L2 |  |
| 26CG51-100 |  | Monta¿ ruroci¹gów – Sekcja 15 | 24.4d | 2027-11-05 | 2027-12-08 | 26CG51-099, 26CG51-014 SS+4d |  | 2026-12-23 | 2027-01-25 | 85.9d | 0d |  | Izoterm | 26CG51 | Ruroci¹g | Budowa | Roboty | Katarzyn | Infrastr | PM000 | Zespó³-W | Blok | Normalny | Pakiet | L2 |  |
| 26CG51-101 |  | Próba ciœnieniowa – Sekcja 15 | 6d | 2027-12-09 | 2027-12-16 | 26CG51-100 |  | 2027-01-26 | 2027-02-02 | 85.9d | 0d |  | Izoterm | 26CG51 | Ruroci¹g | Budowa | Roboty | Katarzyn | Infrastr | PM000 | Zespó³-K | Blok | Normalny | Pakiet | L2 |  |
| 26CG51-103 |  | Malowanie i oznakowanie – Sekcja 15 | 8d | 2027-12-14 | 2027-12-23 | 26CG51-102 FF+2d |  | 2027-01-29 | 2027-02-09 | 85.9d | 0d |  | Izoterm | 26CG51 | Ruroci¹g | Budowa | Roboty | Katarzyn | Infrastr | PM000 | Zespó³-K | Blok | Normalny | Pakiet | L2 |  |
| 26CG51-102 |  | Izolacje – Sekcja 15 | 3d | 2027-12-17 | 2027-12-21 | 26CG51-101 |  | 2027-02-03 | 2027-02-05 | 85.9d | 0d |  | Izoterm | 26CG51 | Ruroci¹g | Budowa | Roboty | Katarzyn | Infrastr | PM000 | Zespó³-W | Blok | Normalny | Pakiet | L2 | Czeka na dostawê |

| ID | WBS | Activity | Type | Duration | Start | Finish | Predecessors | Complete | Actual finish | Planned start | Planned finish | Total float | Free float | AC_Wykonawca | AC_Obiekt | AC_Dyscyplina | AC_Faza | AC_Zakres | AC_Opiekun | AC_Obszar | AC_PP_PM | AC_Zespol | AC_Blok | AC_Priorytet | AC_Pakiet | AC_Poziom | Uwagi harmonogramisty | Rewizja dokumentu |
| --- | --- | --- | --- | --- | --- | --- | --- | --- | --- | --- | --- | --- | --- | --- | --- | --- | --- | --- | --- | --- | --- | --- | --- | --- | --- | --- | --- | --- |
|  | SEKCJA 16 | **Sekcja 16** |  |  | 2026-03-30 | 2027-12-14 |  |  |  |  |  |  |  |  |  |  |  |  |  |  |  |  |  |  |  |  |  |  |
| 26CG51-104 |  | Prefabrykacja ruroci¹gów – Sekcja 16 |  | 4.4d | 2026-03-30 A | 2026-04-06 A | 26CG51-012, 26CG51-099 SS+5d | 100% |  | 2026-03-31 | 2026-04-03 |  |  | Izoterm | 26CG51 | Ruroci¹g | Budowa | Roboty | Katarzyn | Infrastr | PM000 | Zespó³-W | Blok | Normalny | Pakiet | L2 |  |  |
| 26CG51-105 |  | Monta¿ ruroci¹gów – Sekcja 16 |  | 14d | 2027-11-02 | 2027-11-19 | 26CG51-104, 26CG51-014 SS+1d |  |  | 2026-12-18 | 2027-01-06 | 45.3d | 0d | Izoterm | 26CG51 | Ruroci¹g | Budowa | Roboty | Katarzyn | Infrastr | PM000 | Zespó³-W | Blok | Normalny | Pakiet | L2 | Uzgodnione na koordynacji | Rev C |
| 26CG51-106 |  | Próba ciœnieniowa – Sekcja 16 |  | 6d | 2027-11-22 | 2027-11-29 | 26CG51-105 |  |  | 2027-01-07 | 2027-01-14 | 45.3d | 0d | Izoterm | 26CG51 | Ruroci¹g | Budowa | Roboty | Katarzyn | Infrastr | PM000 | Zespó³-K | Blok | Normalny | Pakiet | L2 | Czeka na dostawê |  |
| 26CG51-107 |  | Izolacje – Sekcja 16 |  | 9d | 2027-11-30 | 2027-12-10 | 26CG51-106 |  |  | 2027-01-15 | 2027-01-27 | 45.3d | 0d | Izoterm | 26CG51 | Ruroci¹g | Budowa | Roboty | Katarzyn | Infrastr | PM000 | Zespó³-W | Blok | Wysoki | Pakiet | L2 | Ryzyko opóŸnienia |  |
| 26CG51-108 |  | Malowanie i oznakowanie – Sekcja 16 |  | 8d | 2027-12-03 | 2027-12-14 | 26CG51-107 FF+2d |  |  | 2027-01-20 | 2027-01-29 | 45.3d | 0d | Izoterm | 26CG51 | Ruroci¹g | Budowa | Roboty | Katarzyn | Infrastr | PM000 | Zespó³-K | Blok | Normalny | Pakiet | L2 |  | Rev B |
|  | SEKCJA 17 | **Sekcja 17** |  |  | 2026-04-06 | 2028-01-05 |  |  |  |  |  |  |  |  |  |  |  |  |  |  |  |  |  |  |  |  |  |  |
| 26CG51-111 |  | Prefabrykacja ruroci¹gów – Sekcja 17 |  | 11.9d | 2026-04-06 A | 2026-04-21 A | 26CG51-012, 26CG51-104 SS+5d | 100% |  | 2026-04-07 | 2026-04-21 |  |  | Izoterm | 26CG51 | Ruroci¹g | Budowa | Roboty | Katarzyn | Infrastr | PM000 | Zespó³-K | Blok | Krytyczn | Pakiet | L2 |  |  |
| 26CG51-112 |  | Monta¿ ruroci¹gów – Sekcja 17 |  | 25d | 2027-11-09 | 2027-12-13 | 26CG51-111, 26CG51-014 SS+6d |  |  | 2026-12-25 | 2027-01-28 | 29.3d | 0d | Izoterm | 26CG51 | Ruroci¹g | Budowa | Roboty | Katarzyn | Infrastr | PM000 | Zespó³-W | Blok | Normalny | Pakiet | L2 | Ryzyko opóŸnienia |  |
| 26CG51-113 |  | Próba ciœnieniowa – Sekcja 17 |  | 6d | 2027-12-14 | 2027-12-21 | 26CG51-112 |  |  | 2027-01-29 | 2027-02-05 | 29.3d | 0d | Izoterm | 26CG51 | Ruroci¹g | Budowa | Roboty | Katarzyn | Infrastr | PM000 | Zespó³-W | Blok | Normalny | Pakiet | L2 |  |  |
| 26CG51-114 |  | Izolacje – Sekcja 17 |  | 9d | 2027-12-22 | 2028-01-03 | 26CG51-113 |  |  | 2027-02-08 | 2027-02-18 | 29.3d | 0d | Izoterm | 26CG51 | Ruroci¹g | Budowa | Roboty | Katarzyn | Infrastr | PM000 | Zespó³-W | Blok | Normalny | Pakiet | L2 | Czeka na dostawê |  |
| 26CG51-115 |  | Malowanie i oznakowanie – Sekcja 17 |  | 2d | 2028-01-04 | 2028-01-05 | 26CG51-114 FF+2d |  |  | 2027-02-19 | 2027-02-22 | 29.3d | 0d | Izoterm | 26CG51 | Ruroci¹g | Budowa | Roboty | Katarzyn | Infrastr | PM000 | Zespó³-K | Blok | Normalny | Pakiet | L2 |  |  |
|  | PROJ | **Projektowanie** |  |  | 2025-05-07 | 2025-09-24 |  |  |  |  |  |  |  |  |  |  |  |  |  |  |  |  |  |  |  |  |  |  |
|  | DOKUMENTAC | **Dokumentacja** |  |  | 2025-05-07 | 2025-09-24 |  |  |  |  |  |  |  |  |  |  |  |  |  |  |  |  |  |  |  |  |  |  |
| 26CG51-001 |  | Projekt wykonawczy – Ogrodzenie i monitoring |  | 62d | 2025-05-07 A | 2025-08-05 A |  | 100% |  | 2025-05-08 | 2025-08-01 |  |  | Izoterm | 26CG51 | Budowlan | Projekto | Projekt | Katarzyn | Infrastr | PM000 | Zespó³-K | Blok | Normalny | Pakiet | L2 |  | Rev A |
| 26CG51-002 |  | Uzgodnienie dokumentacji z Inwestorem |  | 22d | 2025-08-05 A | 2025-09-04 A | 26CG51-001 | 100% |  | 2025-08-04 | 2025-09-02 |  |  | Izoterm | 26CG51 | Budowlan | Projekto | Projekt | Katarzyn | Infrastr | PM000 | Zespó³-W | Blok | Normalny | Pakiet | L2 |  |  |
| 26CG51-003 |  | Zatwierdzenie dokumentacji do realizacji |  | 15d | 2025-09-03 A | 2025-09-23 A | 26CG51-002 | 100% |  |  |  |  |  | Izoterm | 26CG51 | Budowlan | Projekto | Projekt | Katarzyn | Infrastr | PM000 | Zespó³-K | Blok | Krytyczn | Pakiet | L2 |  |  |
| 26CG51-004 |  | KM: Dokumentacja zatwierdzona – Ogrodzenie i monitoring | milestone | 0d | 2025-09-24 A | 2025-09-24 | 26CG51-003 | 100% | 2025-09-23 |  |  |  |  | Izoterm | 26CG51 | Budowlan | Projekto | Kamieñ | Katarzyn | Infrastr | PM000 | Zespó³-W | Blok | Normalny | Pakiet | L1 | Bez uwag | Rev A |
|  | ROZR | **Rozruch** |  |  | 2028-01-07 | 2028-03-01 |  |  |  |  |  |  |  |  |  |  |  |  |  |  |  |  |  |  |  |  |  |  |
|  | ROZRUCH | **Rozruch** |  |  | 2028-01-07 | 2028-03-01 |  |  |  |  |  |  |  |  |  |  |  |  |  |  |  |  |  |  |  |  |  |  |
| 26CG51-118 |  | Przegl¹d gotowoœci do rozruchu |  | 8d | 2028-01-07 | 2028-01-18 | 26CG51-117, 26CG51-019, 26CG51-024, 26CG51-026 |  |  | 2027-02-24 | 2027-03-05 | 27.9d | 0d | Izoterm | 26CG51 | Rozruch | Rozruch | Rozruch | Katarzyn | Infrastr | PM000 | Zespó³-K | Blok | Normalny | Pakiet | L2 |  |  |
| 26CG51-119 |  | Rozruch na zimno |  | 7d | 2028-01-19 | 2028-01-27 | 26CG51-118 |  |  | 2027-03-08 | 2027-03-16 | 27.9d | 0d | Izoterm | 26CG51 | Rozruch | Rozruch | Rozruch | Katarzyn | Infrastr | PM000 | Zespó³-W | Blok | Normalny | Pakiet | L2 |  | Rev B |
| 26CG51-120 |  | Rozruch na gor¹co / próby ruchowe |  | 23d | 2028-01-28 | 2028-02-29 | 26CG51-119 |  |  | 2027-03-17 | 2027-04-16 | 27.9d | 0d | Izoterm | 26CG51 | Rozruch | Rozruch | Rozruch | Katarzyn | Infrastr | PM000 | Zespó³-K | Blok | Niski | Pakiet | L2 | Ryzyko opóŸnienia |  |
| 26CG51-121 |  | KM: Odbiór koñcowy – Ogrodzenie i monitoring | milestone | 0d | 2028-03-01 | 2028-03-01 | 26CG51-120 |  |  | 2027-04-19 | 2027-04-19 | 27.9d | 0d | Izoterm | 26CG51 | Rozruch | Rozruch | Kamieñ | Katarzyn | Infrastr | PM000 | Zespó³-W | Blok | Wysoki | Pakiet | L1 |  |  |

| ID | WBS | Activity | Type | Duration | Start | Finish | Predecessors | Complete | Remaining | Planned start | Planned finish | Total float | Free float | AC_Wykonawca | AC_Obiekt | AC_Dyscyplina | AC_Faza | AC_Zakres | AC_Opiekun | AC_Obszar | AC_PP_PM | AC_Zespol | AC_Blok | AC_Priorytet | AC_Pakiet | AC_Poziom | Uwagi harmonogramisty | Rewizja dokumentu |
| --- | --- | --- | --- | --- | --- | --- | --- | --- | --- | --- | --- | --- | --- | --- | --- | --- | --- | --- | --- | --- | --- | --- | --- | --- | --- | --- | --- | --- |
|  | ZAKU | **Zakupy** |  |  | 2025-06-04 | 2027-11-01 |  |  |  |  |  |  |  |  |  |  |  |  |  |  |  |  |  |  |  |  |  |  |
|  | DOSTAWY | **Dostawy** |  |  | 2025-10-07 | 2027-11-01 |  |  |  |  |  |  |  |  |  |  |  |  |  |  |  |  |  |  |  |  |  |  |
| 26CG51-008 |  | Produkcja u dostawcy |  | 278d | 2025-10-07 A | 2027-09-10 | 26CG51-007 | 12% | 243.3d | 2025-10-06 | 2026-10-28 | 254.2d | 0d | Izoterm | 26CG51 | Mechanic | Zakupy | Dostawa | Katarzyn | Infrastr | PM000 | Zespó³-W | Blok | Normalny | Pakiet | L2 |  |  |
| 26CG51-009 |  | Testy FAT |  | 5d | 2027-09-13 | 2027-09-17 | 26CG51-008 |  |  | 2026-10-29 | 2026-11-04 | 27.9d | 0d | Izoterm | 26CG51 | Mechanic | Zakupy | Dostawa | Katarzyn | Infrastr | PM000 | Zespó³-E | Blok | Wysoki | Pakiet | L2 |  |  |
| 26CG51-010 |  | Transport i dostawa na plac budowy |  | 30d | 2027-09-20 | 2027-10-29 | 26CG51-009 |  |  | 2026-11-05 | 2026-12-16 | 27.9d | 0d | Izoterm | 26CG51 | Mechanic | Zakupy | Dostawa | Katarzyn | Infrastr | PM000 | Zespó³-W | Blok | Normalny | Pakiet | L2 | Uzgodnione na koordynacji |  |
| 26CG51-011 |  | KM: Dostawa na budowê – Ogrodzenie i monitoring | milestone | 0d | 2027-11-01 | 2027-11-01 | 26CG51-010 |  |  | 2026-12-17 | 2026-12-17 | 27.9d | 0d | Izoterm | 26CG51 | Mechanic | Zakupy | Kamieñ | Katarzyn | Infrastr | PM000 | Zespó³-W | Blok | Niski | Pakiet | L1 |  | Rev A |
|  | ZAMÓWIENIA | **Zamówienia** |  |  | 2025-06-04 | 2025-10-03 |  |  |  |  |  |  |  |  |  |  |  |  |  |  |  |  |  |  |  |  |  |  |
| 26CG51-005 |  | Zapytanie ofertowe |  | 19d | 2025-06-04 A | 2025-06-30 A | 26CG51-001 SS+20d | 100% |  | 2025-06-05 | 2025-07-01 |  |  | Izoterm | 26CG51 | Mechanic | Zakupy | Dostawa | Katarzyn | Infrastr | PM000 | Zespó³-W | Blok | Niski | Pakiet | L2 |  |  |
| 26CG51-006 |  | Analiza i wybór ofert |  | 14d | 2025-07-07 A | 2025-07-24 A | 26CG51-005 | 100% |  | 2025-07-02 | 2025-07-21 |  |  | Izoterm | 26CG51 | Mechanic | Zakupy | Dostawa | Katarzyn | Infrastr | PM200 | Zespó³-E | Blok | Normalny | Pakiet | L2 |  |  |
| 26CG51-007 |  | Zawarcie umowy / zamówienie |  | 8d | 2025-09-23 A | 2025-10-03 A | 26CG51-006, 26CG51-004 SS, 10YD43-004 (other project) FS+2d, 28BP20-004 (other project) SS+11d | 100% |  | 2025-09-24 | 2025-10-03 |  |  | Izoterm | 26CG51 | Mechanic | Zakupy | Dostawa | Katarzyn | Infrastr | PM000 | Zespó³-W | Blok | Normalny | Pakiet | L1 | Uzgodnione na koordynacji | Rev B |
|  | 28AM31 | **28AM31 – Drogi i place** |  |  | 2025-04-04 | 2027-11-10 |  |  |  |  |  |  |  |  |  |  |  |  |  |  |  |  |  |  |  |  |  |  |
|  | BUDO | **Budowa** |  |  | 2025-11-05 | 2027-11-10 |  |  |  |  |  |  |  |  |  |  |  |  |  |  |  |  |  |  |  |  |  |  |
|  | AKPIA | **AKPiA** |  |  | 2027-06-04 | 2027-06-23 |  |  |  |  |  |  |  |  |  |  |  |  |  |  |  |  |  |  |  |  |  |  |
| 28AM31-104 |  | Monta¿ uk³adów AKPiA |  | 14d | 2027-06-04 | 2027-06-23 | 28AM31-014 SS+5d |  |  | 2027-01-04 | 2027-01-21 | 185.6d | 0d | Automaty | 28AM31 | AKPiA | Budowa | Roboty | Tomasz | Infrastr | PM000 | Zespó³-W | Blok | Normalny | Pakiet | L2 |  |  |
|  | ELEKTRYKA | **Elektryka** |  |  | 2027-06-09 | 2027-10-04 |  |  |  |  |  |  |  |  |  |  |  |  |  |  |  |  |  |  |  |  |  |  |
| 28AM31-074 |  | Pod³¹czenia i pomiary – trasa 10 |  | 9d | 2027-06-09 | 2027-06-21 | 28AM31-073 FF |  |  | 2027-01-07 | 2027-01-19 | 219.6d | 0d | Automaty | 28AM31 | Elektryc | Budowa | Roboty | Tomasz | Infrastr | PM000 | Zespó³-K | Blok | Normalny | Pakiet | L2 |  |  |
| 28AM31-086 |  | Pod³¹czenia i pomiary – trasa 12 |  | 5d | 2027-06-10 | 2027-06-16 | 28AM31-085 FF |  |  | 2027-01-08 | 2027-01-14 | 222.6d | 0d | Automaty | 28AM31 | Elektryc | Budowa | Roboty | Tomasz | Infrastr | PM000 | Zespó³-K | Blok | Normalny | Pakiet | L2 |  |  |
| 28AM31-025 |  | Uk³adanie kabli – trasa 02 |  | 6d | 2027-06-11 | 2027-06-18 | 28AM31-014 SS+10d |  |  | 2027-01-11 | 2027-01-18 | 188.6d | 0d | Automaty | 28AM31 | Elektryc | Budowa | Roboty | Tomasz | Infrastr | PM000 | Zespó³-W | Blok | Normalny | Pakiet | L2 |  | Rev C |
| 28AM31-026 |  | Pod³¹czenia i pomiary – trasa 02 |  | 6d | 2027-06-11 | 2027-06-18 | 28AM31-025 FF |  |  | 2027-01-11 | 2027-01-18 | 188.6d | 0d | Automaty | 28AM31 | Elektryc | Budowa | Roboty | Tomasz | Infrastr | PM000 | Zespó³-K | Blok | Normalny | Pakiet | L2 |  |  |
| 28AM31-037 |  | Uk³adanie kabli – trasa 04 |  | 13d | 2027-06-11 | 2027-06-29 | 28AM31-014 SS+10d |  |  | 2027-01-11 | 2027-01-27 | 213.6d | 0d | Automaty | 28AM31 | Elektryc | Budowa | Roboty | Tomasz | Infrastr | PM000 | Zespó³-W | Blok | Normalny | Pakiet | L2 |  |  |
| 28AM31-061 |  | Uk³adanie kabli – trasa 08 |  | 20d | 2027-06-11 | 2027-07-08 | 28AM31-014 SS+10d |  |  | 2027-01-11 | 2027-02-05 | 206.6d | 0d | Automaty | 28AM31 | Elektryc | Budowa | Roboty | Tomasz | Infrastr | PM000 | Zespó³-K | Blok | Niski | Pakiet | L2 |  |  |
| 28AM31-073 |  | Uk³adanie kabli – trasa 10 |  | 7d | 2027-06-11 | 2027-06-21 | 28AM31-014 SS+10d |  |  | 2027-01-11 | 2027-01-19 | 219.6d | 0d | Automaty | 28AM31 | Elektryc | Budowa | Roboty | Tomasz | Infrastr | PM000 | Zespó³-W | Blok | Wysoki | Pakiet | L2 |  | Rev B |
| 28AM31-085 |  | Uk³adanie kabli – trasa 12 |  | 4d | 2027-06-11 | 2027-06-16 | 28AM31-014 SS+10d |  |  | 2027-01-11 | 2027-01-14 | 222.6d | 0d | Automaty | 28AM31 | Elektryc | Budowa | Roboty | Tomasz | Infrastr | PM000 | Zespó³-W | Blok | Normalny | Pakiet | L2 |  |  |
| 28AM31-097 |  | Uk³adanie kabli – trasa 14 |  | 12d | 2027-06-11 | 2027-06-28 | 28AM31-014 SS+10d |  |  | 2027-01-11 | 2027-01-26 | 182.6d | 0d | Automaty | 28AM31 | Elektryc | Budowa | Roboty | Tomasz | Infrastr | PM000 | Zespó³-W | Blok | Normalny | Pakiet | L2 | Bez uwag |  |
| 28AM31-098 |  | Pod³¹czenia i pomiary – trasa 14 |  | 4d | 2027-06-23 | 2027-06-28 | 28AM31-097 FF |  |  | 2027-01-21 | 2027-01-26 | 182.6d | 0d | Automaty | 28AM31 | Elektryc | Budowa | Roboty | Tomasz | Infrastr | PM000 | Zespó³-W | Blok | Normalny | Pakiet | L2 |  |  |
| 28AM31-038 |  | Pod³¹czenia i pomiary – trasa 04 |  | 4d | 2027-06-24 | 2027-06-29 | 28AM31-037 FF |  |  | 2027-01-22 | 2027-01-27 | 213.6d | 0d | Automaty | 28AM31 | Elektryc | Budowa | Roboty | Tomasz | Infrastr | PM000 | Zespó³-W | Blok | Niski | Pakiet | L2 |  |  |
| 28AM31-062 |  | Pod³¹czenia i pomiary – trasa 08 |  | 4d | 2027-07-05 | 2027-07-08 | 28AM31-061 FF |  |  | 2027-02-02 | 2027-02-05 | 206.6d | 0d | Automaty | 28AM31 | Elektryc | Budowa | Roboty | Tomasz | Infrastr | PM000 | Zespó³-K | Blok | Normalny | Pakiet | L2 | Uzgodnione na koordynacji |  |
| 28AM31-049 |  | Uk³adanie kabli – trasa 06 |  | 12d | 2027-09-17 | 2027-10-04 | 28AM31-014 SS+10d |  |  | 2027-01-11 | 2027-01-26 | 144.6d | 0d | Automaty | 28AM31 | Elektryc | Budowa | Roboty | Tomasz | Infrastr | PM000 | Zespó³-I | Blok | Normalny | Pakiet | L2 | Ryzyko opóŸnienia | Rev B |
| 28AM31-050 |  | Pod³¹czenia i pomiary – trasa 06 |  | 8d | 2027-09-23 | 2027-10-04 | 28AM31-049 FF |  |  | 2027-01-15 | 2027-01-26 | 144.6d | 0d | Automaty | 28AM31 | Elektryc | Budowa | Roboty | Tomasz | Infrastr | PM000 | Zespó³-W | Blok | Normalny | Pakiet | L2 |  |  |

| ID | WBS | Activity | Type | Duration | Start | Finish | Predecessors | Complete | Planned start | Planned finish | Total float | Free float | Calendar | Uwagi harmonogramisty | AC_Wykonawca | AC_Obiekt | AC_Dyscyplina | AC_Faza | AC_Zakres | AC_Opiekun | AC_Obszar | AC_PP_PM | AC_Zespol | AC_Blok | AC_Priorytet | AC_Pakiet | AC_Poziom | Rewizja dokumentu |
| --- | --- | --- | --- | --- | --- | --- | --- | --- | --- | --- | --- | --- | --- | --- | --- | --- | --- | --- | --- | --- | --- | --- | --- | --- | --- | --- | --- | --- |
|  | MONTA¯ | **Monta¿** |  |  | 2025-12-15 | 2027-07-27 |  |  |  |  |  |  |  |  |  |  |  |  |  |  |  |  |  |  |  |  |  |  |
| 28AM31-013 |  | Monta¿ konstrukcji stalowych |  | 41d | 2025-12-15 A | 2026-02-11 A | 28AM31-012 | 100% | 2025-12-11 | 2026-02-05 |  |  |  | Uzgodnione na koordynacji | Automaty | 28AM31 | Mechanic | Budowa | Roboty | Tomasz | Infrastr | PM000 | Zespó³-E | Blok | Normalny | Pakiet | L2 |  |
| 28AM31-014 |  | Monta¿ urz¹dzeñ g³ównych |  | 42d | 2027-05-28 | 2027-07-26 | 28AM31-013, 28AM31-011 |  | 2026-12-28 | 2027-02-23 | 162.6d | 0d |  | Do weryfikacji z wykonawc¹ | Automaty | 28AM31 | Mechanic | Budowa | Roboty | Tomasz | Infrastr | PM000 | Zespó³-K | Blok | Niski | Pakiet | L2 | Rev B |
| 28AM31-105 |  | KM: Zakoñczenie monta¿u – Drogi i place | milestone | 0d | 2027-07-27 | 2027-07-27 | 28AM31-096, 28AM31-098, 28AM31-103, 28AM31-104, 28AM31-014 |  | 2027-02-24 | 2027-02-24 | 162.6d | 0d |  |  | Automaty | 28AM31 | Mechanic | Budowa | Kamieñ | Tomasz | Infrastr | PM000 | Zespó³-W | Blok | Normalny | Pakiet | L2 |  |
|  | ROBOTY BUD | **Roboty budowlane** |  |  | 2025-11-05 | 2025-12-16 |  |  |  |  |  |  |  |  |  |  |  |  |  |  |  |  |  |  |  |  |  |  |
| 28AM31-012 |  | Fundamenty i roboty ziemne |  | 27d | 2025-11-05 A | 2025-12-16 A | 28AM31-007 FS+20d | 100% | 2025-11-04 | 2025-12-10 |  |  |  |  | Automaty | 28AM31 | Budowlan | Budowa | Roboty | Tomasz | Infrastr | PM000 | Zespó³-K | Blok | Niski | Pakiet | L2 |  |
|  | RUROCI¥GI | **Ruroci¹gi** |  |  | 2025-12-11 | 2027-11-10 |  |  |  |  |  |  |  |  |  |  |  |  |  |  |  |  |  |  |  |  |  |  |
|  | SEKCJA 01 | **Sekcja 01** |  |  | 2025-12-11 | 2027-06-24 |  |  |  |  |  |  |  |  |  |  |  |  |  |  |  |  |  |  |  |  |  |  |
| 28AM31-015 |  | Prefabrykacja ruroci¹gów – Sekcja 01 |  | 12.2d | 2025-12-11 A | 2025-12-30 A | 28AM31-012 | 100% | 2025-12-11 | 2025-12-26 |  |  |  | Bez uwag | Automaty | 28AM31 | Ruroci¹g | Budowa | Roboty | Tomasz | Infrastr | PM000 | Zespó³-K | Blok | Normalny | Pakiet | L2 |  |
| 28AM31-016 |  | Monta¿ ruroci¹gów – Sekcja 01 |  | 8.2d | 2027-05-28 | 2027-06-08 | 28AM31-015, 28AM31-014 SS |  | 2026-12-28 | 2027-01-06 | 184.4d | 0d |  |  | Automaty | 28AM31 | Ruroci¹g | Budowa | Roboty | Tomasz | Infrastr | PM000 | Zespó³-W | Blok | Normalny | Pakiet | L2 | Rev A |
| 28AM31-017 |  | Próba ciœnieniowa – Sekcja 01 |  | 6d | 2027-06-09 | 2027-06-16 | 28AM31-016 |  | 2027-01-07 | 2027-01-14 | 184.4d | 0d |  |  | Automaty | 28AM31 | Ruroci¹g | Budowa | Roboty | Tomasz | Infrastr | PM000 | Zespó³-W | Blok | Wysoki | Pakiet | L2 | Rev A |
| 28AM31-018 |  | Izolacje – Sekcja 01 |  | 4d | 2027-06-17 | 2027-06-22 | 28AM31-017 |  | 2027-01-15 | 2027-01-20 | 184.4d | 0d |  |  | Automaty | 28AM31 | Ruroci¹g | Budowa | Roboty | Tomasz | Infrastr | PM000 | Zespó³-K | Blok | Niski | Pakiet | L2 |  |
| 28AM31-019 |  | Malowanie i oznakowanie – Sekcja 01 |  | 3d | 2027-06-22 | 2027-06-24 | 28AM31-018 FF+2d |  | 2027-01-20 | 2027-01-22 | 184.4d | 0d |  |  | Automaty | 28AM31 | Ruroci¹g | Budowa | Roboty | Tomasz | Infrastr | PM000 | Zespó³-K | Blok | Wysoki | Pakiet | L2 | Rev A |
|  | SEKCJA 02 | **Sekcja 02** |  |  | 2025-12-18 | 2027-07-05 |  |  |  |  |  |  |  |  |  |  |  |  |  |  |  |  |  |  |  |  |  |  |
| 28AM31-020 |  | Prefabrykacja ruroci¹gów – Sekcja 02 |  | 4.4d | 2025-12-18 A | 2025-12-23 A | 28AM31-012, 28AM31-015 SS+5d | 100% |  |  |  |  | Kalendarz 6-dniowy |  | Automaty | 28AM31 | Ruroci¹g | Budowa | Roboty | Tomasz | Infrastr | PM000 | Zespó³-I | Blok | Normalny | Pakiet | L2 |  |
| 28AM31-021 |  | Monta¿ ruroci¹gów – Sekcja 02 |  | 12.9d | 2027-06-01 | 2027-06-16 | 28AM31-020, 28AM31-014 SS+2d |  | 2026-12-30 | 2027-01-14 | 176.7d | 0d |  |  | Automaty | 28AM31 | Ruroci¹g | Budowa | Roboty | Tomasz | Infrastr | PM000 | Zespó³-W | Blok | Wysoki | Pakiet | L2 | Rev A |
| 28AM31-022 |  | Próba ciœnieniowa – Sekcja 02 |  | 2d | 2027-06-17 | 2027-06-18 | 28AM31-021 |  | 2027-01-15 | 2027-01-18 | 176.7d | 0d | Kalendarz 6-dniowy |  | Automaty | 28AM31 | Ruroci¹g | Budowa | Roboty | Tomasz | Infrastr | PM000 | Zespó³-W | Blok | Krytyczn | Pakiet | L2 | Rev A |
| 28AM31-023 |  | Izolacje – Sekcja 02 |  | 9d | 2027-06-21 | 2027-07-01 | 28AM31-022 |  | 2027-01-19 | 2027-01-29 | 176.7d | 0d |  | Uzgodnione na koordynacji | Automaty | 28AM31 | Ruroci¹g | Budowa | Roboty | Tomasz | Infrastr | PM000 | Zespó³-W | Blok | Normalny | Pakiet | L2 |  |
| 28AM31-024 |  | Malowanie i oznakowanie – Sekcja 02 |  | 3d | 2027-07-01 | 2027-07-05 | 28AM31-023 FF+2d |  | 2027-01-29 | 2027-02-02 | 176.7d | 0d |  |  | Automaty | 28AM31 | Ruroci¹g | Budowa | Roboty | Tomasz | Infrastr | PM000 | Zespó³-K | Blok | Normalny | Pakiet | L2 |  |
|  | SEKCJA 03 | **Sekcja 03** |  |  | 2025-12-26 | 2027-07-15 |  |  |  |  |  |  |  |  |  |  |  |  |  |  |  |  |  |  |  |  |  |  |
|  | PODSEKCJA | **Podsekcja 03.A** |  |  | 2025-12-26 | 2027-07-15 |  |  |  |  |  |  |  |  |  |  |  |  |  |  |  |  |  |  |  |  |  |  |
| 28AM31-027 |  | Prefabrykacja ruroci¹gów – Sekcja 03 |  | 12.5d | 2025-12-26 A | 2026-01-15 A | 28AM31-012, 28AM31-020 SS+5d | 100% | 2025-12-25 | 2026-01-09 |  |  |  |  | Automaty | 28AM31 | Ruroci¹g | Budowa | Roboty | Tomasz | Infrastr | PM000 | Zespó³-W | Blok | Niski | Pakiet | L2 |  |
| 28AM31-028 |  | Monta¿ ruroci¹gów – Sekcja 03 |  | 14.9d | 2027-06-07 | 2027-06-24 | 28AM31-027, 28AM31-014 SS+6d |  | 2027-01-05 | 2027-01-22 | 200.7d | 0d |  | Czeka na dostawê | Automaty | 28AM31 | Ruroci¹g | Budowa | Roboty | Tomasz | Infrastr | PM000 | Zespó³-K | Blok | Normalny | Pakiet | L2 |  |
| 28AM31-029 |  | Próba ciœnieniowa – Sekcja 03 |  | 4d | 2027-06-25 | 2027-06-30 | 28AM31-028 |  | 2027-01-25 | 2027-01-28 | 200.7d | 0d |  |  | Automaty | 28AM31 | Ruroci¹g | Budowa | Roboty | Tomasz | Infrastr | PM000 | Zespó³-W | Blok | Normalny | Pakiet | L2 |  |
| 28AM31-030 |  | Izolacje – Sekcja 03 |  | 9d | 2027-07-01 | 2027-07-13 | 28AM31-029 |  | 2027-01-29 | 2027-02-10 | 200.7d | 0d |  | Bez uwag | Automaty | 28AM31 | Ruroci¹g | Budowa | Roboty | Tomasz | Infrastr | PM000 | Zespó³-W | Blok | Niski | Pakiet | L2 | Rev B |
| 28AM31-031 |  | Malowanie i oznakowanie – Sekcja 03 |  | 4d | 2027-07-12 | 2027-07-15 | 28AM31-030 FF+2d |  | 2027-02-09 | 2027-02-12 | 200.7d | 0d |  |  | Automaty | 28AM31 | Ruroci¹g | Budowa | Roboty | Tomasz | Infrastr | PM000 | Zespó³-W | Blok | Normalny | Pakiet | L2 |  |

| ID | WBS | Activity | Duration | Start | Finish | Predecessors | Complete | Planned start | Planned finish | Total float | Free float | Calendar | Rewizja dokumentu | AC_Wykonawca | AC_Obiekt | AC_Dyscyplina | AC_Faza | AC_Zakres | AC_Opiekun | AC_Obszar | AC_PP_PM | AC_Zespol | AC_Blok | AC_Priorytet | AC_Pakiet | AC_Poziom | Uwagi harmonogramisty |
| --- | --- | --- | --- | --- | --- | --- | --- | --- | --- | --- | --- | --- | --- | --- | --- | --- | --- | --- | --- | --- | --- | --- | --- | --- | --- | --- | --- |
|  | SEKCJA 04 | **Sekcja 04** |  | 2026-01-02 | 2027-07-08 |  |  |  |  |  |  |  |  |  |  |  |  |  |  |  |  |  |  |  |  |  |  |
| 28AM31-032 |  | Prefabrykacja ruroci¹gów – Sekcja 04 | 6.1d | 2026-01-02 A | 2026-01-09 A | 28AM31-012, 28AM31-027 SS+5d | 100% | 2026-01-01 | 2026-01-08 |  |  |  | Rev A | Automaty | 28AM31 | Ruroci¹g | Budowa | Roboty | Tomasz | Infrastr | PM000 | Zespó³-K | Blok | Normalny | Pakiet | L2 |  |
| 28AM31-033 |  | Monta¿ ruroci¹gów – Sekcja 04 | 8.5d | 2027-06-04 | 2027-06-15 | 28AM31-032, 28AM31-014 SS+5d |  | 2027-01-04 | 2027-01-13 | 206.1d | 0d |  |  | Automaty | 28AM31 | Ruroci¹g | Budowa | Roboty | Tomasz | Infrastr | PM000 | Zespó³-W | Blok | Normalny | Pakiet | L2 |  |
| 28AM31-034 |  | Próba ciœnieniowa – Sekcja 04 | 6d | 2027-06-16 | 2027-06-23 | 28AM31-033 |  | 2027-01-14 | 2027-01-21 | 206.1d | 0d |  |  | Automaty | 28AM31 | Ruroci¹g | Budowa | Roboty | Tomasz | Infrastr | PM000 | Zespó³-W | Blok | Normalny | Pakiet | L2 |  |
| 28AM31-035 |  | Izolacje – Sekcja 04 | 9d | 2027-06-24 | 2027-07-06 | 28AM31-034 |  | 2027-01-22 | 2027-02-03 | 206.1d | 0d |  | Rev B | Automaty | 28AM31 | Ruroci¹g | Budowa | Roboty | Tomasz | Infrastr | PM000 | Zespó³-W | Blok | Normalny | Pakiet | L2 |  |
| 28AM31-036 |  | Malowanie i oznakowanie – Sekcja 04 | 8d | 2027-06-29 | 2027-07-08 | 28AM31-035 FF+2d |  | 2027-01-27 | 2027-02-05 | 206.1d | 0d |  |  | Automaty | 28AM31 | Ruroci¹g | Budowa | Roboty | Tomasz | Infrastr | PM000 | Zespó³-W | Blok | Normalny | Pakiet | L2 | Czeka na dostawê |
|  | SEKCJA 05 | **Sekcja 05** |  | 2026-01-13 | 2027-11-04 |  |  |  |  |  |  |  |  |  |  |  |  |  |  |  |  |  |  |  |  |  |  |
| 28AM31-039 |  | Prefabrykacja ruroci¹gów – Sekcja 05 | 6.4d | 2026-01-13 A | 2026-01-23 A | 28AM31-012, 28AM31-032 SS+5d | 100% | 2026-01-08 | 2026-01-15 |  |  |  |  | Automaty | 28AM31 | Ruroci¹g | Budowa | Roboty | Tomasz | Infrastr | PM000 | Zespó³-W | Blok | Normalny | Pakiet | L2 |  |
| 28AM31-040 |  | Monta¿ ruroci¹gów – Sekcja 05 | 8d | 2027-10-11 | 2027-10-20 | 28AM31-039, 28AM31-014 SS+7d |  | 2027-01-06 | 2027-01-15 | 121.6d | 0d |  | Rev B | Automaty | 28AM31 | Ruroci¹g | Budowa | Roboty | Tomasz | Infrastr | PM100 | Zespó³-I | Blok | Normalny | Pakiet | L2 | Ryzyko opóŸnienia |
| 28AM31-041 |  | Próba ciœnieniowa – Sekcja 05 | 2d | 2027-10-21 | 2027-10-22 | 28AM31-040 |  | 2027-01-18 | 2027-01-19 | 121.6d | 0d |  | Rev C | Automaty | 28AM31 | Ruroci¹g | Budowa | Roboty | Tomasz | Infrastr | PM000 | Zespó³-W | Blok | Niski | Pakiet | L2 |  |
| 28AM31-042 |  | Izolacje – Sekcja 05 | 7d | 2027-10-25 | 2027-11-02 | 28AM31-041 |  | 2027-01-20 | 2027-01-28 | 121.6d | 0d |  |  | Automaty | 28AM31 | Ruroci¹g | Budowa | Roboty | Tomasz | Infrastr | PM000 | Zespó³-K | Blok | Normalny | Pakiet | L2 |  |
| 28AM31-043 |  | Malowanie i oznakowanie – Sekcja 05 | 2d | 2027-11-03 | 2027-11-04 | 28AM31-042 FF+2d |  | 2027-01-29 | 2027-02-01 | 121.6d | 0d |  |  | Automaty | 28AM31 | Ruroci¹g | Budowa | Roboty | Tomasz | Infrastr | PM000 | Zespó³-K | Blok | Krytyczn | Pakiet | L2 | Ryzyko opóŸnienia |
|  | SEKCJA 06 | **Sekcja 06** |  | 2026-01-20 | 2027-07-20 |  |  |  |  |  |  |  |  |  |  |  |  |  |  |  |  |  |  |  |  |  |  |
|  | PODSEKCJA | **Podsekcja 06.A** |  | 2026-01-20 | 2027-07-20 |  |  |  |  |  |  |  |  |  |  |  |  |  |  |  |  |  |  |  |  |  |  |
| 28AM31-044 |  | Prefabrykacja ruroci¹gów – Sekcja 06 | 5.1d | 2026-01-20 A | 2026-01-26 A | 28AM31-012, 28AM31-039 SS+5d | 100% | 2026-01-15 | 2026-01-21 |  |  |  |  | Automaty | 28AM31 | Ruroci¹g | Budowa | Roboty | Tomasz | Infrastr | PM000 | Zespó³-K | Blok | Normalny | Pakiet | L2 | Bez uwag |
| 28AM31-045 |  | Monta¿ ruroci¹gów – Sekcja 06 | 16.4d | 2027-06-09 | 2027-06-30 | 28AM31-044, 28AM31-014 SS+8d |  | 2027-01-07 | 2027-01-28 | 198.2d | 0d |  | Rev A | Automaty | 28AM31 | Ruroci¹g | Budowa | Roboty | Tomasz | Infrastr | PM000 | Zespó³-W | Blok | Normalny | Pakiet | L2 | Bez uwag |
| 28AM31-046 |  | Próba ciœnieniowa – Sekcja 06 | 2d | 2027-07-01 | 2027-07-02 | 28AM31-045 |  | 2027-01-29 | 2027-02-01 | 198.2d | 0d |  |  | Automaty | 28AM31 | Ruroci¹g | Budowa | Roboty | Tomasz | Infrastr | PM000 | Zespó³-W | Blok | Normalny | Pakiet | L2 | Bez uwag |
| 28AM31-047 |  | Izolacje – Sekcja 06 | 10d | 2027-07-05 | 2027-07-16 | 28AM31-046 |  | 2027-02-02 | 2027-02-15 | 198.2d | 0d |  |  | Automaty | 28AM31 | Ruroci¹g | Budowa | Roboty | Tomasz | Infrastr | PM000 | Zespó³-W | Blok | Normalny | Pakiet | L2 | Czeka na dostawê |
| 28AM31-048 |  | Malowanie i oznakowanie – Sekcja 06 | 5d | 2027-07-14 | 2027-07-20 | 28AM31-047 FF+2d |  | 2027-02-11 | 2027-02-17 | 198.2d | 0d |  |  | Automaty | 28AM31 | Ruroci¹g | Budowa | Roboty | Tomasz | Infrastr | PM000 | Zespó³-W | Blok | Normalny | Pakiet | L2 |  |
|  | SEKCJA 07 | **Sekcja 07** |  | 2026-01-23 | 2027-07-13 |  |  |  |  |  |  |  |  |  |  |  |  |  |  |  |  |  |  |  |  |  |  |
| 28AM31-051 |  | Prefabrykacja ruroci¹gów – Sekcja 07 | 14.5d | 2026-01-23 A | 2026-02-12 A | 28AM31-012, 28AM31-044 SS+5d | 100% | 2026-01-22 | 2026-02-10 |  |  | Kalendarz 6-dniowy |  | Automaty | 28AM31 | Ruroci¹g | Budowa | Roboty | Tomasz | Infrastr | PM000 | Zespó³-W | Blok | Krytyczn | Pakiet | L2 |  |
| 28AM31-052 |  | Monta¿ ruroci¹gów – Sekcja 07 | 10.5d | 2027-06-08 | 2027-06-21 | 28AM31-051, 28AM31-014 SS+7d |  | 2027-01-06 | 2027-01-19 | 203.1d | 0d |  |  | Automaty | 28AM31 | Ruroci¹g | Budowa | Roboty | Tomasz | Infrastr | PM000 | Zespó³-W | Blok | Normalny | Pakiet | L2 | Ryzyko opóŸnienia |
| 28AM31-053 |  | Próba ciœnieniowa – Sekcja 07 | 6d | 2027-06-22 | 2027-06-29 | 28AM31-052 |  | 2027-01-20 | 2027-01-27 | 203.1d | 0d |  |  | Automaty | 28AM31 | Ruroci¹g | Budowa | Roboty | Tomasz | Infrastr | PM000 | Zespó³-W | Blok | Normalny | Pakiet | L2 | Uzgodnione na koordynacji |
| 28AM31-054 |  | Izolacje – Sekcja 07 | 8d | 2027-06-30 | 2027-07-09 | 28AM31-053 |  | 2027-01-28 | 2027-02-08 | 203.1d | 0d |  | Rev B | Automaty | 28AM31 | Ruroci¹g | Budowa | Roboty | Tomasz | Infrastr | PM000 | Zespó³-K | Blok | Normalny | Pakiet | L2 |  |
| 28AM31-055 |  | Malowanie i oznakowanie – Sekcja 07 | 5d | 2027-07-07 | 2027-07-13 | 28AM31-054 FF+2d |  | 2027-02-04 | 2027-02-10 | 203.1d | 0d |  |  | Automaty | 28AM31 | Ruroci¹g | Budowa | Roboty | Tomasz | Infrastr | PM000 | Zespó³-W | Blok | Normalny | Pakiet | L2 |  |

| ID | WBS | Activity | Duration | Start | Finish | Predecessors | Complete | Planned start | Planned finish | Total float | Free float | Uwagi harmonogramisty | AC_Wykonawca | AC_Obiekt | AC_Dyscyplina | AC_Faza | AC_Zakres | AC_Opiekun | AC_Obszar | AC_PP_PM | AC_Zespol | AC_Blok | AC_Priorytet | AC_Pakiet | AC_Poziom | Rewizja dokumentu |
| --- | --- | --- | --- | --- | --- | --- | --- | --- | --- | --- | --- | --- | --- | --- | --- | --- | --- | --- | --- | --- | --- | --- | --- | --- | --- | --- |
|  | SEKCJA 08 | **Sekcja 08** |  | 2026-02-03 | 2027-07-05 |  |  |  |  |  |  |  |  |  |  |  |  |  |  |  |  |  |  |  |  |  |
| 28AM31-056 |  | Prefabrykacja ruroci¹gów – Sekcja 08 | 6.5d | 2026-02-03 A | 2026-02-10 A | 28AM31-012, 28AM31-051 SS+5d | 100% | 2026-01-29 | 2026-02-05 |  |  | Bez uwag | Automaty | 28AM31 | Ruroci¹g | Budowa | Roboty | Tomasz | Infrastr | PM000 | Zespó³-K | Blok | Normalny | Pakiet | L2 |  |
| 28AM31-057 |  | Monta¿ ruroci¹gów – Sekcja 08 | 11.6d | 2027-05-31 | 2027-06-14 | 28AM31-056, 28AM31-014 SS+1d |  | 2026-12-29 | 2027-01-12 | 209d | 0d | Czeka na dostawê | Automaty | 28AM31 | Ruroci¹g | Budowa | Roboty | Tomasz | Infrastr | PM000 | Zespó³-K | Blok | Normalny | Pakiet | L2 |  |
| 28AM31-058 |  | Próba ciœnieniowa – Sekcja 08 | 2d | 2027-06-15 | 2027-06-16 | 28AM31-057 |  | 2027-01-13 | 2027-01-14 | 209d | 0d |  | Automaty | 28AM31 | Ruroci¹g | Budowa | Roboty | Tomasz | Infrastr | PM000 | Zespó³-K | Blok | Krytyczn | Pakiet | L2 |  |
| 28AM31-059 |  | Izolacje – Sekcja 08 | 11d | 2027-06-17 | 2027-07-01 | 28AM31-058 |  | 2027-01-15 | 2027-01-29 | 209d | 0d |  | Automaty | 28AM31 | Ruroci¹g | Budowa | Roboty | Tomasz | Infrastr | PM000 | Zespó³-W | Blok | Normalny | Pakiet | L2 |  |
| 28AM31-060 |  | Malowanie i oznakowanie – Sekcja 08 | 5d | 2027-06-29 | 2027-07-05 | 28AM31-059 FF+2d |  | 2027-01-27 | 2027-02-02 | 209d | 0d |  | Automaty | 28AM31 | Ruroci¹g | Budowa | Roboty | Tomasz | Infrastr | PM000 | Zespó³-W | Blok | Normalny | Pakiet | L2 |  |
|  | SEKCJA 09 | **Sekcja 09** |  | 2026-02-10 | 2027-10-22 |  |  |  |  |  |  |  |  |  |  |  |  |  |  |  |  |  |  |  |  |  |
|  | PODSEKCJA | **Podsekcja 09.A** |  | 2026-02-10 | 2027-10-22 |  |  |  |  |  |  |  |  |  |  |  |  |  |  |  |  |  |  |  |  |  |
| 28AM31-063 |  | Prefabrykacja ruroci¹gów – Sekcja 09 | 9.8d | 2026-02-10 A | 2026-02-23 A | 28AM31-012, 28AM31-056 SS+5d | 100% | 2026-02-05 | 2026-02-17 |  |  |  | Automaty | 28AM31 | Ruroci¹g | Budowa | Roboty | Tomasz | Infrastr | PM000 | Zespó³-W | Blok | Niski | Pakiet | L2 | Rev B |
| 28AM31-064 |  | Monta¿ ruroci¹gów – Sekcja 09 | 20.5d | 2027-06-10 | 2027-07-07 | 28AM31-063, 28AM31-014 SS+9d |  | 2027-01-08 | 2027-02-04 | 191.1d | 0d |  | Automaty | 28AM31 | Ruroci¹g | Budowa | Roboty | Tomasz | Infrastr | PM000 | Zespó³-K | Blok | Normalny | Pakiet | L2 | Rev C |
| 28AM31-065 |  | Próba ciœnieniowa – Sekcja 09 | 2d | 2027-07-08 | 2027-07-09 | 28AM31-064 |  | 2027-02-05 | 2027-02-08 | 191.1d | 0d |  | Automaty | 28AM31 | Ruroci¹g | Budowa | Roboty | Tomasz | Infrastr | PM000 | Zespó³-K | Blok | Normalny | Pakiet | L2 | Rev A |
| 28AM31-066 |  | Izolacje – Sekcja 09 | 12d | 2027-10-05 | 2027-10-20 | 28AM31-065 |  | 2027-02-09 | 2027-02-24 | 130.6d | 0d |  | Automaty | 28AM31 | Ruroci¹g | Budowa | Roboty | Tomasz | Infrastr | PM100 | Zespó³-I | Blok | Normalny | Pakiet | L2 |  |
| 28AM31-067 |  | Malowanie i oznakowanie – Sekcja 09 | 3d | 2027-10-20 | 2027-10-22 | 28AM31-066 FF+2d |  | 2027-02-24 | 2027-02-26 | 130.6d | 0d | Bez uwag | Automaty | 28AM31 | Ruroci¹g | Budowa | Roboty | Tomasz | Infrastr | PM000 | Zespó³-W | Blok | Normalny | Pakiet | L2 |  |
|  | SEKCJA 10 | **Sekcja 10** |  | 2026-02-13 | 2027-07-16 |  |  |  |  |  |  |  |  |  |  |  |  |  |  |  |  |  |  |  |  |  |
| 28AM31-068 |  | Prefabrykacja ruroci¹gów – Sekcja 10 | 7.5d | 2026-02-13 A | 2026-02-24 A | 28AM31-012, 28AM31-063 SS+5d | 100% | 2026-02-12 | 2026-02-20 |  |  |  | Automaty | 28AM31 | Ruroci¹g | Budowa | Roboty | Tomasz | Infrastr | PM000 | Zespó³-K | Blok | Krytyczn | Pakiet | L2 | Rev A |
| 28AM31-069 |  | Monta¿ ruroci¹gów – Sekcja 10 | 11.3d | 2027-06-08 | 2027-06-22 | 28AM31-068, 28AM31-014 SS+7d |  | 2027-01-06 | 2027-01-20 | 200.3d | 0d |  | Automaty | 28AM31 | Ruroci¹g | Budowa | Roboty | Tomasz | Infrastr | PM000 | Zespó³-W | Blok | Normalny | Pakiet | L2 |  |
| 28AM31-070 |  | Próba ciœnieniowa – Sekcja 10 | 4d | 2027-06-23 | 2027-06-28 | 28AM31-069 |  | 2027-01-21 | 2027-01-26 | 200.3d | 0d |  | Automaty | 28AM31 | Ruroci¹g | Budowa | Roboty | Tomasz | Infrastr | PM000 | Zespó³-K | Blok | Normalny | Pakiet | L2 |  |
| 28AM31-071 |  | Izolacje – Sekcja 10 | 12d | 2027-06-29 | 2027-07-14 | 28AM31-070 |  | 2027-01-27 | 2027-02-11 | 200.3d | 0d |  | Automaty | 28AM31 | Ruroci¹g | Budowa | Roboty | Tomasz | Infrastr | PM000 | Zespó³-W | Blok | Niski | Pakiet | L2 |  |
| 28AM31-072 |  | Malowanie i oznakowanie – Sekcja 10 | 5d | 2027-07-12 | 2027-07-16 | 28AM31-071 FF+2d |  | 2027-02-09 | 2027-02-15 | 200.3d | 0d |  | Automaty | 28AM31 | Ruroci¹g | Budowa | Roboty | Tomasz | Infrastr | PM000 | Zespó³-W | Blok | Normalny | Pakiet | L2 |  |
|  | SEKCJA 11 | **Sekcja 11** |  | 2026-02-20 | 2027-07-09 |  |  |  |  |  |  |  |  |  |  |  |  |  |  |  |  |  |  |  |  |  |
| 28AM31-075 |  | Prefabrykacja ruroci¹gów – Sekcja 11 | 5d | 2026-02-20 A | 2026-02-27 A | 28AM31-012, 28AM31-068 SS+5d | 100% | 2026-02-19 | 2026-02-25 |  |  |  | Automaty | 28AM31 | Ruroci¹g | Budowa | Roboty | Tomasz | Infrastr | PM000 | Zespó³-W | Blok | Krytyczn | Pakiet | L2 | Rev B |
| 28AM31-076 |  | Monta¿ ruroci¹gów – Sekcja 11 | 9.1d | 2027-06-04 | 2027-06-16 | 28AM31-075, 28AM31-014 SS+5d |  | 2027-01-04 | 2027-01-14 | 205.5d | 0d |  | Automaty | 28AM31 | Ruroci¹g | Budowa | Roboty | Tomasz | Infrastr | PM000 | Zespó³-W | Blok | Normalny | Pakiet | L2 | Rev B |
| 28AM31-077 |  | Próba ciœnieniowa – Sekcja 11 | 5d | 2027-06-17 | 2027-06-23 | 28AM31-076 |  | 2027-01-15 | 2027-01-21 | 205.5d | 0d |  | Automaty | 28AM31 | Ruroci¹g | Budowa | Roboty | Tomasz | Infrastr | PM000 | Zespó³-E | Blok | Normalny | Pakiet | L2 |  |
| 28AM31-078 |  | Izolacje – Sekcja 11 | 10d | 2027-06-24 | 2027-07-07 | 28AM31-077 |  | 2027-01-22 | 2027-02-04 | 205.5d | 0d | Bez uwag | Automaty | 28AM31 | Ruroci¹g | Budowa | Roboty | Tomasz | Infrastr | PM000 | Zespó³-K | Blok | Krytyczn | Pakiet | L2 |  |
| 28AM31-079 |  | Malowanie i oznakowanie – Sekcja 11 | 4d | 2027-07-06 | 2027-07-09 | 28AM31-078 FF+2d |  | 2027-02-03 | 2027-02-08 | 205.5d | 0d | Czeka na dostawê | Automaty | 28AM31 | Ruroci¹g | Budowa | Roboty | Tomasz | Infrastr | PM000 | Zespó³-W | Blok | Niski | Pakiet | L2 |  |

| ID | WBS | Activity | Duration | Start | Finish | Predecessors | Complete | Planned start | Planned finish | Total float | Free float | Calendar | Rewizja dokumentu | AC_Wykonawca | AC_Obiekt | AC_Dyscyplina | AC_Faza | AC_Zakres | AC_Opiekun | AC_Obszar | AC_PP_PM | AC_Zespol | AC_Blok | AC_Priorytet | AC_Pakiet | AC_Poziom | Uwagi harmonogramisty |
| --- | --- | --- | --- | --- | --- | --- | --- | --- | --- | --- | --- | --- | --- | --- | --- | --- | --- | --- | --- | --- | --- | --- | --- | --- | --- | --- | --- |
|  | SEKCJA 12 | **Sekcja 12** |  | 2026-03-03 | 2027-07-21 |  |  |  |  |  |  |  |  |  |  |  |  |  |  |  |  |  |  |  |  |  |  |
|  | PODSEKCJA | **Podsekcja 12.A** |  | 2026-03-03 | 2027-07-21 |  |  |  |  |  |  |  |  |  |  |  |  |  |  |  |  |  |  |  |  |  |  |
| 28AM31-080 |  | Prefabrykacja ruroci¹gów – Sekcja 12 | 14.3d | 2026-03-03 A | 2026-03-24 A | 28AM31-012, 28AM31-075 SS+5d | 100% | 2026-02-26 | 2026-03-17 |  |  |  | Rev A | Automaty | 28AM31 | Ruroci¹g | Budowa | Roboty | Tomasz | Infrastr | PM000 | Zespó³-K | Blok | Normalny | Pakiet | L2 |  |
| 28AM31-081 |  | Monta¿ ruroci¹gów – Sekcja 12 | 21.9d | 2027-06-10 | 2027-07-08 | 28AM31-080, 28AM31-014 SS+9d |  | 2027-01-08 | 2027-02-05 | 196.7d | 0d |  |  | Automaty | 28AM31 | Ruroci¹g | Budowa | Roboty | Tomasz | Infrastr | PM000 | Zespó³-W | Blok | Normalny | Pakiet | L2 |  |
| 28AM31-082 |  | Próba ciœnieniowa – Sekcja 12 | 3d | 2027-07-09 | 2027-07-13 | 28AM31-081 |  | 2027-02-08 | 2027-02-10 | 196.7d | 0d |  |  | Automaty | 28AM31 | Ruroci¹g | Budowa | Roboty | Tomasz | Infrastr | PM000 | Zespó³-K | Blok | Normalny | Pakiet | L2 | Do weryfikacji z wykonawc¹ |
| 28AM31-084 |  | Malowanie i oznakowanie – Sekcja 12 | 8d | 2027-07-12 | 2027-07-21 | 28AM31-083 FF+2d |  | 2027-02-09 | 2027-02-18 | 196.7d | 0d |  |  | Automaty | 28AM31 | Ruroci¹g | Budowa | Roboty | Tomasz | Infrastr | PM000 | Zespó³-W | Blok | Niski | Pakiet | L2 |  |
| 28AM31-083 |  | Izolacje – Sekcja 12 | 4d | 2027-07-14 | 2027-07-19 | 28AM31-082 |  | 2027-02-11 | 2027-02-16 | 196.7d | 0d |  |  | Automaty | 28AM31 | Ruroci¹g | Budowa | Roboty | Tomasz | Infrastr | PM000 | Zespó³-W | Blok | Normalny | Pakiet | L2 | Czeka na dostawê |
|  | SEKCJA 13 | **Sekcja 13** |  | 2026-03-10 | 2027-11-10 |  |  |  |  |  |  |  |  |  |  |  |  |  |  |  |  |  |  |  |  |  |  |
| 28AM31-087 |  | Prefabrykacja ruroci¹gów – Sekcja 13 | 5d | 2026-03-10 A | 2026-03-18 A | 28AM31-012, 28AM31-080 SS+5d | 100% | 2026-03-05 | 2026-03-11 |  |  |  |  | Automaty | 28AM31 | Ruroci¹g | Budowa | Roboty | Tomasz | Infrastr | PM000 | Zespó³-I | Blok | Normalny | Pakiet | L2 |  |
| 28AM31-088 |  | Monta¿ ruroci¹gów – Sekcja 13 | 21.1d | 2027-06-09 | 2027-07-07 | 28AM31-087, 28AM31-014 SS+8d |  | 2027-01-07 | 2027-02-04 | 189.5d | 0d | Kalendarz 6-dniowy |  | Automaty | 28AM31 | Ruroci¹g | Budowa | Roboty | Tomasz | Infrastr | PM000 | Zespó³-W | Blok | Normalny | Pakiet | L2 |  |
| 28AM31-089 |  | Próba ciœnieniowa – Sekcja 13 | 6d | 2027-07-08 | 2027-07-15 | 28AM31-088 |  | 2027-02-05 | 2027-02-12 | 189.5d | 0d |  | Rev B | Automaty | 28AM31 | Ruroci¹g | Budowa | Roboty | Tomasz | Infrastr | PM000 | Zespó³-K | Blok | Normalny | Pakiet | L2 |  |
| 28AM31-090 |  | Izolacje – Sekcja 13 | 10d | 2027-10-26 | 2027-11-08 | 28AM31-089 |  | 2027-02-15 | 2027-02-26 | 117.6d | 0d |  |  | Automaty | 28AM31 | Ruroci¹g | Budowa | Roboty | Tomasz | Infrastr | PM000 | Zespó³-I | Blok | Wysoki | Pakiet | L2 |  |
| 28AM31-091 |  | Malowanie i oznakowanie – Sekcja 13 | 6d | 2027-11-03 | 2027-11-10 | 28AM31-090 FF+2d |  | 2027-02-23 | 2027-03-02 | 117.6d | 0d |  |  | Automaty | 28AM31 | Ruroci¹g | Budowa | Roboty | Tomasz | Infrastr | PM000 | Zespó³-W | Blok | Normalny | Pakiet | L2 | Bez uwag |
|  | SEKCJA 14 | **Sekcja 14** |  | 2026-03-12 | 2027-06-28 |  |  |  |  |  |  |  |  |  |  |  |  |  |  |  |  |  |  |  |  |  |  |
| 28AM31-092 |  | Prefabrykacja ruroci¹gów – Sekcja 14 | 5.5d | 2026-03-12 A | 2026-03-20 A | 28AM31-012, 28AM31-087 SS+5d | 100% | 2026-03-12 | 2026-03-18 |  |  |  |  | Automaty | 28AM31 | Ruroci¹g | Budowa | Roboty | Tomasz | Infrastr | PM000 | Zespó³-K | Blok | Normalny | Pakiet | L2 |  |
| 28AM31-093 |  | Monta¿ ruroci¹gów – Sekcja 14 | 8.8d | 2027-06-04 | 2027-06-15 | 28AM31-092, 28AM31-014 SS+5d |  | 2027-01-04 | 2027-01-13 | 181.8d | 0d |  |  | Automaty | 28AM31 | Ruroci¹g | Budowa | Roboty | Tomasz | Infrastr | PM000 | Zespó³-K | Blok | Normalny | Pakiet | L2 |  |
| 28AM31-094 |  | Próba ciœnieniowa – Sekcja 14 | 3d | 2027-06-16 | 2027-06-18 | 28AM31-093 |  | 2027-01-14 | 2027-01-18 | 181.8d | 0d |  |  | Automaty | 28AM31 | Ruroci¹g | Budowa | Roboty | Tomasz | Infrastr | PM000 | Zespó³-W | Blok | Normalny | Pakiet | L2 | Czeka na dostawê |
| 28AM31-095 |  | Izolacje – Sekcja 14 | 4d | 2027-06-21 | 2027-06-24 | 28AM31-094 |  | 2027-01-19 | 2027-01-22 | 181.8d | 0d |  |  | Automaty | 28AM31 | Ruroci¹g | Budowa | Roboty | Tomasz | Infrastr | PM000 | Zespó³-W | Blok | Normalny | Pakiet | L2 |  |
| 28AM31-096 |  | Malowanie i oznakowanie – Sekcja 14 | 6d | 2027-06-21 | 2027-06-28 | 28AM31-095 FF+2d |  | 2027-01-19 | 2027-01-26 | 181.8d | 0d |  |  | Automaty | 28AM31 | Ruroci¹g | Budowa | Roboty | Tomasz | Infrastr | PM000 | Zespó³-W | Blok | Normalny | Pakiet | L2 |  |
|  | SEKCJA 15 | **Sekcja 15** |  | 2026-03-18 | 2027-07-15 |  |  |  |  |  |  |  |  |  |  |  |  |  |  |  |  |  |  |  |  |  |  |
|  | PODSEKCJA | **Podsekcja 15.A** |  | 2026-03-18 | 2027-07-15 |  |  |  |  |  |  |  |  |  |  |  |  |  |  |  |  |  |  |  |  |  |  |
| 28AM31-099 |  | Prefabrykacja ruroci¹gów – Sekcja 15 | 13.8d | 2026-03-18 A | 2026-04-07 A | 28AM31-012, 28AM31-092 SS+5d | 100% | 2026-03-19 | 2026-04-06 |  |  |  |  | Automaty | 28AM31 | Ruroci¹g | Budowa | Roboty | Tomasz | Infrastr | PM000 | Zespó³-W | Blok | Niski | Pakiet | L2 |  |
| 28AM31-100 |  | Monta¿ ruroci¹gów – Sekcja 15 | 24.5d | 2027-06-03 | 2027-07-06 | 28AM31-099, 28AM31-014 SS+4d |  | 2027-01-01 | 2027-02-03 | 169.1d | 0d |  |  | Automaty | 28AM31 | Ruroci¹g | Budowa | Roboty | Tomasz | Infrastr | PM000 | Zespó³-K | Blok | Niski | Pakiet | L2 | Czeka na dostawê |
| 28AM31-101 |  | Próba ciœnieniowa – Sekcja 15 | 2d | 2027-07-07 | 2027-07-08 | 28AM31-100 |  | 2027-02-04 | 2027-02-05 | 169.1d | 0d |  |  | Automaty | 28AM31 | Ruroci¹g | Budowa | Roboty | Tomasz | Infrastr | PM000 | Zespó³-W | Blok | Normalny | Pakiet | L2 |  |
| 28AM31-102 |  | Izolacje – Sekcja 15 | 3d | 2027-07-09 | 2027-07-13 | 28AM31-101 |  | 2027-02-08 | 2027-02-10 | 169.1d | 0d |  |  | Automaty | 28AM31 | Ruroci¹g | Budowa | Roboty | Tomasz | Infrastr | PM000 | Zespó³-W | Blok | Normalny | Pakiet | L2 | Do weryfikacji z wykonawc¹ |
| 28AM31-103 |  | Malowanie i oznakowanie – Sekcja 15 | 5d | 2027-07-09 | 2027-07-15 | 28AM31-102 FF+2d |  | 2027-02-08 | 2027-02-12 | 169.1d | 0d |  |  | Automaty | 28AM31 | Ruroci¹g | Budowa | Roboty | Tomasz | Infrastr | PM000 | Zespó³-W | Blok | Normalny | Pakiet | L2 |  |

| ID | WBS | Activity | Type | Duration | Start | Finish | Predecessors | Complete | Remaining | Actual finish | Planned start | Planned finish | Total float | Free float | AC_Wykonawca | AC_Obiekt | AC_Dyscyplina | AC_Faza | AC_Zakres | AC_Opiekun | AC_Obszar | AC_PP_PM | AC_Zespol | AC_Blok | AC_Priorytet | AC_Pakiet | AC_Poziom | Uwagi harmonogramisty | Rewizja dokumentu |
| --- | --- | --- | --- | --- | --- | --- | --- | --- | --- | --- | --- | --- | --- | --- | --- | --- | --- | --- | --- | --- | --- | --- | --- | --- | --- | --- | --- | --- | --- |
|  | PROJ | **Projektowanie** |  |  | 2025-04-04 | 2025-07-31 |  |  |  |  |  |  |  |  |  |  |  |  |  |  |  |  |  |  |  |  |  |  |  |
|  | DOKUMENTAC | **Dokumentacja** |  |  | 2025-04-04 | 2025-07-31 |  |  |  |  |  |  |  |  |  |  |  |  |  |  |  |  |  |  |  |  |  |  |  |
| 28AM31-001 |  | Projekt wykonawczy – Drogi i place |  | 45d | 2025-04-04 A | 2025-06-06 A |  | 100% |  |  | 2025-04-01 | 2025-06-02 |  |  | Automaty | 28AM31 | Budowlan | Projekto | Projekt | Tomasz | Infrastr | PM000 | Zespó³-K | Blok | Normalny | Pakiet | L2 |  |  |
| 28AM31-002 |  | Uzgodnienie dokumentacji z Inwestorem |  | 24d | 2025-06-02 A | 2025-07-04 A | 28AM31-001 | 100% |  |  | 2025-06-03 | 2025-07-04 |  |  | Automaty | 28AM31 | Budowlan | Projekto | Projekt | Tomasz | Infrastr | PM000 | Zespó³-W | Blok | Normalny | Pakiet | L2 |  |  |
| 28AM31-003 |  | Zatwierdzenie dokumentacji do realizacji |  | 15d | 2025-07-08 A | 2025-07-30 A | 28AM31-002 | 100% |  |  | 2025-07-07 | 2025-07-25 |  |  | Automaty | 28AM31 | Budowlan | Projekto | Projekt | Tomasz | Infrastr | PM000 | Zespó³-W | Blok | Niski | Pakiet | L2 |  |  |
| 28AM31-004 |  | KM: Dokumentacja zatwierdzona – Drogi i place | milestone | 0d | 2025-07-31 A | 2025-07-31 | 28AM31-003 | 100% |  | 2025-07-30 | 2025-07-28 | 2025-07-28 |  |  | Automaty | 28AM31 | Budowlan | Projekto | Kamieñ | Tomasz | Infrastr | PM000 | Zespó³-K | Blok | Normalny | Pakiet | L1 | Bez uwag |  |
|  | ROZR | **Rozruch** |  |  | 2027-07-27 | 2027-08-26 |  |  |  |  |  |  |  |  |  |  |  |  |  |  |  |  |  |  |  |  |  |  |  |
|  | ROZRUCH | **Rozruch** |  |  | 2027-07-27 | 2027-08-26 |  |  |  |  |  |  |  |  |  |  |  |  |  |  |  |  |  |  |  |  |  |  |  |
| 28AM31-106 |  | Przegl¹d gotowoœci do rozruchu |  | 4d | 2027-07-27 | 2027-07-30 | 28AM31-105, 28AM31-019, 28AM31-024, 28AM31-026 |  |  |  | 2027-02-24 | 2027-03-01 | 162.6d | 0d | Automaty | 28AM31 | Rozruch | Rozruch | Rozruch | Tomasz | Infrastr | PM000 | Zespó³-K | Blok | Normalny | Pakiet | L2 | Czeka na dostawê |  |
| 28AM31-107 |  | Rozruch na zimno |  | 6d | 2027-08-02 | 2027-08-09 | 28AM31-106 |  |  |  | 2027-03-02 | 2027-03-09 | 162.6d | 0d | Automaty | 28AM31 | Rozruch | Rozruch | Rozruch | Tomasz | Infrastr | PM000 | Zespó³-K | Blok | Normalny | Pakiet | L2 |  |  |
| 28AM31-108 |  | Rozruch na gor¹co / próby ruchowe |  | 12d | 2027-08-10 | 2027-08-25 | 28AM31-107 |  |  |  | 2027-03-10 | 2027-03-25 | 162.6d | 0d | Automaty | 28AM31 | Rozruch | Rozruch | Rozruch | Tomasz | Infrastr | PM000 | Zespó³-K | Blok | Normalny | Pakiet | L2 |  |  |
| 28AM31-109 |  | KM: Odbiór koñcowy – Drogi i place | milestone | 0d | 2027-08-26 | 2027-08-26 | 28AM31-108 |  |  |  | 2027-03-26 | 2027-03-26 | 162.6d | 0d | Automaty | 28AM31 | Rozruch | Rozruch | Kamieñ | Tomasz | Infrastr | PM000 | Zespó³-K | Blok | Normalny | Pakiet | L1 |  | Rev C |
|  | ZAKU | **Zakupy** |  |  | 2025-04-30 | 2027-05-28 |  |  |  |  |  |  |  |  |  |  |  |  |  |  |  |  |  |  |  |  |  |  |  |
|  | DOSTAWY | **Dostawy** |  |  | 2025-10-09 | 2027-05-28 |  |  |  |  |  |  |  |  |  |  |  |  |  |  |  |  |  |  |  |  |  |  |  |
| 28AM31-008 |  | Produkcja u dostawcy |  | 277d | 2025-10-09 A | 2027-03-30 | 28AM31-007 | 55% | 125d |  | 2025-10-07 | 2026-10-28 | 269.6d | 0d | Automaty | 28AM31 | Mechanic | Zakupy | Dostawa | Tomasz | Infrastr | PM000 | Zespó³-W | Blok | Normalny | Pakiet | L2 |  |  |
| 28AM31-009 |  | Testy FAT |  | 6d | 2027-03-31 | 2027-04-07 | 28AM31-008 |  |  |  | 2026-10-29 | 2026-11-05 | 162.6d | 0d | Automaty | 28AM31 | Mechanic | Zakupy | Dostawa | Tomasz | Infrastr | PM000 | Zespó³-W | Blok | Niski | Pakiet | L2 |  |  |
| 28AM31-010 |  | Transport i dostawa na plac budowy |  | 36d | 2027-04-08 | 2027-05-27 | 28AM31-009 |  |  |  | 2026-11-06 | 2026-12-25 | 162.6d | 0d | Automaty | 28AM31 | Mechanic | Zakupy | Dostawa | Tomasz | Infrastr | PM000 | Zespó³-W | Blok | Normalny | Pakiet | L2 |  | Rev A |
| 28AM31-011 |  | KM: Dostawa na budowê – Drogi i place | milestone | 0d | 2027-05-28 | 2027-05-28 | 28AM31-010 |  |  |  | 2026-12-28 | 2026-12-28 | 162.6d | 0d | Automaty | 28AM31 | Mechanic | Zakupy | Kamieñ | Tomasz | Infrastr | PM000 | Zespó³-K | Blok | Normalny | Pakiet | L1 |  |  |
|  | ZAMÓWIENIA | **Zamówienia** |  |  | 2025-04-30 | 2025-10-07 |  |  |  |  |  |  |  |  |  |  |  |  |  |  |  |  |  |  |  |  |  |  |  |
| 28AM31-005 |  | Zapytanie ofertowe |  | 23d | 2025-04-30 A | 2025-06-02 A | 28AM31-001 SS+20d | 100% |  |  | 2025-04-29 | 2025-05-29 |  |  | Automaty | 28AM31 | Mechanic | Zakupy | Dostawa | Tomasz | Infrastr | PM000 | Zespó³-W | Blok | Wysoki | Pakiet | L2 |  |  |
| 28AM31-006 |  | Analiza i wybór ofert |  | 19d | 2025-06-04 A | 2025-07-01 A | 28AM31-005 | 100% |  |  | 2025-05-30 | 2025-06-25 |  |  | Automaty | 28AM31 | Mechanic | Zakupy | Dostawa | Tomasz | Infrastr | PM000 | Zespó³-W | Blok | Normalny | Pakiet | L2 |  |  |
| 28AM31-007 |  | Zawarcie umowy / zamówienie |  | 8d | 2025-09-26 A | 2025-10-07 A | 28AM31-006, 28AM31-004 SS, 10BW45-004 (other project) FS+4d | 100% |  |  | 2025-09-25 | 2025-10-06 |  |  | Automaty | 28AM31 | Mechanic | Zakupy | Dostawa | Tomasz | Infrastr | PM000 | Zespó³-K | Blok | Normalny | Pakiet | L1 |  | Rev A |
|  | 28YY90 | **28YY90 – Warsztat** |  |  | 2025-05-20 | 2026-12-02 |  |  |  |  |  |  |  |  |  |  |  |  |  |  |  |  |  |  |  |  |  |  |  |
|  | BUDO | **Budowa** |  |  | 2026-01-15 | 2026-12-02 |  |  |  |  |  |  |  |  |  |  |  |  |  |  |  |  |  |  |  |  |  |  |  |
|  | AKPIA | **AKPiA** |  |  | 2026-08-28 | 2026-09-29 |  |  |  |  |  |  |  |  |  |  |  |  |  |  |  |  |  |  |  |  |  |  |  |
| 28YY90-111 |  | Monta¿ uk³adów AKPiA |  | 25d | 2026-08-28 A | 2026-09-29 A | 28YY90-014 SS+5d | 100% |  |  | 2026-08-27 | 2026-09-30 |  |  | TurboSys | 28YY90 | AKPiA | Budowa | Roboty | Agnieszk | Infrastr | PM000 | Zespó³-W | Blok | Normalny | Pakiet | L2 |  | Rev A |

| ID | WBS | Activity | Type | Duration | Start | Finish | Predecessors | Complete | Remaining | Planned start | Planned finish | Total float | Free float | Calendar | AC_Wykonawca | AC_Obiekt | AC_Dyscyplina | AC_Faza | AC_Zakres | AC_Opiekun | AC_Obszar | AC_PP_PM | AC_Zespol | AC_Blok | AC_Priorytet | AC_Pakiet | AC_Poziom | Rewizja dokumentu | Uwagi harmonogramisty |
| --- | --- | --- | --- | --- | --- | --- | --- | --- | --- | --- | --- | --- | --- | --- | --- | --- | --- | --- | --- | --- | --- | --- | --- | --- | --- | --- | --- | --- | --- |
|  | ELEKTRYKA | **Elektryka** |  |  | 2026-08-26 | 2026-09-29 |  |  |  |  |  |  |  |  |  |  |  |  |  |  |  |  |  |  |  |  |  |  |  |
| 28YY90-086 |  | Pod³¹czenia i pomiary – trasa 12 |  | 10d | 2026-08-26 A | 2026-09-09 A | 28YY90-085 FF | 100% |  | 2026-08-26 | 2026-09-08 |  |  |  | TurboSys | 28YY90 | Elektryc | Budowa | Roboty | Agnieszk | Infrastr | PM000 | Zespó³-W | Blok | Normalny | Pakiet | L2 |  |  |
| 28YY90-050 |  | Pod³¹czenia i pomiary – trasa 06 |  | 9d | 2026-08-28 A | 2026-09-10 A | 28YY90-049 FF | 100% |  | 2026-08-28 | 2026-09-09 |  |  |  | TurboSys | 28YY90 | Elektryc | Budowa | Roboty | Agnieszk | Infrastr | PM000 | Zespó³-W | Blok | Normalny | Pakiet | L2 |  |  |
| 28YY90-025 |  | Uk³adanie kabli – trasa 02 |  | 16d | 2026-09-02 A | 2026-09-28 A | 28YY90-014 SS+10d | 100% |  | 2026-09-03 | 2026-09-24 |  |  |  | TurboSys | 28YY90 | Elektryc | Budowa | Roboty | Agnieszk | Infrastr | PM000 | Zespó³-W | Blok | Normalny | Pakiet | L2 |  |  |
| 28YY90-037 |  | Uk³adanie kabli – trasa 04 |  | 9d | 2026-09-02 A | 2026-09-15 A | 28YY90-014 SS+10d | 100% |  | 2026-09-03 | 2026-09-15 |  |  |  | TurboSys | 28YY90 | Elektryc | Budowa | Roboty | Agnieszk | Infrastr | PM000 | Zespó³-K | Blok | Wysoki | Pakiet | L2 | Rev B |  |
| 28YY90-098 |  | Pod³¹czenia i pomiary – trasa 14 |  | 4d | 2026-09-04 A | 2026-09-11 A | 28YY90-097 FF | 100% |  | 2026-09-04 | 2026-09-09 |  |  |  | TurboSys | 28YY90 | Elektryc | Budowa | Roboty | Agnieszk | Infrastr | PM000 | Zespó³-K | Blok | Normalny | Pakiet | L2 |  | Czeka na dostawê |
| 28YY90-049 |  | Uk³adanie kabli – trasa 06 |  | 5d | 2026-09-07 A | 2026-09-15 A | 28YY90-014 SS+10d | 100% |  | 2026-09-03 | 2026-09-09 |  |  |  | TurboSys | 28YY90 | Elektryc | Budowa | Roboty | Agnieszk | Infrastr | PM000 | Zespó³-W | Blok | Krytyczn | Pakiet | L2 | Rev A |  |
| 28YY90-062 |  | Pod³¹czenia i pomiary – trasa 08 |  | 5d | 2026-09-07 A | 2026-09-14 A | 28YY90-061 FF | 100% |  | 2026-09-07 | 2026-09-11 |  |  |  | TurboSys | 28YY90 | Elektryc | Budowa | Roboty | Agnieszk | Infrastr | PM000 | Zespó³-W | Blok | Normalny | Pakiet | L2 |  | Bez uwag |
| 28YY90-061 |  | Uk³adanie kabli – trasa 08 |  | 7d | 2026-09-08 A | 2026-09-21 A | 28YY90-014 SS+10d | 100% |  | 2026-09-03 | 2026-09-11 |  |  |  | TurboSys | 28YY90 | Elektryc | Budowa | Roboty | Agnieszk | Infrastr | PM000 | Zespó³-W | Blok | Wysoki | Pakiet | L2 | Rev B |  |
| 28YY90-073 |  | Uk³adanie kabli – trasa 10 |  | 17d | 2026-09-08 A | 2026-09-29 A | 28YY90-014 SS+10d | 100% |  | 2026-09-03 | 2026-09-25 |  |  |  | TurboSys | 28YY90 | Elektryc | Budowa | Roboty | Agnieszk | Infrastr | PM000 | Zespó³-W | Blok | Wysoki | Pakiet | L2 |  |  |
| 28YY90-085 |  | Uk³adanie kabli – trasa 12 |  | 4d | 2026-09-08 A | 2026-09-16 A | 28YY90-014 SS+10d | 100% |  | 2026-09-03 | 2026-09-08 |  |  |  | TurboSys | 28YY90 | Elektryc | Budowa | Roboty | Agnieszk | Infrastr | PM000 | Zespó³-K | Blok | Niski | Pakiet | L2 |  | Ryzyko opóŸnienia |
| 28YY90-097 |  | Uk³adanie kabli – trasa 14 |  | 5d | 2026-09-08 A | 2026-09-17 A | 28YY90-014 SS+10d | 100% |  | 2026-09-03 | 2026-09-09 |  |  |  | TurboSys | 28YY90 | Elektryc | Budowa | Roboty | Agnieszk | Infrastr | PM000 | Zespó³-W | Blok | Normalny | Pakiet | L2 | Rev A | Czeka na dostawê |
| 28YY90-109 |  | Uk³adanie kabli – trasa 16 |  | 15d | 2026-09-08 A | 2026-09-28 A | 28YY90-014 SS+10d | 100% |  | 2026-09-03 | 2026-09-23 |  |  |  | TurboSys | 28YY90 | Elektryc | Budowa | Roboty | Agnieszk | Infrastr | PM000 | Zespó³-W | Blok | Wysoki | Pakiet | L2 |  |  |
| 28YY90-038 |  | Pod³¹czenia i pomiary – trasa 04 |  | 5d | 2026-09-10 A | 2026-09-17 A | 28YY90-037 FF | 100% |  | 2026-09-09 | 2026-09-15 |  |  |  | TurboSys | 28YY90 | Elektryc | Budowa | Roboty | Agnieszk | Infrastr | PM000 | Zespó³-W | Blok | Krytyczn | Pakiet | L2 |  |  |
| 28YY90-026 |  | Pod³¹czenia i pomiary – trasa 02 |  | 5d | 2026-09-17 A | 2026-09-25 A | 28YY90-025 FF | 100% |  | 2026-09-18 | 2026-09-24 |  |  |  | TurboSys | 28YY90 | Elektryc | Budowa | Roboty | Agnieszk | Infrastr | PM000 | Zespó³-W | Blok | Normalny | Pakiet | L2 |  |  |
| 28YY90-110 |  | Pod³¹czenia i pomiary – trasa 16 |  | 5d | 2026-09-18 A | 2026-09-28 A | 28YY90-109 FF | 100% |  | 2026-09-17 | 2026-09-23 |  |  |  | TurboSys | 28YY90 | Elektryc | Budowa | Roboty | Agnieszk | Infrastr | PM000 | Zespó³-W | Blok | Normalny | Pakiet | L2 |  | Bez uwag |
| 28YY90-074 |  | Pod³¹czenia i pomiary – trasa 10 |  | 3d | 2026-09-28 A | 2026-09-29 A | 28YY90-073 FF | 100% |  | 2026-09-23 | 2026-09-25 |  |  | Kalendarz 6-dniowy | TurboSys | 28YY90 | Elektryc | Budowa | Roboty | Agnieszk | Infrastr | PM000 | Zespó³-K | Blok | Niski | Pakiet | L2 | Rev B | Bez uwag |
|  | MONTA¯ | **Monta¿** |  |  | 2026-02-23 | 2026-10-23 |  |  |  |  |  |  |  |  |  |  |  |  |  |  |  |  |  |  |  |  |  |  |  |
| 28YY90-013 |  | Monta¿ konstrukcji stalowych |  | 25d | 2026-02-23 A | 2026-04-01 A | 28YY90-012 | 100% |  | 2026-02-20 | 2026-03-26 |  |  |  | TurboSys | 28YY90 | Mechanic | Budowa | Roboty | Agnieszk | Infrastr | PM000 | Zespó³-W | Blok | Niski | Pakiet | L2 |  |  |
| 28YY90-014 |  | Monta¿ urz¹dzeñ g³ównych |  | 32d | 2026-08-20 A | 2026-10-05 A | 28YY90-013, 28YY90-011 | 100% |  | 2026-08-20 | 2026-10-02 |  |  | Kalendarz 6-dniowy | TurboSys | 28YY90 | Mechanic | Budowa | Roboty | Agnieszk | Infrastr | PM000 | Zespó³-W | Blok | Niski | Pakiet | L2 | Rev A | Do weryfikacji z wykonawc¹ |
| 28YY90-112 |  | KM: Zakoñczenie monta¿u – Warsztat | milestone | 0d | 2026-10-23 | 2026-10-23 | 28YY90-103, 28YY90-108, 28YY90-110, 28YY90-111, 28YY90-014 |  |  | 2026-10-20 | 2026-10-20 | 359.2d | 0d |  | TurboSys | 28YY90 | Mechanic | Budowa | Kamieñ | Agnieszk | Infrastr | PM200 | Zespó³-I | Blok | Wysoki | Pakiet | L2 | Rev A |  |
|  | ROBOTY BUD | **Roboty budowlane** |  |  | 2026-01-15 | 2026-02-20 |  |  |  |  |  |  |  |  |  |  |  |  |  |  |  |  |  |  |  |  |  |  |  |
| 28YY90-012 |  | Fundamenty i roboty ziemne |  | 26d | 2026-01-15 A | 2026-02-20 A | 28YY90-007 FS+6d | 100% |  | 2026-01-15 | 2026-02-19 |  |  |  | TurboSys | 28YY90 | Budowlan | Budowa | Roboty | Agnieszk | Infrastr | PM000 | Zespó³-W | Blok | Normalny | Pakiet | L2 |  |  |
|  | RUROCI¥GI | **Ruroci¹gi** |  |  | 2026-02-24 | 2026-12-02 |  |  |  |  |  |  |  |  |  |  |  |  |  |  |  |  |  |  |  |  |  |  |  |
|  | SEKCJA 01 | **Sekcja 01** |  |  | 2026-02-24 | 2026-10-13 |  |  |  |  |  |  |  |  |  |  |  |  |  |  |  |  |  |  |  |  |  |  |  |
| 28YY90-015 |  | Prefabrykacja ruroci¹gów – Sekcja 01 |  | 6.7d | 2026-02-24 A | 2026-03-06 A | 28YY90-012 | 100% |  | 2026-02-20 | 2026-02-27 |  |  |  | TurboSys | 28YY90 | Ruroci¹g | Budowa | Roboty | Agnieszk | Infrastr | PM000 | Zespó³-K | Blok | Normalny | Pakiet | L2 |  | Czeka na dostawê |
| 28YY90-016 |  | Monta¿ ruroci¹gów – Sekcja 01 |  | 24.3d | 2026-08-26 A | 2026-09-29 A | 28YY90-015, 28YY90-014 SS+4d | 100% |  | 2026-08-26 | 2026-09-28 |  |  |  | TurboSys | 28YY90 | Ruroci¹g | Budowa | Roboty | Agnieszk | Infrastr | PM000 | Zespó³-K | Blok | Normalny | Pakiet | L2 |  |  |
| 28YY90-017 |  | Próba ciœnieniowa – Sekcja 01 |  | 6d | 2026-09-30 A | 2026-10-06 A | 28YY90-016 | 100% |  | 2026-09-29 | 2026-10-06 |  |  |  | TurboSys | 28YY90 | Ruroci¹g | Budowa | Roboty | Agnieszk | Infrastr | PM000 | Zespó³-K | Blok | Normalny | Pakiet | L2 | Rev C |  |
| 28YY90-018 |  | Izolacje – Sekcja 01 |  | 5d | 2026-10-07 | 2026-10-13 | 28YY90-017 |  |  |  |  | 364.6d | 0d |  | TurboSys | 28YY90 | Ruroci¹g | Budowa | Roboty | Agnieszk | Infrastr | PM000 | Zespó³-W | Blok | Krytyczn | Pakiet | L2 |  |  |
| 28YY90-019 |  | Malowanie i oznakowanie – Sekcja 01 |  | 8d | 2026-10-07 A | 2026-10-09 | 28YY90-018 FF+2d | 57% | 3.4d | 2026-10-06 | 2026-10-15 | 363.6d | 0d |  | TurboSys | 28YY90 | Ruroci¹g | Budowa | Roboty | Agnieszk | Infrastr | PM000 | Zespó³-K | Blok | Normalny | Pakiet | L2 | Rev C |  |

| ID | WBS | Activity | Duration | Start | Finish | Predecessors | Complete | Remaining | Planned start | Planned finish | Total float | Free float | Calendar | Uwagi harmonogramisty | AC_Wykonawca | AC_Obiekt | AC_Dyscyplina | AC_Faza | AC_Zakres | AC_Opiekun | AC_Obszar | AC_PP_PM | AC_Zespol | AC_Blok | AC_Priorytet | AC_Pakiet | AC_Poziom | Rewizja dokumentu |
| --- | --- | --- | --- | --- | --- | --- | --- | --- | --- | --- | --- | --- | --- | --- | --- | --- | --- | --- | --- | --- | --- | --- | --- | --- | --- | --- | --- | --- |
|  | SEKCJA 02 | **Sekcja 02** |  | 2026-02-26 | 2026-09-18 |  |  |  |  |  |  |  |  |  |  |  |  |  |  |  |  |  |  |  |  |  |  |  |
| 28YY90-020 |  | Prefabrykacja ruroci¹gów – Sekcja 02 | 11.6d | 2026-02-26 A | 2026-03-13 A | 28YY90-012, 28YY90-015 SS+5d | 100% |  | 2026-02-27 | 2026-03-13 |  |  |  | Uzgodnione na koordynacji | TurboSys | 28YY90 | Ruroci¹g | Budowa | Roboty | Agnieszk | Infrastr | PM000 | Zespó³-I | Blok | Normalny | Pakiet | L2 |  |
| 28YY90-021 |  | Monta¿ ruroci¹gów – Sekcja 02 | 7.8d | 2026-08-25 A | 2026-09-02 A | 28YY90-020, 28YY90-014 SS | 100% |  | 2026-08-20 | 2026-08-28 |  |  |  |  | TurboSys | 28YY90 | Ruroci¹g | Budowa | Roboty | Agnieszk | Infrastr | PM000 | Zespó³-W | Blok | Krytyczn | Pakiet | L2 |  |
| 28YY90-022 |  | Próba ciœnieniowa – Sekcja 02 | 5d | 2026-08-31 A | 2026-09-09 A | 28YY90-021 | 100% |  | 2026-08-31 | 2026-09-04 |  |  |  |  | TurboSys | 28YY90 | Ruroci¹g | Budowa | Roboty | Agnieszk | Infrastr | PM000 | Zespó³-W | Blok | Wysoki | Pakiet | L2 |  |
| 28YY90-023 |  | Izolacje – Sekcja 02 | 7d | 2026-09-07 A | 2026-09-15 A | 28YY90-022 | 100% |  |  |  |  |  |  | Czeka na dostawê | TurboSys | 28YY90 | Ruroci¹g | Budowa | Roboty | Agnieszk | Infrastr | PM000 | Zespó³-W | Blok | Normalny | Pakiet | L2 |  |
| 28YY90-024 |  | Malowanie i oznakowanie – Sekcja 02 | 6d | 2026-09-10 A | 2026-09-18 A | 28YY90-023 FF+2d | 100% |  | 2026-09-10 | 2026-09-17 |  |  |  |  | TurboSys | 28YY90 | Ruroci¹g | Budowa | Roboty | Agnieszk | Infrastr | PM000 | Zespó³-W | Blok | Normalny | Pakiet | L2 |  |
|  | SEKCJA 03 | **Sekcja 03** |  | 2026-03-11 | 2026-09-23 |  |  |  |  |  |  |  |  |  |  |  |  |  |  |  |  |  |  |  |  |  |  |  |
|  | PODSEKCJA | **Podsekcja 03.A** |  | 2026-03-11 | 2026-09-23 |  |  |  |  |  |  |  |  |  |  |  |  |  |  |  |  |  |  |  |  |  |  |  |
| 28YY90-027 |  | Prefabrykacja ruroci¹gów – Sekcja 03 | 10.1d | 2026-03-11 A | 2026-03-26 A | 28YY90-012, 28YY90-020 SS+5d | 100% |  | 2026-03-06 | 2026-03-19 |  |  |  | Bez uwag | TurboSys | 28YY90 | Ruroci¹g | Budowa | Roboty | Agnieszk | Infrastr | PM000 | Zespó³-K | Blok | Normalny | Pakiet | L2 |  |
| 28YY90-028 |  | Monta¿ ruroci¹gów – Sekcja 03 | 7.8d | 2026-08-25 A | 2026-09-02 A | 28YY90-027, 28YY90-014 SS | 100% |  | 2026-08-20 | 2026-08-28 |  |  |  | Do weryfikacji z wykonawc¹ | TurboSys | 28YY90 | Ruroci¹g | Budowa | Roboty | Agnieszk | Infrastr | PM100 | Zespó³-E | Blok | Normalny | Pakiet | L2 |  |
| 28YY90-029 |  | Próba ciœnieniowa – Sekcja 03 | 5d | 2026-09-03 A | 2026-09-14 A | 28YY90-028 | 100% |  | 2026-08-31 | 2026-09-04 |  |  |  |  | TurboSys | 28YY90 | Ruroci¹g | Budowa | Roboty | Agnieszk | Infrastr | PM000 | Zespó³-W | Blok | Normalny | Pakiet | L2 |  |
| 28YY90-031 |  | Malowanie i oznakowanie – Sekcja 03 | 8d | 2026-09-09 A | 2026-09-22 A | 28YY90-030 FF+2d | 100% |  | 2026-09-08 | 2026-09-17 |  |  |  |  | TurboSys | 28YY90 | Ruroci¹g | Budowa | Roboty | Agnieszk | Infrastr | PM000 | Zespó³-W | Blok | Niski | Pakiet | L2 | Rev B |
| 28YY90-030 |  | Izolacje – Sekcja 03 | 7d | 2026-09-10 A | 2026-09-23 A | 28YY90-029 | 100% |  | 2026-09-07 | 2026-09-15 |  |  |  |  | TurboSys | 28YY90 | Ruroci¹g | Budowa | Roboty | Agnieszk | Infrastr | PM000 | Zespó³-W | Blok | Normalny | Pakiet | L2 | Rev A |
|  | SEKCJA 04 | **Sekcja 04** |  | 2026-03-16 | 2026-12-02 |  |  |  |  |  |  |  |  |  |  |  |  |  |  |  |  |  |  |  |  |  |  |  |
| 28YY90-032 |  | Prefabrykacja ruroci¹gów – Sekcja 04 | 13.4d | 2026-03-16 A | 2026-04-01 A | 28YY90-012, 28YY90-027 SS+5d | 100% |  | 2026-03-13 | 2026-03-31 |  |  |  |  | TurboSys | 28YY90 | Ruroci¹g | Budowa | Roboty | Agnieszk | Infrastr | PM000 | Zespó³-W | Blok | Normalny | Pakiet | L2 | Rev C |
| 28YY90-033 |  | Monta¿ ruroci¹gów – Sekcja 04 | 23.1d | 2026-08-25 A | 2026-09-24 A | 28YY90-032, 28YY90-014 SS+4d | 100% |  | 2026-08-26 | 2026-09-25 |  |  |  | Do weryfikacji z wykonawc¹ | TurboSys | 28YY90 | Ruroci¹g | Budowa | Roboty | Agnieszk | Infrastr | PM000 | Zespó³-W | Blok | Normalny | Pakiet | L2 | Rev C |
| 28YY90-034 |  | Próba ciœnieniowa – Sekcja 04 | 4d | 2026-09-28 A | 2026-10-05 A | 28YY90-033 | 100% |  | 2026-09-28 | 2026-10-01 |  |  |  |  | TurboSys | 28YY90 | Ruroci¹g | Budowa | Roboty | Agnieszk | Infrastr | PM000 | Zespó³-K | Blok | Niski | Pakiet | L2 | Rev B |
| 28YY90-035 |  | Izolacje – Sekcja 04 | 8d | 2026-10-07 A | 2026-10-09 | 28YY90-034 | 62% | 3d | 2026-10-02 | 2026-10-13 | 393.6d | 0d |  |  | TurboSys | 28YY90 | Ruroci¹g | Budowa | Roboty | Agnieszk | Infrastr | PM000 | Zespó³-W | Blok | Normalny | Pakiet | L2 | Rev B |
| 28YY90-036 |  | Malowanie i oznakowanie – Sekcja 04 | 5d | 2026-11-26 | 2026-12-02 | 28YY90-035 FF+2d |  |  | 2026-10-09 | 2026-10-15 | 362.6d | 0d | Kalendarz 6-dniowy |  | TurboSys | 28YY90 | Ruroci¹g | Budowa | Roboty | Agnieszk | Infrastr | PM000 | Zespó³-I | Blok | Normalny | Pakiet | L2 |  |
|  | SEKCJA 05 | **Sekcja 05** |  | 2026-03-25 | 2026-10-07 |  |  |  |  |  |  |  |  |  |  |  |  |  |  |  |  |  |  |  |  |  |  |  |
| 28YY90-039 |  | Prefabrykacja ruroci¹gów – Sekcja 05 | 14.8d | 2026-03-25 A | 2026-04-15 A | 28YY90-012, 28YY90-032 SS+5d | 100% |  | 2026-03-20 | 2026-04-08 |  |  |  |  | TurboSys | 28YY90 | Ruroci¹g | Budowa | Roboty | Agnieszk | Infrastr | PM000 | Zespó³-W | Blok | Normalny | Pakiet | L2 |  |
| 28YY90-040 |  | Monta¿ ruroci¹gów – Sekcja 05 | 20.6d | 2026-08-27 A | 2026-09-28 A | 28YY90-039, 28YY90-014 SS+4d | 100% |  | 2026-08-26 | 2026-09-22 |  |  |  |  | TurboSys | 28YY90 | Ruroci¹g | Budowa | Roboty | Agnieszk | Infrastr | PM000 | Zespó³-W | Blok | Wysoki | Pakiet | L2 |  |
| 28YY90-041 |  | Próba ciœnieniowa – Sekcja 05 | 5d | 2026-09-25 A | 2026-09-29 A | 28YY90-040 | 100% |  | 2026-09-23 | 2026-09-29 |  |  |  | Ryzyko opóŸnienia | TurboSys | 28YY90 | Ruroci¹g | Budowa | Roboty | Agnieszk | Infrastr | PM000 | Zespó³-W | Blok | Krytyczn | Pakiet | L2 |  |
| 28YY90-042 |  | Izolacje – Sekcja 05 | 8d | 2026-10-01 A | 2026-10-07 | 28YY90-041 | 79% | 1.7d | 2026-09-30 | 2026-10-09 | 397d | 0d |  |  | TurboSys | 28YY90 | Ruroci¹g | Budowa | Roboty | Agnieszk | Infrastr | PM000 | Zespó³-K | Blok | Normalny | Pakiet | L2 | Rev A |
| 28YY90-043 |  | Malowanie i oznakowanie – Sekcja 05 | 7d | 2026-10-05 A | 2026-10-07 | 28YY90-042 FF+2d | 79% | 1.5d | 2026-10-05 | 2026-10-13 | 398d | 0d |  | Bez uwag | TurboSys | 28YY90 | Ruroci¹g | Budowa | Roboty | Agnieszk | Infrastr | PM000 | Zespó³-W | Blok | Normalny | Pakiet | L2 |  |

| ID | WBS | Activity | Duration | Start | Finish | Predecessors | Complete | Remaining | Planned start | Planned finish | Total float | Free float | Calendar | Rewizja dokumentu | AC_Wykonawca | AC_Obiekt | AC_Dyscyplina | AC_Faza | AC_Zakres | AC_Opiekun | AC_Obszar | AC_PP_PM | AC_Zespol | AC_Blok | AC_Priorytet | AC_Pakiet | AC_Poziom | Uwagi harmonogramisty |
| --- | --- | --- | --- | --- | --- | --- | --- | --- | --- | --- | --- | --- | --- | --- | --- | --- | --- | --- | --- | --- | --- | --- | --- | --- | --- | --- | --- | --- |
|  | SEKCJA 06 | **Sekcja 06** |  | 2026-03-30 | 2026-10-07 |  |  |  |  |  |  |  |  |  |  |  |  |  |  |  |  |  |  |  |  |  |  |  |
|  | PODSEKCJA | **Podsekcja 06.A** |  | 2026-03-30 | 2026-10-07 |  |  |  |  |  |  |  |  |  |  |  |  |  |  |  |  |  |  |  |  |  |  |  |
| 28YY90-044 |  | Prefabrykacja ruroci¹gów – Sekcja 06 | 5.8d | 2026-03-30 A | 2026-04-07 A | 28YY90-012, 28YY90-039 SS+5d | 100% |  | 2026-03-27 | 2026-04-02 |  |  |  | Rev B | TurboSys | 28YY90 | Ruroci¹g | Budowa | Roboty | Agnieszk | Infrastr | PM300 | Zespó³-I | Blok | Krytyczn | Pakiet | L2 |  |
| 28YY90-045 |  | Monta¿ ruroci¹gów – Sekcja 06 | 18.2d | 2026-08-28 A | 2026-09-22 A | 28YY90-044, 28YY90-014 SS+3d | 100% |  | 2026-08-25 | 2026-09-17 |  |  |  |  | TurboSys | 28YY90 | Ruroci¹g | Budowa | Roboty | Agnieszk | Infrastr | PM000 | Zespó³-K | Blok | Niski | Pakiet | L2 | Bez uwag |
| 28YY90-046 |  | Próba ciœnieniowa – Sekcja 06 | 4d | 2026-09-18 A | 2026-09-24 A | 28YY90-045 | 100% |  | 2026-09-18 | 2026-09-23 |  |  |  |  | TurboSys | 28YY90 | Ruroci¹g | Budowa | Roboty | Agnieszk | Infrastr | PM000 | Zespó³-K | Blok | Normalny | Pakiet | L2 |  |
| 28YY90-047 |  | Izolacje – Sekcja 06 | 7d | 2026-09-23 A | 2026-10-01 A | 28YY90-046 | 100% |  | 2026-09-24 | 2026-10-02 |  |  |  | Rev A | TurboSys | 28YY90 | Ruroci¹g | Budowa | Roboty | Agnieszk | Infrastr | PM000 | Zespó³-K | Blok | Niski | Pakiet | L2 |  |
| 28YY90-048 |  | Malowanie i oznakowanie – Sekcja 06 | 5d | 2026-10-05 A | 2026-10-07 | 28YY90-047 FF+2d | 68% | 1.6d | 2026-09-30 | 2026-10-06 | 400.4d | 0d |  |  | TurboSys | 28YY90 | Ruroci¹g | Budowa | Roboty | Agnieszk | Infrastr | PM000 | Zespó³-K | Blok | Krytyczn | Pakiet | L2 |  |
|  | SEKCJA 07 | **Sekcja 07** |  | 2026-04-02 | 2026-09-28 |  |  |  |  |  |  |  |  |  |  |  |  |  |  |  |  |  |  |  |  |  |  |  |
| 28YY90-051 |  | Prefabrykacja ruroci¹gów – Sekcja 07 | 6.5d | 2026-04-02 A | 2026-04-10 A | 28YY90-012, 28YY90-044 SS+5d | 100% |  | 2026-04-03 | 2026-04-10 |  |  |  |  | TurboSys | 28YY90 | Ruroci¹g | Budowa | Roboty | Agnieszk | Infrastr | PM000 | Zespó³-K | Blok | Wysoki | Pakiet | L2 |  |
| 28YY90-052 |  | Monta¿ ruroci¹gów – Sekcja 07 | 8.9d | 2026-09-01 A | 2026-09-14 A | 28YY90-051, 28YY90-014 SS+5d | 100% |  | 2026-08-27 | 2026-09-07 |  |  |  | Rev B | TurboSys | 28YY90 | Ruroci¹g | Budowa | Roboty | Agnieszk | Infrastr | PM000 | Zespó³-K | Blok | Normalny | Pakiet | L2 |  |
| 28YY90-053 |  | Próba ciœnieniowa – Sekcja 07 | 5d | 2026-09-11 A | 2026-09-22 A | 28YY90-052 | 100% |  | 2026-09-08 | 2026-09-14 |  |  |  |  | TurboSys | 28YY90 | Ruroci¹g | Budowa | Roboty | Agnieszk | Infrastr | PM000 | Zespó³-K | Blok | Normalny | Pakiet | L2 |  |
| 28YY90-054 |  | Izolacje – Sekcja 07 | 6d | 2026-09-17 A | 2026-09-24 A | 28YY90-053 | 100% |  | 2026-09-15 | 2026-09-22 |  |  |  |  | TurboSys | 28YY90 | Ruroci¹g | Budowa | Roboty | Agnieszk | Infrastr | PM000 | Zespó³-W | Blok | Normalny | Pakiet | L2 |  |
| 28YY90-055 |  | Malowanie i oznakowanie – Sekcja 07 | 4d | 2026-09-23 A | 2026-09-28 A | 28YY90-054 FF+2d | 100% |  | 2026-09-21 | 2026-09-24 |  |  |  |  | TurboSys | 28YY90 | Ruroci¹g | Budowa | Roboty | Agnieszk | Infrastr | PM000 | Zespó³-W | Blok | Wysoki | Pakiet | L2 | Bez uwag |
|  | SEKCJA 08 | **Sekcja 08** |  | 2026-04-10 | 2026-10-16 |  |  |  |  |  |  |  |  |  |  |  |  |  |  |  |  |  |  |  |  |  |  |  |
| 28YY90-056 |  | Prefabrykacja ruroci¹gów – Sekcja 08 | 3.4d | 2026-04-10 A | 2026-04-16 A | 28YY90-012, 28YY90-051 SS+5d | 100% |  | 2026-04-10 | 2026-04-14 |  |  |  |  | TurboSys | 28YY90 | Ruroci¹g | Budowa | Roboty | Agnieszk | Infrastr | PM000 | Zespó³-K | Blok | Normalny | Pakiet | L2 | Uzgodnione na koordynacji |
| 28YY90-057 |  | Monta¿ ruroci¹gów – Sekcja 08 | 21.5d | 2026-08-27 A | 2026-09-24 A | 28YY90-056, 28YY90-014 SS+3d | 100% |  | 2026-08-25 | 2026-09-22 |  |  |  |  | TurboSys | 28YY90 | Ruroci¹g | Budowa | Roboty | Agnieszk | Infrastr | PM000 | Zespó³-W | Blok | Normalny | Pakiet | L2 | Ryzyko opóŸnienia |
| 28YY90-058 |  | Próba ciœnieniowa – Sekcja 08 | 6d | 2026-09-22 A | 2026-10-02 A | 28YY90-057 | 100% |  | 2026-09-23 | 2026-09-30 |  |  |  | Rev B | TurboSys | 28YY90 | Ruroci¹g | Budowa | Roboty | Agnieszk | Infrastr | PM000 | Zespó³-W | Blok | Normalny | Pakiet | L2 | Do weryfikacji z wykonawc¹ |
| 28YY90-059 |  | Izolacje – Sekcja 08 | 10d | 2026-10-07 A | 2026-10-14 | 28YY90-058 | 35% | 6.5d | 2026-10-01 | 2026-10-14 | 391.6d | 0d | Kalendarz 6-dniowy | Rev C | TurboSys | 28YY90 | Ruroci¹g | Budowa | Roboty | Agnieszk | Infrastr | PM000 | Zespó³-W | Blok | Normalny | Pakiet | L2 | Uzgodnione na koordynacji |
| 28YY90-060 |  | Malowanie i oznakowanie – Sekcja 08 | 7d | 2026-10-08 | 2026-10-16 | 28YY90-059 FF+2d |  |  |  |  | 395.1d | 0d |  | Rev C | TurboSys | 28YY90 | Ruroci¹g | Budowa | Roboty | Agnieszk | Infrastr | PM000 | Zespó³-E | Blok | Normalny | Pakiet | L2 |  |
|  | SEKCJA 09 | **Sekcja 09** |  | 2026-04-22 | 2026-10-16 |  |  |  |  |  |  |  |  |  |  |  |  |  |  |  |  |  |  |  |  |  |  |  |
|  | PODSEKCJA | **Podsekcja 09.A** |  | 2026-04-22 | 2026-10-16 |  |  |  |  |  |  |  |  |  |  |  |  |  |  |  |  |  |  |  |  |  |  |  |
| 28YY90-063 |  | Prefabrykacja ruroci¹gów – Sekcja 09 | 10.4d | 2026-04-22 A | 2026-05-05 A | 28YY90-012, 28YY90-056 SS+5d | 100% |  | 2026-04-17 | 2026-04-30 |  |  |  | Rev A | TurboSys | 28YY90 | Ruroci¹g | Budowa | Roboty | Agnieszk | Infrastr | PM000 | Zespó³-I | Blok | Niski | Pakiet | L2 | Do weryfikacji z wykonawc¹ |
| 28YY90-064 |  | Monta¿ ruroci¹gów – Sekcja 09 | 22.1d | 2026-08-28 A | 2026-09-28 A | 28YY90-063, 28YY90-014 SS+6d | 100% |  |  |  |  |  |  | Rev B | TurboSys | 28YY90 | Ruroci¹g | Budowa | Roboty | Agnieszk | Infrastr | PM000 | Zespó³-K | Blok | Normalny | Pakiet | L2 | Czeka na dostawê |
| 28YY90-065 |  | Próba ciœnieniowa – Sekcja 09 | 5d | 2026-09-29 A | 2026-10-09 | 28YY90-064 | 28% | 3.6d | 2026-09-29 | 2026-10-05 | 396.5d | 0d |  |  | TurboSys | 28YY90 | Ruroci¹g | Budowa | Roboty | Agnieszk | Infrastr | PM000 | Zespó³-K | Blok | Wysoki | Pakiet | L2 |  |
| 28YY90-066 |  | Izolacje – Sekcja 09 | 6d | 2026-10-07 A | 2026-10-09 | 28YY90-065 | 47% | 3.2d | 2026-10-06 | 2026-10-13 | 395.6d | 0d |  |  | TurboSys | 28YY90 | Ruroci¹g | Budowa | Roboty | Agnieszk | Infrastr | PM000 | Zespó³-K | Blok | Normalny | Pakiet | L2 | Bez uwag |
| 28YY90-067 |  | Malowanie i oznakowanie – Sekcja 09 | 8d | 2026-10-07 | 2026-10-16 | 28YY90-066 FF+2d |  |  | 2026-10-06 | 2026-10-15 | 395.6d | 0d |  | Rev B | TurboSys | 28YY90 | Ruroci¹g | Budowa | Roboty | Agnieszk | Infrastr | PM000 | Zespó³-W | Blok | Normalny | Pakiet | L2 | Bez uwag |

| ID | WBS | Activity | Duration | Start | Finish | Predecessors | Complete | Remaining | Planned start | Planned finish | Total float | Free float | Calendar | AC_Wykonawca | AC_Obiekt | AC_Dyscyplina | AC_Faza | AC_Zakres | AC_Opiekun | AC_Obszar | AC_PP_PM | AC_Zespol | AC_Blok | AC_Priorytet | AC_Pakiet | AC_Poziom | Rewizja dokumentu | Uwagi harmonogramisty |
| --- | --- | --- | --- | --- | --- | --- | --- | --- | --- | --- | --- | --- | --- | --- | --- | --- | --- | --- | --- | --- | --- | --- | --- | --- | --- | --- | --- | --- |
|  | SEKCJA 10 | **Sekcja 10** |  | 2026-04-24 | 2026-10-06 |  |  |  |  |  |  |  |  |  |  |  |  |  |  |  |  |  |  |  |  |  |  |  |
| 28YY90-068 |  | Prefabrykacja ruroci¹gów – Sekcja 10 | 14.8d | 2026-04-24 A | 2026-05-18 A | 28YY90-012, 28YY90-063 SS+5d | 100% |  | 2026-04-24 | 2026-05-13 |  |  |  | TurboSys | 28YY90 | Ruroci¹g | Budowa | Roboty | Agnieszk | Infrastr | PM000 | Zespó³-W | Blok | Normalny | Pakiet | L2 |  |  |
| 28YY90-069 |  | Monta¿ ruroci¹gów – Sekcja 10 | 17.7d | 2026-09-02 A | 2026-09-28 A | 28YY90-068, 28YY90-014 SS+6d | 100% |  | 2026-08-28 | 2026-09-21 |  |  |  | TurboSys | 28YY90 | Ruroci¹g | Budowa | Roboty | Agnieszk | Infrastr | PM000 | Zespó³-W | Blok | Normalny | Pakiet | L2 | Rev A |  |
| 28YY90-070 |  | Próba ciœnieniowa – Sekcja 10 | 4d | 2026-09-22 A | 2026-09-29 A | 28YY90-069 | 100% |  | 2026-09-22 | 2026-09-25 |  |  |  | TurboSys | 28YY90 | Ruroci¹g | Budowa | Roboty | Agnieszk | Infrastr | PM000 | Zespó³-W | Blok | Normalny | Pakiet | L2 |  |  |
| 28YY90-072 |  | Malowanie i oznakowanie – Sekcja 10 | 7d | 2026-09-28 A | 2026-10-06 A | 28YY90-071 FF+2d | 100% |  | 2026-09-25 | 2026-10-05 |  |  |  | TurboSys | 28YY90 | Ruroci¹g | Budowa | Roboty | Agnieszk | Infrastr | PM000 | Zespó³-K | Blok | Niski | Pakiet | L2 |  | Do weryfikacji z wykonawc¹ |
| 28YY90-071 |  | Izolacje – Sekcja 10 | 4d | 2026-10-01 A | 2026-10-06 A | 28YY90-070 | 100% |  | 2026-09-28 | 2026-10-01 |  |  |  | TurboSys | 28YY90 | Ruroci¹g | Budowa | Roboty | Agnieszk | Infrastr | PM000 | Zespó³-W | Blok | Normalny | Pakiet | L2 | Rev B |  |
|  | SEKCJA 11 | **Sekcja 11** |  | 2026-05-04 | 2026-10-20 |  |  |  |  |  |  |  |  |  |  |  |  |  |  |  |  |  |  |  |  |  |  |  |
| 28YY90-075 |  | Prefabrykacja ruroci¹gów – Sekcja 11 | 8.2d | 2026-05-04 A | 2026-05-13 A | 28YY90-012, 28YY90-068 SS+5d | 100% |  | 2026-05-01 | 2026-05-12 |  |  |  | TurboSys | 28YY90 | Ruroci¹g | Budowa | Roboty | Agnieszk | Infrastr | PM000 | Zespó³-K | Blok | Normalny | Pakiet | L2 | Rev C |  |
| 28YY90-076 |  | Monta¿ ruroci¹gów – Sekcja 11 | 24.2d | 2026-08-28 A | 2026-09-29 A | 28YY90-075, 28YY90-014 SS+3d | 100% |  | 2026-08-25 | 2026-09-25 |  |  |  | TurboSys | 28YY90 | Ruroci¹g | Budowa | Roboty | Agnieszk | Infrastr | PM000 | Zespó³-K | Blok | Normalny | Pakiet | L2 | Rev B | Do weryfikacji z wykonawc¹ |
| 28YY90-077 |  | Próba ciœnieniowa – Sekcja 11 | 5d | 2026-09-28 A | 2026-10-09 | 28YY90-076 | 36% | 3.2d | 2026-09-28 | 2026-10-02 | 391.4d | 0d |  | TurboSys | 28YY90 | Ruroci¹g | Budowa | Roboty | Agnieszk | Infrastr | PM000 | Zespó³-W | Blok | Normalny | Pakiet | L2 |  | Czeka na dostawê |
| 28YY90-078 |  | Izolacje – Sekcja 11 | 12d | 2026-10-05 A | 2026-10-16 | 28YY90-077 | 29% | 8.5d | 2026-10-05 | 2026-10-20 | 391.4d | 0d |  | TurboSys | 28YY90 | Ruroci¹g | Budowa | Roboty | Agnieszk | Infrastr | PM000 | Zespó³-K | Blok | Normalny | Pakiet | L2 | Rev B | Ryzyko opóŸnienia |
| 28YY90-079 |  | Malowanie i oznakowanie – Sekcja 11 | 4d | 2026-10-15 | 2026-10-20 | 28YY90-078 FF+2d |  |  | 2026-10-19 | 2026-10-22 | 393.1d | 0d |  | TurboSys | 28YY90 | Ruroci¹g | Budowa | Roboty | Agnieszk | Infrastr | PM000 | Zespó³-I | Blok | Normalny | Pakiet | L2 |  | Uzgodnione na koordynacji |
|  | SEKCJA 12 | **Sekcja 12** |  | 2026-05-07 | 2026-10-08 |  |  |  |  |  |  |  |  |  |  |  |  |  |  |  |  |  |  |  |  |  |  |  |
|  | PODSEKCJA | **Podsekcja 12.A** |  | 2026-05-07 | 2026-10-08 |  |  |  |  |  |  |  |  |  |  |  |  |  |  |  |  |  |  |  |  |  |  |  |
| 28YY90-080 |  | Prefabrykacja ruroci¹gów – Sekcja 12 | 3.8d | 2026-05-07 A | 2026-05-12 A | 28YY90-012, 28YY90-075 SS+5d | 100% |  | 2026-05-08 | 2026-05-12 |  |  |  | TurboSys | 28YY90 | Ruroci¹g | Budowa | Roboty | Agnieszk | Infrastr | PM000 | Zespó³-W | Blok | Normalny | Pakiet | L2 |  |  |
| 28YY90-081 |  | Monta¿ ruroci¹gów – Sekcja 12 | 22.1d | 2026-08-25 A | 2026-09-23 A | 28YY90-080, 28YY90-014 SS+1d | 100% |  | 2026-08-21 | 2026-09-21 |  |  |  | TurboSys | 28YY90 | Ruroci¹g | Budowa | Roboty | Agnieszk | Infrastr | PM000 | Zespó³-W | Blok | Normalny | Pakiet | L2 | Rev B |  |
| 28YY90-082 |  | Próba ciœnieniowa – Sekcja 12 | 3d | 2026-09-25 A | 2026-09-29 A | 28YY90-081 | 100% |  | 2026-09-22 | 2026-09-24 |  |  |  | TurboSys | 28YY90 | Ruroci¹g | Budowa | Roboty | Agnieszk | Infrastr | PM000 | Zespó³-W | Blok | Normalny | Pakiet | L2 |  |  |
| 28YY90-083 |  | Izolacje – Sekcja 12 | 9d | 2026-09-30 A | 2026-10-06 A | 28YY90-082 | 100% |  | 2026-09-25 | 2026-10-07 |  |  |  | TurboSys | 28YY90 | Ruroci¹g | Budowa | Roboty | Agnieszk | Infrastr | PM000 | Zespó³-W | Blok | Normalny | Pakiet | L2 |  |  |
| 28YY90-084 |  | Malowanie i oznakowanie – Sekcja 12 | 2d | 2026-10-07 | 2026-10-08 | 28YY90-083 FF+2d |  |  | 2026-10-08 | 2026-10-09 | 401.6d | 0d |  | TurboSys | 28YY90 | Ruroci¹g | Budowa | Roboty | Agnieszk | Infrastr | PM000 | Zespó³-K | Blok | Krytyczn | Pakiet | L2 | Rev A | Do weryfikacji z wykonawc¹ |
|  | SEKCJA 13 | **Sekcja 13** |  | 2026-05-18 | 2026-10-15 |  |  |  |  |  |  |  |  |  |  |  |  |  |  |  |  |  |  |  |  |  |  |  |
| 28YY90-087 |  | Prefabrykacja ruroci¹gów – Sekcja 13 | 12.7d | 2026-05-18 A | 2026-06-02 A | 28YY90-012, 28YY90-080 SS+5d | 100% |  | 2026-05-15 | 2026-06-01 |  |  |  | TurboSys | 28YY90 | Ruroci¹g | Budowa | Roboty | Agnieszk | Infrastr | PM000 | Zespó³-K | Blok | Normalny | Pakiet | L2 |  |  |
| 28YY90-088 |  | Monta¿ ruroci¹gów – Sekcja 13 | 20.3d | 2026-09-01 A | 2026-10-01 A | 28YY90-087, 28YY90-014 SS+9d | 100% |  | 2026-09-02 | 2026-09-29 |  |  |  | TurboSys | 28YY90 | Ruroci¹g | Budowa | Roboty | Agnieszk | Infrastr | PM000 | Zespó³-K | Blok | Niski | Pakiet | L2 |  |  |
| 28YY90-089 |  | Próba ciœnieniowa – Sekcja 13 | 4d | 2026-10-06 A | 2026-10-09 | 28YY90-088 | 18% | 3.3d | 2026-09-30 | 2026-10-05 | 390.3d | 0d | Kalendarz 6-dniowy | TurboSys | 28YY90 | Ruroci¹g | Budowa | Roboty | Agnieszk | Infrastr | PM000 | Zespó³-K | Blok | Normalny | Pakiet | L2 |  |  |
| 28YY90-090 |  | Izolacje – Sekcja 13 | 8d | 2026-10-06 A | 2026-10-13 | 28YY90-089 | 30% | 5.6d | 2026-10-06 | 2026-10-15 | 394.3d | 0d |  | TurboSys | 28YY90 | Ruroci¹g | Budowa | Roboty | Agnieszk | Infrastr | PM000 | Zespó³-W | Blok | Krytyczn | Pakiet | L2 |  |  |
| 28YY90-091 |  | Malowanie i oznakowanie – Sekcja 13 | 3d | 2026-10-13 | 2026-10-15 | 28YY90-090 FF+2d |  |  | 2026-10-15 | 2026-10-19 | 396d | 0d | Kalendarz 6-dniowy | TurboSys | 28YY90 | Ruroci¹g | Budowa | Roboty | Agnieszk | Infrastr | PM000 | Zespó³-K | Blok | Normalny | Pakiet | L2 |  |  |

| ID | WBS | Activity | Type | Duration | Start | Finish | Predecessors | Complete | Remaining | Actual finish | Planned start | Planned finish | Total float | Free float | Calendar | AC_Wykonawca | AC_Obiekt | AC_Dyscyplina | AC_Faza | AC_Zakres | AC_Opiekun | AC_Obszar | AC_PP_PM | AC_Zespol | AC_Blok | AC_Priorytet | AC_Pakiet | AC_Poziom | Uwagi harmonogramisty | Rewizja dokumentu |
| --- | --- | --- | --- | --- | --- | --- | --- | --- | --- | --- | --- | --- | --- | --- | --- | --- | --- | --- | --- | --- | --- | --- | --- | --- | --- | --- | --- | --- | --- | --- |
|  | SEKCJA 14 | **Sekcja 14** |  |  | 2026-05-27 | 2026-09-22 |  |  |  |  |  |  |  |  |  |  |  |  |  |  |  |  |  |  |  |  |  |  |  |  |
| 28YY90-092 |  | Prefabrykacja ruroci¹gów – Sekcja 14 |  | 7.4d | 2026-05-27 A | 2026-06-08 A | 28YY90-012, 28YY90-087 SS+5d | 100% |  |  | 2026-05-22 | 2026-06-01 |  |  |  | TurboSys | 28YY90 | Ruroci¹g | Budowa | Roboty | Agnieszk | Infrastr | PM200 | Zespó³-E | Blok | Normalny | Pakiet | L2 |  |  |
| 28YY90-093 |  | Monta¿ ruroci¹gów – Sekcja 14 |  | 7.7d | 2026-08-21 A | 2026-09-02 A | 28YY90-092, 28YY90-014 SS+1d | 100% |  |  | 2026-08-21 | 2026-08-31 |  |  |  | TurboSys | 28YY90 | Ruroci¹g | Budowa | Roboty | Agnieszk | Infrastr | PM000 | Zespó³-W | Blok | Normalny | Pakiet | L2 | Bez uwag | Rev A |
| 28YY90-094 |  | Próba ciœnieniowa – Sekcja 14 |  | 5d | 2026-09-01 A | 2026-09-07 A | 28YY90-093 | 100% |  |  |  |  |  |  |  | TurboSys | 28YY90 | Ruroci¹g | Budowa | Roboty | Agnieszk | Infrastr | PM000 | Zespó³-W | Blok | Niski | Pakiet | L2 |  |  |
| 28YY90-095 |  | Izolacje – Sekcja 14 |  | 5d | 2026-09-07 A | 2026-09-16 A | 28YY90-094 | 100% |  |  | 2026-09-08 | 2026-09-14 |  |  |  | TurboSys | 28YY90 | Ruroci¹g | Budowa | Roboty | Agnieszk | Infrastr | PM000 | Zespó³-W | Blok | Wysoki | Pakiet | L2 |  |  |
| 28YY90-096 |  | Malowanie i oznakowanie – Sekcja 14 |  | 7d | 2026-09-10 A | 2026-09-22 A | 28YY90-095 FF+2d | 100% |  |  | 2026-09-08 | 2026-09-16 |  |  |  | TurboSys | 28YY90 | Ruroci¹g | Budowa | Roboty | Agnieszk | Infrastr | PM000 | Zespó³-K | Blok | Normalny | Pakiet | L2 | Uzgodnione na koordynacji | Rev C |
|  | SEKCJA 15 | **Sekcja 15** |  |  | 2026-05-29 | 2026-10-22 |  |  |  |  |  |  |  |  |  |  |  |  |  |  |  |  |  |  |  |  |  |  |  |  |
|  | PODSEKCJA | **Podsekcja 15.A** |  |  | 2026-05-29 | 2026-10-22 |  |  |  |  |  |  |  |  |  |  |  |  |  |  |  |  |  |  |  |  |  |  |  |  |
| 28YY90-099 |  | Prefabrykacja ruroci¹gów – Sekcja 15 |  | 12.3d | 2026-05-29 A | 2026-06-18 A | 28YY90-012, 28YY90-092 SS+5d | 100% |  |  | 2026-05-29 | 2026-06-15 |  |  |  | TurboSys | 28YY90 | Ruroci¹g | Budowa | Roboty | Agnieszk | Infrastr | PM000 | Zespó³-W | Blok | Normalny | Pakiet | L2 |  |  |
| 28YY90-100 |  | Monta¿ ruroci¹gów – Sekcja 15 |  | 23.4d | 2026-08-24 A | 2026-09-24 A | 28YY90-099, 28YY90-014 SS+2d | 100% |  |  | 2026-08-24 | 2026-09-23 |  |  |  | TurboSys | 28YY90 | Ruroci¹g | Budowa | Roboty | Agnieszk | Infrastr | PM000 | Zespó³-K | Blok | Normalny | Pakiet | L2 | Ryzyko opóŸnienia |  |
| 28YY90-101 |  | Próba ciœnieniowa – Sekcja 15 |  | 4d | 2026-09-25 A | 2026-10-02 A | 28YY90-100 | 100% |  |  | 2026-09-24 | 2026-09-29 |  |  |  | TurboSys | 28YY90 | Ruroci¹g | Budowa | Roboty | Agnieszk | Infrastr | PM000 | Zespó³-W | Blok | Normalny | Pakiet | L2 |  | Rev A |
| 28YY90-102 |  | Izolacje – Sekcja 15 |  | 12d | 2026-10-01 A | 2026-10-20 | 28YY90-101 | 13% | 10.4d |  | 2026-09-30 | 2026-10-15 | 361.2d | 0d |  | TurboSys | 28YY90 | Ruroci¹g | Budowa | Roboty | Agnieszk | Infrastr | PM200 | Zespó³-E | Blok | Normalny | Pakiet | L2 |  |  |
| 28YY90-103 |  | Malowanie i oznakowanie – Sekcja 15 |  | 7d | 2026-10-14 | 2026-10-22 | 28YY90-102 FF+2d |  |  |  | 2026-10-09 | 2026-10-19 | 359.2d | 0d |  | TurboSys | 28YY90 | Ruroci¹g | Budowa | Roboty | Agnieszk | Infrastr | PM000 | Zespó³-W | Blok | Niski | Pakiet | L2 |  | Rev C |
|  | SEKCJA 16 | **Sekcja 16** |  |  | 2026-06-05 | 2026-09-21 |  |  |  |  |  |  |  |  |  |  |  |  |  |  |  |  |  |  |  |  |  |  |  |  |
| 28YY90-104 |  | Prefabrykacja ruroci¹gów – Sekcja 16 |  | 10.7d | 2026-06-05 A | 2026-06-19 A | 28YY90-012, 28YY90-099 SS+5d | 100% |  |  | 2026-06-05 | 2026-06-18 |  |  |  | TurboSys | 28YY90 | Ruroci¹g | Budowa | Roboty | Agnieszk | Infrastr | PM000 | Zespó³-W | Blok | Normalny | Pakiet | L2 |  |  |
| 28YY90-105 |  | Monta¿ ruroci¹gów – Sekcja 16 |  | 7.3d | 2026-08-31 A | 2026-09-08 A | 28YY90-104, 28YY90-014 SS+4d | 100% |  |  | 2026-08-26 | 2026-09-03 |  |  |  | TurboSys | 28YY90 | Ruroci¹g | Budowa | Roboty | Agnieszk | Infrastr | PM000 | Zespó³-W | Blok | Normalny | Pakiet | L2 |  | Rev A |
| 28YY90-106 |  | Próba ciœnieniowa – Sekcja 16 |  | 4d | 2026-09-04 A | 2026-09-14 A | 28YY90-105 | 100% |  |  | 2026-09-04 | 2026-09-09 |  |  |  | TurboSys | 28YY90 | Ruroci¹g | Budowa | Roboty | Agnieszk | Infrastr | PM000 | Zespó³-K | Blok | Wysoki | Pakiet | L2 |  |  |
| 28YY90-107 |  | Izolacje – Sekcja 16 |  | 6d | 2026-09-11 A | 2026-09-21 A | 28YY90-106 | 100% |  |  | 2026-09-10 | 2026-09-17 |  |  |  | TurboSys | 28YY90 | Ruroci¹g | Budowa | Roboty | Agnieszk | Infrastr | PM000 | Zespó³-K | Blok | Krytyczn | Pakiet | L2 |  | Rev B |
| 28YY90-108 |  | Malowanie i oznakowanie – Sekcja 16 |  | 5d | 2026-09-14 A | 2026-09-21 A | 28YY90-107 FF+2d | 100% |  |  | 2026-09-15 | 2026-09-21 |  |  | Kalendarz 6-dniowy | TurboSys | 28YY90 | Ruroci¹g | Budowa | Roboty | Agnieszk | Infrastr | PM000 | Zespó³-K | Blok | Normalny | Pakiet | L2 |  | Rev A |
|  | PROJ | **Projektowanie** |  |  | 2025-05-20 | 2025-11-27 |  |  |  |  |  |  |  |  |  |  |  |  |  |  |  |  |  |  |  |  |  |  |  |  |
|  | DOKUMENTAC | **Dokumentacja** |  |  | 2025-05-20 | 2025-11-27 |  |  |  |  |  |  |  |  |  |  |  |  |  |  |  |  |  |  |  |  |  |  |  |  |
| 28YY90-001 |  | Projekt wykonawczy – Warsztat |  | 95d | 2025-05-20 A | 2025-10-02 A |  | 100% |  |  | 2025-05-21 | 2025-09-30 |  |  |  | TurboSys | 28YY90 | Budowlan | Projekto | Projekt | Agnieszk | Infrastr | PM000 | Zespó³-W | Blok | Normalny | Pakiet | L2 |  |  |
| 28YY90-002 |  | Uzgodnienie dokumentacji z Inwestorem |  | 30d | 2025-10-03 A | 2025-11-13 A | 28YY90-001 | 100% |  |  | 2025-10-01 | 2025-11-11 |  |  |  | TurboSys | 28YY90 | Budowlan | Projekto | Projekt | Agnieszk | Infrastr | PM100 | Zespó³-I | Blok | Normalny | Pakiet | L2 |  |  |
| 28YY90-003 |  | Zatwierdzenie dokumentacji do realizacji |  | 10d | 2025-11-14 A | 2025-11-27 A | 28YY90-002 | 100% |  |  | 2025-11-12 | 2025-11-25 |  |  |  | TurboSys | 28YY90 | Budowlan | Projekto | Projekt | Agnieszk | Infrastr | PM000 | Zespó³-W | Blok | Wysoki | Pakiet | L2 |  |  |
| 28YY90-004 |  | KM: Dokumentacja zatwierdzona – Warsztat | milestone | 0d | 2025-11-27 A | 2025-11-27 | 28YY90-003 | 100% |  | 2025-11-26 | 2025-11-26 | 2025-11-26 |  |  |  | TurboSys | 28YY90 | Budowlan | Projekto | Kamieñ | Agnieszk | Infrastr | PM000 | Zespó³-W | Blok | Normalny | Pakiet | L1 | Do weryfikacji z wykonawc¹ |  |

| ID | WBS | Activity | Type | Duration | Start | Finish | Predecessors | Complete | Actual finish | Planned start | Planned finish | Total float | Free float | Calendar | AC_Wykonawca | AC_Obiekt | AC_Dyscyplina | AC_Faza | AC_Zakres | AC_Opiekun | AC_Obszar | AC_PP_PM | AC_Zespol | AC_Blok | AC_Priorytet | AC_Pakiet | AC_Poziom | Uwagi harmonogramisty | Rewizja dokumentu |
| --- | --- | --- | --- | --- | --- | --- | --- | --- | --- | --- | --- | --- | --- | --- | --- | --- | --- | --- | --- | --- | --- | --- | --- | --- | --- | --- | --- | --- | --- |
|  | ROZR | **Rozruch** |  |  | 2026-10-23 | 2026-11-24 |  |  |  |  |  |  |  |  |  |  |  |  |  |  |  |  |  |  |  |  |  |  |  |
|  | ROZRUCH | **Rozruch** |  |  | 2026-10-23 | 2026-11-24 |  |  |  |  |  |  |  |  |  |  |  |  |  |  |  |  |  |  |  |  |  |  |  |
| 28YY90-113 |  | Przegl¹d gotowoœci do rozruchu |  | 6d | 2026-10-23 | 2026-10-30 | 28YY90-112, 28YY90-019, 28YY90-024, 28YY90-026 |  |  | 2026-10-20 | 2026-10-27 | 359.2d | 0d |  | TurboSys | 28YY90 | Rozruch | Rozruch | Rozruch | Agnieszk | Infrastr | PM000 | Zespó³-W | Blok | Normalny | Pakiet | L2 |  |  |
| 28YY90-114 |  | Rozruch na zimno |  | 6d | 2026-11-02 | 2026-11-09 | 28YY90-113 |  |  | 2026-10-28 | 2026-11-04 | 359.2d | 0d |  | TurboSys | 28YY90 | Rozruch | Rozruch | Rozruch | Agnieszk | Infrastr | PM000 | Zespó³-K | Blok | Normalny | Pakiet | L2 |  |  |
| 28YY90-115 |  | Rozruch na gor¹co / próby ruchowe |  | 10d | 2026-11-10 | 2026-11-23 | 28YY90-114 |  |  | 2026-11-05 | 2026-11-18 | 359.2d | 0d |  | TurboSys | 28YY90 | Rozruch | Rozruch | Rozruch | Agnieszk | Infrastr | PM000 | Zespó³-K | Blok | Krytyczn | Pakiet | L2 | Uzgodnione na koordynacji | Rev B |
| 28YY90-116 |  | KM: Odbiór koñcowy – Warsztat | milestone | 0d | 2026-11-24 | 2026-11-24 | 28YY90-115 |  |  | 2026-11-19 | 2026-11-19 | 359.2d | 0d |  | TurboSys | 28YY90 | Rozruch | Rozruch | Kamieñ | Agnieszk | Infrastr | PM000 | Zespó³-K | Blok | Normalny | Pakiet | L1 | Uzgodnione na koordynacji |  |
|  | ZAKU | **Zakupy** |  |  | 2025-06-17 | 2026-08-25 |  |  |  |  |  |  |  |  |  |  |  |  |  |  |  |  |  |  |  |  |  |  |  |
|  | DOSTAWY | **Dostawy** |  |  | 2026-01-06 | 2026-08-25 |  |  |  |  |  |  |  |  |  |  |  |  |  |  |  |  |  |  |  |  |  |  |  |
| 28YY90-008 |  | Produkcja u dostawcy |  | 140d | 2026-01-06 A | 2026-07-22 A | 28YY90-007 | 100% |  | 2026-01-07 | 2026-07-21 |  |  |  | TurboSys | 28YY90 | Mechanic | Zakupy | Dostawa | Agnieszk | Infrastr | PM000 | Zespó³-W | Blok | Normalny | Pakiet | L2 | Uzgodnione na koordynacji |  |
| 28YY90-009 |  | Testy FAT |  | 6d | 2026-07-22 A | 2026-07-31 A | 28YY90-008 | 100% |  | 2026-07-22 | 2026-07-29 |  |  | Kalendarz 6-dniowy | TurboSys | 28YY90 | Mechanic | Zakupy | Dostawa | Agnieszk | Infrastr | PM000 | Zespó³-K | Blok | Normalny | Pakiet | L2 |  |  |
| 28YY90-010 |  | Transport i dostawa na plac budowy |  | 15d | 2026-07-30 A | 2026-08-24 A | 28YY90-009 | 100% |  | 2026-07-30 | 2026-08-19 |  |  |  | TurboSys | 28YY90 | Mechanic | Zakupy | Dostawa | Agnieszk | Infrastr | PM000 | Zespó³-K | Blok | Normalny | Pakiet | L2 |  |  |
| 28YY90-011 |  | KM: Dostawa na budowê – Warsztat | milestone | 0d | 2026-08-25 A | 2026-08-25 | 28YY90-010 | 100% | 2026-08-24 | 2026-08-20 | 2026-08-20 |  |  |  | TurboSys | 28YY90 | Mechanic | Zakupy | Kamieñ | Agnieszk | Infrastr | PM000 | Zespó³-W | Blok | Normalny | Pakiet | L1 |  |  |
|  | ZAMÓWIENIA | **Zamówienia** |  |  | 2025-06-17 | 2026-01-08 |  |  |  |  |  |  |  |  |  |  |  |  |  |  |  |  |  |  |  |  |  |  |  |
| 28YY90-005 |  | Zapytanie ofertowe |  | 24d | 2025-06-17 A | 2025-07-18 A | 28YY90-001 SS+20d | 100% |  | 2025-06-18 | 2025-07-21 |  |  |  | TurboSys | 28YY90 | Mechanic | Zakupy | Dostawa | Agnieszk | Infrastr | PM000 | Zespó³-W | Blok | Normalny | Pakiet | L2 |  |  |
| 28YY90-006 |  | Analiza i wybór ofert |  | 12d | 2025-07-23 A | 2025-08-08 A | 28YY90-005 | 100% |  | 2025-07-22 | 2025-08-06 |  |  |  | TurboSys | 28YY90 | Mechanic | Zakupy | Dostawa | Agnieszk | Infrastr | PM000 | Zespó³-E | Blok | Normalny | Pakiet | L2 |  |  |
| 28YY90-007 |  | Zawarcie umowy / zamówienie |  | 7d | 2025-12-29 A | 2026-01-08 A | 28YY90-006, 28YY90-004 SS, 21MY97-004 SF+8d | 100% |  | 2025-12-29 | 2026-01-06 |  |  |  | TurboSys | 28YY90 | Mechanic | Zakupy | Dostawa | Agnieszk | Infrastr | PM000 | Zespó³-W | Blok | Normalny | Pakiet | L1 |  |  |
|  | 29XB26 | **29XB26 – Magazyn** |  |  | 2025-06-12 | 2026-10-16 |  |  |  |  |  |  |  |  |  |  |  |  |  |  |  |  |  |  |  |  |  |  |  |
|  | BUDO | **Budowa** |  |  | 2026-01-28 | 2026-09-16 |  |  |  |  |  |  |  |  |  |  |  |  |  |  |  |  |  |  |  |  |  |  |  |
|  | AKPIA | **AKPiA** |  |  | 2026-07-23 | 2026-08-25 |  |  |  |  |  |  |  |  |  |  |  |  |  |  |  |  |  |  |  |  |  |  |  |
| 29XB26-087 |  | Monta¿ uk³adów AKPiA |  | 23d | 2026-07-23 A | 2026-08-25 A | 29XB26-014 SS+5d | 100% |  | 2026-07-21 | 2026-08-20 |  |  |  | Pomorski | 29XB26 | AKPiA | Budowa | Roboty | Tomasz | Infrastr | PM000 | Zespó³-K | Blok | Normalny | Pakiet | L2 | Ryzyko opóŸnienia |  |
|  | ELEKTRYKA | **Elektryka** |  |  | 2026-07-28 | 2026-09-01 |  |  |  |  |  |  |  |  |  |  |  |  |  |  |  |  |  |  |  |  |  |  |  |
| 29XB26-050 |  | Pod³¹czenia i pomiary – trasa 06 |  | 8d | 2026-07-28 A | 2026-08-06 A | 29XB26-049 FF | 100% |  | 2026-07-23 | 2026-08-03 |  |  |  | Pomorski | 29XB26 | Elektryc | Budowa | Roboty | Tomasz | Infrastr | PM000 | Zespó³-K | Blok | Niski | Pakiet | L2 |  |  |
| 29XB26-025 |  | Uk³adanie kabli – trasa 02 |  | 16d | 2026-07-29 A | 2026-08-20 A | 29XB26-014 SS+10d | 100% |  | 2026-07-28 | 2026-08-18 |  |  | Kalendarz 6-dniowy | Pomorski | 29XB26 | Elektryc | Budowa | Roboty | Tomasz | Infrastr | PM000 | Zespó³-E | Blok | Normalny | Pakiet | L2 | Ryzyko opóŸnienia | Rev A |
| 29XB26-037 |  | Uk³adanie kabli – trasa 04 |  | 18d | 2026-07-29 A | 2026-08-24 A | 29XB26-014 SS+10d | 100% |  | 2026-07-28 | 2026-08-20 |  |  |  | Pomorski | 29XB26 | Elektryc | Budowa | Roboty | Tomasz | Infrastr | PM000 | Zespó³-W | Blok | Normalny | Pakiet | L2 |  |  |
| 29XB26-049 |  | Uk³adanie kabli – trasa 06 |  | 5d | 2026-07-29 A | 2026-08-04 A | 29XB26-014 SS+10d | 100% |  | 2026-07-28 | 2026-08-03 |  |  | Kalendarz 6-dniowy | Pomorski | 29XB26 | Elektryc | Budowa | Roboty | Tomasz | Infrastr | PM000 | Zespó³-W | Blok | Normalny | Pakiet | L2 | Czeka na dostawê | Rev A |
| 29XB26-061 |  | Uk³adanie kabli – trasa 08 |  | 12d | 2026-07-29 A | 2026-08-13 A | 29XB26-014 SS+10d | 100% |  | 2026-07-28 | 2026-08-12 |  |  |  | Pomorski | 29XB26 | Elektryc | Budowa | Roboty | Tomasz | Infrastr | PM000 | Zespó³-K | Blok | Normalny | Pakiet | L2 |  |  |
| 29XB26-085 |  | Uk³adanie kabli – trasa 12 |  | 17d | 2026-07-30 A | 2026-08-21 A | 29XB26-014 SS+10d | 100% |  | 2026-07-28 | 2026-08-19 |  |  |  | Pomorski | 29XB26 | Elektryc | Budowa | Roboty | Tomasz | Infrastr | PM000 | Zespó³-W | Blok | Normalny | Pakiet | L2 |  | Rev B |
| 29XB26-073 |  | Uk³adanie kabli – trasa 10 |  | 20d | 2026-07-31 A | 2026-09-01 A | 29XB26-014 SS+10d | 100% |  | 2026-07-28 | 2026-08-24 |  |  |  | Pomorski | 29XB26 | Elektryc | Budowa | Roboty | Tomasz | Infrastr | PM000 | Zespó³-W | Blok | Wysoki | Pakiet | L2 |  | Rev A |
| 29XB26-062 |  | Pod³¹czenia i pomiary – trasa 08 |  | 9d | 2026-08-03 A | 2026-08-17 A | 29XB26-061 FF | 100% |  | 2026-07-31 | 2026-08-12 |  |  |  | Pomorski | 29XB26 | Elektryc | Budowa | Roboty | Tomasz | Infrastr | PM000 | Zespó³-K | Blok | Normalny | Pakiet | L2 | Do weryfikacji z wykonawc¹ |  |
| 29XB26-086 |  | Pod³¹czenia i pomiary – trasa 12 |  | 9d | 2026-08-07 A | 2026-08-24 A | 29XB26-085 FF | 100% |  | 2026-08-07 | 2026-08-19 |  |  |  | Pomorski | 29XB26 | Elektryc | Budowa | Roboty | Tomasz | Infrastr | PM000 | Zespó³-W | Blok | Normalny | Pakiet | L2 |  | Rev B |
| 29XB26-038 |  | Pod³¹czenia i pomiary – trasa 04 |  | 9d | 2026-08-11 A | 2026-08-26 A | 29XB26-037 FF | 100% |  | 2026-08-10 | 2026-08-20 |  |  |  | Pomorski | 29XB26 | Elektryc | Budowa | Roboty | Tomasz | Infrastr | PM200 | Zespó³-E | Blok | Normalny | Pakiet | L2 | Bez uwag | Rev C |
| 29XB26-026 |  | Pod³¹czenia i pomiary – trasa 02 |  | 4d | 2026-08-13 A | 2026-08-18 A | 29XB26-025 FF | 100% |  |  |  |  |  |  | Pomorski | 29XB26 | Elektryc | Budowa | Roboty | Tomasz | Infrastr | PM000 | Zespó³-W | Blok | Normalny | Pakiet | L2 |  |  |
| 29XB26-074 |  | Pod³¹czenia i pomiary – trasa 10 |  | 5d | 2026-08-17 A | 2026-08-24 A | 29XB26-073 FF | 100% |  | 2026-08-18 | 2026-08-24 |  |  |  | Pomorski | 29XB26 | Elektryc | Budowa | Roboty | Tomasz | Infrastr | PM000 | Zespó³-K | Blok | Normalny | Pakiet | L2 | Czeka na dostawê |  |

| ID | WBS | Activity | Type | Duration | Start | Finish | Predecessors | Complete | Actual finish | Planned start | Planned finish | Calendar | Uwagi harmonogramisty | AC_Wykonawca | AC_Obiekt | AC_Dyscyplina | AC_Faza | AC_Zakres | AC_Opiekun | AC_Obszar | AC_PP_PM | AC_Zespol | AC_Blok | AC_Priorytet | AC_Pakiet | AC_Poziom | Rewizja dokumentu |
| --- | --- | --- | --- | --- | --- | --- | --- | --- | --- | --- | --- | --- | --- | --- | --- | --- | --- | --- | --- | --- | --- | --- | --- | --- | --- | --- | --- |
|  | MONTA¯ | **Monta¿** |  |  | 2026-03-18 | 2026-09-16 |  |  |  |  |  |  |  |  |  |  |  |  |  |  |  |  |  |  |  |  |  |
| 29XB26-013 |  | Monta¿ konstrukcji stalowych |  | 26d | 2026-03-18 A | 2026-04-24 A | 29XB26-012 | 100% |  | 2026-03-17 | 2026-04-21 | Kalendarz 6-dniowy | Ryzyko opóŸnienia | Pomorski | 29XB26 | Mechanic | Budowa | Roboty | Tomasz | Infrastr | PM000 | Zespó³-W | Blok | Normalny | Pakiet | L2 |  |
| 29XB26-014 |  | Monta¿ urz¹dzeñ g³ównych |  | 26d | 2026-07-13 A | 2026-08-17 A | 29XB26-013, 29XB26-011 | 100% |  | 2026-07-14 | 2026-08-18 |  |  | Pomorski | 29XB26 | Mechanic | Budowa | Roboty | Tomasz | Infrastr | PM300 | Zespó³-I | Blok | Normalny | Pakiet | L2 |  |
| 29XB26-088 |  | KM: Zakoñczenie monta¿u – Magazyn | milestone | 0d | 2026-09-16 A | 2026-09-16 | 29XB26-079, 29XB26-084, 29XB26-086, 29XB26-087, 29XB26-014 | 100% | 2026-09-15 | 2026-09-11 | 2026-09-11 |  |  | Pomorski | 29XB26 | Mechanic | Budowa | Kamieñ | Tomasz | Infrastr | PM000 | Zespó³-K | Blok | Normalny | Pakiet | L2 | Rev C |
|  | ROBOTY BUD | **Roboty budowlane** |  |  | 2026-01-28 | 2026-03-19 |  |  |  |  |  |  |  |  |  |  |  |  |  |  |  |  |  |  |  |  |  |
| 29XB26-012 |  | Fundamenty i roboty ziemne |  | 36d | 2026-01-28 A | 2026-03-19 A | 29XB26-007 FS+4d | 100% |  | 2026-01-26 | 2026-03-16 |  | Czeka na dostawê | Pomorski | 29XB26 | Budowlan | Budowa | Roboty | Tomasz | Infrastr | PM000 | Zespó³-W | Blok | Normalny | Pakiet | L2 |  |
|  | RUROCI¥GI | **Ruroci¹gi** |  |  | 2026-03-16 | 2026-09-14 |  |  |  |  |  |  |  |  |  |  |  |  |  |  |  |  |  |  |  |  |  |
|  | SEKCJA 01 | **Sekcja 01** |  |  | 2026-03-16 | 2026-08-21 |  |  |  |  |  |  |  |  |  |  |  |  |  |  |  |  |  |  |  |  |  |
| 29XB26-015 |  | Prefabrykacja ruroci¹gów – Sekcja 01 |  | 8.9d | 2026-03-16 A | 2026-03-26 A | 29XB26-012 | 100% |  | 2026-03-17 | 2026-03-26 |  |  | Pomorski | 29XB26 | Ruroci¹g | Budowa | Roboty | Tomasz | Infrastr | PM000 | Zespó³-K | Blok | Niski | Pakiet | L2 |  |
| 29XB26-016 |  | Monta¿ ruroci¹gów – Sekcja 01 |  | 14.2d | 2026-07-16 A | 2026-08-05 A | 29XB26-015, 29XB26-014 SS | 100% |  | 2026-07-14 | 2026-07-31 |  | Czeka na dostawê | Pomorski | 29XB26 | Ruroci¹g | Budowa | Roboty | Tomasz | Infrastr | PM000 | Zespó³-K | Blok | Niski | Pakiet | L2 | Rev A |
| 29XB26-017 |  | Próba ciœnieniowa – Sekcja 01 |  | 5d | 2026-07-31 A | 2026-08-06 A | 29XB26-016 | 100% |  | 2026-08-03 | 2026-08-07 |  | Czeka na dostawê | Pomorski | 29XB26 | Ruroci¹g | Budowa | Roboty | Tomasz | Infrastr | PM000 | Zespó³-W | Blok | Normalny | Pakiet | L2 |  |
| 29XB26-019 |  | Malowanie i oznakowanie – Sekcja 01 |  | 4d | 2026-08-11 A | 2026-08-19 A | 29XB26-018 FF+2d | 100% |  | 2026-08-12 | 2026-08-17 |  |  | Pomorski | 29XB26 | Ruroci¹g | Budowa | Roboty | Tomasz | Infrastr | PM000 | Zespó³-W | Blok | Normalny | Pakiet | L2 |  |
| 29XB26-018 |  | Izolacje – Sekcja 01 |  | 4d | 2026-08-13 A | 2026-08-21 A | 29XB26-017 | 100% |  | 2026-08-10 | 2026-08-13 |  | Do weryfikacji z wykonawc¹ | Pomorski | 29XB26 | Ruroci¹g | Budowa | Roboty | Tomasz | Infrastr | PM000 | Zespó³-K | Blok | Normalny | Pakiet | L2 |  |
|  | SEKCJA 02 | **Sekcja 02** |  |  | 2026-03-25 | 2026-09-14 |  |  |  |  |  |  |  |  |  |  |  |  |  |  |  |  |  |  |  |  |  |
| 29XB26-020 |  | Prefabrykacja ruroci¹gów – Sekcja 02 |  | 10.3d | 2026-03-25 A | 2026-04-10 A | 29XB26-012, 29XB26-015 SS+5d | 100% |  | 2026-03-24 | 2026-04-06 |  |  | Pomorski | 29XB26 | Ruroci¹g | Budowa | Roboty | Tomasz | Infrastr | PM000 | Zespó³-K | Blok | Normalny | Pakiet | L2 |  |
| 29XB26-021 |  | Monta¿ ruroci¹gów – Sekcja 02 |  | 22.7d | 2026-07-23 A | 2026-08-24 A | 29XB26-020, 29XB26-014 SS+6d | 100% |  | 2026-07-22 | 2026-08-20 |  | Do weryfikacji z wykonawc¹ | Pomorski | 29XB26 | Ruroci¹g | Budowa | Roboty | Tomasz | Infrastr | PM000 | Zespó³-W | Blok | Normalny | Pakiet | L2 |  |
| 29XB26-022 |  | Próba ciœnieniowa – Sekcja 02 |  | 4d | 2026-08-21 A | 2026-08-26 A | 29XB26-021 | 100% |  |  |  |  |  | Pomorski | 29XB26 | Ruroci¹g | Budowa | Roboty | Tomasz | Infrastr | PM200 | Zespó³-I | Blok | Wysoki | Pakiet | L2 |  |
| 29XB26-023 |  | Izolacje – Sekcja 02 |  | 6d | 2026-09-01 A | 2026-09-09 A | 29XB26-022 | 100% |  | 2026-08-27 | 2026-09-03 |  | Do weryfikacji z wykonawc¹ | Pomorski | 29XB26 | Ruroci¹g | Budowa | Roboty | Tomasz | Infrastr | PM000 | Zespó³-E | Blok | Normalny | Pakiet | L2 |  |
| 29XB26-024 |  | Malowanie i oznakowanie – Sekcja 02 |  | 2d | 2026-09-09 A | 2026-09-14 A | 29XB26-023 FF+2d | 100% |  | 2026-09-04 | 2026-09-07 |  | Uzgodnione na koordynacji | Pomorski | 29XB26 | Ruroci¹g | Budowa | Roboty | Tomasz | Infrastr | PM000 | Zespó³-K | Blok | Normalny | Pakiet | L2 |  |
|  | SEKCJA 03 | **Sekcja 03** |  |  | 2026-03-30 | 2026-08-25 |  |  |  |  |  |  |  |  |  |  |  |  |  |  |  |  |  |  |  |  |  |
|  | PODSEKCJA | **Podsekcja 03.A** |  |  | 2026-03-30 | 2026-08-25 |  |  |  |  |  |  |  |  |  |  |  |  |  |  |  |  |  |  |  |  |  |
| 29XB26-027 |  | Prefabrykacja ruroci¹gów – Sekcja 03 |  | 9d | 2026-03-30 A | 2026-04-14 A | 29XB26-012, 29XB26-020 SS+5d | 100% |  | 2026-03-31 | 2026-04-10 | Kalendarz 6-dniowy |  | Pomorski | 29XB26 | Ruroci¹g | Budowa | Roboty | Tomasz | Infrastr | PM000 | Zespó³-W | Blok | Normalny | Pakiet | L2 |  |
| 29XB26-028 |  | Monta¿ ruroci¹gów – Sekcja 03 |  | 13.3d | 2026-07-22 A | 2026-08-07 A | 29XB26-027, 29XB26-014 SS+6d | 100% |  |  |  |  |  | Pomorski | 29XB26 | Ruroci¹g | Budowa | Roboty | Tomasz | Infrastr | PM000 | Zespó³-W | Blok | Niski | Pakiet | L2 | Rev B |
| 29XB26-030 |  | Izolacje – Sekcja 03 |  | 4d | 2026-08-12 A | 2026-08-19 A | 29XB26-029 | 100% |  | 2026-08-13 | 2026-08-18 |  |  | Pomorski | 29XB26 | Ruroci¹g | Budowa | Roboty | Tomasz | Infrastr | PM000 | Zespó³-K | Blok | Wysoki | Pakiet | L2 |  |
| 29XB26-029 |  | Próba ciœnieniowa – Sekcja 03 |  | 3d | 2026-08-13 A | 2026-08-20 A | 29XB26-028 | 100% |  | 2026-08-10 | 2026-08-12 |  | Uzgodnione na koordynacji | Pomorski | 29XB26 | Ruroci¹g | Budowa | Roboty | Tomasz | Infrastr | PM000 | Zespó³-W | Blok | Normalny | Pakiet | L2 |  |
| 29XB26-031 |  | Malowanie i oznakowanie – Sekcja 03 |  | 5d | 2026-08-14 A | 2026-08-25 A | 29XB26-030 FF+2d | 100% |  | 2026-08-14 | 2026-08-20 |  | Bez uwag | Pomorski | 29XB26 | Ruroci¹g | Budowa | Roboty | Tomasz | Infrastr | PM000 | Zespó³-W | Blok | Normalny | Pakiet | L2 |  |

| ID | WBS | Activity | Duration | Start | Finish | Predecessors | Complete | Planned start | Planned finish | Calendar | Rewizja dokumentu | AC_Wykonawca | AC_Obiekt | AC_Dyscyplina | AC_Faza | AC_Zakres | AC_Opiekun | AC_Obszar | AC_PP_PM | AC_Zespol | AC_Blok | AC_Priorytet | AC_Pakiet | AC_Poziom | Uwagi harmonogramisty |
| --- | --- | --- | --- | --- | --- | --- | --- | --- | --- | --- | --- | --- | --- | --- | --- | --- | --- | --- | --- | --- | --- | --- | --- | --- | --- |
|  | SEKCJA 04 | **Sekcja 04** |  | 2026-04-06 | 2026-08-18 |  |  |  |  |  |  |  |  |  |  |  |  |  |  |  |  |  |  |  |  |
| 29XB26-032 |  | Prefabrykacja ruroci¹gów – Sekcja 04 | 9.7d | 2026-04-06 A | 2026-04-17 A | 29XB26-012, 29XB26-027 SS+5d | 100% | 2026-04-07 | 2026-04-17 |  | Rev C | Pomorski | 29XB26 | Ruroci¹g | Budowa | Roboty | Tomasz | Infrastr | PM000 | Zespó³-I | Blok | Normalny | Pakiet | L2 |  |
| 29XB26-033 |  | Monta¿ ruroci¹gów – Sekcja 04 | 11.1d | 2026-07-15 A | 2026-07-29 A | 29XB26-032, 29XB26-014 SS+2d | 100% | 2026-07-16 | 2026-07-30 |  |  | Pomorski | 29XB26 | Ruroci¹g | Budowa | Roboty | Tomasz | Infrastr | PM000 | Zespó³-K | Blok | Normalny | Pakiet | L2 | Uzgodnione na koordynacji |
| 29XB26-034 |  | Próba ciœnieniowa – Sekcja 04 | 5d | 2026-08-03 A | 2026-08-07 A | 29XB26-033 | 100% | 2026-07-31 | 2026-08-06 |  |  | Pomorski | 29XB26 | Ruroci¹g | Budowa | Roboty | Tomasz | Infrastr | PM000 | Zespó³-W | Blok | Normalny | Pakiet | L2 |  |
| 29XB26-035 |  | Izolacje – Sekcja 04 | 4d | 2026-08-10 A | 2026-08-13 A | 29XB26-034 | 100% | 2026-08-07 | 2026-08-12 |  | Rev A | Pomorski | 29XB26 | Ruroci¹g | Budowa | Roboty | Tomasz | Infrastr | PM000 | Zespó³-K | Blok | Normalny | Pakiet | L2 |  |
| 29XB26-036 |  | Malowanie i oznakowanie – Sekcja 04 | 3d | 2026-08-12 A | 2026-08-18 A | 29XB26-035 FF+2d | 100% | 2026-08-12 | 2026-08-14 |  |  | Pomorski | 29XB26 | Ruroci¹g | Budowa | Roboty | Tomasz | Infrastr | PM000 | Zespó³-W | Blok | Normalny | Pakiet | L2 |  |
|  | SEKCJA 05 | **Sekcja 05** |  | 2026-04-16 | 2026-08-24 |  |  |  |  |  |  |  |  |  |  |  |  |  |  |  |  |  |  |  |  |
| 29XB26-039 |  | Prefabrykacja ruroci¹gów – Sekcja 05 | 6.2d | 2026-04-16 A | 2026-04-23 A | 29XB26-012, 29XB26-032 SS+5d | 100% | 2026-04-14 | 2026-04-21 | Kalendarz 6-dniowy | Rev C | Pomorski | 29XB26 | Ruroci¹g | Budowa | Roboty | Tomasz | Infrastr | PM000 | Zespó³-K | Blok | Normalny | Pakiet | L2 | Uzgodnione na koordynacji |
| 29XB26-040 |  | Monta¿ ruroci¹gów – Sekcja 05 | 12.6d | 2026-07-16 A | 2026-08-04 A | 29XB26-039, 29XB26-014 SS+2d | 100% | 2026-07-16 | 2026-07-31 |  |  | Pomorski | 29XB26 | Ruroci¹g | Budowa | Roboty | Tomasz | Infrastr | PM000 | Zespó³-W | Blok | Normalny | Pakiet | L2 |  |
| 29XB26-041 |  | Próba ciœnieniowa – Sekcja 05 | 5d | 2026-07-31 A | 2026-08-06 A | 29XB26-040 | 100% | 2026-08-03 | 2026-08-07 |  |  | Pomorski | 29XB26 | Ruroci¹g | Budowa | Roboty | Tomasz | Infrastr | PM000 | Zespó³-W | Blok | Normalny | Pakiet | L2 |  |
| 29XB26-042 |  | Izolacje – Sekcja 05 | 8d | 2026-08-12 A | 2026-08-21 A | 29XB26-041 | 100% | 2026-08-10 | 2026-08-19 |  | Rev C | Pomorski | 29XB26 | Ruroci¹g | Budowa | Roboty | Tomasz | Infrastr | PM000 | Zespó³-W | Blok | Normalny | Pakiet | L2 |  |
| 29XB26-043 |  | Malowanie i oznakowanie – Sekcja 05 | 4d | 2026-08-17 A | 2026-08-24 A | 29XB26-042 FF+2d | 100% | 2026-08-18 | 2026-08-21 |  |  | Pomorski | 29XB26 | Ruroci¹g | Budowa | Roboty | Tomasz | Infrastr | PM000 | Zespó³-W | Blok | Normalny | Pakiet | L2 |  |
|  | SEKCJA 06 | **Sekcja 06** |  | 2026-04-20 | 2026-09-04 |  |  |  |  |  |  |  |  |  |  |  |  |  |  |  |  |  |  |  |  |
|  | PODSEKCJA | **Podsekcja 06.A** |  | 2026-04-20 | 2026-09-04 |  |  |  |  |  |  |  |  |  |  |  |  |  |  |  |  |  |  |  |  |
| 29XB26-044 |  | Prefabrykacja ruroci¹gów – Sekcja 06 | 4.4d | 2026-04-20 A | 2026-04-23 A | 29XB26-012, 29XB26-039 SS+5d | 100% | 2026-04-21 | 2026-04-24 |  |  | Pomorski | 29XB26 | Ruroci¹g | Budowa | Roboty | Tomasz | Infrastr | PM000 | Zespó³-K | Blok | Normalny | Pakiet | L2 |  |
| 29XB26-045 |  | Monta¿ ruroci¹gów – Sekcja 06 | 23.2d | 2026-07-20 A | 2026-08-21 A | 29XB26-044, 29XB26-014 SS+3d | 100% | 2026-07-17 | 2026-08-18 |  | Rev A | Pomorski | 29XB26 | Ruroci¹g | Budowa | Roboty | Tomasz | Infrastr | PM000 | Zespó³-W | Blok | Wysoki | Pakiet | L2 |  |
| 29XB26-046 |  | Próba ciœnieniowa – Sekcja 06 | 6d | 2026-08-18 A | 2026-08-27 A | 29XB26-045 | 100% | 2026-08-19 | 2026-08-26 |  | Rev C | Pomorski | 29XB26 | Ruroci¹g | Budowa | Roboty | Tomasz | Infrastr | PM000 | Zespó³-W | Blok | Normalny | Pakiet | L2 |  |
| 29XB26-048 |  | Malowanie i oznakowanie – Sekcja 06 | 8d | 2026-08-25 A | 2026-09-04 A | 29XB26-047 FF+2d | 100% | 2026-08-26 | 2026-09-04 |  |  | Pomorski | 29XB26 | Ruroci¹g | Budowa | Roboty | Tomasz | Infrastr | PM000 | Zespó³-K | Blok | Normalny | Pakiet | L2 | Do weryfikacji z wykonawc¹ |
| 29XB26-047 |  | Izolacje – Sekcja 06 | 5d | 2026-08-26 A | 2026-09-04 A | 29XB26-046 | 100% | 2026-08-27 | 2026-09-02 |  |  | Pomorski | 29XB26 | Ruroci¹g | Budowa | Roboty | Tomasz | Infrastr | PM000 | Zespó³-K | Blok | Normalny | Pakiet | L2 | Uzgodnione na koordynacji |
|  | SEKCJA 07 | **Sekcja 07** |  | 2026-04-27 | 2026-09-10 |  |  |  |  |  |  |  |  |  |  |  |  |  |  |  |  |  |  |  |  |
| 29XB26-051 |  | Prefabrykacja ruroci¹gów – Sekcja 07 | 7d | 2026-04-27 A | 2026-05-06 A | 29XB26-012, 29XB26-044 SS+5d | 100% | 2026-04-28 | 2026-05-06 |  | Rev B | Pomorski | 29XB26 | Ruroci¹g | Budowa | Roboty | Tomasz | Infrastr | PM000 | Zespó³-K | Blok | Normalny | Pakiet | L2 |  |
| 29XB26-052 |  | Monta¿ ruroci¹gów – Sekcja 07 | 22.1d | 2026-07-30 A | 2026-09-01 A | 29XB26-051, 29XB26-014 SS+9d | 100% | 2026-07-27 | 2026-08-25 |  | Rev A | Pomorski | 29XB26 | Ruroci¹g | Budowa | Roboty | Tomasz | Infrastr | PM000 | Zespó³-K | Blok | Normalny | Pakiet | L2 |  |
| 29XB26-053 |  | Próba ciœnieniowa – Sekcja 07 | 2d | 2026-08-27 A | 2026-08-31 A | 29XB26-052 | 100% | 2026-08-26 | 2026-08-27 |  | Rev B | Pomorski | 29XB26 | Ruroci¹g | Budowa | Roboty | Tomasz | Infrastr | PM000 | Zespó³-W | Blok | Normalny | Pakiet | L2 |  |
| 29XB26-054 |  | Izolacje – Sekcja 07 | 5d | 2026-08-31 A | 2026-09-04 A | 29XB26-053 | 100% | 2026-08-28 | 2026-09-03 |  |  | Pomorski | 29XB26 | Ruroci¹g | Budowa | Roboty | Tomasz | Infrastr | PM000 | Zespó³-W | Blok | Normalny | Pakiet | L2 |  |
| 29XB26-055 |  | Malowanie i oznakowanie – Sekcja 07 | 5d | 2026-09-01 A | 2026-09-10 A | 29XB26-054 FF+2d | 100% | 2026-09-01 | 2026-09-07 |  |  | Pomorski | 29XB26 | Ruroci¹g | Budowa | Roboty | Tomasz | Infrastr | PM000 | Zespó³-I | Blok | Normalny | Pakiet | L2 | Ryzyko opóŸnienia |

| ID | WBS | Activity | Duration | Start | Finish | Predecessors | Complete | Planned start | Planned finish | Calendar | AC_Wykonawca | AC_Obiekt | AC_Dyscyplina | AC_Faza | AC_Zakres | AC_Opiekun | AC_Obszar | AC_PP_PM | AC_Zespol | AC_Blok | AC_Priorytet | AC_Pakiet | AC_Poziom | Rewizja dokumentu | Uwagi harmonogramisty |
| --- | --- | --- | --- | --- | --- | --- | --- | --- | --- | --- | --- | --- | --- | --- | --- | --- | --- | --- | --- | --- | --- | --- | --- | --- | --- |
|  | SEKCJA 08 | **Sekcja 08** |  | 2026-05-05 | 2026-08-21 |  |  |  |  |  |  |  |  |  |  |  |  |  |  |  |  |  |  |  |  |
| 29XB26-056 |  | Prefabrykacja ruroci¹gów – Sekcja 08 | 3.4d | 2026-05-05 A | 2026-05-11 A | 29XB26-012, 29XB26-051 SS+5d | 100% | 2026-05-05 | 2026-05-07 |  | Pomorski | 29XB26 | Ruroci¹g | Budowa | Roboty | Tomasz | Infrastr | PM000 | Zespó³-W | Blok | Normalny | Pakiet | L2 |  |  |
| 29XB26-057 |  | Monta¿ ruroci¹gów – Sekcja 08 | 10d | 2026-07-23 A | 2026-08-07 A | 29XB26-056, 29XB26-014 SS+4d | 100% | 2026-07-20 | 2026-07-31 |  | Pomorski | 29XB26 | Ruroci¹g | Budowa | Roboty | Tomasz | Infrastr | PM000 | Zespó³-W | Blok | Normalny | Pakiet | L2 | Rev A |  |
| 29XB26-058 |  | Próba ciœnieniowa – Sekcja 08 | 4d | 2026-08-04 A | 2026-08-12 A | 29XB26-057 | 100% | 2026-08-03 | 2026-08-06 |  | Pomorski | 29XB26 | Ruroci¹g | Budowa | Roboty | Tomasz | Infrastr | PM000 | Zespó³-K | Blok | Normalny | Pakiet | L2 |  |  |
| 29XB26-059 |  | Izolacje – Sekcja 08 | 7d | 2026-08-10 A | 2026-08-19 A | 29XB26-058 | 100% | 2026-08-07 | 2026-08-17 |  | Pomorski | 29XB26 | Ruroci¹g | Budowa | Roboty | Tomasz | Infrastr | PM000 | Zespó³-W | Blok | Normalny | Pakiet | L2 |  |  |
| 29XB26-060 |  | Malowanie i oznakowanie – Sekcja 08 | 6d | 2026-08-11 A | 2026-08-21 A | 29XB26-059 FF+2d | 100% | 2026-08-12 | 2026-08-19 |  | Pomorski | 29XB26 | Ruroci¹g | Budowa | Roboty | Tomasz | Infrastr | PM000 | Zespó³-W | Blok | Normalny | Pakiet | L2 | Rev A | Ryzyko opóŸnienia |
|  | SEKCJA 09 | **Sekcja 09** |  | 2026-05-12 | 2026-08-14 |  |  |  |  |  |  |  |  |  |  |  |  |  |  |  |  |  |  |  |  |
|  | PODSEKCJA | **Podsekcja 09.A** |  | 2026-05-12 | 2026-08-14 |  |  |  |  |  |  |  |  |  |  |  |  |  |  |  |  |  |  |  |  |
| 29XB26-063 |  | Prefabrykacja ruroci¹gów – Sekcja 09 | 11.9d | 2026-05-12 A | 2026-05-29 A | 29XB26-012, 29XB26-056 SS+5d | 100% | 2026-05-12 | 2026-05-26 |  | Pomorski | 29XB26 | Ruroci¹g | Budowa | Roboty | Tomasz | Infrastr | PM000 | Zespó³-W | Blok | Normalny | Pakiet | L2 | Rev A |  |
| 29XB26-064 |  | Monta¿ ruroci¹gów – Sekcja 09 | 9.2d | 2026-07-14 A | 2026-07-28 A | 29XB26-063, 29XB26-014 SS+1d | 100% | 2026-07-15 | 2026-07-27 |  | Pomorski | 29XB26 | Ruroci¹g | Budowa | Roboty | Tomasz | Infrastr | PM000 | Zespó³-W | Blok | Normalny | Pakiet | L2 |  |  |
| 29XB26-065 |  | Próba ciœnieniowa – Sekcja 09 | 5d | 2026-07-30 A | 2026-08-05 A | 29XB26-064 | 100% | 2026-07-28 | 2026-08-03 | Kalendarz 6-dniowy | Pomorski | 29XB26 | Ruroci¹g | Budowa | Roboty | Tomasz | Infrastr | PM000 | Zespó³-W | Blok | Wysoki | Pakiet | L2 |  |  |
| 29XB26-066 |  | Izolacje – Sekcja 09 | 5d | 2026-08-06 A | 2026-08-14 A | 29XB26-065 | 100% | 2026-08-04 | 2026-08-10 |  | Pomorski | 29XB26 | Ruroci¹g | Budowa | Roboty | Tomasz | Infrastr | PM000 | Zespó³-W | Blok | Niski | Pakiet | L2 |  |  |
| 29XB26-067 |  | Malowanie i oznakowanie – Sekcja 09 | 2d | 2026-08-11 A | 2026-08-13 A | 29XB26-066 FF+2d | 100% | 2026-08-11 | 2026-08-12 |  | Pomorski | 29XB26 | Ruroci¹g | Budowa | Roboty | Tomasz | Infrastr | PM000 | Zespó³-K | Blok | Normalny | Pakiet | L2 |  |  |
|  | SEKCJA 10 | **Sekcja 10** |  | 2026-05-22 | 2026-09-08 |  |  |  |  |  |  |  |  |  |  |  |  |  |  |  |  |  |  |  |  |
| 29XB26-068 |  | Prefabrykacja ruroci¹gów – Sekcja 10 | 4.1d | 2026-05-22 A | 2026-05-27 A | 29XB26-012, 29XB26-063 SS+5d | 100% | 2026-05-19 | 2026-05-22 |  | Pomorski | 29XB26 | Ruroci¹g | Budowa | Roboty | Tomasz | Infrastr | PM000 | Zespó³-K | Blok | Normalny | Pakiet | L2 | Rev A | Do weryfikacji z wykonawc¹ |
| 29XB26-069 |  | Monta¿ ruroci¹gów – Sekcja 10 | 18.3d | 2026-07-29 A | 2026-08-26 A | 29XB26-068, 29XB26-014 SS+8d | 100% | 2026-07-24 | 2026-08-18 |  | Pomorski | 29XB26 | Ruroci¹g | Budowa | Roboty | Tomasz | Infrastr | PM000 | Zespó³-W | Blok | Niski | Pakiet | L2 |  |  |
| 29XB26-070 |  | Próba ciœnieniowa – Sekcja 10 | 4d | 2026-08-19 A | 2026-08-24 A | 29XB26-069 | 100% |  |  |  | Pomorski | 29XB26 | Ruroci¹g | Budowa | Roboty | Tomasz | Infrastr | PM000 | Zespó³-K | Blok | Normalny | Pakiet | L2 |  |  |
| 29XB26-071 |  | Izolacje – Sekcja 10 | 7d | 2026-08-27 A | 2026-09-07 A | 29XB26-070 | 100% | 2026-08-25 | 2026-09-02 |  | Pomorski | 29XB26 | Ruroci¹g | Budowa | Roboty | Tomasz | Infrastr | PM000 | Zespó³-K | Blok | Wysoki | Pakiet | L2 |  |  |
| 29XB26-072 |  | Malowanie i oznakowanie – Sekcja 10 | 8d | 2026-08-27 A | 2026-09-08 A | 29XB26-071 FF+2d | 100% | 2026-08-26 | 2026-09-04 |  | Pomorski | 29XB26 | Ruroci¹g | Budowa | Roboty | Tomasz | Infrastr | PM000 | Zespó³-K | Blok | Normalny | Pakiet | L2 | Rev B |  |
|  | SEKCJA 11 | **Sekcja 11** |  | 2026-05-28 | 2026-09-11 |  |  |  |  |  |  |  |  |  |  |  |  |  |  |  |  |  |  |  |  |
| 29XB26-075 |  | Prefabrykacja ruroci¹gów – Sekcja 11 | 3.6d | 2026-05-28 A | 2026-06-02 A | 29XB26-012, 29XB26-068 SS+5d | 100% | 2026-05-26 | 2026-05-28 | Kalendarz 6-dniowy | Pomorski | 29XB26 | Ruroci¹g | Budowa | Roboty | Tomasz | Infrastr | PM000 | Zespó³-K | Blok | Wysoki | Pakiet | L2 | Rev B | Uzgodnione na koordynacji |
| 29XB26-076 |  | Monta¿ ruroci¹gów – Sekcja 11 | 20.7d | 2026-07-21 A | 2026-08-17 A | 29XB26-075, 29XB26-014 SS+4d | 100% | 2026-07-20 | 2026-08-14 |  | Pomorski | 29XB26 | Ruroci¹g | Budowa | Roboty | Tomasz | Infrastr | PM000 | Zespó³-W | Blok | Normalny | Pakiet | L2 |  | Ryzyko opóŸnienia |
| 29XB26-077 |  | Próba ciœnieniowa – Sekcja 11 | 5d | 2026-08-19 A | 2026-08-28 A | 29XB26-076 | 100% | 2026-08-17 | 2026-08-21 |  | Pomorski | 29XB26 | Ruroci¹g | Budowa | Roboty | Tomasz | Infrastr | PM000 | Zespó³-W | Blok | Normalny | Pakiet | L2 |  |  |
| 29XB26-078 |  | Izolacje – Sekcja 11 | 12d | 2026-08-27 A | 2026-09-11 A | 29XB26-077 | 100% | 2026-08-24 | 2026-09-08 |  | Pomorski | 29XB26 | Ruroci¹g | Budowa | Roboty | Tomasz | Infrastr | PM000 | Zespó³-W | Blok | Normalny | Pakiet | L2 |  |  |
| 29XB26-079 |  | Malowanie i oznakowanie – Sekcja 11 | 5d | 2026-09-07 A | 2026-09-11 A | 29XB26-078 FF+2d | 100% | 2026-09-04 | 2026-09-10 |  | Pomorski | 29XB26 | Ruroci¹g | Budowa | Roboty | Tomasz | Infrastr | PM000 | Zespó³-W | Blok | Niski | Pakiet | L2 |  | Czeka na dostawê |

| ID | WBS | Activity | Type | Duration | Start | Finish | Predecessors | Complete | Remaining | Actual finish | Planned start | Planned finish | Total float | Free float | Calendar | Rewizja dokumentu | AC_Wykonawca | AC_Obiekt | AC_Dyscyplina | AC_Faza | AC_Zakres | AC_Opiekun | AC_Obszar | AC_PP_PM | AC_Zespol | AC_Blok | AC_Priorytet | AC_Pakiet | AC_Poziom |
| --- | --- | --- | --- | --- | --- | --- | --- | --- | --- | --- | --- | --- | --- | --- | --- | --- | --- | --- | --- | --- | --- | --- | --- | --- | --- | --- | --- | --- | --- |
|  | SEKCJA 12 | **Sekcja 12** |  |  | 2026-06-01 | 2026-08-12 |  |  |  |  |  |  |  |  |  |  |  |  |  |  |  |  |  |  |  |  |  |  |  |
|  | PODSEKCJA | **Podsekcja 12.A** |  |  | 2026-06-01 | 2026-08-12 |  |  |  |  |  |  |  |  |  |  |  |  |  |  |  |  |  |  |  |  |  |  |  |
| 29XB26-080 |  | Prefabrykacja ruroci¹gów – Sekcja 12 |  | 14.6d | 2026-06-01 A | 2026-06-19 A | 29XB26-012, 29XB26-075 SS+5d | 100% |  |  | 2026-06-02 | 2026-06-19 |  |  |  | Rev C | Pomorski | 29XB26 | Ruroci¹g | Budowa | Roboty | Tomasz | Infrastr | PM000 | Zespó³-W | Blok | Niski | Pakiet | L2 |
| 29XB26-081 |  | Monta¿ ruroci¹gów – Sekcja 12 |  | 9.8d | 2026-07-21 A | 2026-08-03 A | 29XB26-080, 29XB26-014 SS+2d | 100% |  |  | 2026-07-16 | 2026-07-28 |  |  |  | Rev B | Pomorski | 29XB26 | Ruroci¹g | Budowa | Roboty | Tomasz | Infrastr | PM000 | Zespó³-K | Blok | Normalny | Pakiet | L2 |
| 29XB26-082 |  | Próba ciœnieniowa – Sekcja 12 |  | 3d | 2026-07-30 A | 2026-08-04 A | 29XB26-081 | 100% |  |  | 2026-07-29 | 2026-07-31 |  |  |  |  | Pomorski | 29XB26 | Ruroci¹g | Budowa | Roboty | Tomasz | Infrastr | PM000 | Zespó³-W | Blok | Normalny | Pakiet | L2 |
| 29XB26-083 |  | Izolacje – Sekcja 12 |  | 4d | 2026-08-03 A | 2026-08-11 A | 29XB26-082 | 100% |  |  | 2026-08-03 | 2026-08-06 |  |  |  |  | Pomorski | 29XB26 | Ruroci¹g | Budowa | Roboty | Tomasz | Infrastr | PM000 | Zespó³-W | Blok | Normalny | Pakiet | L2 |
| 29XB26-084 |  | Malowanie i oznakowanie – Sekcja 12 |  | 2d | 2026-08-07 A | 2026-08-12 A | 29XB26-083 FF+2d | 100% |  |  | 2026-08-07 | 2026-08-10 |  |  |  |  | Pomorski | 29XB26 | Ruroci¹g | Budowa | Roboty | Tomasz | Infrastr | PM000 | Zespó³-W | Blok | Wysoki | Pakiet | L2 |
|  | PROJ | **Projektowanie** |  |  | 2025-06-12 | 2026-01-12 |  |  |  |  |  |  |  |  |  |  |  |  |  |  |  |  |  |  |  |  |  |  |  |
|  | DOKUMENTAC | **Dokumentacja** |  |  | 2025-06-12 | 2026-01-12 |  |  |  |  |  |  |  |  |  |  |  |  |  |  |  |  |  |  |  |  |  |  |  |
| 29XB26-001 |  | Projekt wykonawczy – Magazyn |  | 113d | 2025-06-12 A | 2025-11-17 A |  | 100% |  |  | 2025-06-10 | 2025-11-13 |  |  |  |  | Pomorski | 29XB26 | Budowlan | Projekto | Projekt | Tomasz | Infrastr | PM000 | Zespó³-K | Blok | Normalny | Pakiet | L2 |
| 29XB26-002 |  | Uzgodnienie dokumentacji z Inwestorem |  | 26d | 2025-11-18 A | 2025-12-23 A | 29XB26-001 | 100% |  |  | 2025-11-14 | 2025-12-19 |  |  |  | Rev C | Pomorski | 29XB26 | Budowlan | Projekto | Projekt | Tomasz | Infrastr | PM000 | Zespó³-W | Blok | Wysoki | Pakiet | L2 |
| 29XB26-003 |  | Zatwierdzenie dokumentacji do realizacji |  | 12d | 2025-12-19 A | 2026-01-07 A | 29XB26-002 | 100% |  |  | 2025-12-22 | 2026-01-06 |  |  |  |  | Pomorski | 29XB26 | Budowlan | Projekto | Projekt | Tomasz | Infrastr | PM200 | Zespó³-I | Blok | Normalny | Pakiet | L2 |
| 29XB26-004 |  | KM: Dokumentacja zatwierdzona – Magazyn | milestone | 0d | 2026-01-12 A | 2026-01-12 | 29XB26-003 | 100% |  | 2026-01-09 | 2026-01-07 | 2026-01-07 |  |  | Kalendarz 6-dniowy |  | Pomorski | 29XB26 | Budowlan | Projekto | Kamieñ | Tomasz | Infrastr | PM000 | Zespó³-K | Blok | Normalny | Pakiet | L1 |
|  | ROZR | **Rozruch** |  |  | 2026-09-15 | 2026-10-16 |  |  |  |  |  |  |  |  |  |  |  |  |  |  |  |  |  |  |  |  |  |  |  |
|  | ROZRUCH | **Rozruch** |  |  | 2026-09-15 | 2026-10-16 |  |  |  |  |  |  |  |  |  |  |  |  |  |  |  |  |  |  |  |  |  |  |  |
| 29XB26-089 |  | Przegl¹d gotowoœci do rozruchu |  | 5d | 2026-09-15 A | 2026-09-22 A | 29XB26-088, 29XB26-019, 29XB26-024, 29XB26-026 | 100% |  |  | 2026-09-11 | 2026-09-17 |  |  |  |  | Pomorski | 29XB26 | Rozruch | Rozruch | Rozruch | Tomasz | Infrastr | PM000 | Zespó³-K | Blok | Normalny | Pakiet | L2 |
| 29XB26-090 |  | Rozruch na zimno |  | 12d | 2026-09-21 A | 2026-10-16 | 29XB26-089 | 28% | 8.7d |  | 2026-09-18 | 2026-10-05 | 376.9d | 0d |  |  | Pomorski | 29XB26 | Rozruch | Rozruch | Rozruch | Tomasz | Infrastr | PM000 | Zespó³-K | Blok | Krytyczn | Pakiet | L2 |
| 29XB26-091 |  | Rozruch na gor¹co / próby ruchowe |  | 16d | 2026-10-06 A | 2026-10-08 | 29XB26-090 | 87% | 2.1d |  | 2026-10-06 | 2026-10-27 | 377.9d | 0d | Kalendarz 6-dniowy | Rev B | Pomorski | 29XB26 | Rozruch | Rozruch | Rozruch | Tomasz | Infrastr | PM000 | Zespó³-W | Blok | Normalny | Pakiet | L2 |
| 29XB26-092 |  | KM: Odbiór koñcowy – Magazyn | milestone | 0d | 2026-10-09 | 2026-10-09 | 29XB26-091 |  |  |  | 2026-10-28 | 2026-10-28 | 391.5d | 0d |  | Rev A | Pomorski | 29XB26 | Rozruch | Rozruch | Kamieñ | Tomasz | Infrastr | PM000 | Zespó³-W | Blok | Krytyczn | Pakiet | L1 |
|  | ZAKU | **Zakupy** |  |  | 2025-07-10 | 2026-07-15 |  |  |  |  |  |  |  |  |  |  |  |  |  |  |  |  |  |  |  |  |  |  |  |
|  | DOSTAWY | **Dostawy** |  |  | 2026-01-21 | 2026-07-15 |  |  |  |  |  |  |  |  |  |  |  |  |  |  |  |  |  |  |  |  |  |  |  |
| 29XB26-008 |  | Produkcja u dostawcy |  | 103d | 2026-01-21 A | 2026-06-15 A | 29XB26-007 | 100% |  |  | 2026-01-20 | 2026-06-11 |  |  |  |  | Pomorski | 29XB26 | Mechanic | Zakupy | Dostawa | Tomasz | Infrastr | PM000 | Zespó³-K | Blok | Normalny | Pakiet | L2 |
| 29XB26-009 |  | Testy FAT |  | 9d | 2026-06-12 A | 2026-06-29 A | 29XB26-008 | 100% |  |  | 2026-06-12 | 2026-06-24 |  |  |  |  | Pomorski | 29XB26 | Mechanic | Zakupy | Dostawa | Tomasz | Infrastr | PM000 | Zespó³-W | Blok | Normalny | Pakiet | L2 |
| 29XB26-010 |  | Transport i dostawa na plac budowy |  | 13d | 2026-06-25 A | 2026-07-15 A | 29XB26-009 | 100% |  |  | 2026-06-25 | 2026-07-13 |  |  |  |  | Pomorski | 29XB26 | Mechanic | Zakupy | Dostawa | Tomasz | Infrastr | PM000 | Zespó³-W | Blok | Normalny | Pakiet | L2 |
| 29XB26-011 |  | KM: Dostawa na budowê – Magazyn | milestone | 0d | 2026-07-15 A | 2026-07-15 | 29XB26-010 | 100% |  | 2026-07-14 | 2026-07-14 | 2026-07-14 |  |  |  | Rev B | Pomorski | 29XB26 | Mechanic | Zakupy | Kamieñ | Tomasz | Infrastr | PM000 | Zespó³-W | Blok | Niski | Pakiet | L1 |

| ID | WBS | Activity | Type | Duration | Start | Finish | Predecessors | Complete | Actual finish | Planned start | Planned finish | Calendar | AC_Wykonawca | AC_Obiekt | AC_Dyscyplina | AC_Faza | AC_Zakres | AC_Opiekun | AC_Obszar | AC_PP_PM | AC_Zespol | AC_Blok | AC_Priorytet | AC_Pakiet | AC_Poziom | Uwagi harmonogramisty | Rewizja dokumentu |
| --- | --- | --- | --- | --- | --- | --- | --- | --- | --- | --- | --- | --- | --- | --- | --- | --- | --- | --- | --- | --- | --- | --- | --- | --- | --- | --- | --- |
|  | ZAMÓWIENIA | **Zamówienia** |  |  | 2025-07-10 | 2026-01-20 |  |  |  |  |  |  |  |  |  |  |  |  |  |  |  |  |  |  |  |  |  |
| 29XB26-005 |  | Zapytanie ofertowe |  | 17d | 2025-07-10 A | 2025-08-06 A | 29XB26-001 SS+20d | 100% |  | 2025-07-08 | 2025-07-30 |  | Pomorski | 29XB26 | Mechanic | Zakupy | Dostawa | Tomasz | Infrastr | PM000 | Zespó³-K | Blok | Wysoki | Pakiet | L2 |  |  |
| 29XB26-006 |  | Analiza i wybór ofert |  | 20d | 2025-08-01 A | 2025-08-29 A | 29XB26-005 | 100% |  | 2025-07-31 | 2025-08-27 |  | Pomorski | 29XB26 | Mechanic | Zakupy | Dostawa | Tomasz | Infrastr | PM000 | Zespó³-I | Blok | Normalny | Pakiet | L2 |  |  |
| 29XB26-007 |  | Zawarcie umowy / zamówienie |  | 9d | 2026-01-06 A | 2026-01-20 A | 29XB26-006, 29XB26-004 SS, 12FX78-004 (other project) FS+3d | 100% |  | 2026-01-07 | 2026-01-19 |  | Pomorski | 29XB26 | Mechanic | Zakupy | Dostawa | Tomasz | Infrastr | PM000 | Zespó³-W | Blok | Wysoki | Pakiet | L1 |  |  |
|  | 29YB32 | **29YB32 – Budynek administracyjny** |  |  | 2025-03-17 | 2026-09-29 |  |  |  |  |  |  |  |  |  |  |  |  |  |  |  |  |  |  |  |  |  |
|  | BUDO | **Budowa** |  |  | 2026-01-07 | 2026-08-14 |  |  |  |  |  |  |  |  |  |  |  |  |  |  |  |  |  |  |  |  |  |
|  | AKPIA | **AKPiA** |  |  | 2026-06-17 | 2026-08-04 |  |  |  |  |  |  |  |  |  |  |  |  |  |  |  |  |  |  |  |  |  |
| 29YB32-092 |  | Monta¿ uk³adów AKPiA |  | 33d | 2026-06-17 A | 2026-08-04 A | 29YB32-014 SS+5d | 100% |  | 2026-06-17 | 2026-07-31 | Kalendarz 6-dniowy | TurboSys | 29YB32 | AKPiA | Budowa | Roboty | Marek | Infrastr | PM000 | Zespó³-W | Blok | Normalny | Pakiet | L2 |  |  |
|  | ELEKTRYKA | **Elektryka** |  |  | 2026-06-24 | 2026-07-17 |  |  |  |  |  |  |  |  |  |  |  |  |  |  |  |  |  |  |  |  |  |
| 29YB32-049 |  | Uk³adanie kabli – trasa 06 |  | 7d | 2026-06-24 A | 2026-07-06 A | 29YB32-014 SS+10d | 100% |  | 2026-06-24 | 2026-07-02 |  | TurboSys | 29YB32 | Elektryc | Budowa | Roboty | Marek | Infrastr | PM000 | Zespó³-W | Blok | Wysoki | Pakiet | L2 |  |  |
| 29YB32-086 |  | Pod³¹czenia i pomiary – trasa 12 |  | 5d | 2026-06-24 A | 2026-07-02 A | 29YB32-085 FF | 100% |  | 2026-06-25 | 2026-07-01 |  | TurboSys | 29YB32 | Elektryc | Budowa | Roboty | Marek | Infrastr | PM000 | Zespó³-K | Blok | Normalny | Pakiet | L2 | Do weryfikacji z wykonawc¹ |  |
| 29YB32-085 |  | Uk³adanie kabli – trasa 12 |  | 6d | 2026-06-25 A | 2026-07-03 A | 29YB32-014 SS+10d | 100% |  | 2026-06-24 | 2026-07-01 |  | TurboSys | 29YB32 | Elektryc | Budowa | Roboty | Marek | Infrastr | PM000 | Zespó³-W | Blok | Niski | Pakiet | L2 | Ryzyko opóŸnienia |  |
| 29YB32-025 |  | Uk³adanie kabli – trasa 02 |  | 6d | 2026-06-26 A | 2026-07-07 A | 29YB32-014 SS+10d | 100% |  | 2026-06-24 | 2026-07-01 |  | TurboSys | 29YB32 | Elektryc | Budowa | Roboty | Marek | Infrastr | PM000 | Zespó³-W | Blok | Wysoki | Pakiet | L2 |  |  |
| 29YB32-061 |  | Uk³adanie kabli – trasa 08 |  | 6d | 2026-06-26 A | 2026-07-08 A | 29YB32-014 SS+10d | 100% |  | 2026-06-24 | 2026-07-01 |  | TurboSys | 29YB32 | Elektryc | Budowa | Roboty | Marek | Infrastr | PM000 | Zespó³-W | Blok | Normalny | Pakiet | L2 |  |  |
| 29YB32-073 |  | Uk³adanie kabli – trasa 10 |  | 14d | 2026-06-26 A | 2026-07-16 A | 29YB32-014 SS+10d | 100% |  | 2026-06-24 | 2026-07-13 |  | TurboSys | 29YB32 | Elektryc | Budowa | Roboty | Marek | Infrastr | PM000 | Zespó³-W | Blok | Normalny | Pakiet | L2 |  | Rev C |
| 29YB32-037 |  | Uk³adanie kabli – trasa 04 |  | 14d | 2026-06-29 A | 2026-07-17 A | 29YB32-014 SS+10d | 100% |  | 2026-06-24 | 2026-07-13 |  | TurboSys | 29YB32 | Elektryc | Budowa | Roboty | Marek | Infrastr | PM000 | Zespó³-K | Blok | Normalny | Pakiet | L2 |  |  |
| 29YB32-050 |  | Pod³¹czenia i pomiary – trasa 06 |  | 4d | 2026-06-29 A | 2026-07-02 A | 29YB32-049 FF | 100% |  |  |  |  | TurboSys | 29YB32 | Elektryc | Budowa | Roboty | Marek | Infrastr | PM000 | Zespó³-K | Blok | Normalny | Pakiet | L2 | Do weryfikacji z wykonawc¹ | Rev B |
| 29YB32-074 |  | Pod³¹czenia i pomiary – trasa 10 |  | 10d | 2026-06-29 A | 2026-07-10 A | 29YB32-073 FF | 100% |  | 2026-06-30 | 2026-07-13 | Kalendarz 6-dniowy | TurboSys | 29YB32 | Elektryc | Budowa | Roboty | Marek | Infrastr | PM000 | Zespó³-W | Blok | Krytyczn | Pakiet | L2 | Bez uwag | Rev C |
| 29YB32-026 |  | Pod³¹czenia i pomiary – trasa 02 |  | 5d | 2026-06-30 A | 2026-07-09 A | 29YB32-025 FF | 100% |  | 2026-06-25 | 2026-07-01 |  | TurboSys | 29YB32 | Elektryc | Budowa | Roboty | Marek | Infrastr | PM000 | Zespó³-W | Blok | Normalny | Pakiet | L2 |  |  |
| 29YB32-038 |  | Pod³¹czenia i pomiary – trasa 04 |  | 10d | 2026-06-30 A | 2026-07-16 A | 29YB32-037 FF | 100% |  | 2026-06-30 | 2026-07-13 |  | TurboSys | 29YB32 | Elektryc | Budowa | Roboty | Marek | Infrastr | PM000 | Zespó³-W | Blok | Normalny | Pakiet | L2 |  |  |
| 29YB32-062 |  | Pod³¹czenia i pomiary – trasa 08 |  | 3d | 2026-07-01 A | 2026-07-03 A | 29YB32-061 FF | 100% |  | 2026-06-29 | 2026-07-01 |  | TurboSys | 29YB32 | Elektryc | Budowa | Roboty | Marek | Infrastr | PM000 | Zespó³-W | Blok | Normalny | Pakiet | L2 |  |  |
|  | MONTA¯ | **Monta¿** |  |  | 2026-03-24 | 2026-08-14 |  |  |  |  |  |  |  |  |  |  |  |  |  |  |  |  |  |  |  |  |  |
| 29YB32-013 |  | Monta¿ konstrukcji stalowych |  | 32d | 2026-03-24 A | 2026-05-06 A | 29YB32-012 | 100% |  | 2026-03-25 | 2026-05-07 |  | TurboSys | 29YB32 | Mechanic | Budowa | Roboty | Marek | Infrastr | PM000 | Zespó³-K | Blok | Normalny | Pakiet | L2 |  | Rev C |
| 29YB32-014 |  | Monta¿ urz¹dzeñ g³ównych |  | 43d | 2026-06-15 A | 2026-08-14 A | 29YB32-013, 29YB32-011 | 100% |  | 2026-06-10 | 2026-08-07 |  | TurboSys | 29YB32 | Mechanic | Budowa | Roboty | Marek | Infrastr | PM000 | Zespó³-W | Blok | Normalny | Pakiet | L2 | Ryzyko opóŸnienia |  |
| 29YB32-093 |  | KM: Zakoñczenie monta¿u – Budynek administracyjny | milestone | 0d | 2026-08-11 A | 2026-08-11 | 29YB32-084, 29YB32-086, 29YB32-091, 29YB32-092, 29YB32-014 | 100% | 2026-08-10 | 2026-08-10 | 2026-08-10 | Kalendarz 6-dniowy | TurboSys | 29YB32 | Mechanic | Budowa | Kamieñ | Marek | Infrastr | PM000 | Zespó³-K | Blok | Normalny | Pakiet | L2 |  | Rev C |

| ID | WBS | Activity | Duration | Start | Finish | Predecessors | Complete | Planned start | Planned finish | Calendar | AC_Wykonawca | AC_Obiekt | AC_Dyscyplina | AC_Faza | AC_Zakres | AC_Opiekun | AC_Obszar | AC_PP_PM | AC_Zespol | AC_Blok | AC_Priorytet | AC_Pakiet | AC_Poziom | Rewizja dokumentu | Uwagi harmonogramisty |
| --- | --- | --- | --- | --- | --- | --- | --- | --- | --- | --- | --- | --- | --- | --- | --- | --- | --- | --- | --- | --- | --- | --- | --- | --- | --- |
|  | ROBOTY BUD | **Roboty budowlane** |  | 2026-01-07 | 2026-03-27 |  |  |  |  |  |  |  |  |  |  |  |  |  |  |  |  |  |  |  |  |
| 29YB32-012 |  | Fundamenty i roboty ziemne | 55d | 2026-01-07 A | 2026-03-27 A | 29YB32-007 FS+2d | 100% | 2026-01-07 | 2026-03-24 |  | TurboSys | 29YB32 | Budowlan | Budowa | Roboty | Marek | Infrastr | PM300 | Zespó³-E | Blok | Normalny | Pakiet | L2 |  |  |
|  | RUROCI¥GI | **Ruroci¹gi** |  | 2026-03-27 | 2026-08-13 |  |  |  |  |  |  |  |  |  |  |  |  |  |  |  |  |  |  |  |  |
|  | SEKCJA 01 | **Sekcja 01** |  | 2026-03-27 | 2026-07-24 |  |  |  |  |  |  |  |  |  |  |  |  |  |  |  |  |  |  |  |  |
| 29YB32-015 |  | Prefabrykacja ruroci¹gów – Sekcja 01 | 3.5d | 2026-03-27 A | 2026-04-01 A | 29YB32-012 | 100% | 2026-03-25 | 2026-03-27 |  | TurboSys | 29YB32 | Ruroci¹g | Budowa | Roboty | Marek | Infrastr | PM000 | Zespó³-W | Blok | Normalny | Pakiet | L2 | Rev A |  |
| 29YB32-016 |  | Monta¿ ruroci¹gów – Sekcja 01 | 11d | 2026-06-29 A | 2026-07-16 A | 29YB32-015, 29YB32-014 SS+10d | 100% | 2026-06-24 | 2026-07-08 | Kalendarz 6-dniowy | TurboSys | 29YB32 | Ruroci¹g | Budowa | Roboty | Marek | Infrastr | PM000 | Zespó³-W | Blok | Normalny | Pakiet | L2 |  |  |
| 29YB32-017 |  | Próba ciœnieniowa – Sekcja 01 | 4d | 2026-07-08 A | 2026-07-15 A | 29YB32-016 | 100% | 2026-07-09 | 2026-07-14 |  | TurboSys | 29YB32 | Ruroci¹g | Budowa | Roboty | Marek | Infrastr | PM000 | Zespó³-W | Blok | Normalny | Pakiet | L2 |  |  |
| 29YB32-018 |  | Izolacje – Sekcja 01 | 4d | 2026-07-20 A | 2026-07-24 A | 29YB32-017 | 100% | 2026-07-15 | 2026-07-20 |  | TurboSys | 29YB32 | Ruroci¹g | Budowa | Roboty | Marek | Infrastr | PM100 | Zespó³-E | Blok | Normalny | Pakiet | L2 |  |  |
| 29YB32-019 |  | Malowanie i oznakowanie – Sekcja 01 | 3d | 2026-07-21 A | 2026-07-23 A | 29YB32-018 FF+2d | 100% | 2026-07-20 | 2026-07-22 |  | TurboSys | 29YB32 | Ruroci¹g | Budowa | Roboty | Marek | Infrastr | PM000 | Zespó³-W | Blok | Niski | Pakiet | L2 |  |  |
|  | SEKCJA 02 | **Sekcja 02** |  | 2026-03-31 | 2026-08-10 |  |  |  |  |  |  |  |  |  |  |  |  |  |  |  |  |  |  |  |  |
| 29YB32-020 |  | Prefabrykacja ruroci¹gów – Sekcja 02 | 11.5d | 2026-03-31 A | 2026-04-16 A | 29YB32-012, 29YB32-015 SS+5d | 100% | 2026-04-01 | 2026-04-15 |  | TurboSys | 29YB32 | Ruroci¹g | Budowa | Roboty | Marek | Infrastr | PM000 | Zespó³-K | Blok | Niski | Pakiet | L2 |  |  |
| 29YB32-021 |  | Monta¿ ruroci¹gów – Sekcja 02 | 21d | 2026-06-26 A | 2026-07-27 A | 29YB32-020, 29YB32-014 SS+9d | 100% | 2026-06-23 | 2026-07-21 |  | TurboSys | 29YB32 | Ruroci¹g | Budowa | Roboty | Marek | Infrastr | PM000 | Zespó³-K | Blok | Niski | Pakiet | L2 |  |  |
| 29YB32-022 |  | Próba ciœnieniowa – Sekcja 02 | 4d | 2026-07-23 A | 2026-07-28 A | 29YB32-021 | 100% | 2026-07-22 | 2026-07-27 |  | TurboSys | 29YB32 | Ruroci¹g | Budowa | Roboty | Marek | Infrastr | PM000 | Zespó³-W | Blok | Normalny | Pakiet | L2 |  |  |
| 29YB32-023 |  | Izolacje – Sekcja 02 | 5d | 2026-07-28 A | 2026-08-06 A | 29YB32-022 | 100% | 2026-07-28 | 2026-08-03 |  | TurboSys | 29YB32 | Ruroci¹g | Budowa | Roboty | Marek | Infrastr | PM000 | Zespó³-W | Blok | Wysoki | Pakiet | L2 |  |  |
| 29YB32-024 |  | Malowanie i oznakowanie – Sekcja 02 | 3d | 2026-08-04 A | 2026-08-10 A | 29YB32-023 FF+2d | 100% | 2026-08-03 | 2026-08-05 |  | TurboSys | 29YB32 | Ruroci¹g | Budowa | Roboty | Marek | Infrastr | PM000 | Zespó³-W | Blok | Normalny | Pakiet | L2 |  |  |
|  | SEKCJA 03 | **Sekcja 03** |  | 2026-04-09 | 2026-08-05 |  |  |  |  |  |  |  |  |  |  |  |  |  |  |  |  |  |  |  |  |
|  | PODSEKCJA | **Podsekcja 03.A** |  | 2026-04-09 | 2026-08-05 |  |  |  |  |  |  |  |  |  |  |  |  |  |  |  |  |  |  |  |  |
| 29YB32-027 |  | Prefabrykacja ruroci¹gów – Sekcja 03 | 13.3d | 2026-04-09 A | 2026-04-30 A | 29YB32-012, 29YB32-020 SS+5d | 100% | 2026-04-08 | 2026-04-24 |  | TurboSys | 29YB32 | Ruroci¹g | Budowa | Roboty | Marek | Infrastr | PM000 | Zespó³-K | Blok | Normalny | Pakiet | L2 |  | Uzgodnione na koordynacji |
| 29YB32-028 |  | Monta¿ ruroci¹gów – Sekcja 03 | 18.6d | 2026-06-23 A | 2026-07-17 A | 29YB32-027, 29YB32-014 SS+9d | 100% | 2026-06-23 | 2026-07-16 |  | TurboSys | 29YB32 | Ruroci¹g | Budowa | Roboty | Marek | Infrastr | PM000 | Zespó³-K | Blok | Normalny | Pakiet | L2 |  |  |
| 29YB32-029 |  | Próba ciœnieniowa – Sekcja 03 | 3d | 2026-07-17 A | 2026-07-22 A | 29YB32-028 | 100% | 2026-07-17 | 2026-07-21 |  | TurboSys | 29YB32 | Ruroci¹g | Budowa | Roboty | Marek | Infrastr | PM000 | Zespó³-W | Blok | Krytyczn | Pakiet | L2 |  |  |
| 29YB32-030 |  | Izolacje – Sekcja 03 | 7d | 2026-07-21 A | 2026-08-03 A | 29YB32-029 | 100% | 2026-07-22 | 2026-07-30 |  | TurboSys | 29YB32 | Ruroci¹g | Budowa | Roboty | Marek | Infrastr | PM000 | Zespó³-W | Blok | Normalny | Pakiet | L2 |  | Uzgodnione na koordynacji |
| 29YB32-031 |  | Malowanie i oznakowanie – Sekcja 03 | 6d | 2026-07-24 A | 2026-08-05 A | 29YB32-030 FF+2d | 100% | 2026-07-27 | 2026-08-03 | Kalendarz 6-dniowy | TurboSys | 29YB32 | Ruroci¹g | Budowa | Roboty | Marek | Infrastr | PM000 | Zespó³-W | Blok | Niski | Pakiet | L2 |  |  |
|  | SEKCJA 04 | **Sekcja 04** |  | 2026-04-14 | 2026-07-31 |  |  |  |  |  |  |  |  |  |  |  |  |  |  |  |  |  |  |  |  |
| 29YB32-032 |  | Prefabrykacja ruroci¹gów – Sekcja 04 | 4.5d | 2026-04-14 A | 2026-04-22 A | 29YB32-012, 29YB32-027 SS+5d | 100% | 2026-04-15 | 2026-04-20 |  | TurboSys | 29YB32 | Ruroci¹g | Budowa | Roboty | Marek | Infrastr | PM000 | Zespó³-W | Blok | Normalny | Pakiet | L2 |  |  |
| 29YB32-033 |  | Monta¿ ruroci¹gów – Sekcja 04 | 12.3d | 2026-06-24 A | 2026-07-14 A | 29YB32-032, 29YB32-014 SS+9d | 100% | 2026-06-23 | 2026-07-08 |  | TurboSys | 29YB32 | Ruroci¹g | Budowa | Roboty | Marek | Infrastr | PM000 | Zespó³-W | Blok | Normalny | Pakiet | L2 |  | Bez uwag |
| 29YB32-034 |  | Próba ciœnieniowa – Sekcja 04 | 2d | 2026-07-13 A | 2026-07-16 A | 29YB32-033 | 100% | 2026-07-09 | 2026-07-10 |  | TurboSys | 29YB32 | Ruroci¹g | Budowa | Roboty | Marek | Infrastr | PM000 | Zespó³-W | Blok | Normalny | Pakiet | L2 |  |  |
| 29YB32-035 |  | Izolacje – Sekcja 04 | 11d | 2026-07-16 A | 2026-07-30 A | 29YB32-034 | 100% | 2026-07-13 | 2026-07-27 |  | TurboSys | 29YB32 | Ruroci¹g | Budowa | Roboty | Marek | Infrastr | PM000 | Zespó³-W | Blok | Normalny | Pakiet | L2 |  |  |
| 29YB32-036 |  | Malowanie i oznakowanie – Sekcja 04 | 6d | 2026-07-24 A | 2026-07-31 A | 29YB32-035 FF+2d | 100% | 2026-07-22 | 2026-07-29 |  | TurboSys | 29YB32 | Ruroci¹g | Budowa | Roboty | Marek | Infrastr | PM000 | Zespó³-E | Blok | Normalny | Pakiet | L2 | Rev A |  |

| ID | WBS | Activity | Duration | Start | Finish | Predecessors | Complete | Planned start | Planned finish | Calendar | AC_Wykonawca | AC_Obiekt | AC_Dyscyplina | AC_Faza | AC_Zakres | AC_Opiekun | AC_Obszar | AC_PP_PM | AC_Zespol | AC_Blok | AC_Priorytet | AC_Pakiet | AC_Poziom | Uwagi harmonogramisty | Rewizja dokumentu |
| --- | --- | --- | --- | --- | --- | --- | --- | --- | --- | --- | --- | --- | --- | --- | --- | --- | --- | --- | --- | --- | --- | --- | --- | --- | --- |
|  | SEKCJA 05 | **Sekcja 05** |  | 2026-04-23 | 2026-08-13 |  |  |  |  |  |  |  |  |  |  |  |  |  |  |  |  |  |  |  |  |
| 29YB32-039 |  | Prefabrykacja ruroci¹gów – Sekcja 05 | 11d | 2026-04-23 A | 2026-05-08 A | 29YB32-012, 29YB32-032 SS+5d | 100% | 2026-04-22 | 2026-05-06 |  | TurboSys | 29YB32 | Ruroci¹g | Budowa | Roboty | Marek | Infrastr | PM000 | Zespó³-W | Blok | Normalny | Pakiet | L2 |  |  |
| 29YB32-040 |  | Monta¿ ruroci¹gów – Sekcja 05 | 20.3d | 2026-06-15 A | 2026-07-14 A | 29YB32-039, 29YB32-014 SS+4d | 100% | 2026-06-16 | 2026-07-13 |  | TurboSys | 29YB32 | Ruroci¹g | Budowa | Roboty | Marek | Infrastr | PM000 | Zespó³-K | Blok | Wysoki | Pakiet | L2 | Ryzyko opóŸnienia |  |
| 29YB32-041 |  | Próba ciœnieniowa – Sekcja 05 | 6d | 2026-07-15 A | 2026-07-23 A | 29YB32-040 | 100% | 2026-07-14 | 2026-07-21 |  | TurboSys | 29YB32 | Ruroci¹g | Budowa | Roboty | Marek | Infrastr | PM000 | Zespó³-E | Blok | Wysoki | Pakiet | L2 |  | Rev A |
| 29YB32-042 |  | Izolacje – Sekcja 05 | 11d | 2026-07-22 A | 2026-08-05 A | 29YB32-041 | 100% |  |  |  | TurboSys | 29YB32 | Ruroci¹g | Budowa | Roboty | Marek | Infrastr | PM000 | Zespó³-K | Blok | Normalny | Pakiet | L2 |  |  |
| 29YB32-043 |  | Malowanie i oznakowanie – Sekcja 05 | 3d | 2026-08-07 A | 2026-08-13 A | 29YB32-042 FF+2d | 100% | 2026-08-05 | 2026-08-07 |  | TurboSys | 29YB32 | Ruroci¹g | Budowa | Roboty | Marek | Infrastr | PM000 | Zespó³-I | Blok | Wysoki | Pakiet | L2 |  | Rev C |
|  | SEKCJA 06 | **Sekcja 06** |  | 2026-04-30 | 2026-07-30 |  |  |  |  |  |  |  |  |  |  |  |  |  |  |  |  |  |  |  |  |
|  | PODSEKCJA | **Podsekcja 06.A** |  | 2026-04-30 | 2026-07-30 |  |  |  |  |  |  |  |  |  |  |  |  |  |  |  |  |  |  |  |  |
| 29YB32-044 |  | Prefabrykacja ruroci¹gów – Sekcja 06 | 10.8d | 2026-04-30 A | 2026-05-13 A | 29YB32-012, 29YB32-039 SS+5d | 100% | 2026-04-29 | 2026-05-12 | Kalendarz 6-dniowy | TurboSys | 29YB32 | Ruroci¹g | Budowa | Roboty | Marek | Infrastr | PM000 | Zespó³-W | Blok | Normalny | Pakiet | L2 |  |  |
| 29YB32-045 |  | Monta¿ ruroci¹gów – Sekcja 06 | 11.9d | 2026-06-16 A | 2026-06-30 A | 29YB32-044, 29YB32-014 SS+5d | 100% | 2026-06-17 | 2026-07-01 |  | TurboSys | 29YB32 | Ruroci¹g | Budowa | Roboty | Marek | Infrastr | PM000 | Zespó³-W | Blok | Krytyczn | Pakiet | L2 | Bez uwag | Rev B |
| 29YB32-046 |  | Próba ciœnieniowa – Sekcja 06 | 6d | 2026-07-07 A | 2026-07-17 A | 29YB32-045 | 100% | 2026-07-02 | 2026-07-09 | Kalendarz 6-dniowy | TurboSys | 29YB32 | Ruroci¹g | Budowa | Roboty | Marek | Infrastr | PM000 | Zespó³-W | Blok | Krytyczn | Pakiet | L2 |  |  |
| 29YB32-047 |  | Izolacje – Sekcja 06 | 12d | 2026-07-14 A | 2026-07-30 A | 29YB32-046 | 100% | 2026-07-10 | 2026-07-27 |  | TurboSys | 29YB32 | Ruroci¹g | Budowa | Roboty | Marek | Infrastr | PM000 | Zespó³-K | Blok | Normalny | Pakiet | L2 |  |  |
| 29YB32-048 |  | Malowanie i oznakowanie – Sekcja 06 | 3d | 2026-07-24 A | 2026-07-28 A | 29YB32-047 FF+2d | 100% | 2026-07-27 | 2026-07-29 |  | TurboSys | 29YB32 | Ruroci¹g | Budowa | Roboty | Marek | Infrastr | PM000 | Zespó³-K | Blok | Krytyczn | Pakiet | L2 |  |  |
|  | SEKCJA 07 | **Sekcja 07** |  | 2026-05-08 | 2026-08-12 |  |  |  |  |  |  |  |  |  |  |  |  |  |  |  |  |  |  |  |  |
| 29YB32-051 |  | Prefabrykacja ruroci¹gów – Sekcja 07 | 13.9d | 2026-05-08 A | 2026-05-26 A | 29YB32-012, 29YB32-044 SS+5d | 100% | 2026-05-06 | 2026-05-22 |  | TurboSys | 29YB32 | Ruroci¹g | Budowa | Roboty | Marek | Infrastr | PM000 | Zespó³-K | Blok | Normalny | Pakiet | L2 |  |  |
| 29YB32-052 |  | Monta¿ ruroci¹gów – Sekcja 07 | 19.3d | 2026-06-23 A | 2026-07-22 A | 29YB32-051, 29YB32-014 SS+6d | 100% | 2026-06-18 | 2026-07-14 | Kalendarz 6-dniowy | TurboSys | 29YB32 | Ruroci¹g | Budowa | Roboty | Marek | Infrastr | PM000 | Zespó³-W | Blok | Normalny | Pakiet | L2 |  |  |
| 29YB32-053 |  | Próba ciœnieniowa – Sekcja 07 | 5d | 2026-07-17 A | 2026-07-28 A | 29YB32-052 | 100% | 2026-07-15 | 2026-07-21 |  | TurboSys | 29YB32 | Ruroci¹g | Budowa | Roboty | Marek | Infrastr | PM100 | Zespó³-E | Blok | Normalny | Pakiet | L2 |  |  |
| 29YB32-054 |  | Izolacje – Sekcja 07 | 12d | 2026-07-21 A | 2026-08-05 A | 29YB32-053 | 100% | 2026-07-22 | 2026-08-06 |  | TurboSys | 29YB32 | Ruroci¹g | Budowa | Roboty | Marek | Infrastr | PM000 | Zespó³-W | Blok | Normalny | Pakiet | L2 |  |  |
| 29YB32-055 |  | Malowanie i oznakowanie – Sekcja 07 | 7d | 2026-07-31 A | 2026-08-12 A | 29YB32-054 FF+2d | 100% | 2026-07-31 | 2026-08-10 | Kalendarz 6-dniowy | TurboSys | 29YB32 | Ruroci¹g | Budowa | Roboty | Marek | Infrastr | PM000 | Zespó³-K | Blok | Normalny | Pakiet | L2 |  |  |
|  | SEKCJA 08 | **Sekcja 08** |  | 2026-05-18 | 2026-07-31 |  |  |  |  |  |  |  |  |  |  |  |  |  |  |  |  |  |  |  |  |
| 29YB32-056 |  | Prefabrykacja ruroci¹gów – Sekcja 08 | 8.1d | 2026-05-18 A | 2026-05-27 A | 29YB32-012, 29YB32-051 SS+5d | 100% | 2026-05-13 | 2026-05-22 |  | TurboSys | 29YB32 | Ruroci¹g | Budowa | Roboty | Marek | Infrastr | PM000 | Zespó³-W | Blok | Normalny | Pakiet | L2 |  |  |
| 29YB32-057 |  | Monta¿ ruroci¹gów – Sekcja 08 | 12.2d | 2026-06-22 A | 2026-07-07 A | 29YB32-056, 29YB32-014 SS+6d | 100% | 2026-06-18 | 2026-07-03 |  | TurboSys | 29YB32 | Ruroci¹g | Budowa | Roboty | Marek | Infrastr | PM000 | Zespó³-W | Blok | Niski | Pakiet | L2 | Czeka na dostawê |  |
| 29YB32-058 |  | Próba ciœnieniowa – Sekcja 08 | 6d | 2026-07-03 A | 2026-07-10 A | 29YB32-057 | 100% | 2026-07-06 | 2026-07-13 |  | TurboSys | 29YB32 | Ruroci¹g | Budowa | Roboty | Marek | Infrastr | PM000 | Zespó³-W | Blok | Normalny | Pakiet | L2 |  |  |
| 29YB32-059 |  | Izolacje – Sekcja 08 | 7d | 2026-07-16 A | 2026-07-29 A | 29YB32-058 | 100% | 2026-07-14 | 2026-07-22 |  | TurboSys | 29YB32 | Ruroci¹g | Budowa | Roboty | Marek | Infrastr | PM000 | Zespó³-K | Blok | Niski | Pakiet | L2 |  |  |
| 29YB32-060 |  | Malowanie i oznakowanie – Sekcja 08 | 7d | 2026-07-21 A | 2026-07-31 A | 29YB32-059 FF+2d | 100% | 2026-07-16 | 2026-07-24 |  | TurboSys | 29YB32 | Ruroci¹g | Budowa | Roboty | Marek | Infrastr | PM000 | Zespó³-K | Blok | Normalny | Pakiet | L2 | Do weryfikacji z wykonawc¹ | Rev A |

| ID | WBS | Activity | Duration | Start | Finish | Predecessors | Complete | Planned start | Planned finish | Calendar | Uwagi harmonogramisty | AC_Wykonawca | AC_Obiekt | AC_Dyscyplina | AC_Faza | AC_Zakres | AC_Opiekun | AC_Obszar | AC_PP_PM | AC_Zespol | AC_Blok | AC_Priorytet | AC_Pakiet | AC_Poziom | Rewizja dokumentu |
| --- | --- | --- | --- | --- | --- | --- | --- | --- | --- | --- | --- | --- | --- | --- | --- | --- | --- | --- | --- | --- | --- | --- | --- | --- | --- |
|  | SEKCJA 09 | **Sekcja 09** |  | 2026-05-19 | 2026-08-05 |  |  |  |  |  |  |  |  |  |  |  |  |  |  |  |  |  |  |  |  |
|  | PODSEKCJA | **Podsekcja 09.A** |  | 2026-05-19 | 2026-08-05 |  |  |  |  |  |  |  |  |  |  |  |  |  |  |  |  |  |  |  |  |
| 29YB32-063 |  | Prefabrykacja ruroci¹gów – Sekcja 09 | 10d | 2026-05-19 A | 2026-06-03 A | 29YB32-012, 29YB32-056 SS+5d | 100% | 2026-05-20 | 2026-06-02 |  | Do weryfikacji z wykonawc¹ | TurboSys | 29YB32 | Ruroci¹g | Budowa | Roboty | Marek | Infrastr | PM000 | Zespó³-K | Blok | Normalny | Pakiet | L2 |  |
| 29YB32-064 |  | Monta¿ ruroci¹gów – Sekcja 09 | 20.9d | 2026-06-23 A | 2026-07-20 A | 29YB32-063, 29YB32-014 SS+7d | 100% | 2026-06-19 | 2026-07-16 |  |  | TurboSys | 29YB32 | Ruroci¹g | Budowa | Roboty | Marek | Infrastr | PM000 | Zespó³-W | Blok | Normalny | Pakiet | L2 |  |
| 29YB32-065 |  | Próba ciœnieniowa – Sekcja 09 | 2d | 2026-07-16 A | 2026-07-21 A | 29YB32-064 | 100% | 2026-07-17 | 2026-07-20 |  |  | TurboSys | 29YB32 | Ruroci¹g | Budowa | Roboty | Marek | Infrastr | PM000 | Zespó³-W | Blok | Wysoki | Pakiet | L2 |  |
| 29YB32-066 |  | Izolacje – Sekcja 09 | 4d | 2026-07-22 A | 2026-07-29 A | 29YB32-065 | 100% | 2026-07-21 | 2026-07-24 |  | Bez uwag | TurboSys | 29YB32 | Ruroci¹g | Budowa | Roboty | Marek | Infrastr | PM200 | Zespó³-E | Blok | Normalny | Pakiet | L2 |  |
| 29YB32-067 |  | Malowanie i oznakowanie – Sekcja 09 | 7d | 2026-07-23 A | 2026-08-05 A | 29YB32-066 FF+2d | 100% | 2026-07-20 | 2026-07-28 |  |  | TurboSys | 29YB32 | Ruroci¹g | Budowa | Roboty | Marek | Infrastr | PM000 | Zespó³-W | Blok | Normalny | Pakiet | L2 |  |
|  | SEKCJA 10 | **Sekcja 10** |  | 2026-05-27 | 2026-07-27 |  |  |  |  |  |  |  |  |  |  |  |  |  |  |  |  |  |  |  |  |
| 29YB32-068 |  | Prefabrykacja ruroci¹gów – Sekcja 10 | 5d | 2026-05-27 A | 2026-06-03 A | 29YB32-012, 29YB32-063 SS+5d | 100% | 2026-05-27 | 2026-06-02 | Kalendarz 6-dniowy |  | TurboSys | 29YB32 | Ruroci¹g | Budowa | Roboty | Marek | Infrastr | PM000 | Zespó³-W | Blok | Krytyczn | Pakiet | L2 |  |
| 29YB32-069 |  | Monta¿ ruroci¹gów – Sekcja 10 | 13.6d | 2026-06-22 A | 2026-07-13 A | 29YB32-068, 29YB32-014 SS+9d | 100% | 2026-06-23 | 2026-07-09 | Kalendarz 6-dniowy |  | TurboSys | 29YB32 | Ruroci¹g | Budowa | Roboty | Marek | Infrastr | PM000 | Zespó³-K | Blok | Normalny | Pakiet | L2 |  |
| 29YB32-070 |  | Próba ciœnieniowa – Sekcja 10 | 2d | 2026-07-15 A | 2026-07-21 A | 29YB32-069 | 100% | 2026-07-10 | 2026-07-13 | Kalendarz 6-dniowy |  | TurboSys | 29YB32 | Ruroci¹g | Budowa | Roboty | Marek | Infrastr | PM000 | Zespó³-W | Blok | Normalny | Pakiet | L2 |  |
| 29YB32-071 |  | Izolacje – Sekcja 10 | 4d | 2026-07-16 A | 2026-07-22 A | 29YB32-070 | 100% | 2026-07-14 | 2026-07-17 |  |  | TurboSys | 29YB32 | Ruroci¹g | Budowa | Roboty | Marek | Infrastr | PM000 | Zespó³-K | Blok | Niski | Pakiet | L2 |  |
| 29YB32-072 |  | Malowanie i oznakowanie – Sekcja 10 | 4d | 2026-07-21 A | 2026-07-27 A | 29YB32-071 FF+2d | 100% | 2026-07-16 | 2026-07-21 |  |  | TurboSys | 29YB32 | Ruroci¹g | Budowa | Roboty | Marek | Infrastr | PM000 | Zespó³-W | Blok | Normalny | Pakiet | L2 |  |
|  | SEKCJA 11 | **Sekcja 11** |  | 2026-06-08 | 2026-07-22 |  |  |  |  |  |  |  |  |  |  |  |  |  |  |  |  |  |  |  |  |
| 29YB32-075 |  | Prefabrykacja ruroci¹gów – Sekcja 11 | 11.3d | 2026-06-08 A | 2026-06-24 A | 29YB32-012, 29YB32-068 SS+5d | 100% | 2026-06-03 | 2026-06-17 |  |  | TurboSys | 29YB32 | Ruroci¹g | Budowa | Roboty | Marek | Infrastr | PM000 | Zespó³-W | Blok | Normalny | Pakiet | L2 |  |
| 29YB32-076 |  | Monta¿ ruroci¹gów – Sekcja 11 | 8.7d | 2026-06-19 A | 2026-07-03 A | 29YB32-075, 29YB32-014 SS+4d | 100% | 2026-06-18 | 2026-06-30 | Kalendarz 6-dniowy |  | TurboSys | 29YB32 | Ruroci¹g | Budowa | Roboty | Marek | Infrastr | PM000 | Zespó³-W | Blok | Normalny | Pakiet | L2 | Rev B |
| 29YB32-077 |  | Próba ciœnieniowa – Sekcja 11 | 5d | 2026-07-01 A | 2026-07-07 A | 29YB32-076 | 100% |  |  |  |  | TurboSys | 29YB32 | Ruroci¹g | Budowa | Roboty | Marek | Infrastr | PM000 | Zespó³-K | Blok | Normalny | Pakiet | L2 |  |
| 29YB32-078 |  | Izolacje – Sekcja 11 | 6d | 2026-07-10 A | 2026-07-22 A | 29YB32-077 | 100% | 2026-07-08 | 2026-07-15 |  |  | TurboSys | 29YB32 | Ruroci¹g | Budowa | Roboty | Marek | Infrastr | PM000 | Zespó³-W | Blok | Normalny | Pakiet | L2 | Rev B |
| 29YB32-079 |  | Malowanie i oznakowanie – Sekcja 11 | 4d | 2026-07-13 A | 2026-07-17 A | 29YB32-078 FF+2d | 100% | 2026-07-14 | 2026-07-17 | Kalendarz 6-dniowy |  | TurboSys | 29YB32 | Ruroci¹g | Budowa | Roboty | Marek | Infrastr | PM000 | Zespó³-W | Blok | Normalny | Pakiet | L2 |  |
|  | SEKCJA 12 | **Sekcja 12** |  | 2026-06-15 | 2026-07-28 |  |  |  |  |  |  |  |  |  |  |  |  |  |  |  |  |  |  |  |  |
|  | PODSEKCJA | **Podsekcja 12.A** |  | 2026-06-15 | 2026-07-28 |  |  |  |  |  |  |  |  |  |  |  |  |  |  |  |  |  |  |  |  |
| 29YB32-080 |  | Prefabrykacja ruroci¹gów – Sekcja 12 | 3.9d | 2026-06-15 A | 2026-06-18 A | 29YB32-012, 29YB32-075 SS+5d | 100% | 2026-06-10 | 2026-06-12 | Kalendarz 6-dniowy |  | TurboSys | 29YB32 | Ruroci¹g | Budowa | Roboty | Marek | Infrastr | PM000 | Zespó³-W | Blok | Normalny | Pakiet | L2 |  |
| 29YB32-081 |  | Monta¿ ruroci¹gów – Sekcja 12 | 16d | 2026-06-19 A | 2026-07-15 A | 29YB32-080, 29YB32-014 SS+4d | 100% | 2026-06-16 | 2026-07-07 |  |  | TurboSys | 29YB32 | Ruroci¹g | Budowa | Roboty | Marek | Infrastr | PM000 | Zespó³-W | Blok | Wysoki | Pakiet | L2 |  |
| 29YB32-082 |  | Próba ciœnieniowa – Sekcja 12 | 5d | 2026-07-09 A | 2026-07-20 A | 29YB32-081 | 100% | 2026-07-08 | 2026-07-14 |  | Czeka na dostawê | TurboSys | 29YB32 | Ruroci¹g | Budowa | Roboty | Marek | Infrastr | PM000 | Zespó³-W | Blok | Niski | Pakiet | L2 |  |
| 29YB32-083 |  | Izolacje – Sekcja 12 | 7d | 2026-07-17 A | 2026-07-28 A | 29YB32-082 | 100% | 2026-07-15 | 2026-07-23 |  |  | TurboSys | 29YB32 | Ruroci¹g | Budowa | Roboty | Marek | Infrastr | PM000 | Zespó³-W | Blok | Wysoki | Pakiet | L2 |  |
| 29YB32-084 |  | Malowanie i oznakowanie – Sekcja 12 | 3d | 2026-07-22 A | 2026-07-27 A | 29YB32-083 FF+2d | 100% | 2026-07-23 | 2026-07-27 |  |  | TurboSys | 29YB32 | Ruroci¹g | Budowa | Roboty | Marek | Infrastr | PM000 | Zespó³-E | Blok | Normalny | Pakiet | L2 |  |

| ID | WBS | Activity | Type | Duration | Start | Finish | Predecessors | Complete | Actual start | Actual finish | Planned start | Planned finish | Calendar | AC_Wykonawca | AC_Obiekt | AC_Dyscyplina | AC_Faza | AC_Zakres | AC_Opiekun | AC_Obszar | AC_PP_PM | AC_Zespol | AC_Blok | AC_Priorytet | AC_Pakiet | AC_Poziom | Rewizja dokumentu | Uwagi harmonogramisty |
| --- | --- | --- | --- | --- | --- | --- | --- | --- | --- | --- | --- | --- | --- | --- | --- | --- | --- | --- | --- | --- | --- | --- | --- | --- | --- | --- | --- | --- |
|  | SEKCJA 13 | **Sekcja 13** |  |  | 2026-06-18 | 2026-07-24 |  |  |  |  |  |  |  |  |  |  |  |  |  |  |  |  |  |  |  |  |  |  |
| 29YB32-087 |  | Prefabrykacja ruroci¹gów – Sekcja 13 |  | 5.7d | 2026-06-18 A | 2026-06-25 A | 29YB32-012, 29YB32-080 SS+5d | 100% |  |  | 2026-06-17 | 2026-06-23 |  | TurboSys | 29YB32 | Ruroci¹g | Budowa | Roboty | Marek | Infrastr | PM000 | Zespó³-E | Blok | Normalny | Pakiet | L2 |  |  |
| 29YB32-088 |  | Monta¿ ruroci¹gów – Sekcja 13 |  | 7d | 2026-06-24 A | 2026-07-06 A | 29YB32-087, 29YB32-014 SS+2d | 100% |  |  | 2026-06-24 | 2026-07-02 |  | TurboSys | 29YB32 | Ruroci¹g | Budowa | Roboty | Marek | Infrastr | PM000 | Zespó³-W | Blok | Normalny | Pakiet | L2 |  |  |
| 29YB32-089 |  | Próba ciœnieniowa – Sekcja 13 |  | 2d | 2026-07-02 A | 2026-07-08 A | 29YB32-088 | 100% |  |  | 2026-07-03 | 2026-07-06 |  | TurboSys | 29YB32 | Ruroci¹g | Budowa | Roboty | Marek | Infrastr | PM000 | Zespó³-W | Blok | Normalny | Pakiet | L2 | Rev B |  |
| 29YB32-090 |  | Izolacje – Sekcja 13 |  | 10d | 2026-07-10 A | 2026-07-23 A | 29YB32-089 | 100% |  |  | 2026-07-07 | 2026-07-20 |  | TurboSys | 29YB32 | Ruroci¹g | Budowa | Roboty | Marek | Infrastr | PM000 | Zespó³-W | Blok | Niski | Pakiet | L2 | Rev C |  |
| 29YB32-091 |  | Malowanie i oznakowanie – Sekcja 13 |  | 8d | 2026-07-15 A | 2026-07-24 A | 29YB32-090 FF+2d | 100% |  |  | 2026-07-13 | 2026-07-22 |  | TurboSys | 29YB32 | Ruroci¹g | Budowa | Roboty | Marek | Infrastr | PM000 | Zespó³-W | Blok | Normalny | Pakiet | L2 | Rev B |  |
|  | PROJ | **Projektowanie** |  |  | 2025-03-17 | 2025-10-27 |  |  |  |  |  |  |  |  |  |  |  |  |  |  |  |  |  |  |  |  |  |  |
|  | DOKUMENTAC | **Dokumentacja** |  |  | 2025-03-17 | 2025-10-27 |  |  |  |  |  |  |  |  |  |  |  |  |  |  |  |  |  |  |  |  |  |  |
| 29YB32-001 |  | Projekt wykonawczy – Budynek administracyjny |  | 116d | 2025-03-17 A | 2025-08-27 A |  | 100% |  |  | 2025-03-18 | 2025-08-26 | Kalendarz 6-dniowy | TurboSys | 29YB32 | Budowlan | Projekto | Projekt | Marek | Infrastr | PM000 | Zespó³-W | Blok | Wysoki | Pakiet | L2 |  |  |
| 29YB32-002 |  | Uzgodnienie dokumentacji z Inwestorem |  | 27d | 2025-08-28 A | 2025-10-03 A | 29YB32-001 | 100% |  |  | 2025-08-27 | 2025-10-02 | Kalendarz 6-dniowy | TurboSys | 29YB32 | Budowlan | Projekto | Projekt | Marek | Infrastr | PM000 | Zespó³-K | Blok | Normalny | Pakiet | L2 | Rev C |  |
| 29YB32-003 |  | Zatwierdzenie dokumentacji do realizacji |  | 15d | 2025-10-07 A | 2025-10-27 A | 29YB32-002 | 100% |  |  | 2025-10-03 | 2025-10-23 |  | TurboSys | 29YB32 | Budowlan | Projekto | Projekt | Marek | Infrastr | PM000 | Zespó³-K | Blok | Wysoki | Pakiet | L2 | Rev B |  |
| 29YB32-004 |  | KM: Dokumentacja zatwierdzona – Budynek administracyjny | milestone | 0d | 2025-10-24 A | 2025-10-24 | 29YB32-003 | 100% |  | 2025-10-23 |  |  |  | TurboSys | 29YB32 | Budowlan | Projekto | Kamieñ | Marek | Infrastr | PM000 | Zespó³-K | Blok | Wysoki | Pakiet | L1 |  | Bez uwag |
|  | ROZR | **Rozruch** |  |  | 2026-08-11 | 2026-09-29 |  |  |  |  |  |  |  |  |  |  |  |  |  |  |  |  |  |  |  |  |  |  |
|  | ROZRUCH | **Rozruch** |  |  | 2026-08-11 | 2026-09-29 |  |  |  |  |  |  |  |  |  |  |  |  |  |  |  |  |  |  |  |  |  |  |
| 29YB32-094 |  | Przegl¹d gotowoœci do rozruchu |  | 4d | 2026-08-11 A | 2026-08-19 A | 29YB32-093, 29YB32-019, 29YB32-024, 29YB32-026 | 100% |  |  | 2026-08-10 | 2026-08-13 | Kalendarz 6-dniowy | TurboSys | 29YB32 | Rozruch | Rozruch | Rozruch | Marek | Infrastr | PM000 | Zespó³-K | Blok | Normalny | Pakiet | L2 |  |  |
| 29YB32-095 |  | Rozruch na zimno |  | 11d | 2026-08-13 A | 2026-08-28 A | 29YB32-094 | 100% |  |  | 2026-08-14 | 2026-08-28 |  | TurboSys | 29YB32 | Rozruch | Rozruch | Rozruch | Marek | Infrastr | PM000 | Zespó³-W | Blok | Normalny | Pakiet | L2 |  |  |
| 29YB32-096 |  | Rozruch na gor¹co / próby ruchowe |  | 20d | 2026-08-28 A | 2026-09-28 A | 29YB32-095 | 100% |  |  | 2026-08-31 | 2026-09-25 | Kalendarz 6-dniowy | TurboSys | 29YB32 | Rozruch | Rozruch | Rozruch | Marek | Infrastr | PM000 | Zespó³-W | Blok | Normalny | Pakiet | L2 |  |  |
| 29YB32-097 |  | KM: Odbiór koñcowy – Budynek administracyjny | milestone | 0d | 2026-09-29 | 2026-09-29 A | 29YB32-096 | 100% | 2026-09-30 |  | 2026-09-28 | 2026-09-28 |  | TurboSys | 29YB32 | Rozruch | Rozruch | Kamieñ | Marek | Infrastr | PM000 | Zespó³-W | Blok | Niski | Pakiet | L1 |  |  |
|  | ZAKU | **Zakupy** |  |  | 2025-04-18 | 2026-06-15 |  |  |  |  |  |  |  |  |  |  |  |  |  |  |  |  |  |  |  |  |  |  |
|  | DOSTAWY | **Dostawy** |  |  | 2026-01-05 | 2026-06-15 |  |  |  |  |  |  |  |  |  |  |  |  |  |  |  |  |  |  |  |  |  |  |
| 29YB32-008 |  | Produkcja u dostawcy |  | 67d | 2026-01-05 A | 2026-04-07 A | 29YB32-007 | 100% |  |  |  |  |  | TurboSys | 29YB32 | Mechanic | Zakupy | Dostawa | Marek | Infrastr | PM000 | Zespó³-W | Blok | Normalny | Pakiet | L2 | Rev A |  |
| 29YB32-009 |  | Testy FAT |  | 8d | 2026-04-13 A | 2026-04-22 A | 29YB32-008 | 100% |  |  | 2026-04-08 | 2026-04-17 |  | TurboSys | 29YB32 | Mechanic | Zakupy | Dostawa | Marek | Infrastr | PM000 | Zespó³-W | Blok | Normalny | Pakiet | L2 | Rev B |  |
| 29YB32-010 |  | Transport i dostawa na plac budowy |  | 37d | 2026-04-21 A | 2026-06-11 A | 29YB32-009 | 100% |  |  | 2026-04-20 | 2026-06-09 |  | TurboSys | 29YB32 | Mechanic | Zakupy | Dostawa | Marek | Infrastr | PM000 | Zespó³-W | Blok | Normalny | Pakiet | L2 |  | Bez uwag |
| 29YB32-011 |  | KM: Dostawa na budowê – Budynek administracyjny | milestone | 0d | 2026-06-15 A | 2026-06-15 | 29YB32-010 | 100% |  | 2026-06-12 | 2026-06-10 | 2026-06-10 |  | TurboSys | 29YB32 | Mechanic | Zakupy | Kamieñ | Marek | Infrastr | PM000 | Zespó³-K | Blok | Normalny | Pakiet | L1 |  | Do weryfikacji z wykonawc¹ |

| ID | WBS | Activity | Duration | Start | Finish | Predecessors | Complete | Planned start | Planned finish | Uwagi harmonogramisty | AC_Wykonawca | AC_Obiekt | AC_Dyscyplina | AC_Faza | AC_Zakres | AC_Opiekun | AC_Obszar | AC_PP_PM | AC_Zespol | AC_Blok | AC_Priorytet | AC_Pakiet | AC_Poziom |
| --- | --- | --- | --- | --- | --- | --- | --- | --- | --- | --- | --- | --- | --- | --- | --- | --- | --- | --- | --- | --- | --- | --- | --- |
|  | ZAMÓWIENIA | **Zamówienia** |  | 2025-04-18 | 2026-01-06 |  |  |  |  |  |  |  |  |  |  |  |  |  |  |  |  |  |  |
| 29YB32-005 |  | Zapytanie ofertowe | 29d | 2025-04-18 A | 2025-05-30 A | 29YB32-001 SS+20d | 100% | 2025-04-15 | 2025-05-23 | Czeka na dostawê | TurboSys | 29YB32 | Mechanic | Zakupy | Dostawa | Marek | Infrastr | PM000 | Zespó³-W | Blok | Normalny | Pakiet | L2 |
| 29YB32-006 |  | Analiza i wybór ofert | 13d | 2025-05-26 A | 2025-06-13 A | 29YB32-005 | 100% | 2025-05-26 | 2025-06-11 |  | TurboSys | 29YB32 | Mechanic | Zakupy | Dostawa | Marek | Infrastr | PM000 | Zespó³-I | Blok | Normalny | Pakiet | L2 |
| 29YB32-007 |  | Zawarcie umowy / zamówienie | 10d | 2025-12-24 A | 2026-01-06 A | 29YB32-006, 29YB32-004 SS, 26DX82-004 SS, 21MY97-004 SF+6d | 100% | 2025-12-22 | 2026-01-02 |  | TurboSys | 29YB32 | Mechanic | Zakupy | Dostawa | Marek | Infrastr | PM000 | Zespó³-K | Blok | Normalny | Pakiet | L1 |

## Activity codes

| Code | Value | Meaning |
| --- | --- | --- |
| AC_Blok | Blok | Blok 2 |
| AC_Dyscyplina | Budowlan | Budowlana |
| AC_Dyscyplina | Elektryc | Elektryczna |
| AC_Dyscyplina | Mechanic | Mechaniczna |
| AC_Dyscyplina | Ruroci¹g | Ruroci¹gi |
| AC_Faza | Projekto | Projektowanie |
| AC_Obiekt | 10PQ22 | 10PQ22 System DCS |
| AC_Obiekt | 12DQ22 | 12DQ22 System SCADA |
| AC_Obiekt | 15XQ71 | 15XQ71 Zbiornik oleju |
| AC_Obiekt | 16KE73 | 16KE73 System zabezpieczeñ |
| AC_Obiekt | 19WP38 | 19WP38 Stacja redukcyjno-pomiarowa gazu |
| AC_Obiekt | 21MY97 | 21MY97 Analizatory spalin (CEMS) |
| AC_Obiekt | 25DF82 | 25DF82 Wentylacja i klimatyzacja |
| AC_Obiekt | 25ND89 | 25ND89 Instalacje przeciwpo¿arowe |
| AC_Obiekt | 26CG51 | 26CG51 Ogrodzenie i monitoring |
| AC_Obiekt | 26DX82 | 26DX82 Sieæ œwiat³owodowa |
| AC_Obiekt | 28AM31 | 28AM31 Drogi i place |
| AC_Obiekt | 28YY90 | 28YY90 Warsztat |
| AC_Obiekt | 29DM24 | 29DM24 Uk³ady pomiarowe |
| AC_Obiekt | 29XB26 | 29XB26 Magazyn |
| AC_Obiekt | 29YB32 | 29YB32 Budynek administracyjny |
| AC_Obszar | Automaty | Automatyka i AKPiA |
| AC_Obszar | Infrastr | Infrastruktura i BOP |
| AC_Opiekun | Agnieszk | Agnieszka WoŸniak |
| AC_Opiekun | Ewa | Ewa Zieliñska |
| AC_Opiekun | Katarzyn | Katarzyna D¹browska |
| AC_Opiekun | Krzyszto | Krzysztof Koz³owski |
| AC_Opiekun | Magdalen | Magdalena Jankowska |
| AC_Opiekun | Marek | Marek Kowalczyk |
| AC_Opiekun | Micha³ | Micha³ Szymañski |
| AC_Opiekun | Tomasz | Tomasz Lewandowski |
| AC_Pakiet | Pakiet | Pakiet G |
| AC_Poziom | L1 | L1 – kamieñ milowy kontraktowy |
| AC_Poziom | L2 | L2 – kamieñ milowy obiektowy |
| AC_Priorytet | Krytyczn | Krytyczny |
| AC_Wykonawca | Aerother | Aerotherm Polska |
| AC_Wykonawca | Automaty | AutomatykaPlus |
| AC_Wykonawca | GdanskSt | GdanskSteel Monta¿ |
| AC_Wykonawca | Izoterm | Izoterm Serwis |
| AC_Wykonawca | Kablex | Kablex Energo |
| AC_Wykonawca | Pomorski | Pomorskie Roboty In¿ynieryjne |
| AC_Wykonawca | TurboSys | TurboSystem S.A. |
| AC_Zakres | Kamieñ | Kamieñ milowy |
| AC_Zespol | Zespó³-E | Zespó³-E (Eksploatacja) |
| AC_Zespol | Zespó³-I | Zespó³-I (Inwestor) |
| AC_Zespol | Zespó³-K | Zespó³-K (Kontrakt) |
| AC_Zespol | Zespó³-W | Zespó³-W (Wykonawca) |

# PL5001 – Ch³odzenie i elektryka (SE-02)

Schedule from Primavera P6, 2025-01-15 to 2028-04-10, data date 2026-10-07, A marks actual dates.

## Schedule

| ID | WBS | Activity | Duration | Start | Finish | Predecessors | Complete | Planned start | Planned finish | Calendar | AC_Wykonawca | AC_Obiekt | AC_Dyscyplina | AC_Faza | AC_Zakres | AC_Opiekun | AC_Obszar | AC_PP_PM | AC_Zespol | AC_Blok | AC_Priorytet | AC_Pakiet | AC_Poziom | Uwagi harmonogramisty | Rewizja dokumentu |
| --- | --- | --- | --- | --- | --- | --- | --- | --- | --- | --- | --- | --- | --- | --- | --- | --- | --- | --- | --- | --- | --- | --- | --- | --- | --- |
|  | UK£AD_CH£ODZ | **Uk³ad ch³odzenia** |  | 2025-01-16 | 2028-04-10 |  |  |  |  |  |  |  |  |  |  |  |  |  |  |  |  |  |  |  |  |
|  | 11TM31 | **11TM31 – Uk³ad chemicznego uzdatniania** |  | 2025-02-18 | 2026-08-13 |  |  |  |  |  |  |  |  |  |  |  |  |  |  |  |  |  |  |  |  |
|  | BUDO | **Budowa** |  | 2025-09-26 | 2026-06-26 |  |  |  |  |  |  |  |  |  |  |  |  |  |  |  |  |  |  |  |  |
|  | AKPIA | **AKPiA** |  | 2026-05-01 | 2026-06-24 |  |  |  |  |  |  |  |  |  |  |  |  |  |  |  |  |  |  |  |  |
| 11TM31-123 |  | Monta¿ uk³adów AKPiA | 36d | 2026-05-01 A | 2026-06-24 A | 11TM31-014 SS+5d | 100% | 2026-04-30 | 2026-06-18 |  | Automaty | 11TM31 | AKPiA | Budowa | Roboty | Joanna | Uk³ad | PM000 | Zespó³-K | Blok | Normalny | Pakiet | L2 |  |  |
|  | ELEKTRYKA | **Elektryka** |  | 2026-05-07 | 2026-06-10 |  |  |  |  |  |  |  |  |  |  |  |  |  |  |  |  |  |  |  |  |
| 11TM31-049 |  | Uk³adanie kabli – trasa 06 | 9d | 2026-05-07 A | 2026-05-22 A | 11TM31-014 SS+10d | 100% | 2026-05-07 | 2026-05-19 |  | Automaty | 11TM31 | Elektryc | Budowa | Roboty | Joanna | Uk³ad | PM000 | Zespó³-W | Blok | Krytyczn | Pakiet | L2 | Do weryfikacji z wykonawc¹ | Rev A |
| 11TM31-062 |  | Pod³¹czenia i pomiary – trasa 08 | 6d | 2026-05-07 A | 2026-05-18 A | 11TM31-061 FF | 100% | 2026-05-05 | 2026-05-12 |  | Automaty | 11TM31 | Elektryc | Budowa | Roboty | Joanna | Uk³ad | PM000 | Zespó³-K | Blok | Normalny | Pakiet | L2 |  |  |
| 11TM31-073 |  | Uk³adanie kabli – trasa 10 | 15d | 2026-05-07 A | 2026-05-29 A | 11TM31-014 SS+10d | 100% | 2026-05-07 | 2026-05-27 | Kalendarz 6-dniowy | Automaty | 11TM31 | Elektryc | Budowa | Roboty | Joanna | Uk³ad | PM000 | Zespó³-K | Blok | Normalny | Pakiet | L2 |  |  |
| 11TM31-026 |  | Pod³¹czenia i pomiary – trasa 02 | 10d | 2026-05-08 A | 2026-05-25 A | 11TM31-025 FF | 100% | 2026-05-11 | 2026-05-22 |  | Automaty | 11TM31 | Elektryc | Budowa | Roboty | Joanna | Uk³ad | PM000 | Zespó³-K | Blok | Normalny | Pakiet | L2 |  | Rev C |
| 11TM31-037 |  | Uk³adanie kabli – trasa 04 | 16d | 2026-05-08 A | 2026-06-03 A | 11TM31-014 SS+10d | 100% | 2026-05-07 | 2026-05-28 |  | Automaty | 11TM31 | Elektryc | Budowa | Roboty | Joanna | Uk³ad | PM000 | Zespó³-W | Blok | Normalny | Pakiet | L2 |  |  |
| 11TM31-109 |  | Uk³adanie kabli – trasa 16 | 16d | 2026-05-08 A | 2026-06-01 A | 11TM31-014 SS+10d | 100% | 2026-05-07 | 2026-05-28 |  | Automaty | 11TM31 | Elektryc | Budowa | Roboty | Joanna | Uk³ad | PM000 | Zespó³-W | Blok | Normalny | Pakiet | L2 |  |  |
| 11TM31-025 |  | Uk³adanie kabli – trasa 02 | 12d | 2026-05-11 A | 2026-05-26 A | 11TM31-014 SS+10d | 100% | 2026-05-07 | 2026-05-22 |  | Automaty | 11TM31 | Elektryc | Budowa | Roboty | Joanna | Uk³ad | PM000 | Zespó³-K | Blok | Wysoki | Pakiet | L2 | Uzgodnione na koordynacji | Rev B |
| 11TM31-050 |  | Pod³¹czenia i pomiary – trasa 06 | 10d | 2026-05-11 A | 2026-05-25 A | 11TM31-049 FF | 100% | 2026-05-06 | 2026-05-19 |  | Automaty | 11TM31 | Elektryc | Budowa | Roboty | Joanna | Uk³ad | PM000 | Zespó³-K | Blok | Normalny | Pakiet | L2 |  |  |
| 11TM31-061 |  | Uk³adanie kabli – trasa 08 | 4d | 2026-05-11 A | 2026-05-14 A | 11TM31-014 SS+10d | 100% | 2026-05-07 | 2026-05-12 |  | Automaty | 11TM31 | Elektryc | Budowa | Roboty | Joanna | Uk³ad | PM000 | Zespó³-W | Blok | Wysoki | Pakiet | L2 | Bez uwag |  |
| 11TM31-097 |  | Uk³adanie kabli – trasa 14 | 20d | 2026-05-11 A | 2026-06-05 A | 11TM31-014 SS+10d | 100% | 2026-05-07 | 2026-06-03 |  | Automaty | 11TM31 | Elektryc | Budowa | Roboty | Joanna | Uk³ad | PM000 | Zespó³-K | Blok | Normalny | Pakiet | L2 |  | Rev B |
| 11TM31-121 |  | Uk³adanie kabli – trasa 18 | 11d | 2026-05-11 A | 2026-05-26 A | 11TM31-014 SS+10d | 100% | 2026-05-07 | 2026-05-21 |  | Automaty | 11TM31 | Elektryc | Budowa | Roboty | Joanna | Uk³ad | PM000 | Zespó³-W | Blok | Normalny | Pakiet | L2 |  | Rev B |
| 11TM31-085 |  | Uk³adanie kabli – trasa 12 | 19d | 2026-05-12 A | 2026-06-08 A | 11TM31-014 SS+10d | 100% | 2026-05-07 | 2026-06-02 |  | Automaty | 11TM31 | Elektryc | Budowa | Roboty | Joanna | Uk³ad | PM000 | Zespó³-W | Blok | Normalny | Pakiet | L2 | Bez uwag |  |
| 11TM31-074 |  | Pod³¹czenia i pomiary – trasa 10 | 10d | 2026-05-18 A | 2026-05-29 A | 11TM31-073 FF | 100% | 2026-05-14 | 2026-05-27 |  | Automaty | 11TM31 | Elektryc | Budowa | Roboty | Joanna | Uk³ad | PM000 | Zespó³-I | Blok | Krytyczn | Pakiet | L2 | Do weryfikacji z wykonawc¹ | Rev A |
| 11TM31-122 |  | Pod³¹czenia i pomiary – trasa 18 | 6d | 2026-05-19 A | 2026-05-26 A | 11TM31-121 FF | 100% | 2026-05-14 | 2026-05-21 |  | Automaty | 11TM31 | Elektryc | Budowa | Roboty | Joanna | Uk³ad | PM000 | Zespó³-E | Blok | Normalny | Pakiet | L2 |  |  |
| 11TM31-110 |  | Pod³¹czenia i pomiary – trasa 16 | 7d | 2026-05-25 A | 2026-06-02 A | 11TM31-109 FF | 100% | 2026-05-20 | 2026-05-28 |  | Automaty | 11TM31 | Elektryc | Budowa | Roboty | Joanna | Uk³ad | PM000 | Zespó³-W | Blok | Normalny | Pakiet | L2 | Czeka na dostawê |  |
| 11TM31-038 |  | Pod³¹czenia i pomiary – trasa 04 | 3d | 2026-05-27 A | 2026-06-02 A | 11TM31-037 FF | 100% | 2026-05-26 | 2026-05-28 |  | Automaty | 11TM31 | Elektryc | Budowa | Roboty | Joanna | Uk³ad | PM000 | Zespó³-K | Blok | Normalny | Pakiet | L2 |  |  |
| 11TM31-086 |  | Pod³¹czenia i pomiary – trasa 12 | 4d | 2026-05-27 A | 2026-06-03 A | 11TM31-085 FF | 100% | 2026-05-28 | 2026-06-02 |  | Automaty | 11TM31 | Elektryc | Budowa | Roboty | Joanna | Uk³ad | PM000 | Zespó³-K | Blok | Normalny | Pakiet | L2 |  |  |
| 11TM31-098 |  | Pod³¹czenia i pomiary – trasa 14 | 5d | 2026-06-01 A | 2026-06-10 A | 11TM31-097 FF | 100% | 2026-05-28 | 2026-06-03 |  | Automaty | 11TM31 | Elektryc | Budowa | Roboty | Joanna | Uk³ad | PM000 | Zespó³-W | Blok | Normalny | Pakiet | L2 |  | Rev B |

| ID | WBS | Activity | Type | Duration | Start | Finish | Predecessors | Complete | Actual finish | Planned start | Planned finish | Calendar | Uwagi harmonogramisty | AC_Wykonawca | AC_Obiekt | AC_Dyscyplina | AC_Faza | AC_Zakres | AC_Opiekun | AC_Obszar | AC_PP_PM | AC_Zespol | AC_Blok | AC_Priorytet | AC_Pakiet | AC_Poziom | Rewizja dokumentu |
| --- | --- | --- | --- | --- | --- | --- | --- | --- | --- | --- | --- | --- | --- | --- | --- | --- | --- | --- | --- | --- | --- | --- | --- | --- | --- | --- | --- |
|  | MONTA¯ | **Monta¿** |  |  | 2025-10-31 | 2026-06-23 |  |  |  |  |  |  |  |  |  |  |  |  |  |  |  |  |  |  |  |  |  |
| 11TM31-013 |  | Monta¿ konstrukcji stalowych |  | 15d | 2025-10-31 A | 2025-11-20 A | 11TM31-012 | 100% |  | 2025-10-28 | 2025-11-17 |  | Do weryfikacji z wykonawc¹ | Automaty | 11TM31 | Mechanic | Budowa | Roboty | Joanna | Uk³ad | PM000 | Zespó³-W | Blok | Normalny | Pakiet | L2 |  |
| 11TM31-014 |  | Monta¿ urz¹dzeñ g³ównych |  | 38d | 2026-04-28 A | 2026-06-23 A | 11TM31-013, 11TM31-011 | 100% |  | 2026-04-23 | 2026-06-15 |  |  | Automaty | 11TM31 | Mechanic | Budowa | Roboty | Joanna | Uk³ad | PM000 | Zespó³-K | Blok | Krytyczn | Pakiet | L2 | Rev A |
| 11TM31-124 |  | KM: Zakoñczenie monta¿u – Uk³ad chemicznego uzdatniania | milestone | 0d | 2026-06-18 A | 2026-06-18 | 11TM31-115, 11TM31-120, 11TM31-122, 11TM31-123, 11TM31-014 | 100% | 2026-06-17 | 2026-06-19 | 2026-06-19 |  |  | Automaty | 11TM31 | Mechanic | Budowa | Kamieñ | Joanna | Uk³ad | PM200 | Zespó³-E | Blok | Niski | Pakiet | L2 | Rev C |
|  | ROBOTY BUD | **Roboty budowlane** |  |  | 2025-09-26 | 2025-10-30 |  |  |  |  |  |  |  |  |  |  |  |  |  |  |  |  |  |  |  |  |  |
| 11TM31-012 |  | Fundamenty i roboty ziemne |  | 23d | 2025-09-26 A | 2025-10-30 A | 11TM31-007 FS+9d | 100% |  | 2025-09-25 | 2025-10-27 |  |  | Automaty | 11TM31 | Budowlan | Budowa | Roboty | Joanna | Uk³ad | PM100 | Zespó³-I | Blok | Niski | Pakiet | L2 |  |
|  | RUROCI¥GI | **Ruroci¹gi** |  |  | 2025-10-27 | 2026-06-26 |  |  |  |  |  |  |  |  |  |  |  |  |  |  |  |  |  |  |  |  |  |
|  | SEKCJA 01 | **Sekcja 01** |  |  | 2025-10-27 | 2026-05-27 |  |  |  |  |  |  |  |  |  |  |  |  |  |  |  |  |  |  |  |  |  |
| 11TM31-015 |  | Prefabrykacja ruroci¹gów – Sekcja 01 |  | 5.8d | 2025-10-27 A | 2025-11-04 A | 11TM31-012 | 100% |  | 2025-10-28 | 2025-11-03 | Kalendarz 6-dniowy | Bez uwag | Automaty | 11TM31 | Ruroci¹g | Budowa | Roboty | Joanna | Uk³ad | PM000 | Zespó³-W | Blok | Normalny | Pakiet | L2 |  |
| 11TM31-016 |  | Monta¿ ruroci¹gów – Sekcja 01 |  | 10.4d | 2026-04-29 A | 2026-05-15 A | 11TM31-015, 11TM31-014 SS+3d | 100% |  | 2026-04-28 | 2026-05-11 |  |  | Automaty | 11TM31 | Ruroci¹g | Budowa | Roboty | Joanna | Uk³ad | PM000 | Zespó³-K | Blok | Niski | Pakiet | L2 | Rev A |
| 11TM31-017 |  | Próba ciœnieniowa – Sekcja 01 |  | 2d | 2026-05-14 A | 2026-05-18 A | 11TM31-016 | 100% |  | 2026-05-12 | 2026-05-13 |  |  | Automaty | 11TM31 | Ruroci¹g | Budowa | Roboty | Joanna | Uk³ad | PM000 | Zespó³-W | Blok | Normalny | Pakiet | L2 | Rev A |
| 11TM31-018 |  | Izolacje – Sekcja 01 |  | 6d | 2026-05-15 A | 2026-05-27 A | 11TM31-017 | 100% |  | 2026-05-14 | 2026-05-21 |  | Uzgodnione na koordynacji | Automaty | 11TM31 | Ruroci¹g | Budowa | Roboty | Joanna | Uk³ad | PM000 | Zespó³-W | Blok | Normalny | Pakiet | L2 | Rev C |
| 11TM31-019 |  | Malowanie i oznakowanie – Sekcja 01 |  | 3d | 2026-05-20 A | 2026-05-27 A | 11TM31-018 FF+2d | 100% |  | 2026-05-21 | 2026-05-25 |  | Czeka na dostawê | Automaty | 11TM31 | Ruroci¹g | Budowa | Roboty | Joanna | Uk³ad | PM000 | Zespó³-W | Blok | Normalny | Pakiet | L2 |  |
|  | SEKCJA 02 | **Sekcja 02** |  |  | 2025-11-03 | 2026-06-17 |  |  |  |  |  |  |  |  |  |  |  |  |  |  |  |  |  |  |  |  |  |
| 11TM31-020 |  | Prefabrykacja ruroci¹gów – Sekcja 02 |  | 8.3d | 2025-11-03 A | 2025-11-14 A | 11TM31-012, 11TM31-015 SS+5d | 100% |  | 2025-11-04 | 2025-11-13 |  |  | Automaty | 11TM31 | Ruroci¹g | Budowa | Roboty | Joanna | Uk³ad | PM000 | Zespó³-W | Blok | Normalny | Pakiet | L2 |  |
| 11TM31-021 |  | Monta¿ ruroci¹gów – Sekcja 02 |  | 15.9d | 2026-05-06 A | 2026-05-28 A | 11TM31-020, 11TM31-014 SS+8d | 100% |  | 2026-05-05 | 2026-05-25 |  |  | Automaty | 11TM31 | Ruroci¹g | Budowa | Roboty | Joanna | Uk³ad | PM000 | Zespó³-K | Blok | Normalny | Pakiet | L2 |  |
| 11TM31-022 |  | Próba ciœnieniowa – Sekcja 02 |  | 6d | 2026-05-27 A | 2026-06-08 A | 11TM31-021 | 100% |  | 2026-05-26 | 2026-06-02 |  |  | Automaty | 11TM31 | Ruroci¹g | Budowa | Roboty | Joanna | Uk³ad | PM000 | Zespó³-K | Blok | Normalny | Pakiet | L2 |  |
| 11TM31-023 |  | Izolacje – Sekcja 02 |  | 7d | 2026-06-05 A | 2026-06-17 A | 11TM31-022 | 100% |  | 2026-06-03 | 2026-06-11 |  | Ryzyko opóŸnienia | Automaty | 11TM31 | Ruroci¹g | Budowa | Roboty | Joanna | Uk³ad | PM000 | Zespó³-K | Blok | Normalny | Pakiet | L2 | Rev C |
| 11TM31-024 |  | Malowanie i oznakowanie – Sekcja 02 |  | 4d | 2026-06-09 A | 2026-06-16 A | 11TM31-023 FF+2d | 100% |  | 2026-06-10 | 2026-06-15 |  |  | Automaty | 11TM31 | Ruroci¹g | Budowa | Roboty | Joanna | Uk³ad | PM000 | Zespó³-K | Blok | Normalny | Pakiet | L2 | Rev A |
|  | SEKCJA 03 | **Sekcja 03** |  |  | 2025-11-11 | 2026-06-23 |  |  |  |  |  |  |  |  |  |  |  |  |  |  |  |  |  |  |  |  |  |
|  | PODSEKCJA | **Podsekcja 03.A** |  |  | 2025-11-11 | 2026-06-23 |  |  |  |  |  |  |  |  |  |  |  |  |  |  |  |  |  |  |  |  |  |
| 11TM31-027 |  | Prefabrykacja ruroci¹gów – Sekcja 03 |  | 7.2d | 2025-11-11 A | 2025-11-20 A | 11TM31-012, 11TM31-020 SS+5d | 100% |  | 2025-11-11 | 2025-11-19 | Kalendarz 6-dniowy |  | Automaty | 11TM31 | Ruroci¹g | Budowa | Roboty | Joanna | Uk³ad | PM000 | Zespó³-K | Blok | Wysoki | Pakiet | L2 |  |
| 11TM31-028 |  | Monta¿ ruroci¹gów – Sekcja 03 |  | 22.9d | 2026-04-28 A | 2026-06-01 A | 11TM31-027, 11TM31-014 SS+1d | 100% |  | 2026-04-24 | 2026-05-25 |  |  | Automaty | 11TM31 | Ruroci¹g | Budowa | Roboty | Joanna | Uk³ad | PM000 | Zespó³-W | Blok | Wysoki | Pakiet | L2 |  |
| 11TM31-029 |  | Próba ciœnieniowa – Sekcja 03 |  | 4d | 2026-05-26 A | 2026-06-01 A | 11TM31-028 | 100% |  | 2026-05-26 | 2026-05-29 |  | Ryzyko opóŸnienia | Automaty | 11TM31 | Ruroci¹g | Budowa | Roboty | Joanna | Uk³ad | PM000 | Zespó³-W | Blok | Normalny | Pakiet | L2 |  |
| 11TM31-030 |  | Izolacje – Sekcja 03 |  | 12d | 2026-06-04 A | 2026-06-23 A | 11TM31-029 | 100% |  | 2026-06-01 | 2026-06-16 |  |  | Automaty | 11TM31 | Ruroci¹g | Budowa | Roboty | Joanna | Uk³ad | PM000 | Zespó³-W | Blok | Normalny | Pakiet | L2 |  |
| 11TM31-031 |  | Malowanie i oznakowanie – Sekcja 03 |  | 8d | 2026-06-08 A | 2026-06-22 A | 11TM31-030 FF+2d | 100% |  | 2026-06-09 | 2026-06-18 |  |  | Automaty | 11TM31 | Ruroci¹g | Budowa | Roboty | Joanna | Uk³ad | PM000 | Zespó³-W | Blok | Normalny | Pakiet | L2 | Rev A |

| ID | WBS | Activity | Duration | Start | Finish | Predecessors | Complete | Planned start | Planned finish | Calendar | Rewizja dokumentu | AC_Wykonawca | AC_Obiekt | AC_Dyscyplina | AC_Faza | AC_Zakres | AC_Opiekun | AC_Obszar | AC_PP_PM | AC_Zespol | AC_Blok | AC_Priorytet | AC_Pakiet | AC_Poziom | Uwagi harmonogramisty |
| --- | --- | --- | --- | --- | --- | --- | --- | --- | --- | --- | --- | --- | --- | --- | --- | --- | --- | --- | --- | --- | --- | --- | --- | --- | --- |
|  | SEKCJA 04 | **Sekcja 04** |  | 2025-11-18 | 2026-06-18 |  |  |  |  |  |  |  |  |  |  |  |  |  |  |  |  |  |  |  |  |
| 11TM31-032 |  | Prefabrykacja ruroci¹gów – Sekcja 04 | 8.1d | 2025-11-18 A | 2025-12-01 A | 11TM31-012, 11TM31-027 SS+5d | 100% | 2025-11-18 | 2025-11-27 |  | Rev C | Automaty | 11TM31 | Ruroci¹g | Budowa | Roboty | Joanna | Uk³ad | PM000 | Zespó³-W | Blok | Normalny | Pakiet | L2 |  |
| 11TM31-033 |  | Monta¿ ruroci¹gów – Sekcja 04 | 16.6d | 2026-05-06 A | 2026-05-27 A | 11TM31-032, 11TM31-014 SS+7d | 100% | 2026-05-04 | 2026-05-25 |  |  | Automaty | 11TM31 | Ruroci¹g | Budowa | Roboty | Joanna | Uk³ad | PM000 | Zespó³-K | Blok | Normalny | Pakiet | L2 | Do weryfikacji z wykonawc¹ |
| 11TM31-035 |  | Izolacje – Sekcja 04 | 11d | 2026-05-28 A | 2026-06-12 A | 11TM31-034 | 100% | 2026-05-28 | 2026-06-11 |  |  | Automaty | 11TM31 | Ruroci¹g | Budowa | Roboty | Joanna | Uk³ad | PM000 | Zespó³-W | Blok | Normalny | Pakiet | L2 |  |
| 11TM31-034 |  | Próba ciœnieniowa – Sekcja 04 | 2d | 2026-05-29 A | 2026-06-01 A | 11TM31-033 | 100% | 2026-05-26 | 2026-05-27 |  | Rev C | Automaty | 11TM31 | Ruroci¹g | Budowa | Roboty | Joanna | Uk³ad | PM000 | Zespó³-K | Blok | Normalny | Pakiet | L2 | Uzgodnione na koordynacji |
| 11TM31-036 |  | Malowanie i oznakowanie – Sekcja 04 | 8d | 2026-06-04 A | 2026-06-18 A | 11TM31-035 FF+2d | 100% | 2026-06-04 | 2026-06-15 |  | Rev A | Automaty | 11TM31 | Ruroci¹g | Budowa | Roboty | Joanna | Uk³ad | PM000 | Zespó³-K | Blok | Normalny | Pakiet | L2 | Do weryfikacji z wykonawc¹ |
|  | SEKCJA 05 | **Sekcja 05** |  | 2025-11-26 | 2026-06-08 |  |  |  |  |  |  |  |  |  |  |  |  |  |  |  |  |  |  |  |  |
| 11TM31-039 |  | Prefabrykacja ruroci¹gów – Sekcja 05 | 7.6d | 2025-11-26 A | 2025-12-09 A | 11TM31-012, 11TM31-032 SS+5d | 100% | 2025-11-25 | 2025-12-03 |  |  | Automaty | 11TM31 | Ruroci¹g | Budowa | Roboty | Joanna | Uk³ad | PM000 | Zespó³-K | Blok | Normalny | Pakiet | L2 |  |
| 11TM31-040 |  | Monta¿ ruroci¹gów – Sekcja 05 | 6.6d | 2026-05-07 A | 2026-05-14 A | 11TM31-039, 11TM31-014 SS+7d | 100% | 2026-05-04 | 2026-05-11 |  | Rev B | Automaty | 11TM31 | Ruroci¹g | Budowa | Roboty | Joanna | Uk³ad | PM000 | Zespó³-K | Blok | Normalny | Pakiet | L2 |  |
| 11TM31-041 |  | Próba ciœnieniowa – Sekcja 05 | 4d | 2026-05-15 A | 2026-05-25 A | 11TM31-040 | 100% | 2026-05-12 | 2026-05-15 | Kalendarz 6-dniowy | Rev A | Automaty | 11TM31 | Ruroci¹g | Budowa | Roboty | Joanna | Uk³ad | PM000 | Zespó³-W | Blok | Wysoki | Pakiet | L2 |  |
| 11TM31-042 |  | Izolacje – Sekcja 05 | 10d | 2026-05-20 A | 2026-06-02 A | 11TM31-041 | 100% | 2026-05-18 | 2026-05-29 |  |  | Automaty | 11TM31 | Ruroci¹g | Budowa | Roboty | Joanna | Uk³ad | PM000 | Zespó³-K | Blok | Normalny | Pakiet | L2 |  |
| 11TM31-043 |  | Malowanie i oznakowanie – Sekcja 05 | 3d | 2026-06-01 A | 2026-06-08 A | 11TM31-042 FF+2d | 100% | 2026-05-29 | 2026-06-02 | Kalendarz 6-dniowy |  | Automaty | 11TM31 | Ruroci¹g | Budowa | Roboty | Joanna | Uk³ad | PM000 | Zespó³-W | Blok | Wysoki | Pakiet | L2 | Bez uwag |
|  | SEKCJA 06 | **Sekcja 06** |  | 2025-12-03 | 2026-06-15 |  |  |  |  |  |  |  |  |  |  |  |  |  |  |  |  |  |  |  |  |
|  | PODSEKCJA | **Podsekcja 06.A** |  | 2025-12-03 | 2026-06-15 |  |  |  |  |  |  |  |  |  |  |  |  |  |  |  |  |  |  |  |  |
| 11TM31-044 |  | Prefabrykacja ruroci¹gów – Sekcja 06 | 12.1d | 2025-12-03 A | 2025-12-19 A | 11TM31-012, 11TM31-039 SS+5d | 100% | 2025-12-02 | 2025-12-17 |  |  | Automaty | 11TM31 | Ruroci¹g | Budowa | Roboty | Joanna | Uk³ad | PM000 | Zespó³-W | Blok | Normalny | Pakiet | L2 |  |
| 11TM31-045 |  | Monta¿ ruroci¹gów – Sekcja 06 | 17.5d | 2026-05-05 A | 2026-05-27 A | 11TM31-044, 11TM31-014 SS+7d | 100% | 2026-05-04 | 2026-05-26 |  |  | Automaty | 11TM31 | Ruroci¹g | Budowa | Roboty | Joanna | Uk³ad | PM000 | Zespó³-K | Blok | Normalny | Pakiet | L2 |  |
| 11TM31-046 |  | Próba ciœnieniowa – Sekcja 06 | 5d | 2026-05-26 A | 2026-06-03 A | 11TM31-045 | 100% | 2026-05-27 | 2026-06-02 |  |  | Automaty | 11TM31 | Ruroci¹g | Budowa | Roboty | Joanna | Uk³ad | PM100 | Zespó³-E | Blok | Normalny | Pakiet | L2 |  |
| 11TM31-047 |  | Izolacje – Sekcja 06 | 3d | 2026-06-02 A | 2026-06-04 A | 11TM31-046 | 100% | 2026-06-03 | 2026-06-05 |  |  | Automaty | 11TM31 | Ruroci¹g | Budowa | Roboty | Joanna | Uk³ad | PM000 | Zespó³-W | Blok | Normalny | Pakiet | L2 | Ryzyko opóŸnienia |
| 11TM31-048 |  | Malowanie i oznakowanie – Sekcja 06 | 2d | 2026-06-10 A | 2026-06-15 A | 11TM31-047 FF+2d | 100% | 2026-06-08 | 2026-06-09 |  |  | Automaty | 11TM31 | Ruroci¹g | Budowa | Roboty | Joanna | Uk³ad | PM000 | Zespó³-K | Blok | Normalny | Pakiet | L2 | Uzgodnione na koordynacji |
|  | SEKCJA 07 | **Sekcja 07** |  | 2025-12-11 | 2026-06-10 |  |  |  |  |  |  |  |  |  |  |  |  |  |  |  |  |  |  |  |  |
| 11TM31-051 |  | Prefabrykacja ruroci¹gów – Sekcja 07 | 8.4d | 2025-12-11 A | 2025-12-24 A | 11TM31-012, 11TM31-044 SS+5d | 100% | 2025-12-09 | 2025-12-18 |  |  | Automaty | 11TM31 | Ruroci¹g | Budowa | Roboty | Joanna | Uk³ad | PM000 | Zespó³-K | Blok | Normalny | Pakiet | L2 | Bez uwag |
| 11TM31-052 |  | Monta¿ ruroci¹gów – Sekcja 07 | 15.9d | 2026-04-27 A | 2026-05-15 A | 11TM31-051, 11TM31-014 SS+2d | 100% |  |  |  |  | Automaty | 11TM31 | Ruroci¹g | Budowa | Roboty | Joanna | Uk³ad | PM000 | Zespó³-W | Blok | Normalny | Pakiet | L2 |  |
| 11TM31-053 |  | Próba ciœnieniowa – Sekcja 07 | 3d | 2026-05-21 A | 2026-05-25 A | 11TM31-052 | 100% | 2026-05-18 | 2026-05-20 |  |  | Automaty | 11TM31 | Ruroci¹g | Budowa | Roboty | Joanna | Uk³ad | PM000 | Zespó³-W | Blok | Niski | Pakiet | L2 |  |
| 11TM31-054 |  | Izolacje – Sekcja 07 | 10d | 2026-05-25 A | 2026-06-10 A | 11TM31-053 | 100% | 2026-05-21 | 2026-06-03 |  | Rev A | Automaty | 11TM31 | Ruroci¹g | Budowa | Roboty | Joanna | Uk³ad | PM000 | Zespó³-K | Blok | Niski | Pakiet | L2 |  |
| 11TM31-055 |  | Malowanie i oznakowanie – Sekcja 07 | 7d | 2026-05-27 A | 2026-06-04 A | 11TM31-054 FF+2d | 100% | 2026-05-28 | 2026-06-05 |  |  | Automaty | 11TM31 | Ruroci¹g | Budowa | Roboty | Joanna | Uk³ad | PM000 | Zespó³-K | Blok | Niski | Pakiet | L2 |  |

| ID | WBS | Activity | Duration | Start | Finish | Predecessors | Complete | Planned start | Planned finish | AC_Wykonawca | AC_Obiekt | AC_Dyscyplina | AC_Faza | AC_Zakres | AC_Opiekun | AC_Obszar | AC_PP_PM | AC_Zespol | AC_Blok | AC_Priorytet | AC_Pakiet | AC_Poziom | Uwagi harmonogramisty | Rewizja dokumentu |
| --- | --- | --- | --- | --- | --- | --- | --- | --- | --- | --- | --- | --- | --- | --- | --- | --- | --- | --- | --- | --- | --- | --- | --- | --- |
|  | SEKCJA 08 | **Sekcja 08** |  | 2025-12-15 | 2026-06-16 |  |  |  |  |  |  |  |  |  |  |  |  |  |  |  |  |  |  |  |
| 11TM31-056 |  | Prefabrykacja ruroci¹gów – Sekcja 08 | 9.3d | 2025-12-15 A | 2025-12-29 A | 11TM31-012, 11TM31-051 SS+5d | 100% | 2025-12-16 | 2025-12-26 | Automaty | 11TM31 | Ruroci¹g | Budowa | Roboty | Joanna | Uk³ad | PM000 | Zespó³-K | Blok | Niski | Pakiet | L2 |  |  |
| 11TM31-057 |  | Monta¿ ruroci¹gów – Sekcja 08 | 11.9d | 2026-05-05 A | 2026-05-20 A | 11TM31-056, 11TM31-014 SS+5d | 100% | 2026-04-30 | 2026-05-14 | Automaty | 11TM31 | Ruroci¹g | Budowa | Roboty | Joanna | Uk³ad | PM000 | Zespó³-W | Blok | Niski | Pakiet | L2 |  |  |
| 11TM31-058 |  | Próba ciœnieniowa – Sekcja 08 | 6d | 2026-05-19 A | 2026-05-26 A | 11TM31-057 | 100% | 2026-05-15 | 2026-05-22 | Automaty | 11TM31 | Ruroci¹g | Budowa | Roboty | Joanna | Uk³ad | PM000 | Zespó³-W | Blok | Krytyczn | Pakiet | L2 | Uzgodnione na koordynacji | Rev C |
| 11TM31-059 |  | Izolacje – Sekcja 08 | 12d | 2026-05-27 A | 2026-06-16 A | 11TM31-058 | 100% | 2026-05-25 | 2026-06-09 | Automaty | 11TM31 | Ruroci¹g | Budowa | Roboty | Joanna | Uk³ad | PM000 | Zespó³-K | Blok | Wysoki | Pakiet | L2 |  |  |
| 11TM31-060 |  | Malowanie i oznakowanie – Sekcja 08 | 6d | 2026-06-04 A | 2026-06-11 A | 11TM31-059 FF+2d | 100% |  |  | Automaty | 11TM31 | Ruroci¹g | Budowa | Roboty | Joanna | Uk³ad | PM300 | Zespó³-E | Blok | Krytyczn | Pakiet | L2 |  |  |
|  | SEKCJA 09 | **Sekcja 09** |  | 2025-12-23 | 2026-05-21 |  |  |  |  |  |  |  |  |  |  |  |  |  |  |  |  |  |  |  |
|  | PODSEKCJA | **Podsekcja 09.A** |  | 2025-12-23 | 2026-05-21 |  |  |  |  |  |  |  |  |  |  |  |  |  |  |  |  |  |  |  |
| 11TM31-063 |  | Prefabrykacja ruroci¹gów – Sekcja 09 | 3.5d | 2025-12-23 A | 2025-12-30 A | 11TM31-012, 11TM31-056 SS+5d | 100% | 2025-12-23 | 2025-12-25 | Automaty | 11TM31 | Ruroci¹g | Budowa | Roboty | Joanna | Uk³ad | PM000 | Zespó³-W | Blok | Normalny | Pakiet | L2 |  | Rev A |
| 11TM31-064 |  | Monta¿ ruroci¹gów – Sekcja 09 | 6.2d | 2026-04-27 A | 2026-05-04 A | 11TM31-063, 11TM31-014 SS+3d | 100% | 2026-04-28 | 2026-05-05 | Automaty | 11TM31 | Ruroci¹g | Budowa | Roboty | Joanna | Uk³ad | PM000 | Zespó³-W | Blok | Normalny | Pakiet | L2 |  |  |
| 11TM31-065 |  | Próba ciœnieniowa – Sekcja 09 | 2d | 2026-05-05 A | 2026-05-11 A | 11TM31-064 | 100% | 2026-05-06 | 2026-05-07 | Automaty | 11TM31 | Ruroci¹g | Budowa | Roboty | Joanna | Uk³ad | PM000 | Zespó³-W | Blok | Normalny | Pakiet | L2 |  |  |
| 11TM31-067 |  | Malowanie i oznakowanie – Sekcja 09 | 6d | 2026-05-12 A | 2026-05-21 A | 11TM31-066 FF+2d | 100% | 2026-05-12 | 2026-05-19 | Automaty | 11TM31 | Ruroci¹g | Budowa | Roboty | Joanna | Uk³ad | PM000 | Zespó³-E | Blok | Niski | Pakiet | L2 |  | Rev C |
| 11TM31-066 |  | Izolacje – Sekcja 09 | 6d | 2026-05-13 A | 2026-05-20 A | 11TM31-065 | 100% | 2026-05-08 | 2026-05-15 | Automaty | 11TM31 | Ruroci¹g | Budowa | Roboty | Joanna | Uk³ad | PM000 | Zespó³-W | Blok | Normalny | Pakiet | L2 | Bez uwag | Rev B |
|  | SEKCJA 10 | **Sekcja 10** |  | 2026-01-02 | 2026-05-28 |  |  |  |  |  |  |  |  |  |  |  |  |  |  |  |  |  |  |  |
| 11TM31-068 |  | Prefabrykacja ruroci¹gów – Sekcja 10 | 10d | 2026-01-02 A | 2026-01-20 A | 11TM31-012, 11TM31-063 SS+5d | 100% | 2025-12-30 | 2026-01-12 | Automaty | 11TM31 | Ruroci¹g | Budowa | Roboty | Joanna | Uk³ad | PM000 | Zespó³-K | Blok | Normalny | Pakiet | L2 |  |  |
| 11TM31-069 |  | Monta¿ ruroci¹gów – Sekcja 10 | 8.9d | 2026-04-27 A | 2026-05-06 A | 11TM31-068, 11TM31-014 SS+3d | 100% | 2026-04-28 | 2026-05-07 | Automaty | 11TM31 | Ruroci¹g | Budowa | Roboty | Joanna | Uk³ad | PM000 | Zespó³-W | Blok | Normalny | Pakiet | L2 |  |  |
| 11TM31-070 |  | Próba ciœnieniowa – Sekcja 10 | 4d | 2026-05-13 A | 2026-05-19 A | 11TM31-069 | 100% | 2026-05-08 | 2026-05-13 | Automaty | 11TM31 | Ruroci¹g | Budowa | Roboty | Joanna | Uk³ad | PM000 | Zespó³-W | Blok | Normalny | Pakiet | L2 |  |  |
| 11TM31-071 |  | Izolacje – Sekcja 10 | 9d | 2026-05-13 A | 2026-05-25 A | 11TM31-070 | 100% | 2026-05-14 | 2026-05-26 | Automaty | 11TM31 | Ruroci¹g | Budowa | Roboty | Joanna | Uk³ad | PM300 | Zespó³-I | Blok | Wysoki | Pakiet | L2 | Uzgodnione na koordynacji |  |
| 11TM31-072 |  | Malowanie i oznakowanie – Sekcja 10 | 3d | 2026-05-25 A | 2026-05-28 A | 11TM31-071 FF+2d | 100% | 2026-05-26 | 2026-05-28 | Automaty | 11TM31 | Ruroci¹g | Budowa | Roboty | Joanna | Uk³ad | PM000 | Zespó³-W | Blok | Normalny | Pakiet | L2 | Do weryfikacji z wykonawc¹ | Rev A |
|  | SEKCJA 11 | **Sekcja 11** |  | 2026-01-06 | 2026-06-02 |  |  |  |  |  |  |  |  |  |  |  |  |  |  |  |  |  |  |  |
| 11TM31-075 |  | Prefabrykacja ruroci¹gów – Sekcja 11 | 3.9d | 2026-01-06 A | 2026-01-13 A | 11TM31-012, 11TM31-068 SS+5d | 100% | 2026-01-06 | 2026-01-08 | Automaty | 11TM31 | Ruroci¹g | Budowa | Roboty | Joanna | Uk³ad | PM000 | Zespó³-W | Blok | Normalny | Pakiet | L2 | Czeka na dostawê | Rev A |
| 11TM31-076 |  | Monta¿ ruroci¹gów – Sekcja 11 | 20.2d | 2026-04-27 A | 2026-05-22 A | 11TM31-075, 11TM31-014 SS | 100% | 2026-04-23 | 2026-05-20 | Automaty | 11TM31 | Ruroci¹g | Budowa | Roboty | Joanna | Uk³ad | PM000 | Zespó³-W | Blok | Normalny | Pakiet | L2 |  |  |
| 11TM31-077 |  | Próba ciœnieniowa – Sekcja 11 | 5d | 2026-05-25 A | 2026-06-01 A | 11TM31-076 | 100% | 2026-05-21 | 2026-05-27 | Automaty | 11TM31 | Ruroci¹g | Budowa | Roboty | Joanna | Uk³ad | PM000 | Zespó³-K | Blok | Normalny | Pakiet | L2 | Bez uwag |  |
| 11TM31-079 |  | Malowanie i oznakowanie – Sekcja 11 | 6d | 2026-05-26 A | 2026-06-02 A | 11TM31-078 FF+2d | 100% | 2026-05-27 | 2026-06-03 | Automaty | 11TM31 | Ruroci¹g | Budowa | Roboty | Joanna | Uk³ad | PM000 | Zespó³-W | Blok | Niski | Pakiet | L2 |  |  |
| 11TM31-078 |  | Izolacje – Sekcja 11 | 3d | 2026-05-29 A | 2026-06-02 A | 11TM31-077 | 100% | 2026-05-28 | 2026-06-01 | Automaty | 11TM31 | Ruroci¹g | Budowa | Roboty | Joanna | Uk³ad | PM000 | Zespó³-E | Blok | Normalny | Pakiet | L2 |  |  |

| ID | WBS | Activity | Duration | Start | Finish | Predecessors | Complete | Planned start | Planned finish | Calendar | Rewizja dokumentu | AC_Wykonawca | AC_Obiekt | AC_Dyscyplina | AC_Faza | AC_Zakres | AC_Opiekun | AC_Obszar | AC_PP_PM | AC_Zespol | AC_Blok | AC_Priorytet | AC_Pakiet | AC_Poziom | Uwagi harmonogramisty |
| --- | --- | --- | --- | --- | --- | --- | --- | --- | --- | --- | --- | --- | --- | --- | --- | --- | --- | --- | --- | --- | --- | --- | --- | --- | --- |
|  | SEKCJA 12 | **Sekcja 12** |  | 2026-01-15 | 2026-06-05 |  |  |  |  |  |  |  |  |  |  |  |  |  |  |  |  |  |  |  |  |
|  | PODSEKCJA | **Podsekcja 12.A** |  | 2026-01-15 | 2026-06-05 |  |  |  |  |  |  |  |  |  |  |  |  |  |  |  |  |  |  |  |  |
| 11TM31-080 |  | Prefabrykacja ruroci¹gów – Sekcja 12 | 12.1d | 2026-01-15 A | 2026-02-02 A | 11TM31-012, 11TM31-075 SS+5d | 100% | 2026-01-13 | 2026-01-28 |  | Rev B | Automaty | 11TM31 | Ruroci¹g | Budowa | Roboty | Joanna | Uk³ad | PM000 | Zespó³-W | Blok | Normalny | Pakiet | L2 |  |
| 11TM31-081 |  | Monta¿ ruroci¹gów – Sekcja 12 | 21.3d | 2026-04-29 A | 2026-06-01 A | 11TM31-080, 11TM31-014 SS+1d | 100% | 2026-04-24 | 2026-05-22 |  |  | Automaty | 11TM31 | Ruroci¹g | Budowa | Roboty | Joanna | Uk³ad | PM000 | Zespó³-W | Blok | Normalny | Pakiet | L2 |  |
| 11TM31-082 |  | Próba ciœnieniowa – Sekcja 12 | 2d | 2026-05-22 A | 2026-05-26 A | 11TM31-081 | 100% | 2026-05-25 | 2026-05-26 |  | Rev A | Automaty | 11TM31 | Ruroci¹g | Budowa | Roboty | Joanna | Uk³ad | PM000 | Zespó³-W | Blok | Normalny | Pakiet | L2 |  |
| 11TM31-083 |  | Izolacje – Sekcja 12 | 4d | 2026-05-27 A | 2026-06-02 A | 11TM31-082 | 100% | 2026-05-27 | 2026-06-01 |  |  | Automaty | 11TM31 | Ruroci¹g | Budowa | Roboty | Joanna | Uk³ad | PM000 | Zespó³-W | Blok | Normalny | Pakiet | L2 | Czeka na dostawê |
| 11TM31-084 |  | Malowanie i oznakowanie – Sekcja 12 | 4d | 2026-05-29 A | 2026-06-05 A | 11TM31-083 FF+2d | 100% | 2026-05-29 | 2026-06-03 |  |  | Automaty | 11TM31 | Ruroci¹g | Budowa | Roboty | Joanna | Uk³ad | PM000 | Zespó³-W | Blok | Normalny | Pakiet | L2 |  |
|  | SEKCJA 13 | **Sekcja 13** |  | 2026-01-20 | 2026-05-26 |  |  |  |  |  |  |  |  |  |  |  |  |  |  |  |  |  |  |  |  |
| 11TM31-087 |  | Prefabrykacja ruroci¹gów – Sekcja 13 | 3.9d | 2026-01-20 A | 2026-01-26 A | 11TM31-012, 11TM31-080 SS+5d | 100% | 2026-01-20 | 2026-01-22 |  |  | Automaty | 11TM31 | Ruroci¹g | Budowa | Roboty | Joanna | Uk³ad | PM000 | Zespó³-W | Blok | Wysoki | Pakiet | L2 |  |
| 11TM31-088 |  | Monta¿ ruroci¹gów – Sekcja 13 | 5.2d | 2026-04-24 A | 2026-04-30 A | 11TM31-087, 11TM31-014 SS+2d | 100% | 2026-04-27 | 2026-05-01 |  | Rev C | Automaty | 11TM31 | Ruroci¹g | Budowa | Roboty | Joanna | Uk³ad | PM000 | Zespó³-W | Blok | Normalny | Pakiet | L2 |  |
| 11TM31-089 |  | Próba ciœnieniowa – Sekcja 13 | 4d | 2026-05-05 A | 2026-05-08 A | 11TM31-088 | 100% | 2026-05-04 | 2026-05-07 |  |  | Automaty | 11TM31 | Ruroci¹g | Budowa | Roboty | Joanna | Uk³ad | PM000 | Zespó³-K | Blok | Normalny | Pakiet | L2 |  |
| 11TM31-090 |  | Izolacje – Sekcja 13 | 7d | 2026-05-11 A | 2026-05-20 A | 11TM31-089 | 100% | 2026-05-08 | 2026-05-18 |  | Rev B | Automaty | 11TM31 | Ruroci¹g | Budowa | Roboty | Joanna | Uk³ad | PM000 | Zespó³-K | Blok | Normalny | Pakiet | L2 |  |
| 11TM31-091 |  | Malowanie i oznakowanie – Sekcja 13 | 3d | 2026-05-20 A | 2026-05-26 A | 11TM31-090 FF+2d | 100% | 2026-05-18 | 2026-05-20 |  |  | Automaty | 11TM31 | Ruroci¹g | Budowa | Roboty | Joanna | Uk³ad | PM000 | Zespó³-W | Blok | Normalny | Pakiet | L2 |  |
|  | SEKCJA 14 | **Sekcja 14** |  | 2026-01-28 | 2026-06-19 |  |  |  |  |  |  |  |  |  |  |  |  |  |  |  |  |  |  |  |  |
| 11TM31-092 |  | Prefabrykacja ruroci¹gów – Sekcja 14 | 4.9d | 2026-01-28 A | 2026-02-03 A | 11TM31-012, 11TM31-087 SS+5d | 100% | 2026-01-27 | 2026-01-30 |  |  | Automaty | 11TM31 | Ruroci¹g | Budowa | Roboty | Joanna | Uk³ad | PM000 | Zespó³-K | Blok | Normalny | Pakiet | L2 |  |
| 11TM31-093 |  | Monta¿ ruroci¹gów – Sekcja 14 | 11.7d | 2026-05-12 A | 2026-05-27 A | 11TM31-092, 11TM31-014 SS+10d | 100% | 2026-05-07 | 2026-05-21 |  |  | Automaty | 11TM31 | Ruroci¹g | Budowa | Roboty | Joanna | Uk³ad | PM000 | Zespó³-K | Blok | Normalny | Pakiet | L2 |  |
| 11TM31-094 |  | Próba ciœnieniowa – Sekcja 14 | 5d | 2026-05-21 A | 2026-05-29 A | 11TM31-093 | 100% | 2026-05-22 | 2026-05-28 |  |  | Automaty | 11TM31 | Ruroci¹g | Budowa | Roboty | Joanna | Uk³ad | PM000 | Zespó³-W | Blok | Normalny | Pakiet | L2 |  |
| 11TM31-095 |  | Izolacje – Sekcja 14 | 11d | 2026-06-03 A | 2026-06-19 A | 11TM31-094 | 100% | 2026-05-29 | 2026-06-12 |  | Rev C | Automaty | 11TM31 | Ruroci¹g | Budowa | Roboty | Joanna | Uk³ad | PM100 | Zespó³-I | Blok | Normalny | Pakiet | L2 |  |
| 11TM31-096 |  | Malowanie i oznakowanie – Sekcja 14 | 6d | 2026-06-10 A | 2026-06-17 A | 11TM31-095 FF+2d | 100% | 2026-06-09 | 2026-06-16 |  |  | Automaty | 11TM31 | Ruroci¹g | Budowa | Roboty | Joanna | Uk³ad | PM000 | Zespó³-K | Blok | Niski | Pakiet | L2 |  |
|  | SEKCJA 15 | **Sekcja 15** |  | 2026-02-05 | 2026-06-05 |  |  |  |  |  |  |  |  |  |  |  |  |  |  |  |  |  |  |  |  |
|  | PODSEKCJA | **Podsekcja 15.A** |  | 2026-02-05 | 2026-06-05 |  |  |  |  |  |  |  |  |  |  |  |  |  |  |  |  |  |  |  |  |
| 11TM31-099 |  | Prefabrykacja ruroci¹gów – Sekcja 15 | 13.2d | 2026-02-05 A | 2026-02-24 A | 11TM31-012, 11TM31-092 SS+5d | 100% | 2026-02-03 | 2026-02-19 |  | Rev C | Automaty | 11TM31 | Ruroci¹g | Budowa | Roboty | Joanna | Uk³ad | PM000 | Zespó³-K | Blok | Niski | Pakiet | L2 | Uzgodnione na koordynacji |
| 11TM31-100 |  | Monta¿ ruroci¹gów – Sekcja 15 | 5.7d | 2026-04-29 A | 2026-05-05 A | 11TM31-099, 11TM31-014 SS+5d | 100% | 2026-04-30 | 2026-05-06 |  | Rev A | Automaty | 11TM31 | Ruroci¹g | Budowa | Roboty | Joanna | Uk³ad | PM000 | Zespó³-I | Blok | Normalny | Pakiet | L2 |  |
| 11TM31-101 |  | Próba ciœnieniowa – Sekcja 15 | 3d | 2026-05-07 A | 2026-05-11 A | 11TM31-100 | 100% |  |  |  | Rev A | Automaty | 11TM31 | Ruroci¹g | Budowa | Roboty | Joanna | Uk³ad | PM000 | Zespó³-K | Blok | Normalny | Pakiet | L2 |  |
| 11TM31-102 |  | Izolacje – Sekcja 15 | 12d | 2026-05-12 A | 2026-05-29 A | 11TM31-101 | 100% | 2026-05-12 | 2026-05-27 |  |  | Automaty | 11TM31 | Ruroci¹g | Budowa | Roboty | Joanna | Uk³ad | PM000 | Zespó³-K | Blok | Normalny | Pakiet | L2 |  |
| 11TM31-103 |  | Malowanie i oznakowanie – Sekcja 15 | 6d | 2026-05-27 A | 2026-06-05 A | 11TM31-102 FF+2d | 100% | 2026-05-22 | 2026-05-29 | Kalendarz 6-dniowy |  | Automaty | 11TM31 | Ruroci¹g | Budowa | Roboty | Joanna | Uk³ad | PM000 | Zespó³-W | Blok | Normalny | Pakiet | L2 |  |

| ID | WBS | Activity | Type | Duration | Start | Finish | Predecessors | Complete | Actual finish | Planned start | Planned finish | Calendar | Rewizja dokumentu | AC_Wykonawca | AC_Obiekt | AC_Dyscyplina | AC_Faza | AC_Zakres | AC_Opiekun | AC_Obszar | AC_PP_PM | AC_Zespol | AC_Blok | AC_Priorytet | AC_Pakiet | AC_Poziom | Uwagi harmonogramisty |
| --- | --- | --- | --- | --- | --- | --- | --- | --- | --- | --- | --- | --- | --- | --- | --- | --- | --- | --- | --- | --- | --- | --- | --- | --- | --- | --- | --- |
|  | SEKCJA 16 | **Sekcja 16** |  |  | 2026-02-10 | 2026-06-26 |  |  |  |  |  |  |  |  |  |  |  |  |  |  |  |  |  |  |  |  |  |
| 11TM31-104 |  | Prefabrykacja ruroci¹gów – Sekcja 16 |  | 14.8d | 2026-02-10 A | 2026-03-02 A | 11TM31-012, 11TM31-099 SS+5d | 100% |  | 2026-02-10 | 2026-02-27 |  | Rev B | Automaty | 11TM31 | Ruroci¹g | Budowa | Roboty | Joanna | Uk³ad | PM000 | Zespó³-W | Blok | Normalny | Pakiet | L2 |  |
| 11TM31-105 |  | Monta¿ ruroci¹gów – Sekcja 16 |  | 24.3d | 2026-05-04 A | 2026-06-09 A | 11TM31-104, 11TM31-014 SS+6d | 100% |  | 2026-05-01 | 2026-06-03 | Kalendarz 6-dniowy |  | Automaty | 11TM31 | Ruroci¹g | Budowa | Roboty | Joanna | Uk³ad | PM000 | Zespó³-W | Blok | Normalny | Pakiet | L2 |  |
| 11TM31-106 |  | Próba ciœnieniowa – Sekcja 16 |  | 3d | 2026-06-08 A | 2026-06-10 A | 11TM31-105 | 100% |  | 2026-06-04 | 2026-06-08 |  | Rev A | Automaty | 11TM31 | Ruroci¹g | Budowa | Roboty | Joanna | Uk³ad | PM000 | Zespó³-W | Blok | Normalny | Pakiet | L2 |  |
| 11TM31-107 |  | Izolacje – Sekcja 16 |  | 7d | 2026-06-10 A | 2026-06-19 A | 11TM31-106 | 100% |  | 2026-06-09 | 2026-06-17 |  |  | Automaty | 11TM31 | Ruroci¹g | Budowa | Roboty | Joanna | Uk³ad | PM000 | Zespó³-W | Blok | Wysoki | Pakiet | L2 |  |
| 11TM31-108 |  | Malowanie i oznakowanie – Sekcja 16 |  | 2d | 2026-06-22 A | 2026-06-26 A | 11TM31-107 FF+2d | 100% |  | 2026-06-18 | 2026-06-19 |  | Rev A | Automaty | 11TM31 | Ruroci¹g | Budowa | Roboty | Joanna | Uk³ad | PM000 | Zespó³-K | Blok | Normalny | Pakiet | L2 |  |
|  | SEKCJA 17 | **Sekcja 17** |  |  | 2026-02-17 | 2026-06-15 |  |  |  |  |  |  |  |  |  |  |  |  |  |  |  |  |  |  |  |  |  |
| 11TM31-111 |  | Prefabrykacja ruroci¹gów – Sekcja 17 |  | 14.9d | 2026-02-17 A | 2026-03-06 A | 11TM31-012, 11TM31-104 SS+5d | 100% |  |  |  |  |  | Automaty | 11TM31 | Ruroci¹g | Budowa | Roboty | Joanna | Uk³ad | PM000 | Zespó³-W | Blok | Krytyczn | Pakiet | L2 |  |
| 11TM31-112 |  | Monta¿ ruroci¹gów – Sekcja 17 |  | 22.1d | 2026-04-27 A | 2026-05-26 A | 11TM31-111, 11TM31-014 SS+1d | 100% |  | 2026-04-24 | 2026-05-25 |  | Rev C | Automaty | 11TM31 | Ruroci¹g | Budowa | Roboty | Joanna | Uk³ad | PM000 | Zespó³-W | Blok | Normalny | Pakiet | L2 |  |
| 11TM31-113 |  | Próba ciœnieniowa – Sekcja 17 |  | 4d | 2026-05-29 A | 2026-06-08 A | 11TM31-112 | 100% |  | 2026-05-26 | 2026-05-29 |  |  | Automaty | 11TM31 | Ruroci¹g | Budowa | Roboty | Joanna | Uk³ad | PM000 | Zespó³-W | Blok | Normalny | Pakiet | L2 |  |
| 11TM31-114 |  | Izolacje – Sekcja 17 |  | 6d | 2026-06-04 A | 2026-06-15 A | 11TM31-113 | 100% |  | 2026-06-01 | 2026-06-08 | Kalendarz 6-dniowy |  | Automaty | 11TM31 | Ruroci¹g | Budowa | Roboty | Joanna | Uk³ad | PM000 | Zespó³-W | Blok | Wysoki | Pakiet | L2 |  |
| 11TM31-115 |  | Malowanie i oznakowanie – Sekcja 17 |  | 4d | 2026-06-04 A | 2026-06-10 A | 11TM31-114 FF+2d | 100% |  | 2026-06-05 | 2026-06-10 |  | Rev A | Automaty | 11TM31 | Ruroci¹g | Budowa | Roboty | Joanna | Uk³ad | PM000 | Zespó³-K | Blok | Niski | Pakiet | L2 |  |
|  | SEKCJA 18 | **Sekcja 18** |  |  | 2026-02-27 | 2026-06-10 |  |  |  |  |  |  |  |  |  |  |  |  |  |  |  |  |  |  |  |  |  |
|  | PODSEKCJA | **Podsekcja 18.A** |  |  | 2026-02-27 | 2026-06-10 |  |  |  |  |  |  |  |  |  |  |  |  |  |  |  |  |  |  |  |  |  |
| 11TM31-116 |  | Prefabrykacja ruroci¹gów – Sekcja 18 |  | 11.8d | 2026-02-27 A | 2026-03-17 A | 11TM31-012, 11TM31-111 SS+5d | 100% |  | 2026-02-24 | 2026-03-10 |  | Rev A | Automaty | 11TM31 | Ruroci¹g | Budowa | Roboty | Joanna | Uk³ad | PM000 | Zespó³-K | Blok | Normalny | Pakiet | L2 |  |
| 11TM31-117 |  | Monta¿ ruroci¹gów – Sekcja 18 |  | 9.4d | 2026-05-05 A | 2026-05-19 A | 11TM31-116, 11TM31-014 SS+8d | 100% |  | 2026-05-05 | 2026-05-15 |  |  | Automaty | 11TM31 | Ruroci¹g | Budowa | Roboty | Joanna | Uk³ad | PM000 | Zespó³-K | Blok | Wysoki | Pakiet | L2 |  |
| 11TM31-118 |  | Próba ciœnieniowa – Sekcja 18 |  | 3d | 2026-05-20 A | 2026-05-27 A | 11TM31-117 | 100% |  | 2026-05-18 | 2026-05-20 |  |  | Automaty | 11TM31 | Ruroci¹g | Budowa | Roboty | Joanna | Uk³ad | PM000 | Zespó³-W | Blok | Wysoki | Pakiet | L2 |  |
| 11TM31-119 |  | Izolacje – Sekcja 18 |  | 10d | 2026-05-26 A | 2026-06-10 A | 11TM31-118 | 100% |  | 2026-05-21 | 2026-06-03 |  | Rev A | Automaty | 11TM31 | Ruroci¹g | Budowa | Roboty | Joanna | Uk³ad | PM000 | Zespó³-I | Blok | Normalny | Pakiet | L2 | Bez uwag |
| 11TM31-120 |  | Malowanie i oznakowanie – Sekcja 18 |  | 7d | 2026-05-29 A | 2026-06-08 A | 11TM31-119 FF+2d | 100% |  | 2026-05-28 | 2026-06-05 |  | Rev B | Automaty | 11TM31 | Ruroci¹g | Budowa | Roboty | Joanna | Uk³ad | PM000 | Zespó³-W | Blok | Normalny | Pakiet | L2 |  |
|  | PROJ | **Projektowanie** |  |  | 2025-02-18 | 2025-08-14 |  |  |  |  |  |  |  |  |  |  |  |  |  |  |  |  |  |  |  |  |  |
|  | DOKUMENTAC | **Dokumentacja** |  |  | 2025-02-18 | 2025-08-14 |  |  |  |  |  |  |  |  |  |  |  |  |  |  |  |  |  |  |  |  |  |
| 11TM31-001 |  | Projekt wykonawczy – Uk³ad chemicznego uzdatniania |  | 102d | 2025-02-18 A | 2025-07-09 A |  | 100% |  | 2025-02-17 | 2025-07-08 |  | Rev C | Automaty | 11TM31 | Budowlan | Projekto | Projekt | Joanna | Uk³ad | PM000 | Zespó³-E | Blok | Normalny | Pakiet | L2 |  |
| 11TM31-002 |  | Uzgodnienie dokumentacji z Inwestorem |  | 12d | 2025-07-08 A | 2025-07-28 A | 11TM31-001 | 100% |  | 2025-07-09 | 2025-07-24 |  |  | Automaty | 11TM31 | Budowlan | Projekto | Projekt | Joanna | Uk³ad | PM000 | Zespó³-K | Blok | Normalny | Pakiet | L2 |  |
| 11TM31-003 |  | Zatwierdzenie dokumentacji do realizacji |  | 14d | 2025-07-25 A | 2025-08-13 A | 11TM31-002 | 100% |  |  |  |  |  | Automaty | 11TM31 | Budowlan | Projekto | Projekt | Joanna | Uk³ad | PM000 | Zespó³-W | Blok | Normalny | Pakiet | L2 |  |
| 11TM31-004 |  | KM: Dokumentacja zatwierdzona – Uk³ad chemicznego uzdatniania | milestone | 0d | 2025-08-14 A | 2025-08-14 | 11TM31-003 | 100% | 2025-08-13 |  |  |  |  | Automaty | 11TM31 | Budowlan | Projekto | Kamieñ | Joanna | Uk³ad | PM200 | Zespó³-I | Blok | Krytyczn | Pakiet | L1 | Do weryfikacji z wykonawc¹ |

| ID | WBS | Activity | Type | Duration | Start | Finish | Predecessors | Complete | Actual start | Actual finish | Planned start | Planned finish | Calendar | AC_Wykonawca | AC_Obiekt | AC_Dyscyplina | AC_Faza | AC_Zakres | AC_Opiekun | AC_Obszar | AC_PP_PM | AC_Zespol | AC_Blok | AC_Priorytet | AC_Pakiet | AC_Poziom | Rewizja dokumentu | Uwagi harmonogramisty |
| --- | --- | --- | --- | --- | --- | --- | --- | --- | --- | --- | --- | --- | --- | --- | --- | --- | --- | --- | --- | --- | --- | --- | --- | --- | --- | --- | --- | --- |
|  | ROZR | **Rozruch** |  |  | 2026-06-23 | 2026-08-13 |  |  |  |  |  |  |  |  |  |  |  |  |  |  |  |  |  |  |  |  |  |  |
|  | ROZRUCH | **Rozruch** |  |  | 2026-06-23 | 2026-08-13 |  |  |  |  |  |  |  |  |  |  |  |  |  |  |  |  |  |  |  |  |  |  |
| 11TM31-125 |  | Przegl¹d gotowoœci do rozruchu |  | 8d | 2026-06-23 A | 2026-07-06 A | 11TM31-124, 11TM31-019, 11TM31-024, 11TM31-026 | 100% |  |  | 2026-06-19 | 2026-06-30 |  | Automaty | 11TM31 | Rozruch | Rozruch | Rozruch | Joanna | Uk³ad | PM000 | Zespó³-W | Blok | Normalny | Pakiet | L2 |  |  |
| 11TM31-126 |  | Rozruch na zimno |  | 9d | 2026-06-30 A | 2026-07-14 A | 11TM31-125 | 100% |  |  | 2026-07-01 | 2026-07-13 |  | Automaty | 11TM31 | Rozruch | Rozruch | Rozruch | Joanna | Uk³ad | PM000 | Zespó³-K | Blok | Normalny | Pakiet | L2 |  |  |
| 11TM31-127 |  | Rozruch na gor¹co / próby ruchowe |  | 17d | 2026-07-17 A | 2026-08-13 A | 11TM31-126 | 100% |  |  | 2026-07-14 | 2026-08-05 |  | Automaty | 11TM31 | Rozruch | Rozruch | Rozruch | Joanna | Uk³ad | PM300 | Zespó³-E | Blok | Wysoki | Pakiet | L2 | Rev B |  |
| 11TM31-128 |  | KM: Odbiór koñcowy – Uk³ad chemicznego uzdatniania | milestone | 0d | 2026-08-04 | 2026-08-04 A | 11TM31-127 | 100% | 2026-08-05 |  | 2026-08-06 | 2026-08-06 |  | Automaty | 11TM31 | Rozruch | Rozruch | Kamieñ | Joanna | Uk³ad | PM000 | Zespó³-K | Blok | Krytyczn | Pakiet | L1 | Rev A | Bez uwag |
|  | ZAKU | **Zakupy** |  |  | 2025-03-14 | 2026-04-24 |  |  |  |  |  |  |  |  |  |  |  |  |  |  |  |  |  |  |  |  |  |  |
|  | DOSTAWY | **Dostawy** |  |  | 2025-09-16 | 2026-04-24 |  |  |  |  |  |  |  |  |  |  |  |  |  |  |  |  |  |  |  |  |  |  |
| 11TM31-008 |  | Produkcja u dostawcy |  | 134d | 2025-09-16 A | 2026-03-20 A | 11TM31-007 | 100% |  |  | 2025-09-12 | 2026-03-18 |  | Automaty | 11TM31 | Mechanic | Zakupy | Dostawa | Joanna | Uk³ad | PM000 | Zespó³-E | Blok | Normalny | Pakiet | L2 |  |  |
| 11TM31-009 |  | Testy FAT |  | 4d | 2026-03-24 A | 2026-03-31 A | 11TM31-008 | 100% |  |  | 2026-03-19 | 2026-03-24 |  | Automaty | 11TM31 | Mechanic | Zakupy | Dostawa | Joanna | Uk³ad | PM000 | Zespó³-W | Blok | Normalny | Pakiet | L2 |  |  |
| 11TM31-010 |  | Transport i dostawa na plac budowy |  | 21d | 2026-03-25 A | 2026-04-24 A | 11TM31-009 | 100% |  |  | 2026-03-25 | 2026-04-22 |  | Automaty | 11TM31 | Mechanic | Zakupy | Dostawa | Joanna | Uk³ad | PM000 | Zespó³-K | Blok | Normalny | Pakiet | L2 |  |  |
| 11TM31-011 |  | KM: Dostawa na budowê – Uk³ad chemicznego uzdatniania | milestone | 0d | 2026-04-24 A | 2026-04-24 | 11TM31-010 | 100% |  | 2026-04-23 | 2026-04-23 | 2026-04-23 |  | Automaty | 11TM31 | Mechanic | Zakupy | Kamieñ | Joanna | Uk³ad | PM000 | Zespó³-K | Blok | Krytyczn | Pakiet | L1 |  | Do weryfikacji z wykonawc¹ |
|  | ZAMÓWIENIA | **Zamówienia** |  |  | 2025-03-14 | 2025-09-10 |  |  |  |  |  |  |  |  |  |  |  |  |  |  |  |  |  |  |  |  |  |  |
| 11TM31-005 |  | Zapytanie ofertowe |  | 27d | 2025-03-14 A | 2025-04-22 A | 11TM31-001 SS+20d | 100% |  |  | 2025-03-17 | 2025-04-22 |  | Automaty | 11TM31 | Mechanic | Zakupy | Dostawa | Joanna | Uk³ad | PM000 | Zespó³-E | Blok | Normalny | Pakiet | L2 |  |  |
| 11TM31-006 |  | Analiza i wybór ofert |  | 16d | 2025-04-28 A | 2025-05-21 A | 11TM31-005 | 100% |  |  | 2025-04-23 | 2025-05-14 |  | Automaty | 11TM31 | Mechanic | Zakupy | Dostawa | Joanna | Uk³ad | PM000 | Zespó³-K | Blok | Normalny | Pakiet | L2 | Rev A |  |
| 11TM31-007 |  | Zawarcie umowy / zamówienie |  | 7d | 2025-09-02 A | 2025-09-10 A | 11TM31-006, 11TM31-004 SS, 10YD43-004 (other project) SF+11d, 28BW90-004 (other project) SF | 100% |  |  | 2025-09-03 | 2025-09-11 |  | Automaty | 11TM31 | Mechanic | Zakupy | Dostawa | Joanna | Uk³ad | PM000 | Zespó³-K | Blok | Normalny | Pakiet | L1 |  |  |
|  | 12NW18 | **12NW18 – Ujêcie wody** |  |  | 2025-04-16 | 2026-11-09 |  |  |  |  |  |  |  |  |  |  |  |  |  |  |  |  |  |  |  |  |  |  |
|  | BUDO | **Budowa** |  |  | 2025-11-20 | 2026-08-25 |  |  |  |  |  |  |  |  |  |  |  |  |  |  |  |  |  |  |  |  |  |  |
|  | AKPIA | **AKPiA** |  |  | 2026-06-12 | 2026-07-24 |  |  |  |  |  |  |  |  |  |  |  |  |  |  |  |  |  |  |  |  |  |  |
| 12NW18-075 |  | Monta¿ uk³adów AKPiA |  | 30d | 2026-06-12 A | 2026-07-24 A | 12NW18-014 SS+5d | 100% |  |  | 2026-06-09 | 2026-07-20 |  | Izoterm | 12NW18 | AKPiA | Budowa | Roboty | Tomasz | Uk³ad | PM000 | Zespó³-W | Blok | Normalny | Pakiet | L2 | Rev B | Ryzyko opóŸnienia |
|  | ELEKTRYKA | **Elektryka** |  |  | 2026-06-08 | 2026-07-21 |  |  |  |  |  |  |  |  |  |  |  |  |  |  |  |  |  |  |  |  |  |  |
| 12NW18-062 |  | Pod³¹czenia i pomiary – trasa 08 |  | 10d | 2026-06-08 A | 2026-06-22 A | 12NW18-061 FF | 100% |  |  | 2026-06-09 | 2026-06-22 | Kalendarz 6-dniowy | Izoterm | 12NW18 | Elektryc | Budowa | Roboty | Tomasz | Uk³ad | PM000 | Zespó³-E | Blok | Normalny | Pakiet | L2 | Rev C |  |
| 12NW18-073 |  | Uk³adanie kabli – trasa 10 |  | 12d | 2026-06-16 A | 2026-07-03 A | 12NW18-014 SS+10d | 100% |  |  | 2026-06-16 | 2026-07-01 |  | Izoterm | 12NW18 | Elektryc | Budowa | Roboty | Tomasz | Uk³ad | PM000 | Zespó³-W | Blok | Normalny | Pakiet | L2 |  |  |
| 12NW18-061 |  | Uk³adanie kabli – trasa 08 |  | 5d | 2026-06-18 A | 2026-06-29 A | 12NW18-014 SS+10d | 100% |  |  | 2026-06-16 | 2026-06-22 |  | Izoterm | 12NW18 | Elektryc | Budowa | Roboty | Tomasz | Uk³ad | PM000 | Zespó³-K | Blok | Niski | Pakiet | L2 | Rev A |  |
| 12NW18-025 |  | Uk³adanie kabli – trasa 02 |  | 10d | 2026-06-19 A | 2026-07-02 A | 12NW18-014 SS+10d | 100% |  |  | 2026-06-16 | 2026-06-29 |  | Izoterm | 12NW18 | Elektryc | Budowa | Roboty | Tomasz | Uk³ad | PM000 | Zespó³-W | Blok | Normalny | Pakiet | L2 |  | Czeka na dostawê |
| 12NW18-037 |  | Uk³adanie kabli – trasa 04 |  | 15d | 2026-06-19 A | 2026-07-14 A | 12NW18-014 SS+10d | 100% |  |  | 2026-06-16 | 2026-07-06 |  | Izoterm | 12NW18 | Elektryc | Budowa | Roboty | Tomasz | Uk³ad | PM000 | Zespó³-E | Blok | Normalny | Pakiet | L2 |  |  |
| 12NW18-049 |  | Uk³adanie kabli – trasa 06 |  | 20d | 2026-06-19 A | 2026-07-21 A | 12NW18-014 SS+10d | 100% |  |  | 2026-06-16 | 2026-07-13 |  | Izoterm | 12NW18 | Elektryc | Budowa | Roboty | Tomasz | Uk³ad | PM000 | Zespó³-W | Blok | Krytyczn | Pakiet | L2 |  |  |
| 12NW18-038 |  | Pod³¹czenia i pomiary – trasa 04 |  | 9d | 2026-06-23 A | 2026-07-07 A | 12NW18-037 FF | 100% |  |  | 2026-06-24 | 2026-07-06 |  | Izoterm | 12NW18 | Elektryc | Budowa | Roboty | Tomasz | Uk³ad | PM000 | Zespó³-K | Blok | Normalny | Pakiet | L2 | Rev C |  |
| 12NW18-074 |  | Pod³¹czenia i pomiary – trasa 10 |  | 5d | 2026-06-24 A | 2026-07-03 A | 12NW18-073 FF | 100% |  |  | 2026-06-25 | 2026-07-01 |  | Izoterm | 12NW18 | Elektryc | Budowa | Roboty | Tomasz | Uk³ad | PM000 | Zespó³-K | Blok | Normalny | Pakiet | L2 |  |  |
| 12NW18-026 |  | Pod³¹czenia i pomiary – trasa 02 |  | 5d | 2026-06-26 A | 2026-07-02 A | 12NW18-025 FF | 100% |  |  | 2026-06-23 | 2026-06-29 |  | Izoterm | 12NW18 | Elektryc | Budowa | Roboty | Tomasz | Uk³ad | PM000 | Zespó³-I | Blok | Normalny | Pakiet | L2 | Rev B |  |
| 12NW18-050 |  | Pod³¹czenia i pomiary – trasa 06 |  | 7d | 2026-07-08 A | 2026-07-16 A | 12NW18-049 FF | 100% |  |  | 2026-07-03 | 2026-07-13 |  | Izoterm | 12NW18 | Elektryc | Budowa | Roboty | Tomasz | Uk³ad | PM000 | Zespó³-K | Blok | Normalny | Pakiet | L2 |  |  |

| ID | WBS | Activity | Type | Duration | Start | Finish | Predecessors | Complete | Actual finish | Planned start | Planned finish | Calendar | Uwagi harmonogramisty | AC_Wykonawca | AC_Obiekt | AC_Dyscyplina | AC_Faza | AC_Zakres | AC_Opiekun | AC_Obszar | AC_PP_PM | AC_Zespol | AC_Blok | AC_Priorytet | AC_Pakiet | AC_Poziom | Rewizja dokumentu |
| --- | --- | --- | --- | --- | --- | --- | --- | --- | --- | --- | --- | --- | --- | --- | --- | --- | --- | --- | --- | --- | --- | --- | --- | --- | --- | --- | --- |
|  | MONTA¯ | **Monta¿** |  |  | 2026-01-08 | 2026-08-25 |  |  |  |  |  |  |  |  |  |  |  |  |  |  |  |  |  |  |  |  |  |
| 12NW18-013 |  | Monta¿ konstrukcji stalowych |  | 22d | 2026-01-08 A | 2026-02-09 A | 12NW18-012 | 100% |  | 2026-01-06 | 2026-02-04 |  | Bez uwag | Izoterm | 12NW18 | Mechanic | Budowa | Roboty | Tomasz | Uk³ad | PM000 | Zespó³-W | Blok | Normalny | Pakiet | L2 |  |
| 12NW18-014 |  | Monta¿ urz¹dzeñ g³ównych |  | 58d | 2026-06-05 A | 2026-08-25 A | 12NW18-013, 12NW18-011 | 100% |  | 2026-06-02 | 2026-08-20 |  |  | Izoterm | 12NW18 | Mechanic | Budowa | Roboty | Tomasz | Uk³ad | PM000 | Zespó³-K | Blok | Normalny | Pakiet | L2 |  |
| 12NW18-076 |  | KM: Zakoñczenie monta¿u – Ujêcie wody | milestone | 0d | 2026-08-24 A | 2026-08-24 | 12NW18-067, 12NW18-072, 12NW18-074, 12NW18-075, 12NW18-014 | 100% | 2026-08-21 | 2026-08-21 | 2026-08-21 | Kalendarz 6-dniowy |  | Izoterm | 12NW18 | Mechanic | Budowa | Kamieñ | Tomasz | Uk³ad | PM000 | Zespó³-K | Blok | Normalny | Pakiet | L2 |  |
|  | ROBOTY BUD | **Roboty budowlane** |  |  | 2025-11-20 | 2026-01-07 |  |  |  |  |  |  |  |  |  |  |  |  |  |  |  |  |  |  |  |  |  |
| 12NW18-012 |  | Fundamenty i roboty ziemne |  | 34d | 2025-11-20 A | 2026-01-07 A | 12NW18-007 FS+3d | 100% |  | 2025-11-19 | 2026-01-05 |  |  | Izoterm | 12NW18 | Budowlan | Budowa | Roboty | Tomasz | Uk³ad | PM000 | Zespó³-E | Blok | Normalny | Pakiet | L2 |  |
|  | RUROCI¥GI | **Ruroci¹gi** |  |  | 2026-01-09 | 2026-08-03 |  |  |  |  |  |  |  |  |  |  |  |  |  |  |  |  |  |  |  |  |  |
|  | SEKCJA 01 | **Sekcja 01** |  |  | 2026-01-09 | 2026-07-14 |  |  |  |  |  |  |  |  |  |  |  |  |  |  |  |  |  |  |  |  |  |
| 12NW18-015 |  | Prefabrykacja ruroci¹gów – Sekcja 01 |  | 10.7d | 2026-01-09 A | 2026-01-27 A | 12NW18-012 | 100% |  | 2026-01-06 | 2026-01-19 |  | Uzgodnione na koordynacji | Izoterm | 12NW18 | Ruroci¹g | Budowa | Roboty | Tomasz | Uk³ad | PM000 | Zespó³-K | Blok | Normalny | Pakiet | L2 |  |
| 12NW18-016 |  | Monta¿ ruroci¹gów – Sekcja 01 |  | 9.7d | 2026-06-10 A | 2026-06-23 A | 12NW18-015, 12NW18-014 SS+3d | 100% |  | 2026-06-05 | 2026-06-17 |  |  | Izoterm | 12NW18 | Ruroci¹g | Budowa | Roboty | Tomasz | Uk³ad | PM000 | Zespó³-W | Blok | Krytyczn | Pakiet | L2 | Rev B |
| 12NW18-017 |  | Próba ciœnieniowa – Sekcja 01 |  | 6d | 2026-06-22 A | 2026-07-01 A | 12NW18-016 | 100% |  | 2026-06-18 | 2026-06-25 | Kalendarz 6-dniowy |  | Izoterm | 12NW18 | Ruroci¹g | Budowa | Roboty | Tomasz | Uk³ad | PM000 | Zespó³-W | Blok | Normalny | Pakiet | L2 |  |
| 12NW18-018 |  | Izolacje – Sekcja 01 |  | 7d | 2026-06-26 A | 2026-07-08 A | 12NW18-017 | 100% |  | 2026-06-26 | 2026-07-06 |  |  | Izoterm | 12NW18 | Ruroci¹g | Budowa | Roboty | Tomasz | Uk³ad | PM000 | Zespó³-W | Blok | Normalny | Pakiet | L2 | Rev A |
| 12NW18-019 |  | Malowanie i oznakowanie – Sekcja 01 |  | 5d | 2026-07-03 A | 2026-07-14 A | 12NW18-018 FF+2d | 100% |  | 2026-07-02 | 2026-07-08 | Kalendarz 6-dniowy |  | Izoterm | 12NW18 | Ruroci¹g | Budowa | Roboty | Tomasz | Uk³ad | PM000 | Zespó³-K | Blok | Normalny | Pakiet | L2 |  |
|  | SEKCJA 02 | **Sekcja 02** |  |  | 2026-01-15 | 2026-07-10 |  |  |  |  |  |  |  |  |  |  |  |  |  |  |  |  |  |  |  |  |  |
| 12NW18-020 |  | Prefabrykacja ruroci¹gów – Sekcja 02 |  | 10.1d | 2026-01-15 A | 2026-01-28 A | 12NW18-012, 12NW18-015 SS+5d | 100% |  | 2026-01-13 | 2026-01-26 |  | Uzgodnione na koordynacji | Izoterm | 12NW18 | Ruroci¹g | Budowa | Roboty | Tomasz | Uk³ad | PM000 | Zespó³-E | Blok | Normalny | Pakiet | L2 |  |
| 12NW18-021 |  | Monta¿ ruroci¹gów – Sekcja 02 |  | 12.9d | 2026-06-11 A | 2026-06-26 A | 12NW18-020, 12NW18-014 SS+4d | 100% |  | 2026-06-08 | 2026-06-23 |  |  | Izoterm | 12NW18 | Ruroci¹g | Budowa | Roboty | Tomasz | Uk³ad | PM000 | Zespó³-K | Blok | Normalny | Pakiet | L2 |  |
| 12NW18-022 |  | Próba ciœnieniowa – Sekcja 02 |  | 5d | 2026-06-24 A | 2026-07-01 A | 12NW18-021 | 100% |  | 2026-06-24 | 2026-06-30 |  | Do weryfikacji z wykonawc¹ | Izoterm | 12NW18 | Ruroci¹g | Budowa | Roboty | Tomasz | Uk³ad | PM000 | Zespó³-K | Blok | Normalny | Pakiet | L2 |  |
| 12NW18-023 |  | Izolacje – Sekcja 02 |  | 3d | 2026-07-03 A | 2026-07-10 A | 12NW18-022 | 100% |  | 2026-07-01 | 2026-07-03 |  |  | Izoterm | 12NW18 | Ruroci¹g | Budowa | Roboty | Tomasz | Uk³ad | PM000 | Zespó³-W | Blok | Normalny | Pakiet | L2 |  |
| 12NW18-024 |  | Malowanie i oznakowanie – Sekcja 02 |  | 3d | 2026-07-03 A | 2026-07-08 A | 12NW18-023 FF+2d | 100% |  | 2026-07-03 | 2026-07-07 |  | Ryzyko opóŸnienia | Izoterm | 12NW18 | Ruroci¹g | Budowa | Roboty | Tomasz | Uk³ad | PM000 | Zespó³-W | Blok | Niski | Pakiet | L2 |  |
|  | SEKCJA 03 | **Sekcja 03** |  |  | 2026-01-23 | 2026-07-10 |  |  |  |  |  |  |  |  |  |  |  |  |  |  |  |  |  |  |  |  |  |
|  | PODSEKCJA | **Podsekcja 03.A** |  |  | 2026-01-23 | 2026-07-10 |  |  |  |  |  |  |  |  |  |  |  |  |  |  |  |  |  |  |  |  |  |
| 12NW18-027 |  | Prefabrykacja ruroci¹gów – Sekcja 03 |  | 3d | 2026-01-23 A | 2026-01-29 A | 12NW18-012, 12NW18-020 SS+5d | 100% |  | 2026-01-20 | 2026-01-22 |  |  | Izoterm | 12NW18 | Ruroci¹g | Budowa | Roboty | Tomasz | Uk³ad | PM000 | Zespó³-W | Blok | Normalny | Pakiet | L2 |  |
| 12NW18-028 |  | Monta¿ ruroci¹gów – Sekcja 03 |  | 6.3d | 2026-06-12 A | 2026-06-19 A | 12NW18-027, 12NW18-014 SS+7d | 100% |  | 2026-06-11 | 2026-06-18 |  |  | Izoterm | 12NW18 | Ruroci¹g | Budowa | Roboty | Tomasz | Uk³ad | PM000 | Zespó³-W | Blok | Wysoki | Pakiet | L2 |  |
| 12NW18-029 |  | Próba ciœnieniowa – Sekcja 03 |  | 5d | 2026-06-22 A | 2026-06-30 A | 12NW18-028 | 100% |  | 2026-06-19 | 2026-06-25 |  | Ryzyko opóŸnienia | Izoterm | 12NW18 | Ruroci¹g | Budowa | Roboty | Tomasz | Uk³ad | PM000 | Zespó³-K | Blok | Normalny | Pakiet | L2 | Rev B |
| 12NW18-030 |  | Izolacje – Sekcja 03 |  | 8d | 2026-06-25 A | 2026-07-07 A | 12NW18-029 | 100% |  | 2026-06-26 | 2026-07-07 |  |  | Izoterm | 12NW18 | Ruroci¹g | Budowa | Roboty | Tomasz | Uk³ad | PM000 | Zespó³-W | Blok | Normalny | Pakiet | L2 |  |
| 12NW18-031 |  | Malowanie i oznakowanie – Sekcja 03 |  | 2d | 2026-07-07 A | 2026-07-10 A | 12NW18-030 FF+2d | 100% |  | 2026-07-08 | 2026-07-09 |  | Uzgodnione na koordynacji | Izoterm | 12NW18 | Ruroci¹g | Budowa | Roboty | Tomasz | Uk³ad | PM000 | Zespó³-W | Blok | Normalny | Pakiet | L2 | Rev A |

| ID | WBS | Activity | Duration | Start | Finish | Predecessors | Complete | Planned start | Planned finish | Calendar | Uwagi harmonogramisty | AC_Wykonawca | AC_Obiekt | AC_Dyscyplina | AC_Faza | AC_Zakres | AC_Opiekun | AC_Obszar | AC_PP_PM | AC_Zespol | AC_Blok | AC_Priorytet | AC_Pakiet | AC_Poziom | Rewizja dokumentu |
| --- | --- | --- | --- | --- | --- | --- | --- | --- | --- | --- | --- | --- | --- | --- | --- | --- | --- | --- | --- | --- | --- | --- | --- | --- | --- |
|  | SEKCJA 04 | **Sekcja 04** |  | 2026-01-30 | 2026-07-06 |  |  |  |  |  |  |  |  |  |  |  |  |  |  |  |  |  |  |  |  |
| 12NW18-032 |  | Prefabrykacja ruroci¹gów – Sekcja 04 | 9d | 2026-01-30 A | 2026-02-11 A | 12NW18-012, 12NW18-027 SS+5d | 100% | 2026-01-27 | 2026-02-06 |  | Do weryfikacji z wykonawc¹ | Izoterm | 12NW18 | Ruroci¹g | Budowa | Roboty | Tomasz | Uk³ad | PM300 | Zespó³-I | Blok | Normalny | Pakiet | L2 |  |
| 12NW18-033 |  | Monta¿ ruroci¹gów – Sekcja 04 | 5.2d | 2026-06-04 A | 2026-06-12 A | 12NW18-032, 12NW18-014 SS | 100% | 2026-06-02 | 2026-06-08 |  |  | Izoterm | 12NW18 | Ruroci¹g | Budowa | Roboty | Tomasz | Uk³ad | PM000 | Zespó³-K | Blok | Normalny | Pakiet | L2 | Rev A |
| 12NW18-034 |  | Próba ciœnieniowa – Sekcja 04 | 5d | 2026-06-10 A | 2026-06-19 A | 12NW18-033 | 100% | 2026-06-09 | 2026-06-15 | Kalendarz 6-dniowy |  | Izoterm | 12NW18 | Ruroci¹g | Budowa | Roboty | Tomasz | Uk³ad | PM000 | Zespó³-K | Blok | Normalny | Pakiet | L2 |  |
| 12NW18-035 |  | Izolacje – Sekcja 04 | 10d | 2026-06-15 A | 2026-06-30 A | 12NW18-034 | 100% | 2026-06-16 | 2026-06-29 |  |  | Izoterm | 12NW18 | Ruroci¹g | Budowa | Roboty | Tomasz | Uk³ad | PM000 | Zespó³-W | Blok | Normalny | Pakiet | L2 |  |
| 12NW18-036 |  | Malowanie i oznakowanie – Sekcja 04 | 2d | 2026-07-03 A | 2026-07-06 A | 12NW18-035 FF+2d | 100% | 2026-06-30 | 2026-07-01 |  |  | Izoterm | 12NW18 | Ruroci¹g | Budowa | Roboty | Tomasz | Uk³ad | PM000 | Zespó³-K | Blok | Normalny | Pakiet | L2 | Rev B |
|  | SEKCJA 05 | **Sekcja 05** |  | 2026-02-03 | 2026-07-07 |  |  |  |  |  |  |  |  |  |  |  |  |  |  |  |  |  |  |  |  |
| 12NW18-039 |  | Prefabrykacja ruroci¹gów – Sekcja 05 | 14d | 2026-02-03 A | 2026-02-20 A | 12NW18-012, 12NW18-032 SS+5d | 100% |  |  |  | Ryzyko opóŸnienia | Izoterm | 12NW18 | Ruroci¹g | Budowa | Roboty | Tomasz | Uk³ad | PM000 | Zespó³-K | Blok | Normalny | Pakiet | L2 |  |
| 12NW18-040 |  | Monta¿ ruroci¹gów – Sekcja 05 | 10.4d | 2026-06-01 A | 2026-06-16 A | 12NW18-039, 12NW18-014 SS | 100% | 2026-06-02 | 2026-06-15 |  |  | Izoterm | 12NW18 | Ruroci¹g | Budowa | Roboty | Tomasz | Uk³ad | PM000 | Zespó³-K | Blok | Wysoki | Pakiet | L2 |  |
| 12NW18-041 |  | Próba ciœnieniowa – Sekcja 05 | 2d | 2026-06-16 A | 2026-06-17 A | 12NW18-040 | 100% |  |  |  |  | Izoterm | 12NW18 | Ruroci¹g | Budowa | Roboty | Tomasz | Uk³ad | PM000 | Zespó³-K | Blok | Normalny | Pakiet | L2 |  |
| 12NW18-042 |  | Izolacje – Sekcja 05 | 8d | 2026-06-22 A | 2026-07-01 A | 12NW18-041 | 100% | 2026-06-18 | 2026-06-29 | Kalendarz 6-dniowy |  | Izoterm | 12NW18 | Ruroci¹g | Budowa | Roboty | Tomasz | Uk³ad | PM000 | Zespó³-W | Blok | Normalny | Pakiet | L2 |  |
| 12NW18-043 |  | Malowanie i oznakowanie – Sekcja 05 | 7d | 2026-06-25 A | 2026-07-07 A | 12NW18-042 FF+2d | 100% | 2026-06-23 | 2026-07-01 | Kalendarz 6-dniowy |  | Izoterm | 12NW18 | Ruroci¹g | Budowa | Roboty | Tomasz | Uk³ad | PM000 | Zespó³-W | Blok | Normalny | Pakiet | L2 | Rev C |
|  | SEKCJA 06 | **Sekcja 06** |  | 2026-02-11 | 2026-07-16 |  |  |  |  |  |  |  |  |  |  |  |  |  |  |  |  |  |  |  |  |
|  | PODSEKCJA | **Podsekcja 06.A** |  | 2026-02-11 | 2026-07-16 |  |  |  |  |  |  |  |  |  |  |  |  |  |  |  |  |  |  |  |  |
| 12NW18-044 |  | Prefabrykacja ruroci¹gów – Sekcja 06 | 8d | 2026-02-11 A | 2026-02-25 A | 12NW18-012, 12NW18-039 SS+5d | 100% | 2026-02-10 | 2026-02-19 |  | Czeka na dostawê | Izoterm | 12NW18 | Ruroci¹g | Budowa | Roboty | Tomasz | Uk³ad | PM000 | Zespó³-W | Blok | Normalny | Pakiet | L2 |  |
| 12NW18-045 |  | Monta¿ ruroci¹gów – Sekcja 06 | 8.6d | 2026-06-16 A | 2026-06-25 A | 12NW18-044, 12NW18-014 SS+7d | 100% | 2026-06-11 | 2026-06-22 |  |  | Izoterm | 12NW18 | Ruroci¹g | Budowa | Roboty | Tomasz | Uk³ad | PM000 | Zespó³-K | Blok | Niski | Pakiet | L2 |  |
| 12NW18-046 |  | Próba ciœnieniowa – Sekcja 06 | 5d | 2026-06-23 A | 2026-06-29 A | 12NW18-045 | 100% |  |  |  |  | Izoterm | 12NW18 | Ruroci¹g | Budowa | Roboty | Tomasz | Uk³ad | PM000 | Zespó³-K | Blok | Normalny | Pakiet | L2 | Rev B |
| 12NW18-047 |  | Izolacje – Sekcja 06 | 10d | 2026-06-29 A | 2026-07-13 A | 12NW18-046 | 100% | 2026-06-30 | 2026-07-13 |  |  | Izoterm | 12NW18 | Ruroci¹g | Budowa | Roboty | Tomasz | Uk³ad | PM000 | Zespó³-K | Blok | Normalny | Pakiet | L2 | Rev A |
| 12NW18-048 |  | Malowanie i oznakowanie – Sekcja 06 | 3d | 2026-07-10 A | 2026-07-16 A | 12NW18-047 FF+2d | 100% | 2026-07-13 | 2026-07-15 |  |  | Izoterm | 12NW18 | Ruroci¹g | Budowa | Roboty | Tomasz | Uk³ad | PM000 | Zespó³-W | Blok | Wysoki | Pakiet | L2 |  |
|  | SEKCJA 07 | **Sekcja 07** |  | 2026-02-17 | 2026-07-20 |  |  |  |  |  |  |  |  |  |  |  |  |  |  |  |  |  |  |  |  |
| 12NW18-051 |  | Prefabrykacja ruroci¹gów – Sekcja 07 | 5.3d | 2026-02-17 A | 2026-02-26 A | 12NW18-012, 12NW18-044 SS+5d | 100% | 2026-02-17 | 2026-02-23 |  |  | Izoterm | 12NW18 | Ruroci¹g | Budowa | Roboty | Tomasz | Uk³ad | PM000 | Zespó³-K | Blok | Normalny | Pakiet | L2 |  |
| 12NW18-052 |  | Monta¿ ruroci¹gów – Sekcja 07 | 12.7d | 2026-06-11 A | 2026-07-01 A | 12NW18-051, 12NW18-014 SS+5d | 100% | 2026-06-09 | 2026-06-24 |  |  | Izoterm | 12NW18 | Ruroci¹g | Budowa | Roboty | Tomasz | Uk³ad | PM000 | Zespó³-K | Blok | Normalny | Pakiet | L2 |  |
| 12NW18-053 |  | Próba ciœnieniowa – Sekcja 07 | 2d | 2026-06-25 A | 2026-06-26 A | 12NW18-052 | 100% |  |  |  |  | Izoterm | 12NW18 | Ruroci¹g | Budowa | Roboty | Tomasz | Uk³ad | PM200 | Zespó³-E | Blok | Normalny | Pakiet | L2 | Rev B |
| 12NW18-054 |  | Izolacje – Sekcja 07 | 8d | 2026-06-30 A | 2026-07-10 A | 12NW18-053 | 100% | 2026-06-29 | 2026-07-08 |  | Czeka na dostawê | Izoterm | 12NW18 | Ruroci¹g | Budowa | Roboty | Tomasz | Uk³ad | PM000 | Zespó³-K | Blok | Wysoki | Pakiet | L2 |  |
| 12NW18-055 |  | Malowanie i oznakowanie – Sekcja 07 | 3d | 2026-07-13 A | 2026-07-20 A | 12NW18-054 FF+2d | 100% | 2026-07-08 | 2026-07-10 |  |  | Izoterm | 12NW18 | Ruroci¹g | Budowa | Roboty | Tomasz | Uk³ad | PM000 | Zespó³-W | Blok | Normalny | Pakiet | L2 |  |

| ID | WBS | Activity | Type | Duration | Start | Finish | Predecessors | Complete | Actual finish | Planned start | Planned finish | Calendar | Rewizja dokumentu | AC_Wykonawca | AC_Obiekt | AC_Dyscyplina | AC_Faza | AC_Zakres | AC_Opiekun | AC_Obszar | AC_PP_PM | AC_Zespol | AC_Blok | AC_Priorytet | AC_Pakiet | AC_Poziom | Uwagi harmonogramisty |
| --- | --- | --- | --- | --- | --- | --- | --- | --- | --- | --- | --- | --- | --- | --- | --- | --- | --- | --- | --- | --- | --- | --- | --- | --- | --- | --- | --- |
|  | SEKCJA 08 | **Sekcja 08** |  |  | 2026-02-23 | 2026-08-03 |  |  |  |  |  |  |  |  |  |  |  |  |  |  |  |  |  |  |  |  |  |
| 12NW18-056 |  | Prefabrykacja ruroci¹gów – Sekcja 08 |  | 9.8d | 2026-02-23 A | 2026-03-09 A | 12NW18-012, 12NW18-051 SS+5d | 100% |  | 2026-02-24 | 2026-03-06 |  | Rev C | Izoterm | 12NW18 | Ruroci¹g | Budowa | Roboty | Tomasz | Uk³ad | PM000 | Zespó³-W | Blok | Niski | Pakiet | L2 |  |
| 12NW18-057 |  | Monta¿ ruroci¹gów – Sekcja 08 |  | 20.4d | 2026-06-17 A | 2026-07-17 A | 12NW18-056, 12NW18-014 SS+10d | 100% |  | 2026-06-16 | 2026-07-13 |  |  | Izoterm | 12NW18 | Ruroci¹g | Budowa | Roboty | Tomasz | Uk³ad | PM000 | Zespó³-W | Blok | Niski | Pakiet | L2 | Uzgodnione na koordynacji |
| 12NW18-058 |  | Próba ciœnieniowa – Sekcja 08 |  | 6d | 2026-07-15 A | 2026-07-27 A | 12NW18-057 | 100% |  | 2026-07-14 | 2026-07-21 |  |  | Izoterm | 12NW18 | Ruroci¹g | Budowa | Roboty | Tomasz | Uk³ad | PM100 | Zespó³-E | Blok | Niski | Pakiet | L2 |  |
| 12NW18-060 |  | Malowanie i oznakowanie – Sekcja 08 |  | 8d | 2026-07-20 A | 2026-08-03 A | 12NW18-059 FF+2d | 100% |  | 2026-07-21 | 2026-07-30 |  |  | Izoterm | 12NW18 | Ruroci¹g | Budowa | Roboty | Tomasz | Uk³ad | PM000 | Zespó³-K | Blok | Normalny | Pakiet | L2 |  |
| 12NW18-059 |  | Izolacje – Sekcja 08 |  | 5d | 2026-07-23 A | 2026-07-29 A | 12NW18-058 | 100% |  | 2026-07-22 | 2026-07-28 | Kalendarz 6-dniowy |  | Izoterm | 12NW18 | Ruroci¹g | Budowa | Roboty | Tomasz | Uk³ad | PM000 | Zespó³-K | Blok | Normalny | Pakiet | L2 |  |
|  | SEKCJA 09 | **Sekcja 09** |  |  | 2026-03-05 | 2026-07-21 |  |  |  |  |  |  |  |  |  |  |  |  |  |  |  |  |  |  |  |  |  |
|  | PODSEKCJA | **Podsekcja 09.A** |  |  | 2026-03-05 | 2026-07-21 |  |  |  |  |  |  |  |  |  |  |  |  |  |  |  |  |  |  |  |  |  |
| 12NW18-063 |  | Prefabrykacja ruroci¹gów – Sekcja 09 |  | 13.5d | 2026-03-05 A | 2026-03-24 A | 12NW18-012, 12NW18-056 SS+5d | 100% |  | 2026-03-03 | 2026-03-19 |  | Rev A | Izoterm | 12NW18 | Ruroci¹g | Budowa | Roboty | Tomasz | Uk³ad | PM000 | Zespó³-K | Blok | Normalny | Pakiet | L2 |  |
| 12NW18-064 |  | Monta¿ ruroci¹gów – Sekcja 09 |  | 16.8d | 2026-06-11 A | 2026-07-06 A | 12NW18-063, 12NW18-014 SS+8d | 100% |  | 2026-06-12 | 2026-07-03 |  |  | Izoterm | 12NW18 | Ruroci¹g | Budowa | Roboty | Tomasz | Uk³ad | PM000 | Zespó³-W | Blok | Normalny | Pakiet | L2 |  |
| 12NW18-065 |  | Próba ciœnieniowa – Sekcja 09 |  | 4d | 2026-07-07 A | 2026-07-10 A | 12NW18-064 | 100% |  | 2026-07-06 | 2026-07-09 |  |  | Izoterm | 12NW18 | Ruroci¹g | Budowa | Roboty | Tomasz | Uk³ad | PM000 | Zespó³-K | Blok | Normalny | Pakiet | L2 | Bez uwag |
| 12NW18-066 |  | Izolacje – Sekcja 09 |  | 6d | 2026-07-09 A | 2026-07-20 A | 12NW18-065 | 100% |  | 2026-07-10 | 2026-07-17 | Kalendarz 6-dniowy |  | Izoterm | 12NW18 | Ruroci¹g | Budowa | Roboty | Tomasz | Uk³ad | PM000 | Zespó³-W | Blok | Normalny | Pakiet | L2 |  |
| 12NW18-067 |  | Malowanie i oznakowanie – Sekcja 09 |  | 2d | 2026-07-20 A | 2026-07-21 A | 12NW18-066 FF+2d | 100% |  |  |  |  | Rev A | Izoterm | 12NW18 | Ruroci¹g | Budowa | Roboty | Tomasz | Uk³ad | PM000 | Zespó³-W | Blok | Normalny | Pakiet | L2 |  |
|  | SEKCJA 10 | **Sekcja 10** |  |  | 2026-03-13 | 2026-07-14 |  |  |  |  |  |  |  |  |  |  |  |  |  |  |  |  |  |  |  |  |  |
| 12NW18-068 |  | Prefabrykacja ruroci¹gów – Sekcja 10 |  | 13.7d | 2026-03-13 A | 2026-04-03 A | 12NW18-012, 12NW18-063 SS+5d | 100% |  | 2026-03-10 | 2026-03-26 |  |  | Izoterm | 12NW18 | Ruroci¹g | Budowa | Roboty | Tomasz | Uk³ad | PM000 | Zespó³-K | Blok | Normalny | Pakiet | L2 |  |
| 12NW18-069 |  | Monta¿ ruroci¹gów – Sekcja 10 |  | 7.8d | 2026-06-02 A | 2026-06-10 A | 12NW18-068, 12NW18-014 SS+1d | 100% |  | 2026-06-03 | 2026-06-11 |  |  | Izoterm | 12NW18 | Ruroci¹g | Budowa | Roboty | Tomasz | Uk³ad | PM000 | Zespó³-W | Blok | Normalny | Pakiet | L2 |  |
| 12NW18-070 |  | Próba ciœnieniowa – Sekcja 10 |  | 6d | 2026-06-11 A | 2026-06-23 A | 12NW18-069 | 100% |  | 2026-06-12 | 2026-06-19 |  |  | Izoterm | 12NW18 | Ruroci¹g | Budowa | Roboty | Tomasz | Uk³ad | PM000 | Zespó³-W | Blok | Normalny | Pakiet | L2 |  |
| 12NW18-071 |  | Izolacje – Sekcja 10 |  | 11d | 2026-06-19 A | 2026-07-06 A | 12NW18-070 | 100% |  | 2026-06-22 | 2026-07-06 | Kalendarz 6-dniowy |  | Izoterm | 12NW18 | Ruroci¹g | Budowa | Roboty | Tomasz | Uk³ad | PM000 | Zespó³-K | Blok | Wysoki | Pakiet | L2 |  |
| 12NW18-072 |  | Malowanie i oznakowanie – Sekcja 10 |  | 5d | 2026-07-03 A | 2026-07-14 A | 12NW18-071 FF+2d | 100% |  | 2026-07-02 | 2026-07-08 |  | Rev C | Izoterm | 12NW18 | Ruroci¹g | Budowa | Roboty | Tomasz | Uk³ad | PM000 | Zespó³-K | Blok | Wysoki | Pakiet | L2 |  |
|  | PROJ | **Projektowanie** |  |  | 2025-04-16 | 2025-11-05 |  |  |  |  |  |  |  |  |  |  |  |  |  |  |  |  |  |  |  |  |  |
|  | DOKUMENTAC | **Dokumentacja** |  |  | 2025-04-16 | 2025-11-05 |  |  |  |  |  |  |  |  |  |  |  |  |  |  |  |  |  |  |  |  |  |
| 12NW18-001 |  | Projekt wykonawczy – Ujêcie wody |  | 118d | 2025-04-16 A | 2025-09-30 A |  | 100% |  | 2025-04-15 | 2025-09-25 | Kalendarz 6-dniowy |  | Izoterm | 12NW18 | Budowlan | Projekto | Projekt | Tomasz | Uk³ad | PM000 | Zespó³-W | Blok | Wysoki | Pakiet | L2 |  |
| 12NW18-002 |  | Uzgodnienie dokumentacji z Inwestorem |  | 13d | 2025-09-26 A | 2025-10-15 A | 12NW18-001 | 100% |  | 2025-09-26 | 2025-10-14 |  |  | Izoterm | 12NW18 | Budowlan | Projekto | Projekt | Tomasz | Uk³ad | PM000 | Zespó³-K | Blok | Normalny | Pakiet | L2 |  |
| 12NW18-003 |  | Zatwierdzenie dokumentacji do realizacji |  | 12d | 2025-10-14 A | 2025-10-29 A | 12NW18-002 | 100% |  | 2025-10-15 | 2025-10-30 |  |  | Izoterm | 12NW18 | Budowlan | Projekto | Projekt | Tomasz | Uk³ad | PM000 | Zespó³-W | Blok | Normalny | Pakiet | L2 |  |
| 12NW18-004 |  | KM: Dokumentacja zatwierdzona – Ujêcie wody | milestone | 0d | 2025-11-05 A | 2025-11-05 | 12NW18-003 | 100% | 2025-11-04 | 2025-10-31 | 2025-10-31 |  | Rev B | Izoterm | 12NW18 | Budowlan | Projekto | Kamieñ | Tomasz | Uk³ad | PM000 | Zespó³-K | Blok | Wysoki | Pakiet | L1 |  |

| ID | WBS | Activity | Type | Duration | Start | Finish | Predecessors | Complete | Actual finish | Planned start | Planned finish | Total float | Free float | Calendar | Uwagi harmonogramisty | AC_Wykonawca | AC_Obiekt | AC_Dyscyplina | AC_Faza | AC_Zakres | AC_Opiekun | AC_Obszar | AC_PP_PM | AC_Zespol | AC_Blok | AC_Priorytet | AC_Pakiet | AC_Poziom | Rewizja dokumentu |
| --- | --- | --- | --- | --- | --- | --- | --- | --- | --- | --- | --- | --- | --- | --- | --- | --- | --- | --- | --- | --- | --- | --- | --- | --- | --- | --- | --- | --- | --- |
|  | ROZR | **Rozruch** |  |  | 2026-08-24 | 2026-11-09 |  |  |  |  |  |  |  |  |  |  |  |  |  |  |  |  |  |  |  |  |  |  |  |
|  | ROZRUCH | **Rozruch** |  |  | 2026-08-24 | 2026-11-09 |  |  |  |  |  |  |  |  |  |  |  |  |  |  |  |  |  |  |  |  |  |  |  |
| 12NW18-077 |  | Przegl¹d gotowoœci do rozruchu |  | 7d | 2026-08-24 A | 2026-09-03 A | 12NW18-076, 12NW18-019, 12NW18-024, 12NW18-026 | 100% |  | 2026-08-21 | 2026-08-31 |  |  |  | Uzgodnione na koordynacji | Izoterm | 12NW18 | Rozruch | Rozruch | Rozruch | Tomasz | Uk³ad | PM000 | Zespó³-K | Blok | Normalny | Pakiet | L2 |  |
| 12NW18-078 |  | Rozruch na zimno |  | 15d | 2026-09-04 A | 2026-09-24 A | 12NW18-077 | 100% |  | 2026-09-01 | 2026-09-21 |  |  |  |  | Izoterm | 12NW18 | Rozruch | Rozruch | Rozruch | Tomasz | Uk³ad | PM000 | Zespó³-W | Blok | Normalny | Pakiet | L2 | Rev A |
| 12NW18-079 |  | Rozruch na gor¹co / próby ruchowe |  | 23d | 2026-10-07 | 2026-11-06 | 12NW18-078 |  |  | 2026-09-22 | 2026-10-22 | 370.6d | 0d |  | Uzgodnione na koordynacji | Izoterm | 12NW18 | Rozruch | Rozruch | Rozruch | Tomasz | Uk³ad | PM000 | Zespó³-K | Blok | Normalny | Pakiet | L2 |  |
| 12NW18-080 |  | KM: Odbiór koñcowy – Ujêcie wody | milestone | 0d | 2026-11-09 | 2026-11-09 | 12NW18-079 |  |  | 2026-10-23 | 2026-10-23 | 370.6d | 0d |  |  | Izoterm | 12NW18 | Rozruch | Rozruch | Kamieñ | Tomasz | Uk³ad | PM000 | Zespó³-I | Blok | Niski | Pakiet | L1 |  |
|  | ZAKU | **Zakupy** |  |  | 2025-05-14 | 2026-06-05 |  |  |  |  |  |  |  |  |  |  |  |  |  |  |  |  |  |  |  |  |  |  |  |
|  | DOSTAWY | **Dostawy** |  |  | 2025-11-17 | 2026-06-05 |  |  |  |  |  |  |  |  |  |  |  |  |  |  |  |  |  |  |  |  |  |  |  |
| 12NW18-008 |  | Produkcja u dostawcy |  | 105d | 2025-11-17 A | 2026-04-14 A | 12NW18-007 | 100% |  | 2025-11-14 | 2026-04-09 |  |  |  |  | Izoterm | 12NW18 | Mechanic | Zakupy | Dostawa | Tomasz | Uk³ad | PM000 | Zespó³-K | Blok | Normalny | Pakiet | L2 | Rev B |
| 12NW18-009 |  | Testy FAT |  | 9d | 2026-04-10 A | 2026-04-22 A | 12NW18-008 | 100% |  |  |  |  |  |  |  | Izoterm | 12NW18 | Mechanic | Zakupy | Dostawa | Tomasz | Uk³ad | PM000 | Zespó³-W | Blok | Wysoki | Pakiet | L2 |  |
| 12NW18-010 |  | Transport i dostawa na plac budowy |  | 28d | 2026-04-28 A | 2026-06-05 A | 12NW18-009 | 100% |  | 2026-04-23 | 2026-06-01 |  |  |  |  | Izoterm | 12NW18 | Mechanic | Zakupy | Dostawa | Tomasz | Uk³ad | PM000 | Zespó³-W | Blok | Normalny | Pakiet | L2 |  |
| 12NW18-011 |  | KM: Dostawa na budowê – Ujêcie wody | milestone | 0d | 2026-06-04 A | 2026-06-04 | 12NW18-010 | 100% | 2026-06-03 | 2026-06-02 | 2026-06-02 |  |  |  | Ryzyko opóŸnienia | Izoterm | 12NW18 | Mechanic | Zakupy | Kamieñ | Tomasz | Uk³ad | PM000 | Zespó³-K | Blok | Normalny | Pakiet | L1 |  |
|  | ZAMÓWIENIA | **Zamówienia** |  |  | 2025-05-14 | 2025-11-13 |  |  |  |  |  |  |  |  |  |  |  |  |  |  |  |  |  |  |  |  |  |  |  |
| 12NW18-005 |  | Zapytanie ofertowe |  | 22d | 2025-05-14 A | 2025-06-17 A | 12NW18-001 SS+20d | 100% |  | 2025-05-13 | 2025-06-11 |  |  |  | Do weryfikacji z wykonawc¹ | Izoterm | 12NW18 | Mechanic | Zakupy | Dostawa | Tomasz | Uk³ad | PM300 | Zespó³-E | Blok | Normalny | Pakiet | L2 |  |
| 12NW18-006 |  | Analiza i wybór ofert |  | 19d | 2025-06-17 A | 2025-07-14 A | 12NW18-005 | 100% |  | 2025-06-12 | 2025-07-08 |  |  |  |  | Izoterm | 12NW18 | Mechanic | Zakupy | Dostawa | Tomasz | Uk³ad | PM000 | Zespó³-W | Blok | Normalny | Pakiet | L2 | Rev C |
| 12NW18-007 |  | Zawarcie umowy / zamówienie |  | 10d | 2025-10-30 A | 2025-11-13 A | 12NW18-006, 12NW18-004 SS, 10BW45-004 (other project) FS+11d | 100% |  | 2025-10-31 | 2025-11-13 |  |  |  |  | Izoterm | 12NW18 | Mechanic | Zakupy | Dostawa | Tomasz | Uk³ad | PM000 | Zespó³-K | Blok | Normalny | Pakiet | L1 | Rev C |
|  | 13RW88 | **13RW88 – Oczyszczalnia œcieków technologicznych** |  |  | 2025-03-20 | 2026-10-13 |  |  |  |  |  |  |  |  |  |  |  |  |  |  |  |  |  |  |  |  |  |  |  |
|  | BUDO | **Budowa** |  |  | 2025-12-04 | 2026-08-28 |  |  |  |  |  |  |  |  |  |  |  |  |  |  |  |  |  |  |  |  |  |  |  |
|  | AKPIA | **AKPiA** |  |  | 2026-06-12 | 2026-07-01 |  |  |  |  |  |  |  |  |  |  |  |  |  |  |  |  |  |  |  |  |  |  |  |
| 13RW88-087 |  | Monta¿ uk³adów AKPiA |  | 11d | 2026-06-12 A | 2026-07-01 A | 13RW88-014 SS+5d | 100% |  | 2026-06-15 | 2026-06-29 |  |  |  |  | Pomorski | 13RW88 | AKPiA | Budowa | Roboty | Agnieszk | Uk³ad | PM000 | Zespó³-W | Blok | Normalny | Pakiet | L2 |  |
|  | ELEKTRYKA | **Elektryka** |  |  | 2026-06-19 | 2026-07-23 |  |  |  |  |  |  |  |  |  |  |  |  |  |  |  |  |  |  |  |  |  |  |  |
| 13RW88-025 |  | Uk³adanie kabli – trasa 02 |  | 20d | 2026-06-19 A | 2026-07-16 A | 13RW88-014 SS+10d | 100% |  | 2026-06-22 | 2026-07-17 |  |  |  | Ryzyko opóŸnienia | Pomorski | 13RW88 | Elektryc | Budowa | Roboty | Agnieszk | Uk³ad | PM000 | Zespó³-K | Blok | Wysoki | Pakiet | L2 | Rev B |
| 13RW88-073 |  | Uk³adanie kabli – trasa 10 |  | 17d | 2026-06-19 A | 2026-07-13 A | 13RW88-014 SS+10d | 100% |  | 2026-06-22 | 2026-07-14 |  |  |  |  | Pomorski | 13RW88 | Elektryc | Budowa | Roboty | Agnieszk | Uk³ad | PM000 | Zespó³-W | Blok | Normalny | Pakiet | L2 |  |
| 13RW88-049 |  | Uk³adanie kabli – trasa 06 |  | 14d | 2026-06-22 A | 2026-07-14 A | 13RW88-014 SS+10d | 100% |  | 2026-06-22 | 2026-07-09 |  |  |  |  | Pomorski | 13RW88 | Elektryc | Budowa | Roboty | Agnieszk | Uk³ad | PM000 | Zespó³-W | Blok | Wysoki | Pakiet | L2 |  |
| 13RW88-061 |  | Uk³adanie kabli – trasa 08 |  | 14d | 2026-06-22 A | 2026-07-09 A | 13RW88-014 SS+10d | 100% |  |  |  |  |  | Kalendarz 6-dniowy |  | Pomorski | 13RW88 | Elektryc | Budowa | Roboty | Agnieszk | Uk³ad | PM000 | Zespó³-W | Blok | Wysoki | Pakiet | L2 |  |
| 13RW88-038 |  | Pod³¹czenia i pomiary – trasa 04 |  | 4d | 2026-06-23 A | 2026-06-26 A | 13RW88-037 FF | 100% |  | 2026-06-22 | 2026-06-25 |  |  |  | Do weryfikacji z wykonawc¹ | Pomorski | 13RW88 | Elektryc | Budowa | Roboty | Agnieszk | Uk³ad | PM000 | Zespó³-W | Blok | Normalny | Pakiet | L2 |  |
| 13RW88-085 |  | Uk³adanie kabli – trasa 12 |  | 11d | 2026-06-23 A | 2026-07-08 A | 13RW88-014 SS+10d | 100% |  | 2026-06-22 | 2026-07-06 |  |  |  |  | Pomorski | 13RW88 | Elektryc | Budowa | Roboty | Agnieszk | Uk³ad | PM000 | Zespó³-W | Blok | Niski | Pakiet | L2 |  |
| 13RW88-037 |  | Uk³adanie kabli – trasa 04 |  | 4d | 2026-06-24 A | 2026-06-29 A | 13RW88-014 SS+10d | 100% |  | 2026-06-22 | 2026-06-25 |  |  |  |  | Pomorski | 13RW88 | Elektryc | Budowa | Roboty | Agnieszk | Uk³ad | PM000 | Zespó³-W | Blok | Normalny | Pakiet | L2 | Rev C |
| 13RW88-086 |  | Pod³¹czenia i pomiary – trasa 12 |  | 8d | 2026-06-26 A | 2026-07-10 A | 13RW88-085 FF | 100% |  | 2026-06-25 | 2026-07-06 |  |  |  |  | Pomorski | 13RW88 | Elektryc | Budowa | Roboty | Agnieszk | Uk³ad | PM000 | Zespó³-K | Blok | Normalny | Pakiet | L2 | Rev A |
| 13RW88-050 |  | Pod³¹czenia i pomiary – trasa 06 |  | 4d | 2026-07-03 A | 2026-07-10 A | 13RW88-049 FF | 100% |  | 2026-07-06 | 2026-07-09 |  |  |  |  | Pomorski | 13RW88 | Elektryc | Budowa | Roboty | Agnieszk | Uk³ad | PM000 | Zespó³-W | Blok | Normalny | Pakiet | L2 |  |
| 13RW88-062 |  | Pod³¹czenia i pomiary – trasa 08 |  | 4d | 2026-07-07 A | 2026-07-13 A | 13RW88-061 FF | 100% |  | 2026-07-06 | 2026-07-09 |  |  |  |  | Pomorski | 13RW88 | Elektryc | Budowa | Roboty | Agnieszk | Uk³ad | PM000 | Zespó³-W | Blok | Niski | Pakiet | L2 |  |
| 13RW88-074 |  | Pod³¹czenia i pomiary – trasa 10 |  | 5d | 2026-07-07 A | 2026-07-13 A | 13RW88-073 FF | 100% |  | 2026-07-08 | 2026-07-14 |  |  |  |  | Pomorski | 13RW88 | Elektryc | Budowa | Roboty | Agnieszk | Uk³ad | PM000 | Zespó³-W | Blok | Normalny | Pakiet | L2 |  |
| 13RW88-026 |  | Pod³¹czenia i pomiary – trasa 02 |  | 10d | 2026-07-09 A | 2026-07-23 A | 13RW88-025 FF | 100% |  | 2026-07-06 | 2026-07-17 |  |  |  | Bez uwag | Pomorski | 13RW88 | Elektryc | Budowa | Roboty | Agnieszk | Uk³ad | PM000 | Zespó³-W | Blok | Wysoki | Pakiet | L2 |  |

| ID | WBS | Activity | Type | Duration | Start | Finish | Predecessors | Complete | Actual finish | Planned start | Planned finish | Calendar | AC_Wykonawca | AC_Obiekt | AC_Dyscyplina | AC_Faza | AC_Zakres | AC_Opiekun | AC_Obszar | AC_PP_PM | AC_Zespol | AC_Blok | AC_Priorytet | AC_Pakiet | AC_Poziom | Rewizja dokumentu | Uwagi harmonogramisty |
| --- | --- | --- | --- | --- | --- | --- | --- | --- | --- | --- | --- | --- | --- | --- | --- | --- | --- | --- | --- | --- | --- | --- | --- | --- | --- | --- | --- |
|  | MONTA¯ | **Monta¿** |  |  | 2026-01-22 | 2026-08-28 |  |  |  |  |  |  |  |  |  |  |  |  |  |  |  |  |  |  |  |  |  |
| 13RW88-013 |  | Monta¿ konstrukcji stalowych |  | 37d | 2026-01-22 A | 2026-03-13 A | 13RW88-012 | 100% |  | 2026-01-23 | 2026-03-16 |  | Pomorski | 13RW88 | Mechanic | Budowa | Roboty | Agnieszk | Uk³ad | PM200 | Zespó³-I | Blok | Normalny | Pakiet | L2 |  |  |
| 13RW88-014 |  | Monta¿ urz¹dzeñ g³ównych |  | 59d | 2026-06-08 A | 2026-08-28 A | 13RW88-013, 13RW88-011 | 100% |  | 2026-06-08 | 2026-08-27 |  | Pomorski | 13RW88 | Mechanic | Budowa | Roboty | Agnieszk | Uk³ad | PM300 | Zespó³-I | Blok | Normalny | Pakiet | L2 |  |  |
| 13RW88-088 |  | KM: Zakoñczenie monta¿u – Oczyszczalnia œcieków technologicznych | milestone | 0d | 2026-08-27 A | 2026-08-27 | 13RW88-079, 13RW88-084, 13RW88-086, 13RW88-087, 13RW88-014 | 100% | 2026-08-26 | 2026-08-28 | 2026-08-28 |  | Pomorski | 13RW88 | Mechanic | Budowa | Kamieñ | Agnieszk | Uk³ad | PM000 | Zespó³-K | Blok | Normalny | Pakiet | L2 | Rev A |  |
|  | ROBOTY BUD | **Roboty budowlane** |  |  | 2025-12-04 | 2026-01-28 |  |  |  |  |  |  |  |  |  |  |  |  |  |  |  |  |  |  |  |  |  |
| 13RW88-012 |  | Fundamenty i roboty ziemne |  | 37d | 2025-12-04 A | 2026-01-28 A | 13RW88-007 FS+4d | 100% |  | 2025-12-03 | 2026-01-22 |  | Pomorski | 13RW88 | Budowlan | Budowa | Roboty | Agnieszk | Uk³ad | PM000 | Zespó³-W | Blok | Normalny | Pakiet | L2 |  |  |
|  | RUROCI¥GI | **Ruroci¹gi** |  |  | 2026-01-22 | 2026-08-20 |  |  |  |  |  |  |  |  |  |  |  |  |  |  |  |  |  |  |  |  |  |
|  | SEKCJA 01 | **Sekcja 01** |  |  | 2026-01-22 | 2026-07-17 |  |  |  |  |  |  |  |  |  |  |  |  |  |  |  |  |  |  |  |  |  |
| 13RW88-015 |  | Prefabrykacja ruroci¹gów – Sekcja 01 |  | 4.6d | 2026-01-22 A | 2026-01-27 A | 13RW88-012 | 100% |  | 2026-01-23 | 2026-01-28 |  | Pomorski | 13RW88 | Ruroci¹g | Budowa | Roboty | Agnieszk | Uk³ad | PM000 | Zespó³-W | Blok | Normalny | Pakiet | L2 | Rev C |  |
| 13RW88-016 |  | Monta¿ ruroci¹gów – Sekcja 01 |  | 5.7d | 2026-06-22 A | 2026-06-26 A | 13RW88-015, 13RW88-014 SS+7d | 100% |  | 2026-06-17 | 2026-06-23 |  | Pomorski | 13RW88 | Ruroci¹g | Budowa | Roboty | Agnieszk | Uk³ad | PM000 | Zespó³-K | Blok | Wysoki | Pakiet | L2 |  |  |
| 13RW88-017 |  | Próba ciœnieniowa – Sekcja 01 |  | 2d | 2026-06-24 A | 2026-06-25 A | 13RW88-016 | 100% |  |  |  | Kalendarz 6-dniowy | Pomorski | 13RW88 | Ruroci¹g | Budowa | Roboty | Agnieszk | Uk³ad | PM000 | Zespó³-W | Blok | Normalny | Pakiet | L2 |  |  |
| 13RW88-018 |  | Izolacje – Sekcja 01 |  | 10d | 2026-06-30 A | 2026-07-16 A | 13RW88-017 | 100% |  | 2026-06-26 | 2026-07-09 |  | Pomorski | 13RW88 | Ruroci¹g | Budowa | Roboty | Agnieszk | Uk³ad | PM000 | Zespó³-W | Blok | Wysoki | Pakiet | L2 |  | Uzgodnione na koordynacji |
| 13RW88-019 |  | Malowanie i oznakowanie – Sekcja 01 |  | 8d | 2026-07-07 A | 2026-07-17 A | 13RW88-018 FF+2d | 100% |  | 2026-07-02 | 2026-07-13 |  | Pomorski | 13RW88 | Ruroci¹g | Budowa | Roboty | Agnieszk | Uk³ad | PM000 | Zespó³-K | Blok | Niski | Pakiet | L2 |  |  |
|  | SEKCJA 02 | **Sekcja 02** |  |  | 2026-01-29 | 2026-07-14 |  |  |  |  |  |  |  |  |  |  |  |  |  |  |  |  |  |  |  |  |  |
| 13RW88-020 |  | Prefabrykacja ruroci¹gów – Sekcja 02 |  | 14.3d | 2026-01-29 A | 2026-02-19 A | 13RW88-012, 13RW88-015 SS+5d | 100% |  | 2026-01-30 | 2026-02-18 |  | Pomorski | 13RW88 | Ruroci¹g | Budowa | Roboty | Agnieszk | Uk³ad | PM000 | Zespó³-K | Blok | Normalny | Pakiet | L2 |  |  |
| 13RW88-021 |  | Monta¿ ruroci¹gów – Sekcja 02 |  | 9.2d | 2026-06-17 A | 2026-07-01 A | 13RW88-020, 13RW88-014 SS+5d | 100% |  | 2026-06-15 | 2026-06-25 |  | Pomorski | 13RW88 | Ruroci¹g | Budowa | Roboty | Agnieszk | Uk³ad | PM000 | Zespó³-K | Blok | Normalny | Pakiet | L2 | Rev C |  |
| 13RW88-022 |  | Próba ciœnieniowa – Sekcja 02 |  | 4d | 2026-06-30 A | 2026-07-08 A | 13RW88-021 | 100% |  | 2026-06-26 | 2026-07-01 |  | Pomorski | 13RW88 | Ruroci¹g | Budowa | Roboty | Agnieszk | Uk³ad | PM000 | Zespó³-K | Blok | Wysoki | Pakiet | L2 |  | Ryzyko opóŸnienia |
| 13RW88-024 |  | Malowanie i oznakowanie – Sekcja 02 |  | 4d | 2026-07-06 A | 2026-07-09 A | 13RW88-023 FF+2d | 100% |  |  |  |  | Pomorski | 13RW88 | Ruroci¹g | Budowa | Roboty | Agnieszk | Uk³ad | PM000 | Zespó³-K | Blok | Normalny | Pakiet | L2 |  | Bez uwag |
| 13RW88-023 |  | Izolacje – Sekcja 02 |  | 4d | 2026-07-07 A | 2026-07-14 A | 13RW88-022 | 100% |  | 2026-07-02 | 2026-07-07 |  | Pomorski | 13RW88 | Ruroci¹g | Budowa | Roboty | Agnieszk | Uk³ad | PM000 | Zespó³-K | Blok | Wysoki | Pakiet | L2 |  |  |
|  | SEKCJA 03 | **Sekcja 03** |  |  | 2026-02-09 | 2026-07-28 |  |  |  |  |  |  |  |  |  |  |  |  |  |  |  |  |  |  |  |  |  |
|  | PODSEKCJA | **Podsekcja 03.A** |  |  | 2026-02-09 | 2026-07-28 |  |  |  |  |  |  |  |  |  |  |  |  |  |  |  |  |  |  |  |  |  |
| 13RW88-027 |  | Prefabrykacja ruroci¹gów – Sekcja 03 |  | 11.4d | 2026-02-09 A | 2026-02-24 A | 13RW88-012, 13RW88-020 SS+5d | 100% |  | 2026-02-06 | 2026-02-20 |  | Pomorski | 13RW88 | Ruroci¹g | Budowa | Roboty | Agnieszk | Uk³ad | PM000 | Zespó³-W | Blok | Normalny | Pakiet | L2 |  |  |
| 13RW88-028 |  | Monta¿ ruroci¹gów – Sekcja 03 |  | 18.3d | 2026-06-12 A | 2026-07-08 A | 13RW88-027, 13RW88-014 SS+5d | 100% |  | 2026-06-15 | 2026-07-08 |  | Pomorski | 13RW88 | Ruroci¹g | Budowa | Roboty | Agnieszk | Uk³ad | PM000 | Zespó³-K | Blok | Normalny | Pakiet | L2 |  |  |
| 13RW88-029 |  | Próba ciœnieniowa – Sekcja 03 |  | 5d | 2026-07-13 A | 2026-07-20 A | 13RW88-028 | 100% |  | 2026-07-09 | 2026-07-15 |  | Pomorski | 13RW88 | Ruroci¹g | Budowa | Roboty | Agnieszk | Uk³ad | PM000 | Zespó³-K | Blok | Wysoki | Pakiet | L2 | Rev A |  |
| 13RW88-030 |  | Izolacje – Sekcja 03 |  | 4d | 2026-07-16 A | 2026-07-22 A | 13RW88-029 | 100% |  | 2026-07-16 | 2026-07-21 |  | Pomorski | 13RW88 | Ruroci¹g | Budowa | Roboty | Agnieszk | Uk³ad | PM000 | Zespó³-K | Blok | Niski | Pakiet | L2 |  | Bez uwag |
| 13RW88-031 |  | Malowanie i oznakowanie – Sekcja 03 |  | 2d | 2026-07-27 A | 2026-07-28 A | 13RW88-030 FF+2d | 100% |  | 2026-07-22 | 2026-07-23 |  | Pomorski | 13RW88 | Ruroci¹g | Budowa | Roboty | Agnieszk | Uk³ad | PM000 | Zespó³-W | Blok | Normalny | Pakiet | L2 | Rev B |  |

| ID | WBS | Activity | Duration | Start | Finish | Predecessors | Complete | Planned start | Planned finish | Calendar | Uwagi harmonogramisty | AC_Wykonawca | AC_Obiekt | AC_Dyscyplina | AC_Faza | AC_Zakres | AC_Opiekun | AC_Obszar | AC_PP_PM | AC_Zespol | AC_Blok | AC_Priorytet | AC_Pakiet | AC_Poziom | Rewizja dokumentu |
| --- | --- | --- | --- | --- | --- | --- | --- | --- | --- | --- | --- | --- | --- | --- | --- | --- | --- | --- | --- | --- | --- | --- | --- | --- | --- |
|  | SEKCJA 04 | **Sekcja 04** |  | 2026-02-16 | 2026-08-20 |  |  |  |  |  |  |  |  |  |  |  |  |  |  |  |  |  |  |  |  |
| 13RW88-032 |  | Prefabrykacja ruroci¹gów – Sekcja 04 | 7.5d | 2026-02-16 A | 2026-02-24 A | 13RW88-012, 13RW88-027 SS+5d | 100% | 2026-02-13 | 2026-02-23 |  | Uzgodnione na koordynacji | Pomorski | 13RW88 | Ruroci¹g | Budowa | Roboty | Agnieszk | Uk³ad | PM000 | Zespó³-W | Blok | Normalny | Pakiet | L2 |  |
| 13RW88-033 |  | Monta¿ ruroci¹gów – Sekcja 04 | 24.6d | 2026-06-17 A | 2026-07-21 A | 13RW88-032, 13RW88-014 SS+7d | 100% | 2026-06-17 | 2026-07-20 |  |  | Pomorski | 13RW88 | Ruroci¹g | Budowa | Roboty | Agnieszk | Uk³ad | PM000 | Zespó³-K | Blok | Niski | Pakiet | L2 |  |
| 13RW88-034 |  | Próba ciœnieniowa – Sekcja 04 | 5d | 2026-07-23 A | 2026-07-31 A | 13RW88-033 | 100% | 2026-07-21 | 2026-07-27 | Kalendarz 6-dniowy |  | Pomorski | 13RW88 | Ruroci¹g | Budowa | Roboty | Agnieszk | Uk³ad | PM000 | Zespó³-K | Blok | Wysoki | Pakiet | L2 | Rev B |
| 13RW88-035 |  | Izolacje – Sekcja 04 | 12d | 2026-07-27 A | 2026-08-12 A | 13RW88-034 | 100% | 2026-07-28 | 2026-08-12 |  | Ryzyko opóŸnienia | Pomorski | 13RW88 | Ruroci¹g | Budowa | Roboty | Agnieszk | Uk³ad | PM000 | Zespó³-W | Blok | Normalny | Pakiet | L2 | Rev A |
| 13RW88-036 |  | Malowanie i oznakowanie – Sekcja 04 | 3d | 2026-08-17 A | 2026-08-20 A | 13RW88-035 FF+2d | 100% | 2026-08-12 | 2026-08-14 |  |  | Pomorski | 13RW88 | Ruroci¹g | Budowa | Roboty | Agnieszk | Uk³ad | PM000 | Zespó³-K | Blok | Niski | Pakiet | L2 |  |
|  | SEKCJA 05 | **Sekcja 05** |  | 2026-02-20 | 2026-08-18 |  |  |  |  |  |  |  |  |  |  |  |  |  |  |  |  |  |  |  |  |
| 13RW88-039 |  | Prefabrykacja ruroci¹gów – Sekcja 05 | 6.3d | 2026-02-20 A | 2026-02-27 A | 13RW88-012, 13RW88-032 SS+5d | 100% |  |  |  |  | Pomorski | 13RW88 | Ruroci¹g | Budowa | Roboty | Agnieszk | Uk³ad | PM000 | Zespó³-W | Blok | Normalny | Pakiet | L2 | Rev C |
| 13RW88-040 |  | Monta¿ ruroci¹gów – Sekcja 05 | 23.6d | 2026-06-24 A | 2026-07-24 A | 13RW88-039, 13RW88-014 SS+9d | 100% | 2026-06-19 | 2026-07-21 |  |  | Pomorski | 13RW88 | Ruroci¹g | Budowa | Roboty | Agnieszk | Uk³ad | PM000 | Zespó³-K | Blok | Normalny | Pakiet | L2 |  |
| 13RW88-041 |  | Próba ciœnieniowa – Sekcja 05 | 4d | 2026-07-24 A | 2026-07-30 A | 13RW88-040 | 100% | 2026-07-22 | 2026-07-27 |  |  | Pomorski | 13RW88 | Ruroci¹g | Budowa | Roboty | Agnieszk | Uk³ad | PM000 | Zespó³-K | Blok | Wysoki | Pakiet | L2 |  |
| 13RW88-042 |  | Izolacje – Sekcja 05 | 12d | 2026-07-30 A | 2026-08-17 A | 13RW88-041 | 100% | 2026-07-28 | 2026-08-12 |  |  | Pomorski | 13RW88 | Ruroci¹g | Budowa | Roboty | Agnieszk | Uk³ad | PM000 | Zespó³-K | Blok | Normalny | Pakiet | L2 |  |
| 13RW88-043 |  | Malowanie i oznakowanie – Sekcja 05 | 7d | 2026-08-07 A | 2026-08-18 A | 13RW88-042 FF+2d | 100% | 2026-08-06 | 2026-08-14 |  | Do weryfikacji z wykonawc¹ | Pomorski | 13RW88 | Ruroci¹g | Budowa | Roboty | Agnieszk | Uk³ad | PM000 | Zespó³-K | Blok | Normalny | Pakiet | L2 |  |
|  | SEKCJA 06 | **Sekcja 06** |  | 2026-03-03 | 2026-07-16 |  |  |  |  |  |  |  |  |  |  |  |  |  |  |  |  |  |  |  |  |
|  | PODSEKCJA | **Podsekcja 06.A** |  | 2026-03-03 | 2026-07-16 |  |  |  |  |  |  |  |  |  |  |  |  |  |  |  |  |  |  |  |  |
| 13RW88-044 |  | Prefabrykacja ruroci¹gów – Sekcja 06 | 7.8d | 2026-03-03 A | 2026-03-11 A | 13RW88-012, 13RW88-039 SS+5d | 100% | 2026-02-27 | 2026-03-09 |  |  | Pomorski | 13RW88 | Ruroci¹g | Budowa | Roboty | Agnieszk | Uk³ad | PM000 | Zespó³-K | Blok | Normalny | Pakiet | L2 |  |
| 13RW88-045 |  | Monta¿ ruroci¹gów – Sekcja 06 | 10.7d | 2026-06-15 A | 2026-06-30 A | 13RW88-044, 13RW88-014 SS+2d | 100% | 2026-06-10 | 2026-06-23 |  | Do weryfikacji z wykonawc¹ | Pomorski | 13RW88 | Ruroci¹g | Budowa | Roboty | Agnieszk | Uk³ad | PM200 | Zespó³-I | Blok | Krytyczn | Pakiet | L2 |  |
| 13RW88-046 |  | Próba ciœnieniowa – Sekcja 06 | 3d | 2026-06-26 A | 2026-07-01 A | 13RW88-045 | 100% | 2026-06-24 | 2026-06-26 |  |  | Pomorski | 13RW88 | Ruroci¹g | Budowa | Roboty | Agnieszk | Uk³ad | PM000 | Zespó³-W | Blok | Wysoki | Pakiet | L2 |  |
| 13RW88-047 |  | Izolacje – Sekcja 06 | 9d | 2026-07-01 A | 2026-07-16 A | 13RW88-046 | 100% | 2026-06-29 | 2026-07-09 |  |  | Pomorski | 13RW88 | Ruroci¹g | Budowa | Roboty | Agnieszk | Uk³ad | PM000 | Zespó³-W | Blok | Normalny | Pakiet | L2 |  |
| 13RW88-048 |  | Malowanie i oznakowanie – Sekcja 06 | 7d | 2026-07-02 A | 2026-07-15 A | 13RW88-047 FF+2d | 100% | 2026-07-03 | 2026-07-13 |  |  | Pomorski | 13RW88 | Ruroci¹g | Budowa | Roboty | Agnieszk | Uk³ad | PM000 | Zespó³-K | Blok | Niski | Pakiet | L2 |  |
|  | SEKCJA 07 | **Sekcja 07** |  | 2026-03-06 | 2026-07-23 |  |  |  |  |  |  |  |  |  |  |  |  |  |  |  |  |  |  |  |  |
| 13RW88-051 |  | Prefabrykacja ruroci¹gów – Sekcja 07 | 7.1d | 2026-03-06 A | 2026-03-17 A | 13RW88-012, 13RW88-044 SS+5d | 100% | 2026-03-06 | 2026-03-16 |  |  | Pomorski | 13RW88 | Ruroci¹g | Budowa | Roboty | Agnieszk | Uk³ad | PM000 | Zespó³-W | Blok | Wysoki | Pakiet | L2 | Rev C |
| 13RW88-052 |  | Monta¿ ruroci¹gów – Sekcja 07 | 12.7d | 2026-06-10 A | 2026-06-29 A | 13RW88-051, 13RW88-014 SS+3d | 100% | 2026-06-11 | 2026-06-26 |  | Ryzyko opóŸnienia | Pomorski | 13RW88 | Ruroci¹g | Budowa | Roboty | Agnieszk | Uk³ad | PM000 | Zespó³-K | Blok | Krytyczn | Pakiet | L2 |  |
| 13RW88-053 |  | Próba ciœnieniowa – Sekcja 07 | 4d | 2026-07-02 A | 2026-07-07 A | 13RW88-052 | 100% | 2026-06-29 | 2026-07-02 |  | Ryzyko opóŸnienia | Pomorski | 13RW88 | Ruroci¹g | Budowa | Roboty | Agnieszk | Uk³ad | PM000 | Zespó³-W | Blok | Wysoki | Pakiet | L2 |  |
| 13RW88-054 |  | Izolacje – Sekcja 07 | 11d | 2026-07-08 A | 2026-07-22 A | 13RW88-053 | 100% | 2026-07-03 | 2026-07-17 |  |  | Pomorski | 13RW88 | Ruroci¹g | Budowa | Roboty | Agnieszk | Uk³ad | PM000 | Zespó³-K | Blok | Krytyczn | Pakiet | L2 |  |
| 13RW88-055 |  | Malowanie i oznakowanie – Sekcja 07 | 3d | 2026-07-17 A | 2026-07-23 A | 13RW88-054 FF+2d | 100% | 2026-07-17 | 2026-07-21 |  | Bez uwag | Pomorski | 13RW88 | Ruroci¹g | Budowa | Roboty | Agnieszk | Uk³ad | PM000 | Zespó³-K | Blok | Wysoki | Pakiet | L2 |  |

| ID | WBS | Activity | Duration | Start | Finish | Predecessors | Complete | Planned start | Planned finish | Calendar | Uwagi harmonogramisty | AC_Wykonawca | AC_Obiekt | AC_Dyscyplina | AC_Faza | AC_Zakres | AC_Opiekun | AC_Obszar | AC_PP_PM | AC_Zespol | AC_Blok | AC_Priorytet | AC_Pakiet | AC_Poziom | Rewizja dokumentu |
| --- | --- | --- | --- | --- | --- | --- | --- | --- | --- | --- | --- | --- | --- | --- | --- | --- | --- | --- | --- | --- | --- | --- | --- | --- | --- |
|  | SEKCJA 08 | **Sekcja 08** |  | 2026-03-16 | 2026-07-22 |  |  |  |  |  |  |  |  |  |  |  |  |  |  |  |  |  |  |  |  |
| 13RW88-056 |  | Prefabrykacja ruroci¹gów – Sekcja 08 | 3.6d | 2026-03-16 A | 2026-03-18 A | 13RW88-012, 13RW88-051 SS+5d | 100% | 2026-03-13 | 2026-03-17 | Kalendarz 6-dniowy | Czeka na dostawê | Pomorski | 13RW88 | Ruroci¹g | Budowa | Roboty | Agnieszk | Uk³ad | PM000 | Zespó³-W | Blok | Normalny | Pakiet | L2 |  |
| 13RW88-057 |  | Monta¿ ruroci¹gów – Sekcja 08 | 10.2d | 2026-06-18 A | 2026-07-02 A | 13RW88-056, 13RW88-014 SS+6d | 100% | 2026-06-16 | 2026-06-29 |  |  | Pomorski | 13RW88 | Ruroci¹g | Budowa | Roboty | Agnieszk | Uk³ad | PM000 | Zespó³-W | Blok | Niski | Pakiet | L2 |  |
| 13RW88-058 |  | Próba ciœnieniowa – Sekcja 08 | 5d | 2026-07-01 A | 2026-07-07 A | 13RW88-057 | 100% | 2026-06-30 | 2026-07-06 |  |  | Pomorski | 13RW88 | Ruroci¹g | Budowa | Roboty | Agnieszk | Uk³ad | PM000 | Zespó³-K | Blok | Normalny | Pakiet | L2 |  |
| 13RW88-059 |  | Izolacje – Sekcja 08 | 6d | 2026-07-06 A | 2026-07-16 A | 13RW88-058 | 100% | 2026-07-07 | 2026-07-14 |  |  | Pomorski | 13RW88 | Ruroci¹g | Budowa | Roboty | Agnieszk | Uk³ad | PM000 | Zespó³-W | Blok | Wysoki | Pakiet | L2 |  |
| 13RW88-060 |  | Malowanie i oznakowanie – Sekcja 08 | 4d | 2026-07-14 A | 2026-07-22 A | 13RW88-059 FF+2d | 100% | 2026-07-13 | 2026-07-16 |  | Czeka na dostawê | Pomorski | 13RW88 | Ruroci¹g | Budowa | Roboty | Agnieszk | Uk³ad | PM300 | Zespó³-I | Blok | Wysoki | Pakiet | L2 |  |
|  | SEKCJA 09 | **Sekcja 09** |  | 2026-03-24 | 2026-07-22 |  |  |  |  |  |  |  |  |  |  |  |  |  |  |  |  |  |  |  |  |
|  | PODSEKCJA | **Podsekcja 09.A** |  | 2026-03-24 | 2026-07-22 |  |  |  |  |  |  |  |  |  |  |  |  |  |  |  |  |  |  |  |  |
| 13RW88-063 |  | Prefabrykacja ruroci¹gów – Sekcja 09 | 4.9d | 2026-03-24 A | 2026-03-30 A | 13RW88-012, 13RW88-056 SS+5d | 100% | 2026-03-20 | 2026-03-25 |  |  | Pomorski | 13RW88 | Ruroci¹g | Budowa | Roboty | Agnieszk | Uk³ad | PM000 | Zespó³-K | Blok | Normalny | Pakiet | L2 | Rev A |
| 13RW88-064 |  | Monta¿ ruroci¹gów – Sekcja 09 | 12.7d | 2026-06-15 A | 2026-07-03 A | 13RW88-063, 13RW88-014 SS+6d | 100% | 2026-06-16 | 2026-07-01 |  |  | Pomorski | 13RW88 | Ruroci¹g | Budowa | Roboty | Agnieszk | Uk³ad | PM000 | Zespó³-W | Blok | Normalny | Pakiet | L2 |  |
| 13RW88-065 |  | Próba ciœnieniowa – Sekcja 09 | 2d | 2026-07-02 A | 2026-07-08 A | 13RW88-064 | 100% | 2026-07-02 | 2026-07-03 |  |  | Pomorski | 13RW88 | Ruroci¹g | Budowa | Roboty | Agnieszk | Uk³ad | PM000 | Zespó³-K | Blok | Normalny | Pakiet | L2 |  |
| 13RW88-066 |  | Izolacje – Sekcja 09 | 8d | 2026-07-09 A | 2026-07-21 A | 13RW88-065 | 100% | 2026-07-06 | 2026-07-15 |  | Do weryfikacji z wykonawc¹ | Pomorski | 13RW88 | Ruroci¹g | Budowa | Roboty | Agnieszk | Uk³ad | PM000 | Zespó³-W | Blok | Normalny | Pakiet | L2 | Rev B |
| 13RW88-067 |  | Malowanie i oznakowanie – Sekcja 09 | 8d | 2026-07-09 A | 2026-07-22 A | 13RW88-066 FF+2d | 100% | 2026-07-08 | 2026-07-17 |  |  | Pomorski | 13RW88 | Ruroci¹g | Budowa | Roboty | Agnieszk | Uk³ad | PM000 | Zespó³-K | Blok | Normalny | Pakiet | L2 |  |
|  | SEKCJA 10 | **Sekcja 10** |  | 2026-04-01 | 2026-07-06 |  |  |  |  |  |  |  |  |  |  |  |  |  |  |  |  |  |  |  |  |
| 13RW88-068 |  | Prefabrykacja ruroci¹gów – Sekcja 10 | 4.2d | 2026-04-01 A | 2026-04-07 A | 13RW88-012, 13RW88-063 SS+5d | 100% | 2026-03-27 | 2026-04-01 |  |  | Pomorski | 13RW88 | Ruroci¹g | Budowa | Roboty | Agnieszk | Uk³ad | PM000 | Zespó³-K | Blok | Wysoki | Pakiet | L2 | Rev B |
| 13RW88-069 |  | Monta¿ ruroci¹gów – Sekcja 10 | 6.3d | 2026-06-11 A | 2026-06-23 A | 13RW88-068, 13RW88-014 SS | 100% | 2026-06-08 | 2026-06-15 |  |  | Pomorski | 13RW88 | Ruroci¹g | Budowa | Roboty | Agnieszk | Uk³ad | PM000 | Zespó³-K | Blok | Normalny | Pakiet | L2 |  |
| 13RW88-070 |  | Próba ciœnieniowa – Sekcja 10 | 5d | 2026-06-18 A | 2026-06-25 A | 13RW88-069 | 100% | 2026-06-16 | 2026-06-22 |  | Bez uwag | Pomorski | 13RW88 | Ruroci¹g | Budowa | Roboty | Agnieszk | Uk³ad | PM000 | Zespó³-K | Blok | Normalny | Pakiet | L2 | Rev C |
| 13RW88-071 |  | Izolacje – Sekcja 10 | 4d | 2026-06-26 A | 2026-07-02 A | 13RW88-070 | 100% | 2026-06-23 | 2026-06-26 | Kalendarz 6-dniowy |  | Pomorski | 13RW88 | Ruroci¹g | Budowa | Roboty | Agnieszk | Uk³ad | PM000 | Zespó³-W | Blok | Normalny | Pakiet | L2 |  |
| 13RW88-072 |  | Malowanie i oznakowanie – Sekcja 10 | 2d | 2026-07-02 A | 2026-07-06 A | 13RW88-071 FF+2d | 100% | 2026-06-29 | 2026-06-30 | Kalendarz 6-dniowy | Ryzyko opóŸnienia | Pomorski | 13RW88 | Ruroci¹g | Budowa | Roboty | Agnieszk | Uk³ad | PM000 | Zespó³-K | Blok | Wysoki | Pakiet | L2 |  |
|  | SEKCJA 11 | **Sekcja 11** |  | 2026-04-02 | 2026-07-30 |  |  |  |  |  |  |  |  |  |  |  |  |  |  |  |  |  |  |  |  |
| 13RW88-075 |  | Prefabrykacja ruroci¹gów – Sekcja 11 | 14.7d | 2026-04-02 A | 2026-04-21 A | 13RW88-012, 13RW88-068 SS+5d | 100% | 2026-04-03 | 2026-04-22 |  |  | Pomorski | 13RW88 | Ruroci¹g | Budowa | Roboty | Agnieszk | Uk³ad | PM000 | Zespó³-K | Blok | Normalny | Pakiet | L2 |  |
| 13RW88-076 |  | Monta¿ ruroci¹gów – Sekcja 11 | 17.8d | 2026-06-10 A | 2026-07-02 A | 13RW88-075, 13RW88-014 SS+3d | 100% | 2026-06-11 | 2026-07-03 | Kalendarz 6-dniowy |  | Pomorski | 13RW88 | Ruroci¹g | Budowa | Roboty | Agnieszk | Uk³ad | PM000 | Zespó³-W | Blok | Normalny | Pakiet | L2 | Rev C |
| 13RW88-077 |  | Próba ciœnieniowa – Sekcja 11 | 6d | 2026-07-08 A | 2026-07-17 A | 13RW88-076 | 100% | 2026-07-06 | 2026-07-13 |  |  | Pomorski | 13RW88 | Ruroci¹g | Budowa | Roboty | Agnieszk | Uk³ad | PM000 | Zespó³-W | Blok | Normalny | Pakiet | L2 |  |
| 13RW88-078 |  | Izolacje – Sekcja 11 | 9d | 2026-07-15 A | 2026-07-29 A | 13RW88-077 | 100% | 2026-07-14 | 2026-07-24 |  |  | Pomorski | 13RW88 | Ruroci¹g | Budowa | Roboty | Agnieszk | Uk³ad | PM000 | Zespó³-W | Blok | Normalny | Pakiet | L2 | Rev C |
| 13RW88-079 |  | Malowanie i oznakowanie – Sekcja 11 | 6d | 2026-07-23 A | 2026-07-30 A | 13RW88-078 FF+2d | 100% | 2026-07-21 | 2026-07-28 |  |  | Pomorski | 13RW88 | Ruroci¹g | Budowa | Roboty | Agnieszk | Uk³ad | PM000 | Zespó³-K | Blok | Normalny | Pakiet | L2 |  |

| ID | WBS | Activity | Type | Duration | Start | Finish | Predecessors | Complete | Remaining | Actual finish | Planned start | Planned finish | Total float | Free float | AC_Wykonawca | AC_Obiekt | AC_Dyscyplina | AC_Faza | AC_Zakres | AC_Opiekun | AC_Obszar | AC_PP_PM | AC_Zespol | AC_Blok | AC_Priorytet | AC_Pakiet | AC_Poziom | Uwagi harmonogramisty | Rewizja dokumentu |
| --- | --- | --- | --- | --- | --- | --- | --- | --- | --- | --- | --- | --- | --- | --- | --- | --- | --- | --- | --- | --- | --- | --- | --- | --- | --- | --- | --- | --- | --- |
|  | SEKCJA 12 | **Sekcja 12** |  |  | 2026-04-09 | 2026-07-21 |  |  |  |  |  |  |  |  |  |  |  |  |  |  |  |  |  |  |  |  |  |  |  |
|  | PODSEKCJA | **Podsekcja 12.A** |  |  | 2026-04-09 | 2026-07-21 |  |  |  |  |  |  |  |  |  |  |  |  |  |  |  |  |  |  |  |  |  |  |  |
| 13RW88-080 |  | Prefabrykacja ruroci¹gów – Sekcja 12 |  | 7.5d | 2026-04-09 A | 2026-04-22 A | 13RW88-012, 13RW88-075 SS+5d | 100% |  |  | 2026-04-10 | 2026-04-20 |  |  | Pomorski | 13RW88 | Ruroci¹g | Budowa | Roboty | Agnieszk | Uk³ad | PM000 | Zespó³-W | Blok | Normalny | Pakiet | L2 |  |  |
| 13RW88-081 |  | Monta¿ ruroci¹gów – Sekcja 12 |  | 22.4d | 2026-06-08 A | 2026-07-09 A | 13RW88-080, 13RW88-014 SS | 100% |  |  | 2026-06-08 | 2026-07-07 |  |  | Pomorski | 13RW88 | Ruroci¹g | Budowa | Roboty | Agnieszk | Uk³ad | PM200 | Zespó³-E | Blok | Niski | Pakiet | L2 |  |  |
| 13RW88-082 |  | Próba ciœnieniowa – Sekcja 12 |  | 5d | 2026-07-09 A | 2026-07-16 A | 13RW88-081 | 100% |  |  | 2026-07-08 | 2026-07-14 |  |  | Pomorski | 13RW88 | Ruroci¹g | Budowa | Roboty | Agnieszk | Uk³ad | PM000 | Zespó³-K | Blok | Wysoki | Pakiet | L2 |  |  |
| 13RW88-083 |  | Izolacje – Sekcja 12 |  | 3d | 2026-07-15 A | 2026-07-20 A | 13RW88-082 | 100% |  |  | 2026-07-15 | 2026-07-17 |  |  | Pomorski | 13RW88 | Ruroci¹g | Budowa | Roboty | Agnieszk | Uk³ad | PM000 | Zespó³-W | Blok | Normalny | Pakiet | L2 |  |  |
| 13RW88-084 |  | Malowanie i oznakowanie – Sekcja 12 |  | 4d | 2026-07-16 A | 2026-07-21 A | 13RW88-083 FF+2d | 100% |  |  |  |  |  |  | Pomorski | 13RW88 | Ruroci¹g | Budowa | Roboty | Agnieszk | Uk³ad | PM000 | Zespó³-W | Blok | Wysoki | Pakiet | L2 | Czeka na dostawê |  |
|  | PROJ | **Projektowanie** |  |  | 2025-03-20 | 2025-08-21 |  |  |  |  |  |  |  |  |  |  |  |  |  |  |  |  |  |  |  |  |  |  |  |
|  | DOKUMENTAC | **Dokumentacja** |  |  | 2025-03-20 | 2025-08-21 |  |  |  |  |  |  |  |  |  |  |  |  |  |  |  |  |  |  |  |  |  |  |  |
| 13RW88-001 |  | Projekt wykonawczy – Oczyszczalnia œcieków technologicznych |  | 86d | 2025-03-20 A | 2025-07-18 A |  | 100% |  |  | 2025-03-21 | 2025-07-18 |  |  | Pomorski | 13RW88 | Budowlan | Projekto | Projekt | Agnieszk | Uk³ad | PM000 | Zespó³-W | Blok | Wysoki | Pakiet | L2 |  | Rev C |
| 13RW88-002 |  | Uzgodnienie dokumentacji z Inwestorem |  | 10d | 2025-07-21 A | 2025-08-04 A | 13RW88-001 | 100% |  |  | 2025-07-21 | 2025-08-01 |  |  | Pomorski | 13RW88 | Budowlan | Projekto | Projekt | Agnieszk | Uk³ad | PM000 | Zespó³-W | Blok | Normalny | Pakiet | L2 |  |  |
| 13RW88-003 |  | Zatwierdzenie dokumentacji do realizacji |  | 10d | 2025-08-07 A | 2025-08-21 A | 13RW88-002 | 100% |  |  | 2025-08-04 | 2025-08-15 |  |  | Pomorski | 13RW88 | Budowlan | Projekto | Projekt | Agnieszk | Uk³ad | PM000 | Zespó³-W | Blok | Normalny | Pakiet | L2 |  |  |
| 13RW88-004 |  | KM: Dokumentacja zatwierdzona – Oczyszczalnia œcieków technologicznych | milestone | 0d | 2025-08-20 A | 2025-08-20 | 13RW88-003 | 100% |  | 2025-08-19 | 2025-08-18 | 2025-08-18 |  |  | Pomorski | 13RW88 | Budowlan | Projekto | Kamieñ | Agnieszk | Uk³ad | PM000 | Zespó³-K | Blok | Normalny | Pakiet | L1 | Bez uwag |  |
|  | ROZR | **Rozruch** |  |  | 2026-08-28 | 2026-10-13 |  |  |  |  |  |  |  |  |  |  |  |  |  |  |  |  |  |  |  |  |  |  |  |
|  | ROZRUCH | **Rozruch** |  |  | 2026-08-28 | 2026-10-13 |  |  |  |  |  |  |  |  |  |  |  |  |  |  |  |  |  |  |  |  |  |  |  |
| 13RW88-089 |  | Przegl¹d gotowoœci do rozruchu |  | 6d | 2026-08-28 A | 2026-09-09 A | 13RW88-088, 13RW88-019, 13RW88-024, 13RW88-026 | 100% |  |  | 2026-08-28 | 2026-09-04 |  |  | Pomorski | 13RW88 | Rozruch | Rozruch | Rozruch | Agnieszk | Uk³ad | PM000 | Zespó³-K | Blok | Normalny | Pakiet | L2 | Czeka na dostawê |  |
| 13RW88-090 |  | Rozruch na zimno |  | 12d | 2026-09-04 A | 2026-09-21 A | 13RW88-089 | 100% |  |  | 2026-09-07 | 2026-09-22 |  |  | Pomorski | 13RW88 | Rozruch | Rozruch | Rozruch | Agnieszk | Uk³ad | PM000 | Zespó³-W | Blok | Normalny | Pakiet | L2 |  | Rev B |
| 13RW88-091 |  | Rozruch na gor¹co / próby ruchowe |  | 11d | 2026-09-25 A | 2026-10-12 | 13RW88-090 | 64% | 4d |  | 2026-09-23 | 2026-10-07 | 390.6d | 0d | Pomorski | 13RW88 | Rozruch | Rozruch | Rozruch | Agnieszk | Uk³ad | PM000 | Zespó³-K | Blok | Wysoki | Pakiet | L2 |  | Rev B |
| 13RW88-092 |  | KM: Odbiór koñcowy – Oczyszczalnia œcieków technologicznych | milestone | 0d | 2026-10-13 | 2026-10-13 | 13RW88-091 |  |  |  | 2026-10-08 | 2026-10-08 | 389.6d | 0d | Pomorski | 13RW88 | Rozruch | Rozruch | Kamieñ | Agnieszk | Uk³ad | PM000 | Zespó³-K | Blok | Normalny | Pakiet | L1 |  |  |
|  | ZAKU | **Zakupy** |  |  | 2025-04-18 | 2026-06-08 |  |  |  |  |  |  |  |  |  |  |  |  |  |  |  |  |  |  |  |  |  |  |  |
|  | DOSTAWY | **Dostawy** |  |  | 2025-11-27 | 2026-06-08 |  |  |  |  |  |  |  |  |  |  |  |  |  |  |  |  |  |  |  |  |  |  |  |
| 13RW88-008 |  | Produkcja u dostawcy |  | 108d | 2025-11-27 A | 2026-04-30 A | 13RW88-007 | 100% |  |  | 2025-11-27 | 2026-04-27 |  |  | Pomorski | 13RW88 | Mechanic | Zakupy | Dostawa | Agnieszk | Uk³ad | PM000 | Zespó³-W | Blok | Normalny | Pakiet | L2 |  |  |
| 13RW88-009 |  | Testy FAT |  | 10d | 2026-04-28 A | 2026-05-12 A | 13RW88-008 | 100% |  |  | 2026-04-28 | 2026-05-11 |  |  | Pomorski | 13RW88 | Mechanic | Zakupy | Dostawa | Agnieszk | Uk³ad | PM000 | Zespó³-K | Blok | Normalny | Pakiet | L2 |  |  |
| 13RW88-010 |  | Transport i dostawa na plac budowy |  | 19d | 2026-05-11 A | 2026-06-08 A | 13RW88-009 | 100% |  |  | 2026-05-12 | 2026-06-05 |  |  | Pomorski | 13RW88 | Mechanic | Zakupy | Dostawa | Agnieszk | Uk³ad | PM000 | Zespó³-K | Blok | Normalny | Pakiet | L2 |  | Rev B |
| 13RW88-011 |  | KM: Dostawa na budowê – Oczyszczalnia œcieków technologicznych | milestone | 0d | 2026-06-08 A | 2026-06-08 | 13RW88-010 | 100% |  | 2026-06-05 |  |  |  |  | Pomorski | 13RW88 | Mechanic | Zakupy | Kamieñ | Agnieszk | Uk³ad | PM000 | Zespó³-W | Blok | Normalny | Pakiet | L1 |  | Rev B |

| ID | WBS | Activity | Type | Duration | Start | Finish | Predecessors | Complete | Actual finish | Planned start | Planned finish | Calendar | AC_Wykonawca | AC_Obiekt | AC_Dyscyplina | AC_Faza | AC_Zakres | AC_Opiekun | AC_Obszar | AC_PP_PM | AC_Zespol | AC_Blok | AC_Priorytet | AC_Pakiet | AC_Poziom | Uwagi harmonogramisty | Rewizja dokumentu |
| --- | --- | --- | --- | --- | --- | --- | --- | --- | --- | --- | --- | --- | --- | --- | --- | --- | --- | --- | --- | --- | --- | --- | --- | --- | --- | --- | --- |
|  | ZAMÓWIENIA | **Zamówienia** |  |  | 2025-04-18 | 2025-12-02 |  |  |  |  |  |  |  |  |  |  |  |  |  |  |  |  |  |  |  |  |  |
| 13RW88-005 |  | Zapytanie ofertowe |  | 21d | 2025-04-18 A | 2025-05-21 A | 13RW88-001 SS+20d | 100% |  | 2025-04-18 | 2025-05-16 |  | Pomorski | 13RW88 | Mechanic | Zakupy | Dostawa | Agnieszk | Uk³ad | PM000 | Zespó³-W | Blok | Normalny | Pakiet | L2 |  |  |
| 13RW88-006 |  | Analiza i wybór ofert |  | 12d | 2025-05-19 A | 2025-06-06 A | 13RW88-005 | 100% |  | 2025-05-19 | 2025-06-03 |  | Pomorski | 13RW88 | Mechanic | Zakupy | Dostawa | Agnieszk | Uk³ad | PM000 | Zespó³-W | Blok | Normalny | Pakiet | L2 |  |  |
| 13RW88-007 |  | Zawarcie umowy / zamówienie |  | 9d | 2025-11-18 A | 2025-12-02 A | 13RW88-006, 13RW88-004 SS, 12NW18-004 SS+10d | 100% |  | 2025-11-14 | 2025-11-26 | Kalendarz 6-dniowy | Pomorski | 13RW88 | Mechanic | Zakupy | Dostawa | Agnieszk | Uk³ad | PM300 | Zespó³-E | Blok | Wysoki | Pakiet | L1 |  |  |
|  | 18TY85 | **18TY85 – Wie¿a ch³odnicza** |  |  | 2025-03-13 | 2028-04-10 |  |  |  |  |  |  |  |  |  |  |  |  |  |  |  |  |  |  |  |  |  |
|  | BUDO | **Budowa** |  |  | 2025-10-15 | 2026-05-27 |  |  |  |  |  |  |  |  |  |  |  |  |  |  |  |  |  |  |  |  |  |
|  | AKPIA | **AKPiA** |  |  | 2026-03-27 | 2026-05-07 |  |  |  |  |  |  |  |  |  |  |  |  |  |  |  |  |  |  |  |  |  |
| 18TY85-068 |  | Monta¿ uk³adów AKPiA |  | 29d | 2026-03-27 A | 2026-05-07 A | 18TY85-014 SS+5d | 100% |  | 2026-03-30 | 2026-05-07 |  | TurboSys | 18TY85 | AKPiA | Budowa | Roboty | Joanna | Uk³ad | PM000 | Zespó³-K | Blok | Normalny | Pakiet | L2 |  |  |
|  | ELEKTRYKA | **Elektryka** |  |  | 2026-04-03 | 2026-05-07 |  |  |  |  |  |  |  |  |  |  |  |  |  |  |  |  |  |  |  |  |  |
| 18TY85-025 |  | Uk³adanie kabli – trasa 02 |  | 9d | 2026-04-03 A | 2026-04-20 A | 18TY85-014 SS+10d | 100% |  | 2026-04-06 | 2026-04-16 |  | TurboSys | 18TY85 | Elektryc | Budowa | Roboty | Joanna | Uk³ad | PM000 | Zespó³-W | Blok | Normalny | Pakiet | L2 |  |  |
| 18TY85-037 |  | Uk³adanie kabli – trasa 04 |  | 13d | 2026-04-03 A | 2026-04-22 A | 18TY85-014 SS+10d | 100% |  | 2026-04-06 | 2026-04-22 |  | TurboSys | 18TY85 | Elektryc | Budowa | Roboty | Joanna | Uk³ad | PM000 | Zespó³-W | Blok | Normalny | Pakiet | L2 |  |  |
| 18TY85-026 |  | Pod³¹czenia i pomiary – trasa 02 |  | 10d | 2026-04-07 A | 2026-04-23 A | 18TY85-025 FF | 100% |  | 2026-04-03 | 2026-04-16 |  | TurboSys | 18TY85 | Elektryc | Budowa | Roboty | Joanna | Uk³ad | PM000 | Zespó³-W | Blok | Wysoki | Pakiet | L2 |  |  |
| 18TY85-061 |  | Uk³adanie kabli – trasa 08 |  | 19d | 2026-04-08 A | 2026-05-07 A | 18TY85-014 SS+10d | 100% |  | 2026-04-06 | 2026-04-30 |  | TurboSys | 18TY85 | Elektryc | Budowa | Roboty | Joanna | Uk³ad | PM000 | Zespó³-W | Blok | Normalny | Pakiet | L2 |  |  |
| 18TY85-049 |  | Uk³adanie kabli – trasa 06 |  | 20d | 2026-04-09 A | 2026-05-07 A | 18TY85-014 SS+10d | 100% |  | 2026-04-06 | 2026-05-01 |  | TurboSys | 18TY85 | Elektryc | Budowa | Roboty | Joanna | Uk³ad | PM000 | Zespó³-W | Blok | Normalny | Pakiet | L2 |  |  |
| 18TY85-038 |  | Pod³¹czenia i pomiary – trasa 04 |  | 10d | 2026-04-14 A | 2026-04-28 A | 18TY85-037 FF | 100% |  | 2026-04-09 | 2026-04-22 |  | TurboSys | 18TY85 | Elektryc | Budowa | Roboty | Joanna | Uk³ad | PM000 | Zespó³-W | Blok | Normalny | Pakiet | L2 | Uzgodnione na koordynacji |  |
| 18TY85-062 |  | Pod³¹czenia i pomiary – trasa 08 |  | 5d | 2026-04-28 A | 2026-05-05 A | 18TY85-061 FF | 100% |  | 2026-04-24 | 2026-04-30 |  | TurboSys | 18TY85 | Elektryc | Budowa | Roboty | Joanna | Uk³ad | PM000 | Zespó³-W | Blok | Normalny | Pakiet | L2 |  |  |
| 18TY85-050 |  | Pod³¹czenia i pomiary – trasa 06 |  | 4d | 2026-04-30 A | 2026-05-06 A | 18TY85-049 FF | 100% |  | 2026-04-28 | 2026-05-01 |  | TurboSys | 18TY85 | Elektryc | Budowa | Roboty | Joanna | Uk³ad | PM200 | Zespó³-E | Blok | Wysoki | Pakiet | L2 |  |  |
|  | MONTA¯ | **Monta¿** |  |  | 2025-12-05 | 2026-05-13 |  |  |  |  |  |  |  |  |  |  |  |  |  |  |  |  |  |  |  |  |  |
| 18TY85-013 |  | Monta¿ konstrukcji stalowych |  | 24d | 2025-12-05 A | 2026-01-07 A | 18TY85-012 | 100% |  | 2025-12-08 | 2026-01-08 |  | TurboSys | 18TY85 | Mechanic | Budowa | Roboty | Joanna | Uk³ad | PM000 | Zespó³-K | Blok | Normalny | Pakiet | L2 |  |  |
| 18TY85-014 |  | Monta¿ urz¹dzeñ g³ównych |  | 30d | 2026-03-25 A | 2026-05-05 A | 18TY85-013, 18TY85-011 | 100% |  | 2026-03-23 | 2026-05-01 |  | TurboSys | 18TY85 | Mechanic | Budowa | Roboty | Joanna | Uk³ad | PM000 | Zespó³-K | Blok | Niski | Pakiet | L2 |  |  |
| 18TY85-069 |  | KM: Zakoñczenie monta¿u – Wie¿a ch³odnicza | milestone | 0d | 2026-05-13 A | 2026-05-13 | 18TY85-060, 18TY85-062, 18TY85-067, 18TY85-068, 18TY85-014 | 100% | 2026-05-12 | 2026-05-08 | 2026-05-08 |  | TurboSys | 18TY85 | Mechanic | Budowa | Kamieñ | Joanna | Uk³ad | PM000 | Zespó³-W | Blok | Normalny | Pakiet | L2 |  |  |
|  | ROBOTY BUD | **Roboty budowlane** |  |  | 2025-10-15 | 2025-12-04 |  |  |  |  |  |  |  |  |  |  |  |  |  |  |  |  |  |  |  |  |  |
| 18TY85-012 |  | Fundamenty i roboty ziemne |  | 37d | 2025-10-15 A | 2025-12-04 A | 18TY85-007 FS+12d | 100% |  | 2025-10-16 | 2025-12-05 |  | TurboSys | 18TY85 | Budowlan | Budowa | Roboty | Joanna | Uk³ad | PM000 | Zespó³-K | Blok | Normalny | Pakiet | L2 |  | Rev C |
|  | RUROCI¥GI | **Ruroci¹gi** |  |  | 2025-12-05 | 2026-05-27 |  |  |  |  |  |  |  |  |  |  |  |  |  |  |  |  |  |  |  |  |  |
|  | SEKCJA 01 | **Sekcja 01** |  |  | 2025-12-05 | 2026-05-22 |  |  |  |  |  |  |  |  |  |  |  |  |  |  |  |  |  |  |  |  |  |
| 18TY85-015 |  | Prefabrykacja ruroci¹gów – Sekcja 01 |  | 4.2d | 2025-12-05 A | 2025-12-10 A | 18TY85-012 | 100% |  | 2025-12-08 | 2025-12-11 |  | TurboSys | 18TY85 | Ruroci¹g | Budowa | Roboty | Joanna | Uk³ad | PM000 | Zespó³-W | Blok | Normalny | Pakiet | L2 |  |  |
| 18TY85-016 |  | Monta¿ ruroci¹gów – Sekcja 01 |  | 22.2d | 2026-03-24 A | 2026-04-24 A | 18TY85-015, 18TY85-014 SS+1d | 100% |  | 2026-03-24 | 2026-04-22 |  | TurboSys | 18TY85 | Ruroci¹g | Budowa | Roboty | Joanna | Uk³ad | PM000 | Zespó³-K | Blok | Normalny | Pakiet | L2 |  |  |
| 18TY85-017 |  | Próba ciœnieniowa – Sekcja 01 |  | 6d | 2026-04-24 A | 2026-05-06 A | 18TY85-016 | 100% |  | 2026-04-23 | 2026-04-30 |  | TurboSys | 18TY85 | Ruroci¹g | Budowa | Roboty | Joanna | Uk³ad | PM000 | Zespó³-K | Blok | Wysoki | Pakiet | L2 |  |  |
| 18TY85-018 |  | Izolacje – Sekcja 01 |  | 12d | 2026-04-30 A | 2026-05-18 A | 18TY85-017 | 100% |  | 2026-05-01 | 2026-05-18 |  | TurboSys | 18TY85 | Ruroci¹g | Budowa | Roboty | Joanna | Uk³ad | PM100 | Zespó³-E | Blok | Normalny | Pakiet | L2 |  |  |
| 18TY85-019 |  | Malowanie i oznakowanie – Sekcja 01 |  | 8d | 2026-05-13 A | 2026-05-22 A | 18TY85-018 FF+2d | 100% |  | 2026-05-11 | 2026-05-20 |  | TurboSys | 18TY85 | Ruroci¹g | Budowa | Roboty | Joanna | Uk³ad | PM000 | Zespó³-W | Blok | Normalny | Pakiet | L2 |  |  |

| ID | WBS | Activity | Duration | Start | Finish | Predecessors | Complete | Planned start | Planned finish | Calendar | Rewizja dokumentu | AC_Wykonawca | AC_Obiekt | AC_Dyscyplina | AC_Faza | AC_Zakres | AC_Opiekun | AC_Obszar | AC_PP_PM | AC_Zespol | AC_Blok | AC_Priorytet | AC_Pakiet | AC_Poziom | Uwagi harmonogramisty |
| --- | --- | --- | --- | --- | --- | --- | --- | --- | --- | --- | --- | --- | --- | --- | --- | --- | --- | --- | --- | --- | --- | --- | --- | --- | --- |
|  | SEKCJA 02 | **Sekcja 02** |  | 2025-12-15 | 2026-05-04 |  |  |  |  |  |  |  |  |  |  |  |  |  |  |  |  |  |  |  |  |
| 18TY85-020 |  | Prefabrykacja ruroci¹gów – Sekcja 02 | 8.4d | 2025-12-15 A | 2025-12-26 A | 18TY85-012, 18TY85-015 SS+5d | 100% | 2025-12-15 | 2025-12-24 |  | Rev C | TurboSys | 18TY85 | Ruroci¹g | Budowa | Roboty | Joanna | Uk³ad | PM000 | Zespó³-W | Blok | Normalny | Pakiet | L2 |  |
| 18TY85-021 |  | Monta¿ ruroci¹gów – Sekcja 02 | 8.5d | 2026-04-08 A | 2026-04-20 A | 18TY85-020, 18TY85-014 SS+10d | 100% | 2026-04-06 | 2026-04-15 |  |  | TurboSys | 18TY85 | Ruroci¹g | Budowa | Roboty | Joanna | Uk³ad | PM000 | Zespó³-W | Blok | Normalny | Pakiet | L2 |  |
| 18TY85-022 |  | Próba ciœnieniowa – Sekcja 02 | 4d | 2026-04-21 A | 2026-04-29 A | 18TY85-021 | 100% | 2026-04-16 | 2026-04-21 |  |  | TurboSys | 18TY85 | Ruroci¹g | Budowa | Roboty | Joanna | Uk³ad | PM000 | Zespó³-W | Blok | Normalny | Pakiet | L2 | Do weryfikacji z wykonawc¹ |
| 18TY85-024 |  | Malowanie i oznakowanie – Sekcja 02 | 7d | 2026-04-22 A | 2026-05-01 A | 18TY85-023 FF+2d | 100% | 2026-04-23 | 2026-05-01 | Kalendarz 6-dniowy |  | TurboSys | 18TY85 | Ruroci¹g | Budowa | Roboty | Joanna | Uk³ad | PM000 | Zespó³-W | Blok | Normalny | Pakiet | L2 |  |
| 18TY85-023 |  | Izolacje – Sekcja 02 | 6d | 2026-04-27 A | 2026-05-04 A | 18TY85-022 | 100% | 2026-04-22 | 2026-04-29 | Kalendarz 6-dniowy | Rev C | TurboSys | 18TY85 | Ruroci¹g | Budowa | Roboty | Joanna | Uk³ad | PM000 | Zespó³-K | Blok | Normalny | Pakiet | L2 |  |
|  | SEKCJA 03 | **Sekcja 03** |  | 2025-12-22 | 2026-05-14 |  |  |  |  |  |  |  |  |  |  |  |  |  |  |  |  |  |  |  |  |
|  | PODSEKCJA | **Podsekcja 03.A** |  | 2025-12-22 | 2026-05-14 |  |  |  |  |  |  |  |  |  |  |  |  |  |  |  |  |  |  |  |  |
| 18TY85-027 |  | Prefabrykacja ruroci¹gów – Sekcja 03 | 13.3d | 2025-12-22 A | 2026-01-12 A | 18TY85-012, 18TY85-020 SS+5d | 100% | 2025-12-22 | 2026-01-07 |  |  | TurboSys | 18TY85 | Ruroci¹g | Budowa | Roboty | Joanna | Uk³ad | PM000 | Zespó³-W | Blok | Normalny | Pakiet | L2 |  |
| 18TY85-028 |  | Monta¿ ruroci¹gów – Sekcja 03 | 14.9d | 2026-03-31 A | 2026-04-22 A | 18TY85-027, 18TY85-014 SS+7d | 100% | 2026-04-01 | 2026-04-20 |  |  | TurboSys | 18TY85 | Ruroci¹g | Budowa | Roboty | Joanna | Uk³ad | PM000 | Zespó³-E | Blok | Normalny | Pakiet | L2 |  |
| 18TY85-029 |  | Próba ciœnieniowa – Sekcja 03 | 5d | 2026-04-23 A | 2026-05-01 A | 18TY85-028 | 100% | 2026-04-21 | 2026-04-27 | Kalendarz 6-dniowy |  | TurboSys | 18TY85 | Ruroci¹g | Budowa | Roboty | Joanna | Uk³ad | PM000 | Zespó³-K | Blok | Normalny | Pakiet | L2 |  |
| 18TY85-030 |  | Izolacje – Sekcja 03 | 9d | 2026-04-29 A | 2026-05-12 A | 18TY85-029 | 100% | 2026-04-28 | 2026-05-08 |  | Rev C | TurboSys | 18TY85 | Ruroci¹g | Budowa | Roboty | Joanna | Uk³ad | PM000 | Zespó³-W | Blok | Normalny | Pakiet | L2 |  |
| 18TY85-031 |  | Malowanie i oznakowanie – Sekcja 03 | 8d | 2026-04-30 A | 2026-05-14 A | 18TY85-030 FF+2d | 100% | 2026-05-01 | 2026-05-12 |  | Rev C | TurboSys | 18TY85 | Ruroci¹g | Budowa | Roboty | Joanna | Uk³ad | PM000 | Zespó³-K | Blok | Normalny | Pakiet | L2 | Do weryfikacji z wykonawc¹ |
|  | SEKCJA 04 | **Sekcja 04** |  | 2026-01-01 | 2026-05-14 |  |  |  |  |  |  |  |  |  |  |  |  |  |  |  |  |  |  |  |  |
| 18TY85-032 |  | Prefabrykacja ruroci¹gów – Sekcja 04 | 4d | 2026-01-01 A | 2026-01-06 A | 18TY85-012, 18TY85-027 SS+5d | 100% | 2025-12-29 | 2026-01-01 |  | Rev C | TurboSys | 18TY85 | Ruroci¹g | Budowa | Roboty | Joanna | Uk³ad | PM000 | Zespó³-W | Blok | Wysoki | Pakiet | L2 |  |
| 18TY85-033 |  | Monta¿ ruroci¹gów – Sekcja 04 | 23.1d | 2026-03-24 A | 2026-04-27 A | 18TY85-032, 18TY85-014 SS+2d | 100% | 2026-03-25 | 2026-04-24 |  |  | TurboSys | 18TY85 | Ruroci¹g | Budowa | Roboty | Joanna | Uk³ad | PM000 | Zespó³-K | Blok | Wysoki | Pakiet | L2 |  |
| 18TY85-034 |  | Próba ciœnieniowa – Sekcja 04 | 5d | 2026-04-27 A | 2026-05-06 A | 18TY85-033 | 100% | 2026-04-27 | 2026-05-01 |  | Rev A | TurboSys | 18TY85 | Ruroci¹g | Budowa | Roboty | Joanna | Uk³ad | PM000 | Zespó³-W | Blok | Normalny | Pakiet | L2 |  |
| 18TY85-036 |  | Malowanie i oznakowanie – Sekcja 04 | 6d | 2026-05-01 A | 2026-05-12 A | 18TY85-035 FF+2d | 100% | 2026-05-01 | 2026-05-08 |  | Rev C | TurboSys | 18TY85 | Ruroci¹g | Budowa | Roboty | Joanna | Uk³ad | PM000 | Zespó³-K | Blok | Normalny | Pakiet | L2 |  |
| 18TY85-035 |  | Izolacje – Sekcja 04 | 3d | 2026-05-07 A | 2026-05-14 A | 18TY85-034 | 100% | 2026-05-04 | 2026-05-06 |  |  | TurboSys | 18TY85 | Ruroci¹g | Budowa | Roboty | Joanna | Uk³ad | PM000 | Zespó³-W | Blok | Wysoki | Pakiet | L2 |  |
|  | SEKCJA 05 | **Sekcja 05** |  | 2026-01-06 | 2026-05-27 |  |  |  |  |  |  |  |  |  |  |  |  |  |  |  |  |  |  |  |  |
| 18TY85-039 |  | Prefabrykacja ruroci¹gów – Sekcja 05 | 10.8d | 2026-01-06 A | 2026-01-22 A | 18TY85-012, 18TY85-032 SS+5d | 100% | 2026-01-05 | 2026-01-16 |  | Rev C | TurboSys | 18TY85 | Ruroci¹g | Budowa | Roboty | Joanna | Uk³ad | PM200 | Zespó³-E | Blok | Normalny | Pakiet | L2 |  |
| 18TY85-040 |  | Monta¿ ruroci¹gów – Sekcja 05 | 21.9d | 2026-03-31 A | 2026-04-29 A | 18TY85-039, 18TY85-014 SS+6d | 100% | 2026-03-31 | 2026-04-28 |  | Rev B | TurboSys | 18TY85 | Ruroci¹g | Budowa | Roboty | Joanna | Uk³ad | PM000 | Zespó³-W | Blok | Niski | Pakiet | L2 |  |
| 18TY85-041 |  | Próba ciœnieniowa – Sekcja 05 | 6d | 2026-05-04 A | 2026-05-14 A | 18TY85-040 | 100% | 2026-04-29 | 2026-05-06 |  | Rev B | TurboSys | 18TY85 | Ruroci¹g | Budowa | Roboty | Joanna | Uk³ad | PM000 | Zespó³-W | Blok | Normalny | Pakiet | L2 |  |
| 18TY85-042 |  | Izolacje – Sekcja 05 | 10d | 2026-05-06 A | 2026-05-21 A | 18TY85-041 | 100% | 2026-05-07 | 2026-05-20 |  | Rev A | TurboSys | 18TY85 | Ruroci¹g | Budowa | Roboty | Joanna | Uk³ad | PM000 | Zespó³-K | Blok | Krytyczn | Pakiet | L2 |  |
| 18TY85-043 |  | Malowanie i oznakowanie – Sekcja 05 | 7d | 2026-05-15 A | 2026-05-27 A | 18TY85-042 FF+2d | 100% | 2026-05-14 | 2026-05-22 |  |  | TurboSys | 18TY85 | Ruroci¹g | Budowa | Roboty | Joanna | Uk³ad | PM000 | Zespó³-W | Blok | Normalny | Pakiet | L2 |  |

| ID | WBS | Activity | Duration | Start | Finish | Predecessors | Complete | Planned start | Planned finish | Calendar | AC_Wykonawca | AC_Obiekt | AC_Dyscyplina | AC_Faza | AC_Zakres | AC_Opiekun | AC_Obszar | AC_PP_PM | AC_Zespol | AC_Blok | AC_Priorytet | AC_Pakiet | AC_Poziom | Uwagi harmonogramisty | Rewizja dokumentu |
| --- | --- | --- | --- | --- | --- | --- | --- | --- | --- | --- | --- | --- | --- | --- | --- | --- | --- | --- | --- | --- | --- | --- | --- | --- | --- |
|  | SEKCJA 06 | **Sekcja 06** |  | 2026-01-13 | 2026-05-07 |  |  |  |  |  |  |  |  |  |  |  |  |  |  |  |  |  |  |  |  |
|  | PODSEKCJA | **Podsekcja 06.A** |  | 2026-01-13 | 2026-05-07 |  |  |  |  |  |  |  |  |  |  |  |  |  |  |  |  |  |  |  |  |
| 18TY85-044 |  | Prefabrykacja ruroci¹gów – Sekcja 06 | 11d | 2026-01-13 A | 2026-01-27 A | 18TY85-012, 18TY85-039 SS+5d | 100% | 2026-01-12 | 2026-01-26 |  | TurboSys | 18TY85 | Ruroci¹g | Budowa | Roboty | Joanna | Uk³ad | PM000 | Zespó³-K | Blok | Niski | Pakiet | L2 |  |  |
| 18TY85-045 |  | Monta¿ ruroci¹gów – Sekcja 06 | 18.4d | 2026-04-01 A | 2026-04-28 A | 18TY85-044, 18TY85-014 SS+4d | 100% | 2026-03-27 | 2026-04-21 |  | TurboSys | 18TY85 | Ruroci¹g | Budowa | Roboty | Joanna | Uk³ad | PM000 | Zespó³-K | Blok | Wysoki | Pakiet | L2 |  |  |
| 18TY85-046 |  | Próba ciœnieniowa – Sekcja 06 | 3d | 2026-04-23 A | 2026-04-30 A | 18TY85-045 | 100% | 2026-04-22 | 2026-04-24 |  | TurboSys | 18TY85 | Ruroci¹g | Budowa | Roboty | Joanna | Uk³ad | PM000 | Zespó³-E | Blok | Niski | Pakiet | L2 |  |  |
| 18TY85-047 |  | Izolacje – Sekcja 06 | 4d | 2026-04-28 A | 2026-05-05 A | 18TY85-046 | 100% | 2026-04-27 | 2026-04-30 |  | TurboSys | 18TY85 | Ruroci¹g | Budowa | Roboty | Joanna | Uk³ad | PM000 | Zespó³-W | Blok | Normalny | Pakiet | L2 | Uzgodnione na koordynacji | Rev B |
| 18TY85-048 |  | Malowanie i oznakowanie – Sekcja 06 | 6d | 2026-04-29 A | 2026-05-07 A | 18TY85-047 FF+2d | 100% | 2026-04-27 | 2026-05-04 |  | TurboSys | 18TY85 | Ruroci¹g | Budowa | Roboty | Joanna | Uk³ad | PM000 | Zespó³-K | Blok | Krytyczn | Pakiet | L2 |  | Rev C |
|  | SEKCJA 07 | **Sekcja 07** |  | 2026-01-21 | 2026-05-01 |  |  |  |  |  |  |  |  |  |  |  |  |  |  |  |  |  |  |  |  |
| 18TY85-051 |  | Prefabrykacja ruroci¹gów – Sekcja 07 | 7.5d | 2026-01-21 A | 2026-01-30 A | 18TY85-012, 18TY85-044 SS+5d | 100% | 2026-01-19 | 2026-01-27 |  | TurboSys | 18TY85 | Ruroci¹g | Budowa | Roboty | Joanna | Uk³ad | PM000 | Zespó³-E | Blok | Normalny | Pakiet | L2 | Ryzyko opóŸnienia | Rev B |
| 18TY85-052 |  | Monta¿ ruroci¹gów – Sekcja 07 | 10.4d | 2026-04-01 A | 2026-04-17 A | 18TY85-051, 18TY85-014 SS+7d | 100% | 2026-04-01 | 2026-04-14 |  | TurboSys | 18TY85 | Ruroci¹g | Budowa | Roboty | Joanna | Uk³ad | PM000 | Zespó³-W | Blok | Normalny | Pakiet | L2 | Uzgodnione na koordynacji |  |
| 18TY85-053 |  | Próba ciœnieniowa – Sekcja 07 | 5d | 2026-04-16 A | 2026-04-23 A | 18TY85-052 | 100% | 2026-04-15 | 2026-04-21 |  | TurboSys | 18TY85 | Ruroci¹g | Budowa | Roboty | Joanna | Uk³ad | PM000 | Zespó³-W | Blok | Normalny | Pakiet | L2 |  |  |
| 18TY85-054 |  | Izolacje – Sekcja 07 | 4d | 2026-04-21 A | 2026-04-27 A | 18TY85-053 | 100% | 2026-04-22 | 2026-04-27 |  | TurboSys | 18TY85 | Ruroci¹g | Budowa | Roboty | Joanna | Uk³ad | PM000 | Zespó³-W | Blok | Wysoki | Pakiet | L2 |  |  |
| 18TY85-055 |  | Malowanie i oznakowanie – Sekcja 07 | 8d | 2026-04-22 A | 2026-05-01 A | 18TY85-054 FF+2d | 100% | 2026-04-20 | 2026-04-29 |  | TurboSys | 18TY85 | Ruroci¹g | Budowa | Roboty | Joanna | Uk³ad | PM000 | Zespó³-K | Blok | Normalny | Pakiet | L2 |  |  |
|  | SEKCJA 08 | **Sekcja 08** |  | 2026-01-29 | 2026-04-29 |  |  |  |  |  |  |  |  |  |  |  |  |  |  |  |  |  |  |  |  |
| 18TY85-056 |  | Prefabrykacja ruroci¹gów – Sekcja 08 | 5d | 2026-01-29 A | 2026-02-05 A | 18TY85-012, 18TY85-051 SS+5d | 100% | 2026-01-26 | 2026-01-30 |  | TurboSys | 18TY85 | Ruroci¹g | Budowa | Roboty | Joanna | Uk³ad | PM200 | Zespó³-E | Blok | Normalny | Pakiet | L2 |  | Rev B |
| 18TY85-057 |  | Monta¿ ruroci¹gów – Sekcja 08 | 17.5d | 2026-03-24 A | 2026-04-20 A | 18TY85-056, 18TY85-014 SS | 100% | 2026-03-23 | 2026-04-14 |  | TurboSys | 18TY85 | Ruroci¹g | Budowa | Roboty | Joanna | Uk³ad | PM000 | Zespó³-K | Blok | Normalny | Pakiet | L2 |  |  |
| 18TY85-058 |  | Próba ciœnieniowa – Sekcja 08 | 2d | 2026-04-16 A | 2026-04-21 A | 18TY85-057 | 100% | 2026-04-15 | 2026-04-16 |  | TurboSys | 18TY85 | Ruroci¹g | Budowa | Roboty | Joanna | Uk³ad | PM000 | Zespó³-W | Blok | Normalny | Pakiet | L2 |  |  |
| 18TY85-060 |  | Malowanie i oznakowanie – Sekcja 08 | 8d | 2026-04-17 A | 2026-04-29 A | 18TY85-059 FF+2d | 100% | 2026-04-17 | 2026-04-28 |  | TurboSys | 18TY85 | Ruroci¹g | Budowa | Roboty | Joanna | Uk³ad | PM000 | Zespó³-K | Blok | Normalny | Pakiet | L2 |  |  |
| 18TY85-059 |  | Izolacje – Sekcja 08 | 6d | 2026-04-20 A | 2026-04-29 A | 18TY85-058 | 100% | 2026-04-17 | 2026-04-24 |  | TurboSys | 18TY85 | Ruroci¹g | Budowa | Roboty | Joanna | Uk³ad | PM000 | Zespó³-K | Blok | Normalny | Pakiet | L2 | Czeka na dostawê |  |
|  | SEKCJA 09 | **Sekcja 09** |  | 2026-02-04 | 2026-05-11 |  |  |  |  |  |  |  |  |  |  |  |  |  |  |  |  |  |  |  |  |
|  | PODSEKCJA | **Podsekcja 09.A** |  | 2026-02-04 | 2026-05-11 |  |  |  |  |  |  |  |  |  |  |  |  |  |  |  |  |  |  |  |  |
| 18TY85-063 |  | Prefabrykacja ruroci¹gów – Sekcja 09 | 3.7d | 2026-02-04 A | 2026-02-11 A | 18TY85-012, 18TY85-056 SS+5d | 100% | 2026-02-02 | 2026-02-04 |  | TurboSys | 18TY85 | Ruroci¹g | Budowa | Roboty | Joanna | Uk³ad | PM000 | Zespó³-W | Blok | Normalny | Pakiet | L2 |  |  |
| 18TY85-064 |  | Monta¿ ruroci¹gów – Sekcja 09 | 5.9d | 2026-04-07 A | 2026-04-15 A | 18TY85-063, 18TY85-014 SS+10d | 100% | 2026-04-06 | 2026-04-10 |  | TurboSys | 18TY85 | Ruroci¹g | Budowa | Roboty | Joanna | Uk³ad | PM000 | Zespó³-K | Blok | Normalny | Pakiet | L2 |  |  |
| 18TY85-065 |  | Próba ciœnieniowa – Sekcja 09 | 5d | 2026-04-10 A | 2026-04-20 A | 18TY85-064 | 100% | 2026-04-13 | 2026-04-17 |  | TurboSys | 18TY85 | Ruroci¹g | Budowa | Roboty | Joanna | Uk³ad | PM200 | Zespó³-E | Blok | Normalny | Pakiet | L2 | Bez uwag |  |
| 18TY85-066 |  | Izolacje – Sekcja 09 | 10d | 2026-04-20 A | 2026-05-04 A | 18TY85-065 | 100% | 2026-04-20 | 2026-05-01 |  | TurboSys | 18TY85 | Ruroci¹g | Budowa | Roboty | Joanna | Uk³ad | PM000 | Zespó³-K | Blok | Normalny | Pakiet | L2 |  | Rev B |
| 18TY85-067 |  | Malowanie i oznakowanie – Sekcja 09 | 5d | 2026-05-04 A | 2026-05-11 A | 18TY85-066 FF+2d | 100% | 2026-04-29 | 2026-05-05 | Kalendarz 6-dniowy | TurboSys | 18TY85 | Ruroci¹g | Budowa | Roboty | Joanna | Uk³ad | PM000 | Zespó³-W | Blok | Normalny | Pakiet | L2 | Do weryfikacji z wykonawc¹ |  |

| ID | WBS | Activity | Type | Duration | Start | Finish | Predecessors | Complete | Actual start | Actual finish | Planned start | Planned finish | Total float | Calendar | AC_Wykonawca | AC_Obiekt | AC_Dyscyplina | AC_Faza | AC_Zakres | AC_Opiekun | AC_Obszar | AC_PP_PM | AC_Zespol | AC_Blok | AC_Priorytet | AC_Pakiet | AC_Poziom | Uwagi harmonogramisty | Rewizja dokumentu |
| --- | --- | --- | --- | --- | --- | --- | --- | --- | --- | --- | --- | --- | --- | --- | --- | --- | --- | --- | --- | --- | --- | --- | --- | --- | --- | --- | --- | --- | --- |
|  | PROJ | **Projektowanie** |  |  | 2025-03-13 | 2025-08-26 |  |  |  |  |  |  |  |  |  |  |  |  |  |  |  |  |  |  |  |  |  |  |  |
|  | DOKUMENTAC | **Dokumentacja** |  |  | 2025-03-13 | 2025-08-26 |  |  |  |  |  |  |  |  |  |  |  |  |  |  |  |  |  |  |  |  |  |  |  |
| 18TY85-001 |  | Projekt wykonawczy – Wie¿a ch³odnicza |  | 86d | 2025-03-13 A | 2025-07-15 A |  | 100% |  |  | 2025-03-11 | 2025-07-08 |  |  | TurboSys | 18TY85 | Budowlan | Projekto | Projekt | Joanna | Uk³ad | PM000 | Zespó³-K | Blok | Normalny | Pakiet | L2 |  |  |
| 18TY85-002 |  | Uzgodnienie dokumentacji z Inwestorem |  | 21d | 2025-07-09 A | 2025-08-06 A | 18TY85-001 | 100% |  |  |  |  |  |  | TurboSys | 18TY85 | Budowlan | Projekto | Projekt | Joanna | Uk³ad | PM000 | Zespó³-E | Blok | Normalny | Pakiet | L2 |  |  |
| 18TY85-003 |  | Zatwierdzenie dokumentacji do realizacji |  | 11d | 2025-08-12 A | 2025-08-26 A | 18TY85-002 | 100% |  |  | 2025-08-07 | 2025-08-21 |  |  | TurboSys | 18TY85 | Budowlan | Projekto | Projekt | Joanna | Uk³ad | PM000 | Zespó³-K | Blok | Normalny | Pakiet | L2 |  |  |
| 18TY85-004 |  | KM: Dokumentacja zatwierdzona – Wie¿a ch³odnicza | milestone | 0d | 2025-08-21 A | 2025-08-21 | 18TY85-003 | 100% |  | 2025-08-20 | 2025-08-22 | 2025-08-22 |  |  | TurboSys | 18TY85 | Budowlan | Projekto | Kamieñ | Joanna | Uk³ad | PM000 | Zespó³-W | Blok | Niski | Pakiet | L1 |  |  |
|  | ROZR | **Rozruch** |  |  | 2026-05-21 | 2028-04-10 |  |  |  |  |  |  |  |  |  |  |  |  |  |  |  |  |  |  |  |  |  |  |  |
|  | KAMIENIE M | **Kamienie milowe** |  |  | 2028-04-10 | 2028-04-10 |  |  |  |  |  |  |  |  |  |  |  |  |  |  |  |  |  |  |  |  |  |  |  |
| 18TY85-074 |  | KM: Zakoñczenie rozruchu – PL5001-SE-02 | milestone | 0d | 2028-04-10 | 2028-04-10 | 18TY85-073, 28BP20-080, 12NW18-080, 11TM31-128, 23QX91-176, 13RW88-092, 27FW94-164, 10SN54-169, 16TC84-164, 26NP30-157, 11XQ69-092, 14WE74-116, 17DY74-121 |  |  |  | 2027-07-01 | 2027-07-01 | 0d |  | TurboSys | 18TY85 | Rozruch | Rozruch | Kamieñ | Joanna | Uk³ad | PM000 | Zespó³-W | Blok | Normalny | Pakiet | L1 |  |  |
|  | ROZRUCH | **Rozruch** |  |  | 2026-05-21 | 2026-07-03 |  |  |  |  |  |  |  |  |  |  |  |  |  |  |  |  |  |  |  |  |  |  |  |
| 18TY85-070 |  | Przegl¹d gotowoœci do rozruchu |  | 6d | 2026-05-21 A | 2026-05-28 A | 18TY85-069, 18TY85-019, 18TY85-024, 18TY85-026 | 100% |  |  |  |  |  |  | TurboSys | 18TY85 | Rozruch | Rozruch | Rozruch | Joanna | Uk³ad | PM000 | Zespó³-W | Blok | Normalny | Pakiet | L2 |  |  |
| 18TY85-071 |  | Rozruch na zimno |  | 7d | 2026-05-28 A | 2026-06-10 A | 18TY85-070 | 100% |  |  | 2026-05-29 | 2026-06-08 |  |  | TurboSys | 18TY85 | Rozruch | Rozruch | Rozruch | Joanna | Uk³ad | PM000 | Zespó³-W | Blok | Normalny | Pakiet | L2 |  |  |
| 18TY85-072 |  | Rozruch na gor¹co / próby ruchowe |  | 16d | 2026-06-11 A | 2026-07-03 A | 18TY85-071 | 100% |  |  | 2026-06-09 | 2026-06-30 |  |  | TurboSys | 18TY85 | Rozruch | Rozruch | Rozruch | Joanna | Uk³ad | PM000 | Zespó³-E | Blok | Normalny | Pakiet | L2 | Bez uwag | Rev C |
| 18TY85-073 |  | KM: Odbiór koñcowy – Wie¿a ch³odnicza | milestone | 0d | 2026-06-29 | 2026-06-29 A | 18TY85-072 | 100% | 2026-06-30 |  | 2026-07-01 | 2026-07-01 |  | Kalendarz 6-dniowy | TurboSys | 18TY85 | Rozruch | Rozruch | Kamieñ | Joanna | Uk³ad | PM000 | Zespó³-W | Blok | Normalny | Pakiet | L1 |  |  |
|  | ZAKU | **Zakupy** |  |  | 2025-04-08 | 2026-03-26 |  |  |  |  |  |  |  |  |  |  |  |  |  |  |  |  |  |  |  |  |  |  |  |
|  | DOSTAWY | **Dostawy** |  |  | 2025-10-01 | 2026-03-26 |  |  |  |  |  |  |  |  |  |  |  |  |  |  |  |  |  |  |  |  |  |  |  |
| 18TY85-008 |  | Produkcja u dostawcy |  | 108d | 2025-10-01 A | 2026-02-27 A | 18TY85-007 | 100% |  |  | 2025-09-30 | 2026-02-26 |  |  | TurboSys | 18TY85 | Mechanic | Zakupy | Dostawa | Joanna | Uk³ad | PM000 | Zespó³-W | Blok | Normalny | Pakiet | L2 |  |  |
| 18TY85-009 |  | Testy FAT |  | 4d | 2026-03-04 A | 2026-03-11 A | 18TY85-008 | 100% |  |  | 2026-02-27 | 2026-03-04 |  |  | TurboSys | 18TY85 | Mechanic | Zakupy | Dostawa | Joanna | Uk³ad | PM000 | Zespó³-K | Blok | Normalny | Pakiet | L2 |  |  |
| 18TY85-010 |  | Transport i dostawa na plac budowy |  | 12d | 2026-03-09 A | 2026-03-26 A | 18TY85-009 | 100% |  |  | 2026-03-05 | 2026-03-20 |  |  | TurboSys | 18TY85 | Mechanic | Zakupy | Dostawa | Joanna | Uk³ad | PM000 | Zespó³-W | Blok | Normalny | Pakiet | L2 |  | Rev B |
| 18TY85-011 |  | KM: Dostawa na budowê – Wie¿a ch³odnicza | milestone | 0d | 2026-03-24 A | 2026-03-24 | 18TY85-010 | 100% |  | 2026-03-23 | 2026-03-23 | 2026-03-23 |  |  | TurboSys | 18TY85 | Mechanic | Zakupy | Kamieñ | Joanna | Uk³ad | PM000 | Zespó³-W | Blok | Normalny | Pakiet | L1 | Ryzyko opóŸnienia |  |
|  | ZAMÓWIENIA | **Zamówienia** |  |  | 2025-04-08 | 2025-10-01 |  |  |  |  |  |  |  |  |  |  |  |  |  |  |  |  |  |  |  |  |  |  |  |
| 18TY85-005 |  | Zapytanie ofertowe |  | 28d | 2025-04-08 A | 2025-05-20 A | 18TY85-001 SS+20d | 100% |  |  | 2025-04-08 | 2025-05-15 |  |  | TurboSys | 18TY85 | Mechanic | Zakupy | Dostawa | Joanna | Uk³ad | PM000 | Zespó³-W | Blok | Normalny | Pakiet | L2 |  | Rev C |
| 18TY85-006 |  | Analiza i wybór ofert |  | 20d | 2025-05-21 A | 2025-06-20 A | 18TY85-005 | 100% |  |  | 2025-05-16 | 2025-06-12 |  |  | TurboSys | 18TY85 | Mechanic | Zakupy | Dostawa | Joanna | Uk³ad | PM000 | Zespó³-K | Blok | Normalny | Pakiet | L2 |  |  |
| 18TY85-007 |  | Zawarcie umowy / zamówienie |  | 10d | 2025-09-17 A | 2025-10-01 A | 18TY85-006, 18TY85-004 SS, 28BW90-004 (other project) FS+2d | 100% |  |  | 2025-09-16 | 2025-09-29 |  |  | TurboSys | 18TY85 | Mechanic | Zakupy | Dostawa | Joanna | Uk³ad | PM000 | Zespó³-W | Blok | Niski | Pakiet | L1 |  |  |

| ID | WBS | Activity | Duration | Start | Finish | Predecessors | Complete | Planned start | Planned finish | Calendar | AC_Wykonawca | AC_Obiekt | AC_Dyscyplina | AC_Faza | AC_Zakres | AC_Opiekun | AC_Obszar | AC_PP_PM | AC_Zespol | AC_Blok | AC_Priorytet | AC_Pakiet | AC_Poziom | Rewizja dokumentu | Uwagi harmonogramisty |
| --- | --- | --- | --- | --- | --- | --- | --- | --- | --- | --- | --- | --- | --- | --- | --- | --- | --- | --- | --- | --- | --- | --- | --- | --- | --- |
|  | 23QX91 | **23QX91 – Stacja demineralizacji** |  | 2025-02-10 | 2026-08-13 |  |  |  |  |  |  |  |  |  |  |  |  |  |  |  |  |  |  |  |  |
|  | BUDO | **Budowa** |  | 2025-09-08 | 2026-07-20 |  |  |  |  |  |  |  |  |  |  |  |  |  |  |  |  |  |  |  |  |
|  | AKPIA | **AKPiA** |  | 2026-05-21 | 2026-06-04 |  |  |  |  |  |  |  |  |  |  |  |  |  |  |  |  |  |  |  |  |
| 23QX91-171 |  | Monta¿ uk³adów AKPiA | 10d | 2026-05-21 A | 2026-06-04 A | 23QX91-014 SS+5d | 100% | 2026-05-18 | 2026-05-29 | Kalendarz 6-dniowy | Pomorski | 23QX91 | AKPiA | Budowa | Roboty | Piotr | Uk³ad | PM000 | Zespó³-W | Blok | Normalny | Pakiet | L2 |  |  |
|  | ELEKTRYKA | **Elektryka** |  | 2026-05-18 | 2026-06-25 |  |  |  |  |  |  |  |  |  |  |  |  |  |  |  |  |  |  |  |  |
| 23QX91-074 |  | Pod³¹czenia i pomiary – trasa 10 | 9d | 2026-05-18 A | 2026-05-28 A | 23QX91-073 FF | 100% | 2026-05-19 | 2026-05-29 |  | Pomorski | 23QX91 | Elektryc | Budowa | Roboty | Piotr | Uk³ad | PM000 | Zespó³-W | Blok | Normalny | Pakiet | L2 | Rev A |  |
| 23QX91-098 |  | Pod³¹czenia i pomiary – trasa 14 | 10d | 2026-05-19 A | 2026-06-02 A | 23QX91-097 FF | 100% | 2026-05-19 | 2026-06-01 |  | Pomorski | 23QX91 | Elektryc | Budowa | Roboty | Piotr | Uk³ad | PM000 | Zespó³-K | Blok | Normalny | Pakiet | L2 |  | Do weryfikacji z wykonawc¹ |
| 23QX91-170 |  | Pod³¹czenia i pomiary – trasa 26 | 9d | 2026-05-20 A | 2026-06-04 A | 23QX91-169 FF | 100% | 2026-05-20 | 2026-06-01 |  | Pomorski | 23QX91 | Elektryc | Budowa | Roboty | Piotr | Uk³ad | PM000 | Zespó³-W | Blok | Normalny | Pakiet | L2 |  |  |
| 23QX91-121 |  | Uk³adanie kabli – trasa 18 | 12d | 2026-05-22 A | 2026-06-08 A | 23QX91-014 SS+10d | 100% | 2026-05-25 | 2026-06-09 |  | Pomorski | 23QX91 | Elektryc | Budowa | Roboty | Piotr | Uk³ad | PM000 | Zespó³-W | Blok | Wysoki | Pakiet | L2 |  |  |
| 23QX91-145 |  | Uk³adanie kabli – trasa 22 | 9d | 2026-05-22 A | 2026-06-08 A | 23QX91-014 SS+10d | 100% | 2026-05-25 | 2026-06-04 |  | Pomorski | 23QX91 | Elektryc | Budowa | Roboty | Piotr | Uk³ad | PM000 | Zespó³-W | Blok | Normalny | Pakiet | L2 |  |  |
| 23QX91-157 |  | Uk³adanie kabli – trasa 24 | 9d | 2026-05-22 A | 2026-06-03 A | 23QX91-014 SS+10d | 100% | 2026-05-25 | 2026-06-04 |  | Pomorski | 23QX91 | Elektryc | Budowa | Roboty | Piotr | Uk³ad | PM000 | Zespó³-W | Blok | Normalny | Pakiet | L2 |  |  |
| 23QX91-169 |  | Uk³adanie kabli – trasa 26 | 6d | 2026-05-22 A | 2026-06-01 A | 23QX91-014 SS+10d | 100% | 2026-05-25 | 2026-06-01 |  | Pomorski | 23QX91 | Elektryc | Budowa | Roboty | Piotr | Uk³ad | PM000 | Zespó³-K | Blok | Normalny | Pakiet | L2 |  |  |
| 23QX91-037 |  | Uk³adanie kabli – trasa 04 | 15d | 2026-05-25 A | 2026-06-12 A | 23QX91-014 SS+10d | 100% |  |  |  | Pomorski | 23QX91 | Elektryc | Budowa | Roboty | Piotr | Uk³ad | PM000 | Zespó³-K | Blok | Normalny | Pakiet | L2 |  |  |
| 23QX91-110 |  | Pod³¹czenia i pomiary – trasa 16 | 7d | 2026-05-25 A | 2026-06-05 A | 23QX91-109 FF | 100% | 2026-05-22 | 2026-06-01 | Kalendarz 6-dniowy | Pomorski | 23QX91 | Elektryc | Budowa | Roboty | Piotr | Uk³ad | PM000 | Zespó³-W | Blok | Normalny | Pakiet | L2 |  |  |
| 23QX91-061 |  | Uk³adanie kabli – trasa 08 | 14d | 2026-05-26 A | 2026-06-17 A | 23QX91-014 SS+10d | 100% | 2026-05-25 | 2026-06-11 |  | Pomorski | 23QX91 | Elektryc | Budowa | Roboty | Piotr | Uk³ad | PM000 | Zespó³-K | Blok | Krytyczn | Pakiet | L2 | Rev A |  |
| 23QX91-025 |  | Uk³adanie kabli – trasa 02 | 20d | 2026-05-27 A | 2026-06-25 A | 23QX91-014 SS+10d | 100% | 2026-05-25 | 2026-06-19 |  | Pomorski | 23QX91 | Elektryc | Budowa | Roboty | Piotr | Uk³ad | PM000 | Zespó³-W | Blok | Normalny | Pakiet | L2 | Rev A | Czeka na dostawê |
| 23QX91-049 |  | Uk³adanie kabli – trasa 06 | 17d | 2026-05-27 A | 2026-06-18 A | 23QX91-014 SS+10d | 100% | 2026-05-25 | 2026-06-16 |  | Pomorski | 23QX91 | Elektryc | Budowa | Roboty | Piotr | Uk³ad | PM000 | Zespó³-I | Blok | Normalny | Pakiet | L2 |  |  |
| 23QX91-085 |  | Uk³adanie kabli – trasa 12 | 11d | 2026-05-27 A | 2026-06-11 A | 23QX91-014 SS+10d | 100% | 2026-05-25 | 2026-06-08 |  | Pomorski | 23QX91 | Elektryc | Budowa | Roboty | Piotr | Uk³ad | PM000 | Zespó³-K | Blok | Normalny | Pakiet | L2 |  | Bez uwag |
| 23QX91-097 |  | Uk³adanie kabli – trasa 14 | 6d | 2026-05-27 A | 2026-06-04 A | 23QX91-014 SS+10d | 100% | 2026-05-25 | 2026-06-01 |  | Pomorski | 23QX91 | Elektryc | Budowa | Roboty | Piotr | Uk³ad | PM000 | Zespó³-K | Blok | Wysoki | Pakiet | L2 |  |  |
| 23QX91-109 |  | Uk³adanie kabli – trasa 16 | 6d | 2026-05-27 A | 2026-06-03 A | 23QX91-014 SS+10d | 100% | 2026-05-25 | 2026-06-01 |  | Pomorski | 23QX91 | Elektryc | Budowa | Roboty | Piotr | Uk³ad | PM000 | Zespó³-K | Blok | Normalny | Pakiet | L2 | Rev A |  |
| 23QX91-133 |  | Uk³adanie kabli – trasa 20 | 11d | 2026-05-27 A | 2026-06-10 A | 23QX91-014 SS+10d | 100% | 2026-05-25 | 2026-06-08 |  | Pomorski | 23QX91 | Elektryc | Budowa | Roboty | Piotr | Uk³ad | PM000 | Zespó³-K | Blok | Normalny | Pakiet | L2 | Rev A | Ryzyko opóŸnienia |
| 23QX91-073 |  | Uk³adanie kabli – trasa 10 | 5d | 2026-05-28 A | 2026-06-08 A | 23QX91-014 SS+10d | 100% | 2026-05-25 | 2026-05-29 |  | Pomorski | 23QX91 | Elektryc | Budowa | Roboty | Piotr | Uk³ad | PM000 | Zespó³-W | Blok | Normalny | Pakiet | L2 |  |  |
| 23QX91-122 |  | Pod³¹czenia i pomiary – trasa 18 | 6d | 2026-06-02 A | 2026-06-12 A | 23QX91-121 FF | 100% | 2026-06-02 | 2026-06-09 |  | Pomorski | 23QX91 | Elektryc | Budowa | Roboty | Piotr | Uk³ad | PM000 | Zespó³-K | Blok | Normalny | Pakiet | L2 |  |  |
| 23QX91-134 |  | Pod³¹czenia i pomiary – trasa 20 | 8d | 2026-06-02 A | 2026-06-15 A | 23QX91-133 FF | 100% | 2026-05-28 | 2026-06-08 |  | Pomorski | 23QX91 | Elektryc | Budowa | Roboty | Piotr | Uk³ad | PM000 | Zespó³-W | Blok | Normalny | Pakiet | L2 |  | Uzgodnione na koordynacji |
| 23QX91-158 |  | Pod³¹czenia i pomiary – trasa 24 | 3d | 2026-06-03 A | 2026-06-09 A | 23QX91-157 FF | 100% | 2026-06-02 | 2026-06-04 |  | Pomorski | 23QX91 | Elektryc | Budowa | Roboty | Piotr | Uk³ad | PM000 | Zespó³-K | Blok | Niski | Pakiet | L2 | Rev C | Ryzyko opóŸnienia |
| 23QX91-146 |  | Pod³¹czenia i pomiary – trasa 22 | 3d | 2026-06-04 A | 2026-06-08 A | 23QX91-145 FF | 100% | 2026-06-02 | 2026-06-04 | Kalendarz 6-dniowy | Pomorski | 23QX91 | Elektryc | Budowa | Roboty | Piotr | Uk³ad | PM000 | Zespó³-W | Blok | Normalny | Pakiet | L2 |  |  |
| 23QX91-050 |  | Pod³¹czenia i pomiary – trasa 06 | 9d | 2026-06-05 A | 2026-06-17 A | 23QX91-049 FF | 100% | 2026-06-04 | 2026-06-16 |  | Pomorski | 23QX91 | Elektryc | Budowa | Roboty | Piotr | Uk³ad | PM000 | Zespó³-W | Blok | Normalny | Pakiet | L2 |  |  |
| 23QX91-062 |  | Pod³¹czenia i pomiary – trasa 08 | 4d | 2026-06-05 A | 2026-06-12 A | 23QX91-061 FF | 100% | 2026-06-08 | 2026-06-11 |  | Pomorski | 23QX91 | Elektryc | Budowa | Roboty | Piotr | Uk³ad | PM000 | Zespó³-W | Blok | Normalny | Pakiet | L2 |  | Uzgodnione na koordynacji |
| 23QX91-086 |  | Pod³¹czenia i pomiary – trasa 12 | 3d | 2026-06-05 A | 2026-06-10 A | 23QX91-085 FF | 100% | 2026-06-04 | 2026-06-08 |  | Pomorski | 23QX91 | Elektryc | Budowa | Roboty | Piotr | Uk³ad | PM000 | Zespó³-K | Blok | Normalny | Pakiet | L2 |  |  |
| 23QX91-038 |  | Pod³¹czenia i pomiary – trasa 04 | 6d | 2026-06-10 A | 2026-06-18 A | 23QX91-037 FF | 100% | 2026-06-05 | 2026-06-12 |  | Pomorski | 23QX91 | Elektryc | Budowa | Roboty | Piotr | Uk³ad | PM000 | Zespó³-W | Blok | Wysoki | Pakiet | L2 |  |  |
| 23QX91-026 |  | Pod³¹czenia i pomiary – trasa 02 | 7d | 2026-06-12 A | 2026-06-23 A | 23QX91-025 FF | 100% | 2026-06-11 | 2026-06-19 |  | Pomorski | 23QX91 | Elektryc | Budowa | Roboty | Piotr | Uk³ad | PM000 | Zespó³-K | Blok | Normalny | Pakiet | L2 |  | Do weryfikacji z wykonawc¹ |

| ID | WBS | Activity | Type | Duration | Start | Finish | Predecessors | Complete | Actual finish | Planned start | Planned finish | Calendar | Rewizja dokumentu | AC_Wykonawca | AC_Obiekt | AC_Dyscyplina | AC_Faza | AC_Zakres | AC_Opiekun | AC_Obszar | AC_PP_PM | AC_Zespol | AC_Blok | AC_Priorytet | AC_Pakiet | AC_Poziom | Uwagi harmonogramisty |
| --- | --- | --- | --- | --- | --- | --- | --- | --- | --- | --- | --- | --- | --- | --- | --- | --- | --- | --- | --- | --- | --- | --- | --- | --- | --- | --- | --- |
|  | MONTA¯ | **Monta¿** |  |  | 2025-11-17 | 2026-07-16 |  |  |  |  |  |  |  |  |  |  |  |  |  |  |  |  |  |  |  |  |  |
| 23QX91-013 |  | Monta¿ konstrukcji stalowych |  | 33d | 2025-11-17 A | 2026-01-02 A | 23QX91-012 | 100% |  | 2025-11-18 | 2026-01-01 |  | Rev A | Pomorski | 23QX91 | Mechanic | Budowa | Roboty | Piotr | Uk³ad | PM000 | Zespó³-W | Blok | Normalny | Pakiet | L2 |  |
| 23QX91-014 |  | Monta¿ urz¹dzeñ g³ównych |  | 40d | 2026-05-12 A | 2026-07-07 A | 23QX91-013, 23QX91-011 | 100% |  | 2026-05-11 | 2026-07-03 |  | Rev A | Pomorski | 23QX91 | Mechanic | Budowa | Roboty | Piotr | Uk³ad | PM000 | Zespó³-K | Blok | Normalny | Pakiet | L2 |  |
| 23QX91-172 |  | KM: Zakoñczenie monta¿u – Stacja demineralizacji | milestone | 0d | 2026-07-16 A | 2026-07-16 | 23QX91-163, 23QX91-168, 23QX91-170, 23QX91-171, 23QX91-014 | 100% | 2026-07-15 | 2026-07-14 | 2026-07-14 |  | Rev C | Pomorski | 23QX91 | Mechanic | Budowa | Kamieñ | Piotr | Uk³ad | PM000 | Zespó³-E | Blok | Normalny | Pakiet | L2 | Do weryfikacji z wykonawc¹ |
|  | ROBOTY BUD | **Roboty budowlane** |  |  | 2025-09-08 | 2025-11-19 |  |  |  |  |  |  |  |  |  |  |  |  |  |  |  |  |  |  |  |  |  |
| 23QX91-012 |  | Fundamenty i roboty ziemne |  | 51d | 2025-09-08 A | 2025-11-19 A | 23QX91-007 | 100% |  | 2025-09-08 | 2025-11-17 |  |  | Pomorski | 23QX91 | Budowlan | Budowa | Roboty | Piotr | Uk³ad | PM000 | Zespó³-W | Blok | Normalny | Pakiet | L2 |  |
|  | RUROCI¥GI | **Ruroci¹gi** |  |  | 2025-11-19 | 2026-07-20 |  |  |  |  |  |  |  |  |  |  |  |  |  |  |  |  |  |  |  |  |  |
|  | SEKCJA 01 | **Sekcja 01** |  |  | 2025-11-19 | 2026-07-13 |  |  |  |  |  |  |  |  |  |  |  |  |  |  |  |  |  |  |  |  |  |
| 23QX91-015 |  | Prefabrykacja ruroci¹gów – Sekcja 01 |  | 8.3d | 2025-11-19 A | 2025-11-28 A | 23QX91-012 | 100% |  | 2025-11-18 | 2025-11-27 |  |  | Pomorski | 23QX91 | Ruroci¹g | Budowa | Roboty | Piotr | Uk³ad | PM000 | Zespó³-K | Blok | Normalny | Pakiet | L2 | Do weryfikacji z wykonawc¹ |
| 23QX91-016 |  | Monta¿ ruroci¹gów – Sekcja 01 |  | 20.4d | 2026-05-19 A | 2026-06-16 A | 23QX91-015, 23QX91-014 SS+7d | 100% |  | 2026-05-20 | 2026-06-16 |  |  | Pomorski | 23QX91 | Ruroci¹g | Budowa | Roboty | Piotr | Uk³ad | PM000 | Zespó³-K | Blok | Normalny | Pakiet | L2 |  |
| 23QX91-017 |  | Próba ciœnieniowa – Sekcja 01 |  | 4d | 2026-06-19 A | 2026-06-29 A | 23QX91-016 | 100% |  | 2026-06-17 | 2026-06-22 |  |  | Pomorski | 23QX91 | Ruroci¹g | Budowa | Roboty | Piotr | Uk³ad | PM000 | Zespó³-K | Blok | Normalny | Pakiet | L2 |  |
| 23QX91-018 |  | Izolacje – Sekcja 01 |  | 10d | 2026-06-24 A | 2026-07-07 A | 23QX91-017 | 100% |  | 2026-06-23 | 2026-07-06 | Kalendarz 6-dniowy | Rev A | Pomorski | 23QX91 | Ruroci¹g | Budowa | Roboty | Piotr | Uk³ad | PM000 | Zespó³-K | Blok | Wysoki | Pakiet | L2 |  |
| 23QX91-019 |  | Malowanie i oznakowanie – Sekcja 01 |  | 6d | 2026-07-01 A | 2026-07-13 A | 23QX91-018 FF+2d | 100% |  | 2026-07-01 | 2026-07-08 |  |  | Pomorski | 23QX91 | Ruroci¹g | Budowa | Roboty | Piotr | Uk³ad | PM000 | Zespó³-W | Blok | Wysoki | Pakiet | L2 |  |
|  | SEKCJA 02 | **Sekcja 02** |  |  | 2025-11-28 | 2026-06-08 |  |  |  |  |  |  |  |  |  |  |  |  |  |  |  |  |  |  |  |  |  |
| 23QX91-020 |  | Prefabrykacja ruroci¹gów – Sekcja 02 |  | 6.7d | 2025-11-28 A | 2025-12-09 A | 23QX91-012, 23QX91-015 SS+5d | 100% |  | 2025-11-25 | 2025-12-02 |  |  | Pomorski | 23QX91 | Ruroci¹g | Budowa | Roboty | Piotr | Uk³ad | PM000 | Zespó³-K | Blok | Wysoki | Pakiet | L2 |  |
| 23QX91-021 |  | Monta¿ ruroci¹gów – Sekcja 02 |  | 9.6d | 2026-05-15 A | 2026-06-01 A | 23QX91-020, 23QX91-014 SS+1d | 100% |  | 2026-05-12 | 2026-05-22 |  |  | Pomorski | 23QX91 | Ruroci¹g | Budowa | Roboty | Piotr | Uk³ad | PM000 | Zespó³-W | Blok | Normalny | Pakiet | L2 | Bez uwag |
| 23QX91-023 |  | Izolacje – Sekcja 02 |  | 5d | 2026-05-27 A | 2026-06-02 A | 23QX91-022 | 100% |  |  |  |  |  | Pomorski | 23QX91 | Ruroci¹g | Budowa | Roboty | Piotr | Uk³ad | PM000 | Zespó³-K | Blok | Normalny | Pakiet | L2 |  |
| 23QX91-022 |  | Próba ciœnieniowa – Sekcja 02 |  | 2d | 2026-05-28 A | 2026-06-01 A | 23QX91-021 | 100% |  | 2026-05-25 | 2026-05-26 |  | Rev B | Pomorski | 23QX91 | Ruroci¹g | Budowa | Roboty | Piotr | Uk³ad | PM000 | Zespó³-W | Blok | Normalny | Pakiet | L2 |  |
| 23QX91-024 |  | Malowanie i oznakowanie – Sekcja 02 |  | 6d | 2026-05-29 A | 2026-06-08 A | 23QX91-023 FF+2d | 100% |  | 2026-05-28 | 2026-06-04 |  | Rev B | Pomorski | 23QX91 | Ruroci¹g | Budowa | Roboty | Piotr | Uk³ad | PM000 | Zespó³-W | Blok | Niski | Pakiet | L2 |  |
|  | SEKCJA 03 | **Sekcja 03** |  |  | 2025-12-03 | 2026-07-06 |  |  |  |  |  |  |  |  |  |  |  |  |  |  |  |  |  |  |  |  |  |
|  | PODSEKCJA | **Podsekcja 03.A** |  |  | 2025-12-03 | 2026-07-06 |  |  |  |  |  |  |  |  |  |  |  |  |  |  |  |  |  |  |  |  |  |
| 23QX91-027 |  | Prefabrykacja ruroci¹gów – Sekcja 03 |  | 10.3d | 2025-12-03 A | 2025-12-18 A | 23QX91-012, 23QX91-020 SS+5d | 100% |  | 2025-12-02 | 2025-12-15 |  |  | Pomorski | 23QX91 | Ruroci¹g | Budowa | Roboty | Piotr | Uk³ad | PM000 | Zespó³-K | Blok | Normalny | Pakiet | L2 |  |
| 23QX91-028 |  | Monta¿ ruroci¹gów – Sekcja 03 |  | 20.6d | 2026-05-18 A | 2026-06-16 A | 23QX91-027, 23QX91-014 SS+6d | 100% |  | 2026-05-19 | 2026-06-15 |  |  | Pomorski | 23QX91 | Ruroci¹g | Budowa | Roboty | Piotr | Uk³ad | PM000 | Zespó³-K | Blok | Normalny | Pakiet | L2 | Uzgodnione na koordynacji |
| 23QX91-029 |  | Próba ciœnieniowa – Sekcja 03 |  | 4d | 2026-06-15 A | 2026-06-22 A | 23QX91-028 | 100% |  | 2026-06-16 | 2026-06-19 |  |  | Pomorski | 23QX91 | Ruroci¹g | Budowa | Roboty | Piotr | Uk³ad | PM000 | Zespó³-W | Blok | Wysoki | Pakiet | L2 | Bez uwag |
| 23QX91-030 |  | Izolacje – Sekcja 03 |  | 7d | 2026-06-23 A | 2026-07-06 A | 23QX91-029 | 100% |  | 2026-06-22 | 2026-06-30 | Kalendarz 6-dniowy |  | Pomorski | 23QX91 | Ruroci¹g | Budowa | Roboty | Piotr | Uk³ad | PM000 | Zespó³-W | Blok | Normalny | Pakiet | L2 | Czeka na dostawê |
| 23QX91-031 |  | Malowanie i oznakowanie – Sekcja 03 |  | 4d | 2026-06-26 A | 2026-07-02 A | 23QX91-030 FF+2d | 100% |  | 2026-06-29 | 2026-07-02 |  |  | Pomorski | 23QX91 | Ruroci¹g | Budowa | Roboty | Piotr | Uk³ad | PM000 | Zespó³-K | Blok | Normalny | Pakiet | L2 |  |

| ID | WBS | Activity | Duration | Start | Finish | Predecessors | Complete | Planned start | Planned finish | Rewizja dokumentu | AC_Wykonawca | AC_Obiekt | AC_Dyscyplina | AC_Faza | AC_Zakres | AC_Opiekun | AC_Obszar | AC_PP_PM | AC_Zespol | AC_Blok | AC_Priorytet | AC_Pakiet | AC_Poziom | Uwagi harmonogramisty |
| --- | --- | --- | --- | --- | --- | --- | --- | --- | --- | --- | --- | --- | --- | --- | --- | --- | --- | --- | --- | --- | --- | --- | --- | --- |
|  | SEKCJA 04 | **Sekcja 04** |  | 2025-12-12 | 2026-07-02 |  |  |  |  |  |  |  |  |  |  |  |  |  |  |  |  |  |  |  |
| 23QX91-032 |  | Prefabrykacja ruroci¹gów – Sekcja 04 | 4.1d | 2025-12-12 A | 2025-12-17 A | 23QX91-012, 23QX91-027 SS+5d | 100% | 2025-12-09 | 2025-12-12 | Rev A | Pomorski | 23QX91 | Ruroci¹g | Budowa | Roboty | Piotr | Uk³ad | PM000 | Zespó³-K | Blok | Krytyczn | Pakiet | L2 |  |
| 23QX91-033 |  | Monta¿ ruroci¹gów – Sekcja 04 | 16.2d | 2026-05-21 A | 2026-06-12 A | 23QX91-032, 23QX91-014 SS+9d | 100% | 2026-05-22 | 2026-06-12 |  | Pomorski | 23QX91 | Ruroci¹g | Budowa | Roboty | Piotr | Uk³ad | PM000 | Zespó³-K | Blok | Normalny | Pakiet | L2 |  |
| 23QX91-034 |  | Próba ciœnieniowa – Sekcja 04 | 6d | 2026-06-18 A | 2026-06-25 A | 23QX91-033 | 100% | 2026-06-15 | 2026-06-22 |  | Pomorski | 23QX91 | Ruroci¹g | Budowa | Roboty | Piotr | Uk³ad | PM000 | Zespó³-W | Blok | Normalny | Pakiet | L2 |  |
| 23QX91-035 |  | Izolacje – Sekcja 04 | 4d | 2026-06-24 A | 2026-06-29 A | 23QX91-034 | 100% | 2026-06-23 | 2026-06-26 |  | Pomorski | 23QX91 | Ruroci¹g | Budowa | Roboty | Piotr | Uk³ad | PM000 | Zespó³-W | Blok | Niski | Pakiet | L2 | Ryzyko opóŸnienia |
| 23QX91-036 |  | Malowanie i oznakowanie – Sekcja 04 | 4d | 2026-06-25 A | 2026-07-02 A | 23QX91-035 FF+2d | 100% | 2026-06-25 | 2026-06-30 |  | Pomorski | 23QX91 | Ruroci¹g | Budowa | Roboty | Piotr | Uk³ad | PM000 | Zespó³-W | Blok | Wysoki | Pakiet | L2 |  |
|  | SEKCJA 05 | **Sekcja 05** |  | 2025-12-16 | 2026-06-29 |  |  |  |  |  |  |  |  |  |  |  |  |  |  |  |  |  |  |  |
| 23QX91-039 |  | Prefabrykacja ruroci¹gów – Sekcja 05 | 14.3d | 2025-12-16 A | 2026-01-06 A | 23QX91-012, 23QX91-032 SS+5d | 100% | 2025-12-16 | 2026-01-02 |  | Pomorski | 23QX91 | Ruroci¹g | Budowa | Roboty | Piotr | Uk³ad | PM000 | Zespó³-K | Blok | Normalny | Pakiet | L2 | Do weryfikacji z wykonawc¹ |
| 23QX91-040 |  | Monta¿ ruroci¹gów – Sekcja 05 | 13.2d | 2026-05-18 A | 2026-06-08 A | 23QX91-039, 23QX91-014 SS+3d | 100% | 2026-05-14 | 2026-06-01 |  | Pomorski | 23QX91 | Ruroci¹g | Budowa | Roboty | Piotr | Uk³ad | PM000 | Zespó³-W | Blok | Normalny | Pakiet | L2 |  |
| 23QX91-041 |  | Próba ciœnieniowa – Sekcja 05 | 4d | 2026-06-03 A | 2026-06-11 A | 23QX91-040 | 100% | 2026-06-02 | 2026-06-05 | Rev C | Pomorski | 23QX91 | Ruroci¹g | Budowa | Roboty | Piotr | Uk³ad | PM000 | Zespó³-K | Blok | Normalny | Pakiet | L2 | Ryzyko opóŸnienia |
| 23QX91-042 |  | Izolacje – Sekcja 05 | 11d | 2026-06-10 A | 2026-06-29 A | 23QX91-041 | 100% | 2026-06-08 | 2026-06-22 |  | Pomorski | 23QX91 | Ruroci¹g | Budowa | Roboty | Piotr | Uk³ad | PM000 | Zespó³-K | Blok | Normalny | Pakiet | L2 |  |
| 23QX91-043 |  | Malowanie i oznakowanie – Sekcja 05 | 8d | 2026-06-16 A | 2026-06-25 A | 23QX91-042 FF+2d | 100% | 2026-06-15 | 2026-06-24 |  | Pomorski | 23QX91 | Ruroci¹g | Budowa | Roboty | Piotr | Uk³ad | PM000 | Zespó³-K | Blok | Normalny | Pakiet | L2 |  |
|  | SEKCJA 06 | **Sekcja 06** |  | 2025-12-25 | 2026-06-23 |  |  |  |  |  |  |  |  |  |  |  |  |  |  |  |  |  |  |  |
|  | PODSEKCJA | **Podsekcja 06.A** |  | 2025-12-25 | 2026-06-23 |  |  |  |  |  |  |  |  |  |  |  |  |  |  |  |  |  |  |  |
| 23QX91-044 |  | Prefabrykacja ruroci¹gów – Sekcja 06 | 5.6d | 2025-12-25 A | 2025-12-31 A | 23QX91-012, 23QX91-039 SS+5d | 100% | 2025-12-23 | 2025-12-29 | Rev B | Pomorski | 23QX91 | Ruroci¹g | Budowa | Roboty | Piotr | Uk³ad | PM000 | Zespó³-K | Blok | Normalny | Pakiet | L2 | Czeka na dostawê |
| 23QX91-045 |  | Monta¿ ruroci¹gów – Sekcja 06 | 16d | 2026-05-19 A | 2026-06-12 A | 23QX91-044, 23QX91-014 SS+4d | 100% | 2026-05-15 | 2026-06-05 | Rev B | Pomorski | 23QX91 | Ruroci¹g | Budowa | Roboty | Piotr | Uk³ad | PM000 | Zespó³-I | Blok | Normalny | Pakiet | L2 |  |
| 23QX91-046 |  | Próba ciœnieniowa – Sekcja 06 | 2d | 2026-06-11 A | 2026-06-15 A | 23QX91-045 | 100% | 2026-06-08 | 2026-06-09 |  | Pomorski | 23QX91 | Ruroci¹g | Budowa | Roboty | Piotr | Uk³ad | PM000 | Zespó³-K | Blok | Normalny | Pakiet | L2 |  |
| 23QX91-047 |  | Izolacje – Sekcja 06 | 5d | 2026-06-11 A | 2026-06-17 A | 23QX91-046 | 100% | 2026-06-10 | 2026-06-16 |  | Pomorski | 23QX91 | Ruroci¹g | Budowa | Roboty | Piotr | Uk³ad | PM000 | Zespó³-K | Blok | Normalny | Pakiet | L2 |  |
| 23QX91-048 |  | Malowanie i oznakowanie – Sekcja 06 | 2d | 2026-06-22 A | 2026-06-23 A | 23QX91-047 FF+2d | 100% | 2026-06-17 | 2026-06-18 |  | Pomorski | 23QX91 | Ruroci¹g | Budowa | Roboty | Piotr | Uk³ad | PM000 | Zespó³-K | Blok | Wysoki | Pakiet | L2 | Do weryfikacji z wykonawc¹ |
|  | SEKCJA 07 | **Sekcja 07** |  | 2025-12-31 | 2026-07-01 |  |  |  |  |  |  |  |  |  |  |  |  |  |  |  |  |  |  |  |
| 23QX91-051 |  | Prefabrykacja ruroci¹gów – Sekcja 07 | 14d | 2025-12-31 A | 2026-01-22 A | 23QX91-012, 23QX91-044 SS+5d | 100% | 2025-12-30 | 2026-01-16 | Rev C | Pomorski | 23QX91 | Ruroci¹g | Budowa | Roboty | Piotr | Uk³ad | PM000 | Zespó³-K | Blok | Wysoki | Pakiet | L2 |  |
| 23QX91-052 |  | Monta¿ ruroci¹gów – Sekcja 07 | 22.5d | 2026-05-18 A | 2026-06-16 A | 23QX91-051, 23QX91-014 SS+5d | 100% |  |  |  | Pomorski | 23QX91 | Ruroci¹g | Budowa | Roboty | Piotr | Uk³ad | PM000 | Zespó³-K | Blok | Normalny | Pakiet | L2 |  |
| 23QX91-053 |  | Próba ciœnieniowa – Sekcja 07 | 4d | 2026-06-16 A | 2026-06-22 A | 23QX91-052 | 100% | 2026-06-17 | 2026-06-22 | Rev A | Pomorski | 23QX91 | Ruroci¹g | Budowa | Roboty | Piotr | Uk³ad | PM000 | Zespó³-W | Blok | Normalny | Pakiet | L2 |  |
| 23QX91-055 |  | Malowanie i oznakowanie – Sekcja 07 | 6d | 2026-06-23 A | 2026-07-01 A | 23QX91-054 FF+2d | 100% | 2026-06-22 | 2026-06-29 |  | Pomorski | 23QX91 | Ruroci¹g | Budowa | Roboty | Piotr | Uk³ad | PM000 | Zespó³-K | Blok | Wysoki | Pakiet | L2 |  |
| 23QX91-054 |  | Izolacje – Sekcja 07 | 3d | 2026-06-24 A | 2026-06-30 A | 23QX91-053 | 100% | 2026-06-23 | 2026-06-25 |  | Pomorski | 23QX91 | Ruroci¹g | Budowa | Roboty | Piotr | Uk³ad | PM000 | Zespó³-W | Blok | Wysoki | Pakiet | L2 |  |

| ID | WBS | Activity | Duration | Start | Finish | Predecessors | Complete | Planned start | Planned finish | Calendar | AC_Wykonawca | AC_Obiekt | AC_Dyscyplina | AC_Faza | AC_Zakres | AC_Opiekun | AC_Obszar | AC_PP_PM | AC_Zespol | AC_Blok | AC_Priorytet | AC_Pakiet | AC_Poziom | Rewizja dokumentu | Uwagi harmonogramisty |
| --- | --- | --- | --- | --- | --- | --- | --- | --- | --- | --- | --- | --- | --- | --- | --- | --- | --- | --- | --- | --- | --- | --- | --- | --- | --- |
|  | SEKCJA 08 | **Sekcja 08** |  | 2026-01-07 | 2026-07-09 |  |  |  |  |  |  |  |  |  |  |  |  |  |  |  |  |  |  |  |  |
| 23QX91-056 |  | Prefabrykacja ruroci¹gów – Sekcja 08 | 4.1d | 2026-01-07 A | 2026-01-12 A | 23QX91-012, 23QX91-051 SS+5d | 100% | 2026-01-06 | 2026-01-09 |  | Pomorski | 23QX91 | Ruroci¹g | Budowa | Roboty | Piotr | Uk³ad | PM000 | Zespó³-K | Blok | Normalny | Pakiet | L2 |  |  |
| 23QX91-057 |  | Monta¿ ruroci¹gów – Sekcja 08 | 16.4d | 2026-05-15 A | 2026-06-05 A | 23QX91-056, 23QX91-014 SS+5d | 100% | 2026-05-18 | 2026-06-08 |  | Pomorski | 23QX91 | Ruroci¹g | Budowa | Roboty | Piotr | Uk³ad | PM200 | Zespó³-I | Blok | Normalny | Pakiet | L2 | Rev C |  |
| 23QX91-058 |  | Próba ciœnieniowa – Sekcja 08 | 5d | 2026-06-11 A | 2026-06-17 A | 23QX91-057 | 100% | 2026-06-09 | 2026-06-15 |  | Pomorski | 23QX91 | Ruroci¹g | Budowa | Roboty | Piotr | Uk³ad | PM000 | Zespó³-E | Blok | Wysoki | Pakiet | L2 |  | Ryzyko opóŸnienia |
| 23QX91-059 |  | Izolacje – Sekcja 08 | 12d | 2026-06-16 A | 2026-07-01 A | 23QX91-058 | 100% |  |  |  | Pomorski | 23QX91 | Ruroci¹g | Budowa | Roboty | Piotr | Uk³ad | PM000 | Zespó³-W | Blok | Wysoki | Pakiet | L2 |  | Czeka na dostawê |
| 23QX91-060 |  | Malowanie i oznakowanie – Sekcja 08 | 7d | 2026-06-30 A | 2026-07-09 A | 23QX91-059 FF+2d | 100% | 2026-06-25 | 2026-07-03 |  | Pomorski | 23QX91 | Ruroci¹g | Budowa | Roboty | Piotr | Uk³ad | PM000 | Zespó³-K | Blok | Wysoki | Pakiet | L2 | Rev B |  |
|  | SEKCJA 09 | **Sekcja 09** |  | 2026-01-14 | 2026-07-20 |  |  |  |  |  |  |  |  |  |  |  |  |  |  |  |  |  |  |  |  |
|  | PODSEKCJA | **Podsekcja 09.A** |  | 2026-01-14 | 2026-07-20 |  |  |  |  |  |  |  |  |  |  |  |  |  |  |  |  |  |  |  |  |
| 23QX91-063 |  | Prefabrykacja ruroci¹gów – Sekcja 09 | 9.2d | 2026-01-14 A | 2026-01-29 A | 23QX91-012, 23QX91-056 SS+5d | 100% | 2026-01-13 | 2026-01-23 |  | Pomorski | 23QX91 | Ruroci¹g | Budowa | Roboty | Piotr | Uk³ad | PM000 | Zespó³-W | Blok | Normalny | Pakiet | L2 |  | Do weryfikacji z wykonawc¹ |
| 23QX91-064 |  | Monta¿ ruroci¹gów – Sekcja 09 | 24.3d | 2026-05-27 A | 2026-07-02 A | 23QX91-063, 23QX91-014 SS+10d | 100% | 2026-05-25 | 2026-06-25 |  | Pomorski | 23QX91 | Ruroci¹g | Budowa | Roboty | Piotr | Uk³ad | PM000 | Zespó³-W | Blok | Normalny | Pakiet | L2 | Rev C | Bez uwag |
| 23QX91-065 |  | Próba ciœnieniowa – Sekcja 09 | 5d | 2026-06-30 A | 2026-07-07 A | 23QX91-064 | 100% | 2026-06-26 | 2026-07-02 |  | Pomorski | 23QX91 | Ruroci¹g | Budowa | Roboty | Piotr | Uk³ad | PM000 | Zespó³-I | Blok | Normalny | Pakiet | L2 | Rev B |  |
| 23QX91-066 |  | Izolacje – Sekcja 09 | 7d | 2026-07-06 A | 2026-07-16 A | 23QX91-065 | 100% | 2026-07-03 | 2026-07-13 | Kalendarz 6-dniowy | Pomorski | 23QX91 | Ruroci¹g | Budowa | Roboty | Piotr | Uk³ad | PM000 | Zespó³-W | Blok | Niski | Pakiet | L2 |  |  |
| 23QX91-067 |  | Malowanie i oznakowanie – Sekcja 09 | 8d | 2026-07-06 A | 2026-07-20 A | 23QX91-066 FF+2d | 100% | 2026-07-06 | 2026-07-15 |  | Pomorski | 23QX91 | Ruroci¹g | Budowa | Roboty | Piotr | Uk³ad | PM000 | Zespó³-K | Blok | Normalny | Pakiet | L2 |  |  |
|  | SEKCJA 10 | **Sekcja 10** |  | 2026-01-19 | 2026-06-24 |  |  |  |  |  |  |  |  |  |  |  |  |  |  |  |  |  |  |  |  |
| 23QX91-068 |  | Prefabrykacja ruroci¹gów – Sekcja 10 | 11.5d | 2026-01-19 A | 2026-02-05 A | 23QX91-012, 23QX91-063 SS+5d | 100% | 2026-01-20 | 2026-02-03 | Kalendarz 6-dniowy | Pomorski | 23QX91 | Ruroci¹g | Budowa | Roboty | Piotr | Uk³ad | PM000 | Zespó³-W | Blok | Normalny | Pakiet | L2 | Rev C |  |
| 23QX91-069 |  | Monta¿ ruroci¹gów – Sekcja 10 | 9d | 2026-05-20 A | 2026-06-01 A | 23QX91-068, 23QX91-014 SS+7d | 100% |  |  |  | Pomorski | 23QX91 | Ruroci¹g | Budowa | Roboty | Piotr | Uk³ad | PM000 | Zespó³-W | Blok | Normalny | Pakiet | L2 |  | Czeka na dostawê |
| 23QX91-070 |  | Próba ciœnieniowa – Sekcja 10 | 3d | 2026-06-03 A | 2026-06-09 A | 23QX91-069 | 100% | 2026-06-02 | 2026-06-04 |  | Pomorski | 23QX91 | Ruroci¹g | Budowa | Roboty | Piotr | Uk³ad | PM300 | Zespó³-I | Blok | Normalny | Pakiet | L2 |  |  |
| 23QX91-071 |  | Izolacje – Sekcja 10 | 10d | 2026-06-04 A | 2026-06-22 A | 23QX91-070 | 100% | 2026-06-05 | 2026-06-18 |  | Pomorski | 23QX91 | Ruroci¹g | Budowa | Roboty | Piotr | Uk³ad | PM000 | Zespó³-W | Blok | Normalny | Pakiet | L2 | Rev B |  |
| 23QX91-072 |  | Malowanie i oznakowanie – Sekcja 10 | 7d | 2026-06-12 A | 2026-06-24 A | 23QX91-071 FF+2d | 100% | 2026-06-12 | 2026-06-22 |  | Pomorski | 23QX91 | Ruroci¹g | Budowa | Roboty | Piotr | Uk³ad | PM000 | Zespó³-K | Blok | Niski | Pakiet | L2 | Rev C | Ryzyko opóŸnienia |
|  | SEKCJA 11 | **Sekcja 11** |  | 2026-01-26 | 2026-06-12 |  |  |  |  |  |  |  |  |  |  |  |  |  |  |  |  |  |  |  |  |
| 23QX91-075 |  | Prefabrykacja ruroci¹gów – Sekcja 11 | 3.3d | 2026-01-26 A | 2026-02-02 A | 23QX91-012, 23QX91-068 SS+5d | 100% | 2026-01-27 | 2026-01-29 |  | Pomorski | 23QX91 | Ruroci¹g | Budowa | Roboty | Piotr | Uk³ad | PM000 | Zespó³-W | Blok | Normalny | Pakiet | L2 |  |  |
| 23QX91-076 |  | Monta¿ ruroci¹gów – Sekcja 11 | 6.4d | 2026-05-27 A | 2026-06-04 A | 23QX91-075, 23QX91-014 SS+10d | 100% | 2026-05-25 | 2026-06-01 |  | Pomorski | 23QX91 | Ruroci¹g | Budowa | Roboty | Piotr | Uk³ad | PM000 | Zespó³-W | Blok | Wysoki | Pakiet | L2 |  |  |
| 23QX91-077 |  | Próba ciœnieniowa – Sekcja 11 | 2d | 2026-06-01 A | 2026-06-04 A | 23QX91-076 | 100% | 2026-06-02 | 2026-06-03 |  | Pomorski | 23QX91 | Ruroci¹g | Budowa | Roboty | Piotr | Uk³ad | PM000 | Zespó³-K | Blok | Normalny | Pakiet | L2 |  |  |
| 23QX91-079 |  | Malowanie i oznakowanie – Sekcja 11 | 8d | 2026-06-02 A | 2026-06-12 A | 23QX91-078 FF+2d | 100% | 2026-06-02 | 2026-06-11 |  | Pomorski | 23QX91 | Ruroci¹g | Budowa | Roboty | Piotr | Uk³ad | PM000 | Zespó³-W | Blok | Normalny | Pakiet | L2 |  |  |
| 23QX91-078 |  | Izolacje – Sekcja 11 | 4d | 2026-06-08 A | 2026-06-11 A | 23QX91-077 | 100% | 2026-06-04 | 2026-06-09 |  | Pomorski | 23QX91 | Ruroci¹g | Budowa | Roboty | Piotr | Uk³ad | PM300 | Zespó³-I | Blok | Wysoki | Pakiet | L2 | Rev A |  |

| ID | WBS | Activity | Duration | Start | Finish | Predecessors | Complete | Planned start | Planned finish | Uwagi harmonogramisty | Rewizja dokumentu | AC_Wykonawca | AC_Obiekt | AC_Dyscyplina | AC_Faza | AC_Zakres | AC_Opiekun | AC_Obszar | AC_PP_PM | AC_Zespol | AC_Blok | AC_Priorytet | AC_Pakiet | AC_Poziom |
| --- | --- | --- | --- | --- | --- | --- | --- | --- | --- | --- | --- | --- | --- | --- | --- | --- | --- | --- | --- | --- | --- | --- | --- | --- |
|  | SEKCJA 12 | **Sekcja 12** |  | 2026-02-02 | 2026-06-29 |  |  |  |  |  |  |  |  |  |  |  |  |  |  |  |  |  |  |  |
|  | PODSEKCJA | **Podsekcja 12.A** |  | 2026-02-02 | 2026-06-29 |  |  |  |  |  |  |  |  |  |  |  |  |  |  |  |  |  |  |  |
| 23QX91-080 |  | Prefabrykacja ruroci¹gów – Sekcja 12 | 9.4d | 2026-02-02 A | 2026-02-13 A | 23QX91-012, 23QX91-075 SS+5d | 100% | 2026-02-03 | 2026-02-13 | Do weryfikacji z wykonawc¹ | Rev B | Pomorski | 23QX91 | Ruroci¹g | Budowa | Roboty | Piotr | Uk³ad | PM100 | Zespó³-E | Blok | Normalny | Pakiet | L2 |
| 23QX91-081 |  | Monta¿ ruroci¹gów – Sekcja 12 | 19.6d | 2026-05-11 A | 2026-06-09 A | 23QX91-080, 23QX91-014 SS | 100% | 2026-05-11 | 2026-06-04 |  |  | Pomorski | 23QX91 | Ruroci¹g | Budowa | Roboty | Piotr | Uk³ad | PM000 | Zespó³-W | Blok | Wysoki | Pakiet | L2 |
| 23QX91-082 |  | Próba ciœnieniowa – Sekcja 12 | 5d | 2026-06-04 A | 2026-06-11 A | 23QX91-081 | 100% | 2026-06-05 | 2026-06-11 |  |  | Pomorski | 23QX91 | Ruroci¹g | Budowa | Roboty | Piotr | Uk³ad | PM000 | Zespó³-K | Blok | Normalny | Pakiet | L2 |
| 23QX91-083 |  | Izolacje – Sekcja 12 | 7d | 2026-06-17 A | 2026-06-25 A | 23QX91-082 | 100% | 2026-06-12 | 2026-06-22 |  |  | Pomorski | 23QX91 | Ruroci¹g | Budowa | Roboty | Piotr | Uk³ad | PM000 | Zespó³-W | Blok | Wysoki | Pakiet | L2 |
| 23QX91-084 |  | Malowanie i oznakowanie – Sekcja 12 | 6d | 2026-06-22 A | 2026-06-29 A | 23QX91-083 FF+2d | 100% | 2026-06-17 | 2026-06-24 |  | Rev C | Pomorski | 23QX91 | Ruroci¹g | Budowa | Roboty | Piotr | Uk³ad | PM000 | Zespó³-K | Blok | Normalny | Pakiet | L2 |
|  | SEKCJA 13 | **Sekcja 13** |  | 2026-02-12 | 2026-06-25 |  |  |  |  |  |  |  |  |  |  |  |  |  |  |  |  |  |  |  |
| 23QX91-087 |  | Prefabrykacja ruroci¹gów – Sekcja 13 | 8.1d | 2026-02-12 A | 2026-02-26 A | 23QX91-012, 23QX91-080 SS+5d | 100% | 2026-02-10 | 2026-02-19 |  | Rev C | Pomorski | 23QX91 | Ruroci¹g | Budowa | Roboty | Piotr | Uk³ad | PM000 | Zespó³-W | Blok | Normalny | Pakiet | L2 |
| 23QX91-088 |  | Monta¿ ruroci¹gów – Sekcja 13 | 18.7d | 2026-05-12 A | 2026-06-05 A | 23QX91-087, 23QX91-014 SS | 100% | 2026-05-11 | 2026-06-03 |  |  | Pomorski | 23QX91 | Ruroci¹g | Budowa | Roboty | Piotr | Uk³ad | PM000 | Zespó³-W | Blok | Normalny | Pakiet | L2 |
| 23QX91-089 |  | Próba ciœnieniowa – Sekcja 13 | 3d | 2026-06-05 A | 2026-06-12 A | 23QX91-088 | 100% | 2026-06-04 | 2026-06-08 |  | Rev A | Pomorski | 23QX91 | Ruroci¹g | Budowa | Roboty | Piotr | Uk³ad | PM000 | Zespó³-K | Blok | Wysoki | Pakiet | L2 |
| 23QX91-090 |  | Izolacje – Sekcja 13 | 9d | 2026-06-10 A | 2026-06-25 A | 23QX91-089 | 100% | 2026-06-09 | 2026-06-19 | Do weryfikacji z wykonawc¹ |  | Pomorski | 23QX91 | Ruroci¹g | Budowa | Roboty | Piotr | Uk³ad | PM000 | Zespó³-K | Blok | Normalny | Pakiet | L2 |
| 23QX91-091 |  | Malowanie i oznakowanie – Sekcja 13 | 8d | 2026-06-11 A | 2026-06-23 A | 23QX91-090 FF+2d | 100% | 2026-06-12 | 2026-06-23 |  |  | Pomorski | 23QX91 | Ruroci¹g | Budowa | Roboty | Piotr | Uk³ad | PM000 | Zespó³-K | Blok | Normalny | Pakiet | L2 |
|  | SEKCJA 14 | **Sekcja 14** |  | 2026-02-20 | 2026-06-12 |  |  |  |  |  |  |  |  |  |  |  |  |  |  |  |  |  |  |  |
| 23QX91-092 |  | Prefabrykacja ruroci¹gów – Sekcja 14 | 14.5d | 2026-02-20 A | 2026-03-12 A | 23QX91-012, 23QX91-087 SS+5d | 100% | 2026-02-17 | 2026-03-06 | Uzgodnione na koordynacji |  | Pomorski | 23QX91 | Ruroci¹g | Budowa | Roboty | Piotr | Uk³ad | PM000 | Zespó³-W | Blok | Normalny | Pakiet | L2 |
| 23QX91-093 |  | Monta¿ ruroci¹gów – Sekcja 14 | 9.8d | 2026-05-19 A | 2026-05-29 A | 23QX91-092, 23QX91-014 SS+5d | 100% | 2026-05-18 | 2026-05-28 | Bez uwag | Rev B | Pomorski | 23QX91 | Ruroci¹g | Budowa | Roboty | Piotr | Uk³ad | PM000 | Zespó³-W | Blok | Normalny | Pakiet | L2 |
| 23QX91-094 |  | Próba ciœnieniowa – Sekcja 14 | 2d | 2026-05-28 A | 2026-06-03 A | 23QX91-093 | 100% | 2026-05-29 | 2026-06-01 | Czeka na dostawê | Rev B | Pomorski | 23QX91 | Ruroci¹g | Budowa | Roboty | Piotr | Uk³ad | PM000 | Zespó³-K | Blok | Normalny | Pakiet | L2 |
| 23QX91-095 |  | Izolacje – Sekcja 14 | 7d | 2026-06-01 A | 2026-06-12 A | 23QX91-094 | 100% | 2026-06-02 | 2026-06-10 | Do weryfikacji z wykonawc¹ | Rev A | Pomorski | 23QX91 | Ruroci¹g | Budowa | Roboty | Piotr | Uk³ad | PM000 | Zespó³-W | Blok | Normalny | Pakiet | L2 |
| 23QX91-096 |  | Malowanie i oznakowanie – Sekcja 14 | 3d | 2026-06-10 A | 2026-06-12 A | 23QX91-095 FF+2d | 100% |  |  |  | Rev B | Pomorski | 23QX91 | Ruroci¹g | Budowa | Roboty | Piotr | Uk³ad | PM000 | Zespó³-W | Blok | Normalny | Pakiet | L2 |
|  | SEKCJA 15 | **Sekcja 15** |  | 2026-02-27 | 2026-06-26 |  |  |  |  |  |  |  |  |  |  |  |  |  |  |  |  |  |  |  |
|  | PODSEKCJA | **Podsekcja 15.A** |  | 2026-02-27 | 2026-06-26 |  |  |  |  |  |  |  |  |  |  |  |  |  |  |  |  |  |  |  |
| 23QX91-099 |  | Prefabrykacja ruroci¹gów – Sekcja 15 | 3.1d | 2026-02-27 A | 2026-03-04 A | 23QX91-012, 23QX91-092 SS+5d | 100% | 2026-02-24 | 2026-02-26 |  |  | Pomorski | 23QX91 | Ruroci¹g | Budowa | Roboty | Piotr | Uk³ad | PM300 | Zespó³-E | Blok | Normalny | Pakiet | L2 |
| 23QX91-100 |  | Monta¿ ruroci¹gów – Sekcja 15 | 15.8d | 2026-05-15 A | 2026-06-04 A | 23QX91-099, 23QX91-014 SS+3d | 100% | 2026-05-14 | 2026-06-03 |  |  | Pomorski | 23QX91 | Ruroci¹g | Budowa | Roboty | Piotr | Uk³ad | PM000 | Zespó³-K | Blok | Wysoki | Pakiet | L2 |
| 23QX91-101 |  | Próba ciœnieniowa – Sekcja 15 | 5d | 2026-06-09 A | 2026-06-17 A | 23QX91-100 | 100% | 2026-06-04 | 2026-06-10 |  | Rev C | Pomorski | 23QX91 | Ruroci¹g | Budowa | Roboty | Piotr | Uk³ad | PM000 | Zespó³-W | Blok | Niski | Pakiet | L2 |
| 23QX91-102 |  | Izolacje – Sekcja 15 | 7d | 2026-06-11 A | 2026-06-23 A | 23QX91-101 | 100% | 2026-06-11 | 2026-06-19 |  |  | Pomorski | 23QX91 | Ruroci¹g | Budowa | Roboty | Piotr | Uk³ad | PM000 | Zespó³-K | Blok | Normalny | Pakiet | L2 |
| 23QX91-103 |  | Malowanie i oznakowanie – Sekcja 15 | 2d | 2026-06-24 A | 2026-06-26 A | 23QX91-102 FF+2d | 100% | 2026-06-22 | 2026-06-23 |  |  | Pomorski | 23QX91 | Ruroci¹g | Budowa | Roboty | Piotr | Uk³ad | PM000 | Zespó³-W | Blok | Normalny | Pakiet | L2 |

| ID | WBS | Activity | Duration | Start | Finish | Predecessors | Complete | Planned start | Planned finish | Calendar | Rewizja dokumentu | AC_Wykonawca | AC_Obiekt | AC_Dyscyplina | AC_Faza | AC_Zakres | AC_Opiekun | AC_Obszar | AC_PP_PM | AC_Zespol | AC_Blok | AC_Priorytet | AC_Pakiet | AC_Poziom | Uwagi harmonogramisty |
| --- | --- | --- | --- | --- | --- | --- | --- | --- | --- | --- | --- | --- | --- | --- | --- | --- | --- | --- | --- | --- | --- | --- | --- | --- | --- |
|  | SEKCJA 16 | **Sekcja 16** |  | 2026-03-05 | 2026-07-16 |  |  |  |  |  |  |  |  |  |  |  |  |  |  |  |  |  |  |  |  |
| 23QX91-104 |  | Prefabrykacja ruroci¹gów – Sekcja 16 | 13.5d | 2026-03-05 A | 2026-03-25 A | 23QX91-012, 23QX91-099 SS+5d | 100% | 2026-03-03 | 2026-03-19 |  | Rev A | Pomorski | 23QX91 | Ruroci¹g | Budowa | Roboty | Piotr | Uk³ad | PM000 | Zespó³-W | Blok | Normalny | Pakiet | L2 |  |
| 23QX91-105 |  | Monta¿ ruroci¹gów – Sekcja 16 | 24.5d | 2026-05-22 A | 2026-06-29 A | 23QX91-104, 23QX91-014 SS+9d | 100% | 2026-05-22 | 2026-06-24 |  |  | Pomorski | 23QX91 | Ruroci¹g | Budowa | Roboty | Piotr | Uk³ad | PM000 | Zespó³-W | Blok | Normalny | Pakiet | L2 |  |
| 23QX91-106 |  | Próba ciœnieniowa – Sekcja 16 | 3d | 2026-06-29 A | 2026-07-01 A | 23QX91-105 | 100% | 2026-06-25 | 2026-06-29 |  |  | Pomorski | 23QX91 | Ruroci¹g | Budowa | Roboty | Piotr | Uk³ad | PM000 | Zespó³-E | Blok | Wysoki | Pakiet | L2 |  |
| 23QX91-107 |  | Izolacje – Sekcja 16 | 8d | 2026-07-01 A | 2026-07-10 A | 23QX91-106 | 100% | 2026-06-30 | 2026-07-09 |  |  | Pomorski | 23QX91 | Ruroci¹g | Budowa | Roboty | Piotr | Uk³ad | PM000 | Zespó³-K | Blok | Wysoki | Pakiet | L2 | Bez uwag |
| 23QX91-108 |  | Malowanie i oznakowanie – Sekcja 16 | 7d | 2026-07-06 A | 2026-07-16 A | 23QX91-107 FF+2d | 100% | 2026-07-03 | 2026-07-13 |  | Rev C | Pomorski | 23QX91 | Ruroci¹g | Budowa | Roboty | Piotr | Uk³ad | PM000 | Zespó³-W | Blok | Krytyczn | Pakiet | L2 |  |
|  | SEKCJA 17 | **Sekcja 17** |  | 2026-03-12 | 2026-07-03 |  |  |  |  |  |  |  |  |  |  |  |  |  |  |  |  |  |  |  |  |
| 23QX91-111 |  | Prefabrykacja ruroci¹gów – Sekcja 17 | 12.5d | 2026-03-12 A | 2026-03-27 A | 23QX91-012, 23QX91-104 SS+5d | 100% | 2026-03-10 | 2026-03-25 |  | Rev B | Pomorski | 23QX91 | Ruroci¹g | Budowa | Roboty | Piotr | Uk³ad | PM000 | Zespó³-W | Blok | Wysoki | Pakiet | L2 |  |
| 23QX91-112 |  | Monta¿ ruroci¹gów – Sekcja 17 | 21d | 2026-05-15 A | 2026-06-12 A | 23QX91-111, 23QX91-014 SS+5d | 100% | 2026-05-18 | 2026-06-15 |  |  | Pomorski | 23QX91 | Ruroci¹g | Budowa | Roboty | Piotr | Uk³ad | PM000 | Zespó³-W | Blok | Normalny | Pakiet | L2 | Uzgodnione na koordynacji |
| 23QX91-113 |  | Próba ciœnieniowa – Sekcja 17 | 6d | 2026-06-16 A | 2026-06-26 A | 23QX91-112 | 100% | 2026-06-16 | 2026-06-23 |  | Rev A | Pomorski | 23QX91 | Ruroci¹g | Budowa | Roboty | Piotr | Uk³ad | PM000 | Zespó³-W | Blok | Normalny | Pakiet | L2 |  |
| 23QX91-114 |  | Izolacje – Sekcja 17 | 5d | 2026-06-23 A | 2026-06-29 A | 23QX91-113 | 100% | 2026-06-24 | 2026-06-30 |  |  | Pomorski | 23QX91 | Ruroci¹g | Budowa | Roboty | Piotr | Uk³ad | PM000 | Zespó³-W | Blok | Normalny | Pakiet | L2 |  |
| 23QX91-115 |  | Malowanie i oznakowanie – Sekcja 17 | 7d | 2026-06-24 A | 2026-07-03 A | 23QX91-114 FF+2d | 100% | 2026-06-24 | 2026-07-02 |  |  | Pomorski | 23QX91 | Ruroci¹g | Budowa | Roboty | Piotr | Uk³ad | PM000 | Zespó³-W | Blok | Normalny | Pakiet | L2 |  |
|  | SEKCJA 18 | **Sekcja 18** |  | 2026-03-19 | 2026-06-11 |  |  |  |  |  |  |  |  |  |  |  |  |  |  |  |  |  |  |  |  |
|  | PODSEKCJA | **Podsekcja 18.A** |  | 2026-03-19 | 2026-06-11 |  |  |  |  |  |  |  |  |  |  |  |  |  |  |  |  |  |  |  |  |
| 23QX91-116 |  | Prefabrykacja ruroci¹gów – Sekcja 18 | 3.4d | 2026-03-19 A | 2026-03-23 A | 23QX91-012, 23QX91-111 SS+5d | 100% | 2026-03-17 | 2026-03-19 |  |  | Pomorski | 23QX91 | Ruroci¹g | Budowa | Roboty | Piotr | Uk³ad | PM000 | Zespó³-W | Blok | Normalny | Pakiet | L2 |  |
| 23QX91-117 |  | Monta¿ ruroci¹gów – Sekcja 18 | 6.9d | 2026-05-08 A | 2026-05-15 A | 23QX91-116, 23QX91-014 SS | 100% | 2026-05-11 | 2026-05-18 |  |  | Pomorski | 23QX91 | Ruroci¹g | Budowa | Roboty | Piotr | Uk³ad | PM000 | Zespó³-K | Blok | Normalny | Pakiet | L2 |  |
| 23QX91-118 |  | Próba ciœnieniowa – Sekcja 18 | 5d | 2026-05-20 A | 2026-05-29 A | 23QX91-117 | 100% | 2026-05-19 | 2026-05-25 |  |  | Pomorski | 23QX91 | Ruroci¹g | Budowa | Roboty | Piotr | Uk³ad | PM000 | Zespó³-W | Blok | Normalny | Pakiet | L2 |  |
| 23QX91-119 |  | Izolacje – Sekcja 18 | 10d | 2026-05-27 A | 2026-06-09 A | 23QX91-118 | 100% | 2026-05-26 | 2026-06-08 |  |  | Pomorski | 23QX91 | Ruroci¹g | Budowa | Roboty | Piotr | Uk³ad | PM000 | Zespó³-W | Blok | Normalny | Pakiet | L2 |  |
| 23QX91-120 |  | Malowanie i oznakowanie – Sekcja 18 | 7d | 2026-06-03 A | 2026-06-11 A | 23QX91-119 FF+2d | 100% | 2026-06-02 | 2026-06-10 |  |  | Pomorski | 23QX91 | Ruroci¹g | Budowa | Roboty | Piotr | Uk³ad | PM000 | Zespó³-K | Blok | Normalny | Pakiet | L2 |  |
|  | SEKCJA 19 | **Sekcja 19** |  | 2026-03-26 | 2026-06-19 |  |  |  |  |  |  |  |  |  |  |  |  |  |  |  |  |  |  |  |  |
| 23QX91-123 |  | Prefabrykacja ruroci¹gów – Sekcja 19 | 13d | 2026-03-26 A | 2026-04-15 A | 23QX91-012, 23QX91-116 SS+5d | 100% | 2026-03-24 | 2026-04-09 | Kalendarz 6-dniowy |  | Pomorski | 23QX91 | Ruroci¹g | Budowa | Roboty | Piotr | Uk³ad | PM000 | Zespó³-W | Blok | Normalny | Pakiet | L2 | Uzgodnione na koordynacji |
| 23QX91-124 |  | Monta¿ ruroci¹gów – Sekcja 19 | 10.3d | 2026-05-14 A | 2026-05-27 A | 23QX91-123, 23QX91-014 SS+4d | 100% | 2026-05-15 | 2026-05-28 |  | Rev B | Pomorski | 23QX91 | Ruroci¹g | Budowa | Roboty | Piotr | Uk³ad | PM000 | Zespó³-W | Blok | Normalny | Pakiet | L2 |  |
| 23QX91-125 |  | Próba ciœnieniowa – Sekcja 19 | 2d | 2026-06-02 A | 2026-06-05 A | 23QX91-124 | 100% | 2026-05-29 | 2026-06-01 |  | Rev A | Pomorski | 23QX91 | Ruroci¹g | Budowa | Roboty | Piotr | Uk³ad | PM000 | Zespó³-W | Blok | Niski | Pakiet | L2 |  |
| 23QX91-126 |  | Izolacje – Sekcja 19 | 10d | 2026-06-05 A | 2026-06-19 A | 23QX91-125 | 100% | 2026-06-02 | 2026-06-15 |  |  | Pomorski | 23QX91 | Ruroci¹g | Budowa | Roboty | Piotr | Uk³ad | PM000 | Zespó³-K | Blok | Wysoki | Pakiet | L2 | Do weryfikacji z wykonawc¹ |
| 23QX91-127 |  | Malowanie i oznakowanie – Sekcja 19 | 3d | 2026-06-15 A | 2026-06-18 A | 23QX91-126 FF+2d | 100% | 2026-06-15 | 2026-06-17 |  | Rev C | Pomorski | 23QX91 | Ruroci¹g | Budowa | Roboty | Piotr | Uk³ad | PM000 | Zespó³-I | Blok | Wysoki | Pakiet | L2 | Uzgodnione na koordynacji |

| ID | WBS | Activity | Duration | Start | Finish | Predecessors | Complete | Planned start | Planned finish | Calendar | AC_Wykonawca | AC_Obiekt | AC_Dyscyplina | AC_Faza | AC_Zakres | AC_Opiekun | AC_Obszar | AC_PP_PM | AC_Zespol | AC_Blok | AC_Priorytet | AC_Pakiet | AC_Poziom | Rewizja dokumentu | Uwagi harmonogramisty |
| --- | --- | --- | --- | --- | --- | --- | --- | --- | --- | --- | --- | --- | --- | --- | --- | --- | --- | --- | --- | --- | --- | --- | --- | --- | --- |
|  | SEKCJA 20 | **Sekcja 20** |  | 2026-04-01 | 2026-07-10 |  |  |  |  |  |  |  |  |  |  |  |  |  |  |  |  |  |  |  |  |
| 23QX91-128 |  | Prefabrykacja ruroci¹gów – Sekcja 20 | 8.2d | 2026-04-01 A | 2026-04-14 A | 23QX91-012, 23QX91-123 SS+5d | 100% | 2026-03-31 | 2026-04-09 |  | Pomorski | 23QX91 | Ruroci¹g | Budowa | Roboty | Piotr | Uk³ad | PM000 | Zespó³-W | Blok | Normalny | Pakiet | L2 |  |  |
| 23QX91-129 |  | Monta¿ ruroci¹gów – Sekcja 20 | 24.6d | 2026-05-19 A | 2026-06-23 A | 23QX91-128, 23QX91-014 SS+6d | 100% | 2026-05-19 | 2026-06-19 |  | Pomorski | 23QX91 | Ruroci¹g | Budowa | Roboty | Piotr | Uk³ad | PM000 | Zespó³-W | Blok | Normalny | Pakiet | L2 | Rev B |  |
| 23QX91-130 |  | Próba ciœnieniowa – Sekcja 20 | 5d | 2026-06-25 A | 2026-07-06 A | 23QX91-129 | 100% | 2026-06-22 | 2026-06-26 |  | Pomorski | 23QX91 | Ruroci¹g | Budowa | Roboty | Piotr | Uk³ad | PM000 | Zespó³-K | Blok | Niski | Pakiet | L2 |  |  |
| 23QX91-131 |  | Izolacje – Sekcja 20 | 4d | 2026-07-02 A | 2026-07-09 A | 23QX91-130 | 100% | 2026-06-29 | 2026-07-02 |  | Pomorski | 23QX91 | Ruroci¹g | Budowa | Roboty | Piotr | Uk³ad | PM000 | Zespó³-K | Blok | Wysoki | Pakiet | L2 | Rev B |  |
| 23QX91-132 |  | Malowanie i oznakowanie – Sekcja 20 | 2d | 2026-07-08 A | 2026-07-10 A | 23QX91-131 FF+2d | 100% | 2026-07-03 | 2026-07-06 | Kalendarz 6-dniowy | Pomorski | 23QX91 | Ruroci¹g | Budowa | Roboty | Piotr | Uk³ad | PM000 | Zespó³-K | Blok | Niski | Pakiet | L2 |  |  |
|  | SEKCJA 21 | **Sekcja 21** |  | 2026-04-07 | 2026-07-01 |  |  |  |  |  |  |  |  |  |  |  |  |  |  |  |  |  |  |  |  |
|  | PODSEKCJA | **Podsekcja 21.A** |  | 2026-04-07 | 2026-07-01 |  |  |  |  |  |  |  |  |  |  |  |  |  |  |  |  |  |  |  |  |
| 23QX91-135 |  | Prefabrykacja ruroci¹gów – Sekcja 21 | 8.4d | 2026-04-07 A | 2026-04-16 A | 23QX91-012, 23QX91-128 SS+5d | 100% |  |  |  | Pomorski | 23QX91 | Ruroci¹g | Budowa | Roboty | Piotr | Uk³ad | PM000 | Zespó³-W | Blok | Normalny | Pakiet | L2 |  |  |
| 23QX91-136 |  | Monta¿ ruroci¹gów – Sekcja 21 | 10.1d | 2026-05-26 A | 2026-06-10 A | 23QX91-135, 23QX91-014 SS+10d | 100% | 2026-05-25 | 2026-06-05 |  | Pomorski | 23QX91 | Ruroci¹g | Budowa | Roboty | Piotr | Uk³ad | PM000 | Zespó³-W | Blok | Niski | Pakiet | L2 |  |  |
| 23QX91-137 |  | Próba ciœnieniowa – Sekcja 21 | 4d | 2026-06-08 A | 2026-06-12 A | 23QX91-136 | 100% | 2026-06-08 | 2026-06-11 |  | Pomorski | 23QX91 | Ruroci¹g | Budowa | Roboty | Piotr | Uk³ad | PM100 | Zespó³-I | Blok | Normalny | Pakiet | L2 | Rev A |  |
| 23QX91-138 |  | Izolacje – Sekcja 21 | 8d | 2026-06-17 A | 2026-07-01 A | 23QX91-137 | 100% | 2026-06-12 | 2026-06-23 |  | Pomorski | 23QX91 | Ruroci¹g | Budowa | Roboty | Piotr | Uk³ad | PM000 | Zespó³-W | Blok | Normalny | Pakiet | L2 | Rev B |  |
| 23QX91-139 |  | Malowanie i oznakowanie – Sekcja 21 | 2d | 2026-06-25 A | 2026-06-30 A | 23QX91-138 FF+2d | 100% | 2026-06-24 | 2026-06-25 |  | Pomorski | 23QX91 | Ruroci¹g | Budowa | Roboty | Piotr | Uk³ad | PM000 | Zespó³-W | Blok | Wysoki | Pakiet | L2 | Rev B |  |
|  | SEKCJA 22 | **Sekcja 22** |  | 2026-04-15 | 2026-07-08 |  |  |  |  |  |  |  |  |  |  |  |  |  |  |  |  |  |  |  |  |
| 23QX91-140 |  | Prefabrykacja ruroci¹gów – Sekcja 22 | 13.7d | 2026-04-15 A | 2026-05-04 A | 23QX91-012, 23QX91-135 SS+5d | 100% | 2026-04-14 | 2026-04-30 | Kalendarz 6-dniowy | Pomorski | 23QX91 | Ruroci¹g | Budowa | Roboty | Piotr | Uk³ad | PM300 | Zespó³-I | Blok | Wysoki | Pakiet | L2 |  | Do weryfikacji z wykonawc¹ |
| 23QX91-141 |  | Monta¿ ruroci¹gów – Sekcja 22 | 19.6d | 2026-05-21 A | 2026-06-19 A | 23QX91-140, 23QX91-014 SS+7d | 100% | 2026-05-20 | 2026-06-15 | Kalendarz 6-dniowy | Pomorski | 23QX91 | Ruroci¹g | Budowa | Roboty | Piotr | Uk³ad | PM000 | Zespó³-K | Blok | Normalny | Pakiet | L2 | Rev C |  |
| 23QX91-142 |  | Próba ciœnieniowa – Sekcja 22 | 3d | 2026-06-16 A | 2026-06-23 A | 23QX91-141 | 100% | 2026-06-16 | 2026-06-18 |  | Pomorski | 23QX91 | Ruroci¹g | Budowa | Roboty | Piotr | Uk³ad | PM000 | Zespó³-W | Blok | Wysoki | Pakiet | L2 | Rev A | Do weryfikacji z wykonawc¹ |
| 23QX91-143 |  | Izolacje – Sekcja 22 | 8d | 2026-06-23 A | 2026-07-02 A | 23QX91-142 | 100% | 2026-06-19 | 2026-06-30 |  | Pomorski | 23QX91 | Ruroci¹g | Budowa | Roboty | Piotr | Uk³ad | PM000 | Zespó³-W | Blok | Normalny | Pakiet | L2 |  | Ryzyko opóŸnienia |
| 23QX91-144 |  | Malowanie i oznakowanie – Sekcja 22 | 5d | 2026-06-30 A | 2026-07-08 A | 23QX91-143 FF+2d | 100% | 2026-06-26 | 2026-07-02 |  | Pomorski | 23QX91 | Ruroci¹g | Budowa | Roboty | Piotr | Uk³ad | PM000 | Zespó³-E | Blok | Normalny | Pakiet | L2 |  | Ryzyko opóŸnienia |
|  | SEKCJA 23 | **Sekcja 23** |  | 2026-04-24 | 2026-06-30 |  |  |  |  |  |  |  |  |  |  |  |  |  |  |  |  |  |  |  |  |
| 23QX91-147 |  | Prefabrykacja ruroci¹gów – Sekcja 23 | 13.4d | 2026-04-24 A | 2026-05-15 A | 23QX91-012, 23QX91-140 SS+5d | 100% | 2026-04-21 | 2026-05-07 |  | Pomorski | 23QX91 | Ruroci¹g | Budowa | Roboty | Piotr | Uk³ad | PM000 | Zespó³-W | Blok | Normalny | Pakiet | L2 |  |  |
| 23QX91-148 |  | Monta¿ ruroci¹gów – Sekcja 23 | 14.6d | 2026-05-14 A | 2026-06-03 A | 23QX91-147, 23QX91-014 SS+2d | 100% | 2026-05-13 | 2026-06-01 |  | Pomorski | 23QX91 | Ruroci¹g | Budowa | Roboty | Piotr | Uk³ad | PM000 | Zespó³-W | Blok | Normalny | Pakiet | L2 | Rev B | Do weryfikacji z wykonawc¹ |
| 23QX91-149 |  | Próba ciœnieniowa – Sekcja 23 | 6d | 2026-06-02 A | 2026-06-12 A | 23QX91-148 | 100% | 2026-06-02 | 2026-06-09 |  | Pomorski | 23QX91 | Ruroci¹g | Budowa | Roboty | Piotr | Uk³ad | PM000 | Zespó³-K | Blok | Normalny | Pakiet | L2 |  |  |
| 23QX91-150 |  | Izolacje – Sekcja 23 | 10d | 2026-06-15 A | 2026-06-30 A | 23QX91-149 | 100% | 2026-06-10 | 2026-06-23 | Kalendarz 6-dniowy | Pomorski | 23QX91 | Ruroci¹g | Budowa | Roboty | Piotr | Uk³ad | PM000 | Zespó³-K | Blok | Niski | Pakiet | L2 | Rev B |  |
| 23QX91-151 |  | Malowanie i oznakowanie – Sekcja 23 | 6d | 2026-06-23 A | 2026-06-30 A | 23QX91-150 FF+2d | 100% | 2026-06-18 | 2026-06-25 |  | Pomorski | 23QX91 | Ruroci¹g | Budowa | Roboty | Piotr | Uk³ad | PM000 | Zespó³-W | Blok | Normalny | Pakiet | L2 | Rev B |  |

| ID | WBS | Activity | Type | Duration | Start | Finish | Predecessors | Complete | Actual finish | Planned start | Planned finish | Calendar | AC_Wykonawca | AC_Obiekt | AC_Dyscyplina | AC_Faza | AC_Zakres | AC_Opiekun | AC_Obszar | AC_PP_PM | AC_Zespol | AC_Blok | AC_Priorytet | AC_Pakiet | AC_Poziom | Uwagi harmonogramisty | Rewizja dokumentu |
| --- | --- | --- | --- | --- | --- | --- | --- | --- | --- | --- | --- | --- | --- | --- | --- | --- | --- | --- | --- | --- | --- | --- | --- | --- | --- | --- | --- |
|  | SEKCJA 24 | **Sekcja 24** |  |  | 2026-04-28 | 2026-07-03 |  |  |  |  |  |  |  |  |  |  |  |  |  |  |  |  |  |  |  |  |  |
|  | PODSEKCJA | **Podsekcja 24.A** |  |  | 2026-04-28 | 2026-07-03 |  |  |  |  |  |  |  |  |  |  |  |  |  |  |  |  |  |  |  |  |  |
| 23QX91-152 |  | Prefabrykacja ruroci¹gów – Sekcja 24 |  | 5d | 2026-04-28 A | 2026-05-04 A | 23QX91-012, 23QX91-147 SS+5d | 100% |  |  |  | Kalendarz 6-dniowy | Pomorski | 23QX91 | Ruroci¹g | Budowa | Roboty | Piotr | Uk³ad | PM000 | Zespó³-K | Blok | Normalny | Pakiet | L2 |  |  |
| 23QX91-153 |  | Monta¿ ruroci¹gów – Sekcja 24 |  | 22.8d | 2026-05-14 A | 2026-06-12 A | 23QX91-152, 23QX91-014 SS+2d | 100% |  | 2026-05-13 | 2026-06-11 |  | Pomorski | 23QX91 | Ruroci¹g | Budowa | Roboty | Piotr | Uk³ad | PM000 | Zespó³-W | Blok | Normalny | Pakiet | L2 | Do weryfikacji z wykonawc¹ |  |
| 23QX91-154 |  | Próba ciœnieniowa – Sekcja 24 |  | 6d | 2026-06-12 A | 2026-06-19 A | 23QX91-153 | 100% |  |  |  |  | Pomorski | 23QX91 | Ruroci¹g | Budowa | Roboty | Piotr | Uk³ad | PM000 | Zespó³-W | Blok | Normalny | Pakiet | L2 |  |  |
| 23QX91-155 |  | Izolacje – Sekcja 24 |  | 5d | 2026-06-24 A | 2026-07-02 A | 23QX91-154 | 100% |  | 2026-06-22 | 2026-06-26 |  | Pomorski | 23QX91 | Ruroci¹g | Budowa | Roboty | Piotr | Uk³ad | PM000 | Zespó³-K | Blok | Normalny | Pakiet | L2 |  |  |
| 23QX91-156 |  | Malowanie i oznakowanie – Sekcja 24 |  | 6d | 2026-06-25 A | 2026-07-03 A | 23QX91-155 FF+2d | 100% |  | 2026-06-23 | 2026-06-30 |  | Pomorski | 23QX91 | Ruroci¹g | Budowa | Roboty | Piotr | Uk³ad | PM000 | Zespó³-W | Blok | Normalny | Pakiet | L2 |  | Rev A |
|  | SEKCJA 25 | **Sekcja 25** |  |  | 2026-05-07 | 2026-07-17 |  |  |  |  |  |  |  |  |  |  |  |  |  |  |  |  |  |  |  |  |  |
| 23QX91-159 |  | Prefabrykacja ruroci¹gów – Sekcja 25 |  | 12.5d | 2026-05-07 A | 2026-05-27 A | 23QX91-012, 23QX91-152 SS+5d | 100% |  | 2026-05-05 | 2026-05-20 |  | Pomorski | 23QX91 | Ruroci¹g | Budowa | Roboty | Piotr | Uk³ad | PM000 | Zespó³-K | Blok | Niski | Pakiet | L2 |  |  |
| 23QX91-160 |  | Monta¿ ruroci¹gów – Sekcja 25 |  | 23.7d | 2026-05-22 A | 2026-06-26 A | 23QX91-159, 23QX91-014 SS+3d | 100% |  | 2026-05-21 | 2026-06-23 |  | Pomorski | 23QX91 | Ruroci¹g | Budowa | Roboty | Piotr | Uk³ad | PM000 | Zespó³-W | Blok | Krytyczn | Pakiet | L2 | Czeka na dostawê |  |
| 23QX91-161 |  | Próba ciœnieniowa – Sekcja 25 |  | 2d | 2026-06-26 A | 2026-07-01 A | 23QX91-160 | 100% |  | 2026-06-24 | 2026-06-25 |  | Pomorski | 23QX91 | Ruroci¹g | Budowa | Roboty | Piotr | Uk³ad | PM300 | Zespó³-I | Blok | Normalny | Pakiet | L2 |  | Rev B |
| 23QX91-162 |  | Izolacje – Sekcja 25 |  | 10d | 2026-07-01 A | 2026-07-17 A | 23QX91-161 | 100% |  | 2026-06-26 | 2026-07-09 |  | Pomorski | 23QX91 | Ruroci¹g | Budowa | Roboty | Piotr | Uk³ad | PM000 | Zespó³-K | Blok | Normalny | Pakiet | L2 |  |  |
| 23QX91-163 |  | Malowanie i oznakowanie – Sekcja 25 |  | 3d | 2026-07-10 A | 2026-07-17 A | 23QX91-162 FF+2d | 100% |  | 2026-07-09 | 2026-07-13 |  | Pomorski | 23QX91 | Ruroci¹g | Budowa | Roboty | Piotr | Uk³ad | PM000 | Zespó³-W | Blok | Niski | Pakiet | L2 | Czeka na dostawê |  |
|  | SEKCJA 26 | **Sekcja 26** |  |  | 2026-05-14 | 2026-07-16 |  |  |  |  |  |  |  |  |  |  |  |  |  |  |  |  |  |  |  |  |  |
| 23QX91-164 |  | Prefabrykacja ruroci¹gów – Sekcja 26 |  | 6.4d | 2026-05-14 A | 2026-05-22 A | 23QX91-012, 23QX91-159 SS+5d | 100% |  | 2026-05-12 | 2026-05-19 | Kalendarz 6-dniowy | Pomorski | 23QX91 | Ruroci¹g | Budowa | Roboty | Piotr | Uk³ad | PM000 | Zespó³-W | Blok | Normalny | Pakiet | L2 |  | Rev A |
| 23QX91-165 |  | Monta¿ ruroci¹gów – Sekcja 26 |  | 20.6d | 2026-05-22 A | 2026-06-19 A | 23QX91-164, 23QX91-014 SS+5d | 100% |  | 2026-05-20 | 2026-06-17 |  | Pomorski | 23QX91 | Ruroci¹g | Budowa | Roboty | Piotr | Uk³ad | PM000 | Zespó³-K | Blok | Normalny | Pakiet | L2 |  |  |
| 23QX91-166 |  | Próba ciœnieniowa – Sekcja 26 |  | 5d | 2026-06-18 A | 2026-06-26 A | 23QX91-165 | 100% |  | 2026-06-18 | 2026-06-24 |  | Pomorski | 23QX91 | Ruroci¹g | Budowa | Roboty | Piotr | Uk³ad | PM000 | Zespó³-W | Blok | Wysoki | Pakiet | L2 |  |  |
| 23QX91-167 |  | Izolacje – Sekcja 26 |  | 11d | 2026-06-30 A | 2026-07-16 A | 23QX91-166 | 100% |  | 2026-06-25 | 2026-07-09 | Kalendarz 6-dniowy | Pomorski | 23QX91 | Ruroci¹g | Budowa | Roboty | Piotr | Uk³ad | PM000 | Zespó³-K | Blok | Niski | Pakiet | L2 | Uzgodnione na koordynacji | Rev B |
| 23QX91-168 |  | Malowanie i oznakowanie – Sekcja 26 |  | 6d | 2026-07-07 A | 2026-07-16 A | 23QX91-167 FF+2d | 100% |  | 2026-07-06 | 2026-07-13 |  | Pomorski | 23QX91 | Ruroci¹g | Budowa | Roboty | Piotr | Uk³ad | PM000 | Zespó³-W | Blok | Normalny | Pakiet | L2 |  |  |
|  | PROJ | **Projektowanie** |  |  | 2025-02-10 | 2025-06-06 |  |  |  |  |  |  |  |  |  |  |  |  |  |  |  |  |  |  |  |  |  |
|  | DOKUMENTAC | **Dokumentacja** |  |  | 2025-02-10 | 2025-06-06 |  |  |  |  |  |  |  |  |  |  |  |  |  |  |  |  |  |  |  |  |  |
| 23QX91-001 |  | Projekt wykonawczy – Stacja demineralizacji |  | 63d | 2025-02-10 A | 2025-05-12 A |  | 100% |  | 2025-02-06 | 2025-05-05 |  | Pomorski | 23QX91 | Budowlan | Projekto | Projekt | Piotr | Uk³ad | PM000 | Zespó³-K | Blok | Normalny | Pakiet | L2 |  |  |
| 23QX91-002 |  | Uzgodnienie dokumentacji z Inwestorem |  | 18d | 2025-05-09 A | 2025-06-06 A | 23QX91-001 | 100% |  | 2025-05-06 | 2025-05-29 |  | Pomorski | 23QX91 | Budowlan | Projekto | Projekt | Piotr | Uk³ad | PM000 | Zespó³-K | Blok | Normalny | Pakiet | L2 |  |  |
| 23QX91-003 |  | Zatwierdzenie dokumentacji do realizacji |  | 6d | 2025-05-30 A | 2025-06-06 A | 23QX91-002 | 100% |  |  |  |  | Pomorski | 23QX91 | Budowlan | Projekto | Projekt | Piotr | Uk³ad | PM000 | Zespó³-K | Blok | Krytyczn | Pakiet | L2 | Uzgodnione na koordynacji |  |
| 23QX91-004 |  | KM: Dokumentacja zatwierdzona – Stacja demineralizacji | milestone | 0d | 2025-06-06 A | 2025-06-06 | 23QX91-003 | 100% | 2025-06-05 | 2025-06-09 | 2025-06-09 |  | Pomorski | 23QX91 | Budowlan | Projekto | Kamieñ | Piotr | Uk³ad | PM100 | Zespó³-E | Blok | Wysoki | Pakiet | L1 |  |  |

| ID | WBS | Activity | Type | Duration | Start | Finish | Predecessors | Complete | Actual start | Actual finish | Planned start | Planned finish | Calendar | Uwagi harmonogramisty | AC_Wykonawca | AC_Obiekt | AC_Dyscyplina | AC_Faza | AC_Zakres | AC_Opiekun | AC_Obszar | AC_PP_PM | AC_Zespol | AC_Blok | AC_Priorytet | AC_Pakiet | AC_Poziom | Rewizja dokumentu |
| --- | --- | --- | --- | --- | --- | --- | --- | --- | --- | --- | --- | --- | --- | --- | --- | --- | --- | --- | --- | --- | --- | --- | --- | --- | --- | --- | --- | --- |
|  | ROZR | **Rozruch** |  |  | 2026-07-16 | 2026-08-13 |  |  |  |  |  |  |  |  |  |  |  |  |  |  |  |  |  |  |  |  |  |  |
|  | ROZRUCH | **Rozruch** |  |  | 2026-07-16 | 2026-08-13 |  |  |  |  |  |  |  |  |  |  |  |  |  |  |  |  |  |  |  |  |  |  |
| 23QX91-173 |  | Przegl¹d gotowoœci do rozruchu |  | 5d | 2026-07-16 A | 2026-07-24 A | 23QX91-172, 23QX91-019, 23QX91-024, 23QX91-026 | 100% |  |  | 2026-07-14 | 2026-07-20 |  | Czeka na dostawê | Pomorski | 23QX91 | Rozruch | Rozruch | Rozruch | Piotr | Uk³ad | PM000 | Zespó³-K | Blok | Wysoki | Pakiet | L2 |  |
| 23QX91-174 |  | Rozruch na zimno |  | 5d | 2026-07-22 A | 2026-07-28 A | 23QX91-173 | 100% |  |  | 2026-07-21 | 2026-07-27 |  |  | Pomorski | 23QX91 | Rozruch | Rozruch | Rozruch | Piotr | Uk³ad | PM000 | Zespó³-W | Blok | Normalny | Pakiet | L2 |  |
| 23QX91-175 |  | Rozruch na gor¹co / próby ruchowe |  | 13d | 2026-07-27 A | 2026-08-13 A | 23QX91-174 | 100% |  |  | 2026-07-28 | 2026-08-13 |  |  | Pomorski | 23QX91 | Rozruch | Rozruch | Rozruch | Piotr | Uk³ad | PM000 | Zespó³-K | Blok | Normalny | Pakiet | L2 | Rev A |
| 23QX91-176 |  | KM: Odbiór koñcowy – Stacja demineralizacji | milestone | 0d | 2026-08-12 | 2026-08-12 A | 23QX91-175 | 100% | 2026-08-13 |  | 2026-08-14 | 2026-08-14 |  | Ryzyko opóŸnienia | Pomorski | 23QX91 | Rozruch | Rozruch | Kamieñ | Piotr | Uk³ad | PM000 | Zespó³-W | Blok | Wysoki | Pakiet | L1 |  |
|  | ZAKU | **Zakupy** |  |  | 2025-03-07 | 2026-05-15 |  |  |  |  |  |  |  |  |  |  |  |  |  |  |  |  |  |  |  |  |  |  |
|  | DOSTAWY | **Dostawy** |  |  | 2025-09-08 | 2026-05-15 |  |  |  |  |  |  |  |  |  |  |  |  |  |  |  |  |  |  |  |  |  |  |
| 23QX91-008 |  | Produkcja u dostawcy |  | 146d | 2025-09-08 A | 2026-03-30 A | 23QX91-007 | 100% |  |  |  |  |  | Do weryfikacji z wykonawc¹ | Pomorski | 23QX91 | Mechanic | Zakupy | Dostawa | Piotr | Uk³ad | PM000 | Zespó³-K | Blok | Normalny | Pakiet | L2 |  |
| 23QX91-009 |  | Testy FAT |  | 10d | 2026-04-02 A | 2026-04-15 A | 23QX91-008 | 100% |  |  | 2026-03-31 | 2026-04-13 |  | Uzgodnione na koordynacji | Pomorski | 23QX91 | Mechanic | Zakupy | Dostawa | Piotr | Uk³ad | PM000 | Zespó³-K | Blok | Normalny | Pakiet | L2 |  |
| 23QX91-010 |  | Transport i dostawa na plac budowy |  | 19d | 2026-04-17 A | 2026-05-15 A | 23QX91-009 | 100% |  |  | 2026-04-14 | 2026-05-08 |  |  | Pomorski | 23QX91 | Mechanic | Zakupy | Dostawa | Piotr | Uk³ad | PM000 | Zespó³-K | Blok | Normalny | Pakiet | L2 | Rev A |
| 23QX91-011 |  | KM: Dostawa na budowê – Stacja demineralizacji | milestone | 0d | 2026-05-14 A | 2026-05-14 | 23QX91-010 | 100% |  | 2026-05-13 | 2026-05-11 | 2026-05-11 | Kalendarz 6-dniowy |  | Pomorski | 23QX91 | Mechanic | Zakupy | Kamieñ | Piotr | Uk³ad | PM000 | Zespó³-W | Blok | Normalny | Pakiet | L1 |  |
|  | ZAMÓWIENIA | **Zamówienia** |  |  | 2025-03-07 | 2025-09-11 |  |  |  |  |  |  |  |  |  |  |  |  |  |  |  |  |  |  |  |  |  |  |
| 23QX91-005 |  | Zapytanie ofertowe |  | 23d | 2025-03-07 A | 2025-04-10 A | 23QX91-001 SS+20d | 100% |  |  | 2025-03-06 | 2025-04-07 | Kalendarz 6-dniowy |  | Pomorski | 23QX91 | Mechanic | Zakupy | Dostawa | Piotr | Uk³ad | PM000 | Zespó³-W | Blok | Normalny | Pakiet | L2 | Rev C |
| 23QX91-006 |  | Analiza i wybór ofert |  | 16d | 2025-04-07 A | 2025-05-01 A | 23QX91-005 | 100% |  |  | 2025-04-08 | 2025-04-29 |  |  | Pomorski | 23QX91 | Mechanic | Zakupy | Dostawa | Piotr | Uk³ad | PM000 | Zespó³-W | Blok | Normalny | Pakiet | L2 |  |
| 23QX91-007 |  | Zawarcie umowy / zamówienie |  | 8d | 2025-08-29 A | 2025-09-11 A | 23QX91-006, 23QX91-004 SS, 28BP20-004 SS+15d, 18TY85-004 FS+3d | 100% |  |  | 2025-08-27 | 2025-09-05 |  | Czeka na dostawê | Pomorski | 23QX91 | Mechanic | Zakupy | Dostawa | Piotr | Uk³ad | PM000 | Zespó³-W | Blok | Normalny | Pakiet | L1 |  |
|  | 28BP20 | **28BP20 – Pompy wody ch³odz¹cej** |  |  | 2025-01-16 | 2026-07-23 |  |  |  |  |  |  |  |  |  |  |  |  |  |  |  |  |  |  |  |  |  |  |
|  | BUDO | **Budowa** |  |  | 2025-10-30 | 2026-06-05 |  |  |  |  |  |  |  |  |  |  |  |  |  |  |  |  |  |  |  |  |  |  |
|  | AKPIA | **AKPiA** |  |  | 2026-04-09 | 2026-05-13 |  |  |  |  |  |  |  |  |  |  |  |  |  |  |  |  |  |  |  |  |  |  |
| 28BP20-075 |  | Monta¿ uk³adów AKPiA |  | 23d | 2026-04-09 A | 2026-05-13 A | 28BP20-014 SS+5d | 100% |  |  | 2026-04-09 | 2026-05-11 |  |  | Kablex | 28BP20 | AKPiA | Budowa | Roboty | Anna | Uk³ad | PM000 | Zespó³-E | Blok | Normalny | Pakiet | L2 |  |
|  | ELEKTRYKA | **Elektryka** |  |  | 2026-04-10 | 2026-05-14 |  |  |  |  |  |  |  |  |  |  |  |  |  |  |  |  |  |  |  |  |  |  |
| 28BP20-062 |  | Pod³¹czenia i pomiary – trasa 08 |  | 7d | 2026-04-10 A | 2026-04-21 A | 28BP20-061 FF | 100% |  |  | 2026-04-13 | 2026-04-21 |  |  | Kablex | 28BP20 | Elektryc | Budowa | Roboty | Anna | Uk³ad | PM000 | Zespó³-W | Blok | Normalny | Pakiet | L2 |  |
| 28BP20-038 |  | Pod³¹czenia i pomiary – trasa 04 |  | 7d | 2026-04-17 A | 2026-04-30 A | 28BP20-037 FF | 100% |  |  | 2026-04-15 | 2026-04-23 | Kalendarz 6-dniowy |  | Kablex | 28BP20 | Elektryc | Budowa | Roboty | Anna | Uk³ad | PM000 | Zespó³-W | Blok | Normalny | Pakiet | L2 |  |
| 28BP20-073 |  | Uk³adanie kabli – trasa 10 |  | 10d | 2026-04-17 A | 2026-05-01 A | 28BP20-014 SS+10d | 100% |  |  | 2026-04-16 | 2026-04-29 |  | Uzgodnione na koordynacji | Kablex | 28BP20 | Elektryc | Budowa | Roboty | Anna | Uk³ad | PM000 | Zespó³-K | Blok | Wysoki | Pakiet | L2 | Rev B |
| 28BP20-037 |  | Uk³adanie kabli – trasa 04 |  | 6d | 2026-04-20 A | 2026-04-27 A | 28BP20-014 SS+10d | 100% |  |  | 2026-04-16 | 2026-04-23 |  | Czeka na dostawê | Kablex | 28BP20 | Elektryc | Budowa | Roboty | Anna | Uk³ad | PM000 | Zespó³-K | Blok | Niski | Pakiet | L2 |  |
| 28BP20-049 |  | Uk³adanie kabli – trasa 06 |  | 16d | 2026-04-20 A | 2026-05-14 A | 28BP20-014 SS+10d | 100% |  |  | 2026-04-16 | 2026-05-07 |  |  | Kablex | 28BP20 | Elektryc | Budowa | Roboty | Anna | Uk³ad | PM000 | Zespó³-K | Blok | Niski | Pakiet | L2 | Rev C |
| 28BP20-074 |  | Pod³¹czenia i pomiary – trasa 10 |  | 7d | 2026-04-20 A | 2026-04-29 A | 28BP20-073 FF | 100% |  |  | 2026-04-21 | 2026-04-29 |  |  | Kablex | 28BP20 | Elektryc | Budowa | Roboty | Anna | Uk³ad | PM000 | Zespó³-K | Blok | Niski | Pakiet | L2 |  |
| 28BP20-025 |  | Uk³adanie kabli – trasa 02 |  | 15d | 2026-04-21 A | 2026-05-13 A | 28BP20-014 SS+10d | 100% |  |  | 2026-04-16 | 2026-05-06 |  |  | Kablex | 28BP20 | Elektryc | Budowa | Roboty | Anna | Uk³ad | PM000 | Zespó³-W | Blok | Normalny | Pakiet | L2 | Rev A |
| 28BP20-061 |  | Uk³adanie kabli – trasa 08 |  | 4d | 2026-04-21 A | 2026-04-28 A | 28BP20-014 SS+10d | 100% |  |  | 2026-04-16 | 2026-04-21 |  |  | Kablex | 28BP20 | Elektryc | Budowa | Roboty | Anna | Uk³ad | PM000 | Zespó³-W | Blok | Niski | Pakiet | L2 | Rev B |
| 28BP20-026 |  | Pod³¹czenia i pomiary – trasa 02 |  | 4d | 2026-04-30 A | 2026-05-06 A | 28BP20-025 FF | 100% |  |  | 2026-05-01 | 2026-05-06 |  |  | Kablex | 28BP20 | Elektryc | Budowa | Roboty | Anna | Uk³ad | PM000 | Zespó³-W | Blok | Normalny | Pakiet | L2 | Rev C |
| 28BP20-050 |  | Pod³¹czenia i pomiary – trasa 06 |  | 6d | 2026-04-30 A | 2026-05-08 A | 28BP20-049 FF | 100% |  |  | 2026-04-30 | 2026-05-07 |  | Uzgodnione na koordynacji | Kablex | 28BP20 | Elektryc | Budowa | Roboty | Anna | Uk³ad | PM000 | Zespó³-K | Blok | Normalny | Pakiet | L2 | Rev A |

| ID | WBS | Activity | Type | Duration | Start | Finish | Predecessors | Complete | Actual finish | Planned start | Planned finish | Calendar | AC_Wykonawca | AC_Obiekt | AC_Dyscyplina | AC_Faza | AC_Zakres | AC_Opiekun | AC_Obszar | AC_PP_PM | AC_Zespol | AC_Blok | AC_Priorytet | AC_Pakiet | AC_Poziom | Uwagi harmonogramisty | Rewizja dokumentu |
| --- | --- | --- | --- | --- | --- | --- | --- | --- | --- | --- | --- | --- | --- | --- | --- | --- | --- | --- | --- | --- | --- | --- | --- | --- | --- | --- | --- |
|  | MONTA¯ | **Monta¿** |  |  | 2026-01-07 | 2026-06-04 |  |  |  |  |  |  |  |  |  |  |  |  |  |  |  |  |  |  |  |  |  |
| 28BP20-013 |  | Monta¿ konstrukcji stalowych |  | 46d | 2026-01-07 A | 2026-03-12 A | 28BP20-012 | 100% |  | 2026-01-07 | 2026-03-11 |  | Kablex | 28BP20 | Mechanic | Budowa | Roboty | Anna | Uk³ad | PM100 | Zespó³-I | Blok | Normalny | Pakiet | L2 |  |  |
| 28BP20-014 |  | Monta¿ urz¹dzeñ g³ównych |  | 30d | 2026-04-06 A | 2026-05-20 A | 28BP20-013, 28BP20-011 | 100% |  | 2026-04-02 | 2026-05-13 |  | Kablex | 28BP20 | Mechanic | Budowa | Roboty | Anna | Uk³ad | PM000 | Zespó³-W | Blok | Wysoki | Pakiet | L2 |  |  |
| 28BP20-076 |  | KM: Zakoñczenie monta¿u – Pompy wody ch³odz¹cej | milestone | 0d | 2026-06-04 A | 2026-06-04 | 28BP20-067, 28BP20-072, 28BP20-074, 28BP20-075, 28BP20-014 | 100% | 2026-06-03 | 2026-06-03 | 2026-06-03 |  | Kablex | 28BP20 | Mechanic | Budowa | Kamieñ | Anna | Uk³ad | PM000 | Zespó³-W | Blok | Krytyczn | Pakiet | L2 | Bez uwag |  |
|  | ROBOTY BUD | **Roboty budowlane** |  |  | 2025-10-30 | 2026-01-08 |  |  |  |  |  |  |  |  |  |  |  |  |  |  |  |  |  |  |  |  |  |
| 28BP20-012 |  | Fundamenty i roboty ziemne |  | 51d | 2025-10-30 A | 2026-01-08 A | 28BP20-007 FS+15d | 100% |  | 2025-10-28 | 2026-01-06 |  | Kablex | 28BP20 | Budowlan | Budowa | Roboty | Anna | Uk³ad | PM000 | Zespó³-K | Blok | Normalny | Pakiet | L2 | Bez uwag |  |
|  | RUROCI¥GI | **Ruroci¹gi** |  |  | 2026-01-07 | 2026-06-05 |  |  |  |  |  |  |  |  |  |  |  |  |  |  |  |  |  |  |  |  |  |
|  | SEKCJA 01 | **Sekcja 01** |  |  | 2026-01-07 | 2026-05-18 |  |  |  |  |  |  |  |  |  |  |  |  |  |  |  |  |  |  |  |  |  |
| 28BP20-015 |  | Prefabrykacja ruroci¹gów – Sekcja 01 |  | 6.2d | 2026-01-07 A | 2026-01-16 A | 28BP20-012 | 100% |  | 2026-01-07 | 2026-01-14 | Kalendarz 6-dniowy | Kablex | 28BP20 | Ruroci¹g | Budowa | Roboty | Anna | Uk³ad | PM000 | Zespó³-W | Blok | Normalny | Pakiet | L2 |  |  |
| 28BP20-016 |  | Monta¿ ruroci¹gów – Sekcja 01 |  | 13.7d | 2026-04-14 A | 2026-05-05 A | 28BP20-015, 28BP20-014 SS+7d | 100% |  | 2026-04-13 | 2026-04-29 |  | Kablex | 28BP20 | Ruroci¹g | Budowa | Roboty | Anna | Uk³ad | PM000 | Zespó³-W | Blok | Normalny | Pakiet | L2 | Do weryfikacji z wykonawc¹ |  |
| 28BP20-017 |  | Próba ciœnieniowa – Sekcja 01 |  | 3d | 2026-04-30 A | 2026-05-07 A | 28BP20-016 | 100% |  | 2026-04-30 | 2026-05-04 |  | Kablex | 28BP20 | Ruroci¹g | Budowa | Roboty | Anna | Uk³ad | PM000 | Zespó³-K | Blok | Normalny | Pakiet | L2 | Bez uwag |  |
| 28BP20-018 |  | Izolacje – Sekcja 01 |  | 6d | 2026-05-05 A | 2026-05-15 A | 28BP20-017 | 100% |  | 2026-05-05 | 2026-05-12 |  | Kablex | 28BP20 | Ruroci¹g | Budowa | Roboty | Anna | Uk³ad | PM000 | Zespó³-I | Blok | Wysoki | Pakiet | L2 |  |  |
| 28BP20-019 |  | Malowanie i oznakowanie – Sekcja 01 |  | 7d | 2026-05-08 A | 2026-05-18 A | 28BP20-018 FF+2d | 100% |  | 2026-05-06 | 2026-05-14 |  | Kablex | 28BP20 | Ruroci¹g | Budowa | Roboty | Anna | Uk³ad | PM000 | Zespó³-K | Blok | Wysoki | Pakiet | L2 |  |  |
|  | SEKCJA 02 | **Sekcja 02** |  |  | 2026-01-15 | 2026-05-19 |  |  |  |  |  |  |  |  |  |  |  |  |  |  |  |  |  |  |  |  |  |
| 28BP20-020 |  | Prefabrykacja ruroci¹gów – Sekcja 02 |  | 9.9d | 2026-01-15 A | 2026-01-28 A | 28BP20-012, 28BP20-015 SS+5d | 100% |  | 2026-01-14 | 2026-01-26 |  | Kablex | 28BP20 | Ruroci¹g | Budowa | Roboty | Anna | Uk³ad | PM000 | Zespó³-K | Blok | Normalny | Pakiet | L2 |  | Rev C |
| 28BP20-021 |  | Monta¿ ruroci¹gów – Sekcja 02 |  | 16.6d | 2026-04-09 A | 2026-05-05 A | 28BP20-020, 28BP20-014 SS+2d | 100% |  | 2026-04-06 | 2026-04-27 |  | Kablex | 28BP20 | Ruroci¹g | Budowa | Roboty | Anna | Uk³ad | PM000 | Zespó³-K | Blok | Normalny | Pakiet | L2 |  | Rev C |
| 28BP20-022 |  | Próba ciœnieniowa – Sekcja 02 |  | 3d | 2026-04-27 A | 2026-04-30 A | 28BP20-021 | 100% |  | 2026-04-28 | 2026-04-30 |  | Kablex | 28BP20 | Ruroci¹g | Budowa | Roboty | Anna | Uk³ad | PM000 | Zespó³-K | Blok | Normalny | Pakiet | L2 |  | Rev A |
| 28BP20-023 |  | Izolacje – Sekcja 02 |  | 9d | 2026-05-04 A | 2026-05-18 A | 28BP20-022 | 100% |  | 2026-05-01 | 2026-05-13 |  | Kablex | 28BP20 | Ruroci¹g | Budowa | Roboty | Anna | Uk³ad | PM000 | Zespó³-K | Blok | Wysoki | Pakiet | L2 | Ryzyko opóŸnienia | Rev A |
| 28BP20-024 |  | Malowanie i oznakowanie – Sekcja 02 |  | 6d | 2026-05-12 A | 2026-05-19 A | 28BP20-023 FF+2d | 100% |  | 2026-05-08 | 2026-05-15 |  | Kablex | 28BP20 | Ruroci¹g | Budowa | Roboty | Anna | Uk³ad | PM000 | Zespó³-W | Blok | Normalny | Pakiet | L2 |  | Rev B |
|  | SEKCJA 03 | **Sekcja 03** |  |  | 2026-01-20 | 2026-05-15 |  |  |  |  |  |  |  |  |  |  |  |  |  |  |  |  |  |  |  |  |  |
|  | PODSEKCJA | **Podsekcja 03.A** |  |  | 2026-01-20 | 2026-05-15 |  |  |  |  |  |  |  |  |  |  |  |  |  |  |  |  |  |  |  |  |  |
| 28BP20-027 |  | Prefabrykacja ruroci¹gów – Sekcja 03 |  | 10.7d | 2026-01-20 A | 2026-02-02 A | 28BP20-012, 28BP20-020 SS+5d | 100% |  | 2026-01-21 | 2026-02-03 |  | Kablex | 28BP20 | Ruroci¹g | Budowa | Roboty | Anna | Uk³ad | PM000 | Zespó³-W | Blok | Wysoki | Pakiet | L2 | Uzgodnione na koordynacji |  |
| 28BP20-028 |  | Monta¿ ruroci¹gów – Sekcja 03 |  | 6.6d | 2026-04-13 A | 2026-04-20 A | 28BP20-027, 28BP20-014 SS+6d | 100% |  | 2026-04-10 | 2026-04-17 |  | Kablex | 28BP20 | Ruroci¹g | Budowa | Roboty | Anna | Uk³ad | PM000 | Zespó³-I | Blok | Normalny | Pakiet | L2 |  | Rev C |
| 28BP20-029 |  | Próba ciœnieniowa – Sekcja 03 |  | 6d | 2026-04-17 A | 2026-04-28 A | 28BP20-028 | 100% |  | 2026-04-20 | 2026-04-27 |  | Kablex | 28BP20 | Ruroci¹g | Budowa | Roboty | Anna | Uk³ad | PM000 | Zespó³-E | Blok | Wysoki | Pakiet | L2 |  |  |
| 28BP20-030 |  | Izolacje – Sekcja 03 |  | 6d | 2026-04-29 A | 2026-05-06 A | 28BP20-029 | 100% |  | 2026-04-28 | 2026-05-05 |  | Kablex | 28BP20 | Ruroci¹g | Budowa | Roboty | Anna | Uk³ad | PM000 | Zespó³-K | Blok | Normalny | Pakiet | L2 |  |  |
| 28BP20-031 |  | Malowanie i oznakowanie – Sekcja 03 |  | 3d | 2026-05-08 A | 2026-05-15 A | 28BP20-030 FF+2d | 100% |  | 2026-05-05 | 2026-05-07 |  | Kablex | 28BP20 | Ruroci¹g | Budowa | Roboty | Anna | Uk³ad | PM000 | Zespó³-K | Blok | Normalny | Pakiet | L2 |  |  |

| ID | WBS | Activity | Duration | Start | Finish | Predecessors | Complete | Planned start | Planned finish | Calendar | Uwagi harmonogramisty | AC_Wykonawca | AC_Obiekt | AC_Dyscyplina | AC_Faza | AC_Zakres | AC_Opiekun | AC_Obszar | AC_PP_PM | AC_Zespol | AC_Blok | AC_Priorytet | AC_Pakiet | AC_Poziom | Rewizja dokumentu |
| --- | --- | --- | --- | --- | --- | --- | --- | --- | --- | --- | --- | --- | --- | --- | --- | --- | --- | --- | --- | --- | --- | --- | --- | --- | --- |
|  | SEKCJA 04 | **Sekcja 04** |  | 2026-01-28 | 2026-05-25 |  |  |  |  |  |  |  |  |  |  |  |  |  |  |  |  |  |  |  |  |
| 28BP20-032 |  | Prefabrykacja ruroci¹gów – Sekcja 04 | 5.9d | 2026-01-28 A | 2026-02-04 A | 28BP20-012, 28BP20-027 SS+5d | 100% | 2026-01-28 | 2026-02-03 |  | Czeka na dostawê | Kablex | 28BP20 | Ruroci¹g | Budowa | Roboty | Anna | Uk³ad | PM000 | Zespó³-K | Blok | Wysoki | Pakiet | L2 |  |
| 28BP20-033 |  | Monta¿ ruroci¹gów – Sekcja 04 | 20.8d | 2026-04-14 A | 2026-05-14 A | 28BP20-032, 28BP20-014 SS+5d | 100% | 2026-04-09 | 2026-05-06 |  |  | Kablex | 28BP20 | Ruroci¹g | Budowa | Roboty | Anna | Uk³ad | PM000 | Zespó³-W | Blok | Normalny | Pakiet | L2 |  |
| 28BP20-034 |  | Próba ciœnieniowa – Sekcja 04 | 6d | 2026-05-06 A | 2026-05-18 A | 28BP20-033 | 100% | 2026-05-07 | 2026-05-14 |  |  | Kablex | 28BP20 | Ruroci¹g | Budowa | Roboty | Anna | Uk³ad | PM000 | Zespó³-W | Blok | Normalny | Pakiet | L2 | Rev B |
| 28BP20-036 |  | Malowanie i oznakowanie – Sekcja 04 | 8d | 2026-05-14 A | 2026-05-25 A | 28BP20-035 FF+2d | 100% |  |  |  |  | Kablex | 28BP20 | Ruroci¹g | Budowa | Roboty | Anna | Uk³ad | PM000 | Zespó³-K | Blok | Normalny | Pakiet | L2 |  |
| 28BP20-035 |  | Izolacje – Sekcja 04 | 5d | 2026-05-15 A | 2026-05-22 A | 28BP20-034 | 100% | 2026-05-15 | 2026-05-21 |  |  | Kablex | 28BP20 | Ruroci¹g | Budowa | Roboty | Anna | Uk³ad | PM000 | Zespó³-K | Blok | Normalny | Pakiet | L2 |  |
|  | SEKCJA 05 | **Sekcja 05** |  | 2026-02-03 | 2026-04-30 |  |  |  |  |  |  |  |  |  |  |  |  |  |  |  |  |  |  |  |  |
| 28BP20-039 |  | Prefabrykacja ruroci¹gów – Sekcja 05 | 13.3d | 2026-02-03 A | 2026-02-23 A | 28BP20-012, 28BP20-032 SS+5d | 100% | 2026-02-04 | 2026-02-20 |  |  | Kablex | 28BP20 | Ruroci¹g | Budowa | Roboty | Anna | Uk³ad | PM000 | Zespó³-K | Blok | Wysoki | Pakiet | L2 |  |
| 28BP20-040 |  | Monta¿ ruroci¹gów – Sekcja 05 | 6.5d | 2026-04-08 A | 2026-04-17 A | 28BP20-039, 28BP20-014 SS+1d | 100% | 2026-04-03 | 2026-04-10 |  |  | Kablex | 28BP20 | Ruroci¹g | Budowa | Roboty | Anna | Uk³ad | PM000 | Zespó³-K | Blok | Wysoki | Pakiet | L2 |  |
| 28BP20-041 |  | Próba ciœnieniowa – Sekcja 05 | 3d | 2026-04-10 A | 2026-04-16 A | 28BP20-040 | 100% | 2026-04-13 | 2026-04-15 |  |  | Kablex | 28BP20 | Ruroci¹g | Budowa | Roboty | Anna | Uk³ad | PM100 | Zespó³-E | Blok | Normalny | Pakiet | L2 |  |
| 28BP20-043 |  | Malowanie i oznakowanie – Sekcja 05 | 7d | 2026-04-20 A | 2026-04-30 A | 28BP20-042 FF+2d | 100% | 2026-04-16 | 2026-04-24 |  |  | Kablex | 28BP20 | Ruroci¹g | Budowa | Roboty | Anna | Uk³ad | PM000 | Zespó³-K | Blok | Normalny | Pakiet | L2 | Rev A |
| 28BP20-042 |  | Izolacje – Sekcja 05 | 5d | 2026-04-21 A | 2026-04-29 A | 28BP20-041 | 100% | 2026-04-16 | 2026-04-22 |  |  | Kablex | 28BP20 | Ruroci¹g | Budowa | Roboty | Anna | Uk³ad | PM000 | Zespó³-W | Blok | Normalny | Pakiet | L2 | Rev C |
|  | SEKCJA 06 | **Sekcja 06** |  | 2026-02-12 | 2026-05-29 |  |  |  |  |  |  |  |  |  |  |  |  |  |  |  |  |  |  |  |  |
|  | PODSEKCJA | **Podsekcja 06.A** |  | 2026-02-12 | 2026-05-29 |  |  |  |  |  |  |  |  |  |  |  |  |  |  |  |  |  |  |  |  |
| 28BP20-044 |  | Prefabrykacja ruroci¹gów – Sekcja 06 | 11.6d | 2026-02-12 A | 2026-02-26 A | 28BP20-012, 28BP20-039 SS+5d | 100% | 2026-02-11 | 2026-02-25 |  |  | Kablex | 28BP20 | Ruroci¹g | Budowa | Roboty | Anna | Uk³ad | PM000 | Zespó³-K | Blok | Niski | Pakiet | L2 | Rev C |
| 28BP20-045 |  | Monta¿ ruroci¹gów – Sekcja 06 | 17.6d | 2026-04-13 A | 2026-05-05 A | 28BP20-044, 28BP20-014 SS+8d | 100% | 2026-04-14 | 2026-05-06 |  |  | Kablex | 28BP20 | Ruroci¹g | Budowa | Roboty | Anna | Uk³ad | PM000 | Zespó³-K | Blok | Normalny | Pakiet | L2 |  |
| 28BP20-046 |  | Próba ciœnieniowa – Sekcja 06 | 5d | 2026-05-11 A | 2026-05-20 A | 28BP20-045 | 100% | 2026-05-07 | 2026-05-13 |  |  | Kablex | 28BP20 | Ruroci¹g | Budowa | Roboty | Anna | Uk³ad | PM100 | Zespó³-I | Blok | Normalny | Pakiet | L2 | Rev B |
| 28BP20-047 |  | Izolacje – Sekcja 06 | 9d | 2026-05-18 A | 2026-05-29 A | 28BP20-046 | 100% | 2026-05-14 | 2026-05-26 |  | Ryzyko opóŸnienia | Kablex | 28BP20 | Ruroci¹g | Budowa | Roboty | Anna | Uk³ad | PM000 | Zespó³-K | Blok | Normalny | Pakiet | L2 | Rev B |
| 28BP20-048 |  | Malowanie i oznakowanie – Sekcja 06 | 2d | 2026-05-27 A | 2026-05-29 A | 28BP20-047 FF+2d | 100% | 2026-05-27 | 2026-05-28 |  |  | Kablex | 28BP20 | Ruroci¹g | Budowa | Roboty | Anna | Uk³ad | PM000 | Zespó³-W | Blok | Normalny | Pakiet | L2 |  |
|  | SEKCJA 07 | **Sekcja 07** |  | 2026-02-17 | 2026-05-14 |  |  |  |  |  |  |  |  |  |  |  |  |  |  |  |  |  |  |  |  |
| 28BP20-051 |  | Prefabrykacja ruroci¹gów – Sekcja 07 | 4.2d | 2026-02-17 A | 2026-02-24 A | 28BP20-012, 28BP20-044 SS+5d | 100% | 2026-02-18 | 2026-02-23 | Kalendarz 6-dniowy | Bez uwag | Kablex | 28BP20 | Ruroci¹g | Budowa | Roboty | Anna | Uk³ad | PM000 | Zespó³-W | Blok | Normalny | Pakiet | L2 |  |
| 28BP20-052 |  | Monta¿ ruroci¹gów – Sekcja 07 | 6.5d | 2026-04-20 A | 2026-04-28 A | 28BP20-051, 28BP20-014 SS+10d | 100% | 2026-04-16 | 2026-04-23 |  |  | Kablex | 28BP20 | Ruroci¹g | Budowa | Roboty | Anna | Uk³ad | PM000 | Zespó³-W | Blok | Normalny | Pakiet | L2 |  |
| 28BP20-053 |  | Próba ciœnieniowa – Sekcja 07 | 6d | 2026-04-24 A | 2026-05-04 A | 28BP20-052 | 100% | 2026-04-24 | 2026-05-01 |  | Bez uwag | Kablex | 28BP20 | Ruroci¹g | Budowa | Roboty | Anna | Uk³ad | PM000 | Zespó³-W | Blok | Normalny | Pakiet | L2 |  |
| 28BP20-055 |  | Malowanie i oznakowanie – Sekcja 07 | 8d | 2026-05-04 A | 2026-05-13 A | 28BP20-054 FF+2d | 100% | 2026-04-30 | 2026-05-11 |  |  | Kablex | 28BP20 | Ruroci¹g | Budowa | Roboty | Anna | Uk³ad | PM000 | Zespó³-W | Blok | Normalny | Pakiet | L2 | Rev A |
| 28BP20-054 |  | Izolacje – Sekcja 07 | 4d | 2026-05-06 A | 2026-05-14 A | 28BP20-053 | 100% | 2026-05-04 | 2026-05-07 |  | Do weryfikacji z wykonawc¹ | Kablex | 28BP20 | Ruroci¹g | Budowa | Roboty | Anna | Uk³ad | PM000 | Zespó³-K | Blok | Wysoki | Pakiet | L2 |  |

| ID | WBS | Activity | Type | Duration | Start | Finish | Predecessors | Complete | Actual finish | Planned start | Planned finish | Rewizja dokumentu | AC_Wykonawca | AC_Obiekt | AC_Dyscyplina | AC_Faza | AC_Zakres | AC_Opiekun | AC_Obszar | AC_PP_PM | AC_Zespol | AC_Blok | AC_Priorytet | AC_Pakiet | AC_Poziom | Uwagi harmonogramisty |
| --- | --- | --- | --- | --- | --- | --- | --- | --- | --- | --- | --- | --- | --- | --- | --- | --- | --- | --- | --- | --- | --- | --- | --- | --- | --- | --- |
|  | SEKCJA 08 | **Sekcja 08** |  |  | 2026-02-27 | 2026-05-19 |  |  |  |  |  |  |  |  |  |  |  |  |  |  |  |  |  |  |  |  |
| 28BP20-056 |  | Prefabrykacja ruroci¹gów – Sekcja 08 |  | 12.5d | 2026-02-27 A | 2026-03-18 A | 28BP20-012, 28BP20-051 SS+5d | 100% |  | 2026-02-25 | 2026-03-12 | Rev B | Kablex | 28BP20 | Ruroci¹g | Budowa | Roboty | Anna | Uk³ad | PM000 | Zespó³-K | Blok | Normalny | Pakiet | L2 |  |
| 28BP20-057 |  | Monta¿ ruroci¹gów – Sekcja 08 |  | 5.2d | 2026-04-20 A | 2026-04-27 A | 28BP20-056, 28BP20-014 SS+10d | 100% |  | 2026-04-16 | 2026-04-22 |  | Kablex | 28BP20 | Ruroci¹g | Budowa | Roboty | Anna | Uk³ad | PM000 | Zespó³-W | Blok | Normalny | Pakiet | L2 | Bez uwag |
| 28BP20-058 |  | Próba ciœnieniowa – Sekcja 08 |  | 4d | 2026-04-28 A | 2026-05-05 A | 28BP20-057 | 100% |  | 2026-04-23 | 2026-04-28 |  | Kablex | 28BP20 | Ruroci¹g | Budowa | Roboty | Anna | Uk³ad | PM000 | Zespó³-K | Blok | Normalny | Pakiet | L2 |  |
| 28BP20-059 |  | Izolacje – Sekcja 08 |  | 10d | 2026-04-29 A | 2026-05-12 A | 28BP20-058 | 100% |  |  |  |  | Kablex | 28BP20 | Ruroci¹g | Budowa | Roboty | Anna | Uk³ad | PM000 | Zespó³-W | Blok | Wysoki | Pakiet | L2 |  |
| 28BP20-060 |  | Malowanie i oznakowanie – Sekcja 08 |  | 2d | 2026-05-18 A | 2026-05-19 A | 28BP20-059 FF+2d | 100% |  | 2026-05-13 | 2026-05-14 |  | Kablex | 28BP20 | Ruroci¹g | Budowa | Roboty | Anna | Uk³ad | PM000 | Zespó³-W | Blok | Niski | Pakiet | L2 |  |
|  | SEKCJA 09 | **Sekcja 09** |  |  | 2026-03-09 | 2026-05-26 |  |  |  |  |  |  |  |  |  |  |  |  |  |  |  |  |  |  |  |  |
|  | PODSEKCJA | **Podsekcja 09.A** |  |  | 2026-03-09 | 2026-05-26 |  |  |  |  |  |  |  |  |  |  |  |  |  |  |  |  |  |  |  |  |
| 28BP20-063 |  | Prefabrykacja ruroci¹gów – Sekcja 09 |  | 12.1d | 2026-03-09 A | 2026-03-26 A | 28BP20-012, 28BP20-056 SS+5d | 100% |  | 2026-03-04 | 2026-03-19 | Rev A | Kablex | 28BP20 | Ruroci¹g | Budowa | Roboty | Anna | Uk³ad | PM000 | Zespó³-K | Blok | Normalny | Pakiet | L2 | Do weryfikacji z wykonawc¹ |
| 28BP20-064 |  | Monta¿ ruroci¹gów – Sekcja 09 |  | 17.7d | 2026-04-10 A | 2026-05-04 A | 28BP20-063, 28BP20-014 SS+5d | 100% |  | 2026-04-09 | 2026-05-01 | Rev C | Kablex | 28BP20 | Ruroci¹g | Budowa | Roboty | Anna | Uk³ad | PM000 | Zespó³-K | Blok | Normalny | Pakiet | L2 |  |
| 28BP20-065 |  | Próba ciœnieniowa – Sekcja 09 |  | 4d | 2026-05-01 A | 2026-05-11 A | 28BP20-064 | 100% |  | 2026-05-04 | 2026-05-07 | Rev C | Kablex | 28BP20 | Ruroci¹g | Budowa | Roboty | Anna | Uk³ad | PM000 | Zespó³-K | Blok | Wysoki | Pakiet | L2 |  |
| 28BP20-066 |  | Izolacje – Sekcja 09 |  | 9d | 2026-05-12 A | 2026-05-22 A | 28BP20-065 | 100% |  | 2026-05-08 | 2026-05-20 |  | Kablex | 28BP20 | Ruroci¹g | Budowa | Roboty | Anna | Uk³ad | PM000 | Zespó³-W | Blok | Normalny | Pakiet | L2 |  |
| 28BP20-067 |  | Malowanie i oznakowanie – Sekcja 09 |  | 2d | 2026-05-25 A | 2026-05-26 A | 28BP20-066 FF+2d | 100% |  | 2026-05-21 | 2026-05-22 |  | Kablex | 28BP20 | Ruroci¹g | Budowa | Roboty | Anna | Uk³ad | PM000 | Zespó³-W | Blok | Normalny | Pakiet | L2 | Uzgodnione na koordynacji |
|  | SEKCJA 10 | **Sekcja 10** |  |  | 2026-03-13 | 2026-06-05 |  |  |  |  |  |  |  |  |  |  |  |  |  |  |  |  |  |  |  |  |
| 28BP20-068 |  | Prefabrykacja ruroci¹gów – Sekcja 10 |  | 10.6d | 2026-03-13 A | 2026-03-27 A | 28BP20-012, 28BP20-063 SS+5d | 100% |  | 2026-03-11 | 2026-03-24 | Rev A | Kablex | 28BP20 | Ruroci¹g | Budowa | Roboty | Anna | Uk³ad | PM000 | Zespó³-W | Blok | Normalny | Pakiet | L2 |  |
| 28BP20-069 |  | Monta¿ ruroci¹gów – Sekcja 10 |  | 17d | 2026-04-20 A | 2026-05-14 A | 28BP20-068, 28BP20-014 SS+9d | 100% |  | 2026-04-15 | 2026-05-07 |  | Kablex | 28BP20 | Ruroci¹g | Budowa | Roboty | Anna | Uk³ad | PM200 | Zespó³-I | Blok | Wysoki | Pakiet | L2 | Ryzyko opóŸnienia |
| 28BP20-070 |  | Próba ciœnieniowa – Sekcja 10 |  | 6d | 2026-05-08 A | 2026-05-18 A | 28BP20-069 | 100% |  | 2026-05-08 | 2026-05-15 |  | Kablex | 28BP20 | Ruroci¹g | Budowa | Roboty | Anna | Uk³ad | PM000 | Zespó³-K | Blok | Normalny | Pakiet | L2 |  |
| 28BP20-071 |  | Izolacje – Sekcja 10 |  | 10d | 2026-05-21 A | 2026-06-04 A | 28BP20-070 | 100% |  | 2026-05-18 | 2026-05-29 |  | Kablex | 28BP20 | Ruroci¹g | Budowa | Roboty | Anna | Uk³ad | PM300 | Zespó³-E | Blok | Normalny | Pakiet | L2 |  |
| 28BP20-072 |  | Malowanie i oznakowanie – Sekcja 10 |  | 5d | 2026-05-27 A | 2026-06-05 A | 28BP20-071 FF+2d | 100% |  | 2026-05-27 | 2026-06-02 |  | Kablex | 28BP20 | Ruroci¹g | Budowa | Roboty | Anna | Uk³ad | PM000 | Zespó³-W | Blok | Normalny | Pakiet | L2 |  |
|  | PROJ | **Projektowanie** |  |  | 2025-01-16 | 2025-07-11 |  |  |  |  |  |  |  |  |  |  |  |  |  |  |  |  |  |  |  |  |
|  | DOKUMENTAC | **Dokumentacja** |  |  | 2025-01-16 | 2025-07-11 |  |  |  |  |  |  |  |  |  |  |  |  |  |  |  |  |  |  |  |  |
| 28BP20-001 |  | Projekt wykonawczy – Pompy wody ch³odz¹cej |  | 96d | 2025-01-16 A | 2025-06-02 A |  | 100% |  | 2025-01-14 | 2025-05-27 | Rev A | Kablex | 28BP20 | Budowlan | Projekto | Projekt | Anna | Uk³ad | PM000 | Zespó³-W | Blok | Normalny | Pakiet | L2 |  |
| 28BP20-002 |  | Uzgodnienie dokumentacji z Inwestorem |  | 23d | 2025-05-28 A | 2025-07-02 A | 28BP20-001 | 100% |  | 2025-05-28 | 2025-06-27 |  | Kablex | 28BP20 | Budowlan | Projekto | Projekt | Anna | Uk³ad | PM000 | Zespó³-K | Blok | Wysoki | Pakiet | L2 |  |
| 28BP20-003 |  | Zatwierdzenie dokumentacji do realizacji |  | 7d | 2025-06-27 A | 2025-07-07 A | 28BP20-002 | 100% |  | 2025-06-30 | 2025-07-08 | Rev C | Kablex | 28BP20 | Budowlan | Projekto | Projekt | Anna | Uk³ad | PM000 | Zespó³-K | Blok | Normalny | Pakiet | L2 | Ryzyko opóŸnienia |
| 28BP20-004 |  | KM: Dokumentacja zatwierdzona – Pompy wody ch³odz¹cej | milestone | 0d | 2025-07-11 A | 2025-07-11 | 28BP20-003 | 100% | 2025-07-10 | 2025-07-09 | 2025-07-09 | Rev A | Kablex | 28BP20 | Budowlan | Projekto | Kamieñ | Anna | Uk³ad | PM300 | Zespó³-I | Blok | Normalny | Pakiet | L1 |  |

| ID | WBS | Activity | Type | Duration | Start | Finish | Predecessors | Complete | Actual start | Actual finish | Planned start | Planned finish | Total float | Free float | Calendar | AC_Wykonawca | AC_Obiekt | AC_Dyscyplina | AC_Faza | AC_Zakres | AC_Opiekun | AC_Obszar | AC_PP_PM | AC_Zespol | AC_Blok | AC_Priorytet | AC_Pakiet | AC_Poziom | Uwagi harmonogramisty | Rewizja dokumentu |
| --- | --- | --- | --- | --- | --- | --- | --- | --- | --- | --- | --- | --- | --- | --- | --- | --- | --- | --- | --- | --- | --- | --- | --- | --- | --- | --- | --- | --- | --- | --- |
|  | ROZR | **Rozruch** |  |  | 2026-06-04 | 2026-07-23 |  |  |  |  |  |  |  |  |  |  |  |  |  |  |  |  |  |  |  |  |  |  |  |  |
|  | ROZRUCH | **Rozruch** |  |  | 2026-06-04 | 2026-07-23 |  |  |  |  |  |  |  |  |  |  |  |  |  |  |  |  |  |  |  |  |  |  |  |  |
| 28BP20-077 |  | Przegl¹d gotowoœci do rozruchu |  | 6d | 2026-06-04 A | 2026-06-16 A | 28BP20-076, 28BP20-019, 28BP20-024, 28BP20-026 | 100% |  |  | 2026-06-03 | 2026-06-10 |  |  |  | Kablex | 28BP20 | Rozruch | Rozruch | Rozruch | Anna | Uk³ad | PM000 | Zespó³-K | Blok | Normalny | Pakiet | L2 |  |  |
| 28BP20-078 |  | Rozruch na zimno |  | 7d | 2026-06-11 A | 2026-06-24 A | 28BP20-077 | 100% |  |  | 2026-06-11 | 2026-06-19 |  |  |  | Kablex | 28BP20 | Rozruch | Rozruch | Rozruch | Anna | Uk³ad | PM000 | Zespó³-W | Blok | Niski | Pakiet | L2 | Uzgodnione na koordynacji |  |
| 28BP20-079 |  | Rozruch na gor¹co / próby ruchowe |  | 23d | 2026-06-19 A | 2026-07-23 A | 28BP20-078 | 100% |  |  | 2026-06-22 | 2026-07-22 |  |  |  | Kablex | 28BP20 | Rozruch | Rozruch | Rozruch | Anna | Uk³ad | PM000 | Zespó³-K | Blok | Normalny | Pakiet | L2 |  |  |
| 28BP20-080 |  | KM: Odbiór koñcowy – Pompy wody ch³odz¹cej | milestone | 0d | 2026-07-23 | 2026-07-23 A | 28BP20-079 | 100% | 2026-07-24 |  |  |  |  |  |  | Kablex | 28BP20 | Rozruch | Rozruch | Kamieñ | Anna | Uk³ad | PM000 | Zespó³-W | Blok | Normalny | Pakiet | L1 | Czeka na dostawê |  |
|  | ZAKU | **Zakupy** |  |  | 2025-02-14 | 2026-04-03 |  |  |  |  |  |  |  |  |  |  |  |  |  |  |  |  |  |  |  |  |  |  |  |  |
|  | DOSTAWY | **Dostawy** |  |  | 2025-10-08 | 2026-04-03 |  |  |  |  |  |  |  |  |  |  |  |  |  |  |  |  |  |  |  |  |  |  |  |  |
| 28BP20-008 |  | Produkcja u dostawcy |  | 91d | 2025-10-08 A | 2026-02-12 A | 28BP20-007 | 100% |  |  | 2025-10-07 | 2026-02-10 |  |  |  | Kablex | 28BP20 | Mechanic | Zakupy | Dostawa | Anna | Uk³ad | PM000 | Zespó³-K | Blok | Niski | Pakiet | L2 |  |  |
| 28BP20-009 |  | Testy FAT |  | 4d | 2026-02-11 A | 2026-02-18 A | 28BP20-008 | 100% |  |  | 2026-02-11 | 2026-02-16 |  |  |  | Kablex | 28BP20 | Mechanic | Zakupy | Dostawa | Anna | Uk³ad | PM000 | Zespó³-W | Blok | Krytyczn | Pakiet | L2 |  | Rev C |
| 28BP20-010 |  | Transport i dostawa na plac budowy |  | 32d | 2026-02-18 A | 2026-04-03 A | 28BP20-009 | 100% |  |  | 2026-02-17 | 2026-04-01 |  |  |  | Kablex | 28BP20 | Mechanic | Zakupy | Dostawa | Anna | Uk³ad | PM000 | Zespó³-W | Blok | Normalny | Pakiet | L2 |  |  |
| 28BP20-011 |  | KM: Dostawa na budowê – Pompy wody ch³odz¹cej | milestone | 0d | 2026-04-02 A | 2026-04-02 | 28BP20-010 | 100% |  | 2026-04-01 |  |  |  |  |  | Kablex | 28BP20 | Mechanic | Zakupy | Kamieñ | Anna | Uk³ad | PM000 | Zespó³-W | Blok | Wysoki | Pakiet | L1 | Bez uwag |  |
|  | ZAMÓWIENIA | **Zamówienia** |  |  | 2025-02-14 | 2025-10-14 |  |  |  |  |  |  |  |  |  |  |  |  |  |  |  |  |  |  |  |  |  |  |  |  |
| 28BP20-005 |  | Zapytanie ofertowe |  | 30d | 2025-02-14 A | 2025-03-31 A | 28BP20-001 SS+20d | 100% |  |  | 2025-02-11 | 2025-03-24 |  |  |  | Kablex | 28BP20 | Mechanic | Zakupy | Dostawa | Anna | Uk³ad | PM000 | Zespó³-K | Blok | Niski | Pakiet | L2 | Uzgodnione na koordynacji |  |
| 28BP20-006 |  | Analiza i wybór ofert |  | 11d | 2025-03-24 A | 2025-04-09 A | 28BP20-005 | 100% |  |  | 2025-03-25 | 2025-04-08 |  |  |  | Kablex | 28BP20 | Mechanic | Zakupy | Dostawa | Anna | Uk³ad | PM000 | Zespó³-W | Blok | Wysoki | Pakiet | L2 |  |  |
| 28BP20-007 |  | Zawarcie umowy / zamówienie |  | 8d | 2025-09-30 A | 2025-10-14 A | 28BP20-006, 28BP20-004 SS, 29UF44-004 (other project) SF+1d, 28BW90-004 (other project) FS+9d | 100% |  |  | 2025-09-25 | 2025-10-06 |  |  |  | Kablex | 28BP20 | Mechanic | Zakupy | Dostawa | Anna | Uk³ad | PM000 | Zespó³-K | Blok | Niski | Pakiet | L1 |  | Rev B |
|  | UK£AD_ELEKTR | **Uk³ad elektryczny** |  |  | 2025-01-15 | 2028-04-10 |  |  |  |  |  |  |  |  |  |  |  |  |  |  |  |  |  |  |  |  |  |  |  |  |
|  | 10SN54 | **10SN54 – Rozdzielnia 110 kV** |  |  | 2025-06-20 | 2028-04-10 |  |  |  |  |  |  |  |  |  |  |  |  |  |  |  |  |  |  |  |  |  |  |  |  |
|  | BUDO | **Budowa** |  |  | 2026-01-26 | 2028-03-24 |  |  |  |  |  |  |  |  |  |  |  |  |  |  |  |  |  |  |  |  |  |  |  |  |
|  | AKPIA | **AKPiA** |  |  | 2028-01-21 | 2028-02-14 |  |  |  |  |  |  |  |  |  |  |  |  |  |  |  |  |  |  |  |  |  |  |  |  |
| 10SN54-164 |  | Monta¿ uk³adów AKPiA |  | 17d | 2028-01-21 | 2028-02-14 | 10SN54-014 SS+5d |  |  |  | 2027-04-14 | 2027-05-06 | 17.6d | 0d |  | ElektroP | 10SN54 | AKPiA | Budowa | Roboty | Joanna | Uk³ad | PM000 | Zespó³-K | Blok | Normalny | Pakiet | L2 | Czeka na dostawê | Rev A |
|  | ELEKTRYKA | **Elektryka** |  |  | 2028-01-26 | 2028-02-24 |  |  |  |  |  |  |  |  |  |  |  |  |  |  |  |  |  |  |  |  |  |  |  |  |
| 10SN54-074 |  | Pod³¹czenia i pomiary – trasa 10 |  | 9d | 2028-01-26 | 2028-02-07 | 10SN54-073 FF |  |  |  | 2027-04-19 | 2027-04-29 | 54.6d | 0d |  | ElektroP | 10SN54 | Elektryc | Budowa | Roboty | Joanna | Uk³ad | PM000 | Zespó³-W | Blok | Krytyczn | Pakiet | L2 |  |  |
| 10SN54-025 |  | Uk³adanie kabli – trasa 02 |  | 6d | 2028-01-28 | 2028-02-04 | 10SN54-014 SS+10d |  |  |  | 2027-04-21 | 2027-04-28 | 23.6d | 0d |  | ElektroP | 10SN54 | Elektryc | Budowa | Roboty | Joanna | Uk³ad | PM000 | Zespó³-K | Blok | Niski | Pakiet | L2 |  |  |
| 10SN54-037 |  | Uk³adanie kabli – trasa 04 |  | 11d | 2028-01-28 | 2028-02-11 | 10SN54-014 SS+10d |  |  |  | 2027-04-21 | 2027-05-05 | 50.6d | 0d |  | ElektroP | 10SN54 | Elektryc | Budowa | Roboty | Joanna | Uk³ad | PM000 | Zespó³-W | Blok | Normalny | Pakiet | L2 |  |  |
| 10SN54-049 |  | Uk³adanie kabli – trasa 06 |  | 18d | 2028-01-28 | 2028-02-22 | 10SN54-014 SS+10d |  |  |  | 2027-04-21 | 2027-05-14 | 43.6d | 0d |  | ElektroP | 10SN54 | Elektryc | Budowa | Roboty | Joanna | Uk³ad | PM000 | Zespó³-K | Blok | Niski | Pakiet | L2 | Bez uwag |  |
| 10SN54-061 |  | Uk³adanie kabli – trasa 08 |  | 11d | 2028-01-28 | 2028-02-11 | 10SN54-014 SS+10d |  |  |  | 2027-04-21 | 2027-05-05 | 50.6d | 0d |  | ElektroP | 10SN54 | Elektryc | Budowa | Roboty | Joanna | Uk³ad | PM100 | Zespó³-E | Blok | Wysoki | Pakiet | L2 | Bez uwag | Rev C |
| 10SN54-073 |  | Uk³adanie kabli – trasa 10 |  | 7d | 2028-01-28 | 2028-02-07 | 10SN54-014 SS+10d |  |  |  | 2027-04-21 | 2027-04-29 | 54.6d | 0d |  | ElektroP | 10SN54 | Elektryc | Budowa | Roboty | Joanna | Uk³ad | PM000 | Zespó³-K | Blok | Niski | Pakiet | L2 |  |  |
| 10SN54-085 |  | Uk³adanie kabli – trasa 12 |  | 13d | 2028-01-28 | 2028-02-15 | 10SN54-014 SS+10d |  |  |  | 2027-04-21 | 2027-05-07 | 48.6d | 0d |  | ElektroP | 10SN54 | Elektryc | Budowa | Roboty | Joanna | Uk³ad | PM000 | Zespó³-W | Blok | Wysoki | Pakiet | L2 |  |  |
| 10SN54-097 |  | Uk³adanie kabli – trasa 14 |  | 16d | 2028-01-28 | 2028-02-18 | 10SN54-014 SS+10d |  |  |  | 2027-04-21 | 2027-05-12 | 45.6d | 0d |  | ElektroP | 10SN54 | Elektryc | Budowa | Roboty | Joanna | Uk³ad | PM000 | Zespó³-E | Blok | Normalny | Pakiet | L2 | Ryzyko opóŸnienia |  |
| 10SN54-109 |  | Uk³adanie kabli – trasa 16 |  | 20d | 2028-01-28 | 2028-02-24 | 10SN54-014 SS+10d |  |  |  | 2027-04-21 | 2027-05-18 | 41.6d | 0d |  | ElektroP | 10SN54 | Elektryc | Budowa | Roboty | Joanna | Uk³ad | PM000 | Zespó³-W | Blok | Normalny | Pakiet | L2 | Ryzyko opóŸnienia |  |
| 10SN54-121 |  | Uk³adanie kabli – trasa 18 |  | 5d | 2028-01-28 | 2028-02-03 | 10SN54-014 SS+10d |  |  |  | 2027-04-21 | 2027-04-27 | 56.6d | 0d |  | ElektroP | 10SN54 | Elektryc | Budowa | Roboty | Joanna | Uk³ad | PM000 | Zespó³-K | Blok | Wysoki | Pakiet | L2 | Czeka na dostawê |  |
| 10SN54-122 |  | Pod³¹czenia i pomiary – trasa 18 |  | 5d | 2028-01-28 | 2028-02-03 | 10SN54-121 FF |  |  |  | 2027-04-21 | 2027-04-27 | 56.6d | 0d | Kalendarz 6-dniowy | ElektroP | 10SN54 | Elektryc | Budowa | Roboty | Joanna | Uk³ad | PM000 | Zespó³-W | Blok | Wysoki | Pakiet | L2 | Ryzyko opóŸnienia | Rev B |
| 10SN54-133 |  | Uk³adanie kabli – trasa 20 |  | 17d | 2028-01-28 | 2028-02-21 | 10SN54-014 SS+10d |  |  |  | 2027-04-21 | 2027-05-13 | 44.6d | 0d |  | ElektroP | 10SN54 | Elektryc | Budowa | Roboty | Joanna | Uk³ad | PM000 | Zespó³-W | Blok | Normalny | Pakiet | L2 |  |  |
| 10SN54-145 |  | Uk³adanie kabli – trasa 22 |  | 20d | 2028-01-28 | 2028-02-24 | 10SN54-014 SS+10d |  |  |  | 2027-04-21 | 2027-05-18 | 41.6d | 0d |  | ElektroP | 10SN54 | Elektryc | Budowa | Roboty | Joanna | Uk³ad | PM000 | Zespó³-K | Blok | Normalny | Pakiet | L2 |  |  |
| 10SN54-157 |  | Uk³adanie kabli – trasa 24 |  | 12d | 2028-01-28 | 2028-02-14 | 10SN54-014 SS+10d |  |  |  | 2027-04-21 | 2027-05-06 | 17.6d | 0d |  | ElektroP | 10SN54 | Elektryc | Budowa | Roboty | Joanna | Uk³ad | PM000 | Zespó³-W | Blok | Normalny | Pakiet | L2 | Czeka na dostawê |  |
| 10SN54-026 |  | Pod³¹czenia i pomiary – trasa 02 |  | 4d | 2028-02-01 | 2028-02-04 | 10SN54-025 FF |  |  |  | 2027-04-23 | 2027-04-28 | 23.6d | 0d |  | ElektroP | 10SN54 | Elektryc | Budowa | Roboty | Joanna | Uk³ad | PM000 | Zespó³-K | Blok | Normalny | Pakiet | L2 | Ryzyko opóŸnienia |  |
| 10SN54-038 |  | Pod³¹czenia i pomiary – trasa 04 |  | 9d | 2028-02-01 | 2028-02-11 | 10SN54-037 FF |  |  |  | 2027-04-23 | 2027-05-05 | 50.6d | 0d |  | ElektroP | 10SN54 | Elektryc | Budowa | Roboty | Joanna | Uk³ad | PM000 | Zespó³-E | Blok | Normalny | Pakiet | L2 | Bez uwag |  |
| 10SN54-086 |  | Pod³¹czenia i pomiary – trasa 12 |  | 10d | 2028-02-02 | 2028-02-15 | 10SN54-085 FF |  |  |  | 2027-04-26 | 2027-05-07 | 48.6d | 0d |  | ElektroP | 10SN54 | Elektryc | Budowa | Roboty | Joanna | Uk³ad | PM000 | Zespó³-W | Blok | Niski | Pakiet | L2 | Bez uwag |  |
| 10SN54-062 |  | Pod³¹czenia i pomiary – trasa 08 |  | 7d | 2028-02-03 | 2028-02-11 | 10SN54-061 FF |  |  |  | 2027-04-27 | 2027-05-05 | 50.6d | 0d |  | ElektroP | 10SN54 | Elektryc | Budowa | Roboty | Joanna | Uk³ad | PM000 | Zespó³-K | Blok | Normalny | Pakiet | L2 |  |  |
| 10SN54-158 |  | Pod³¹czenia i pomiary – trasa 24 |  | 7d | 2028-02-04 | 2028-02-14 | 10SN54-157 FF |  |  |  | 2027-04-28 | 2027-05-06 | 17.6d | 0d |  | ElektroP | 10SN54 | Elektryc | Budowa | Roboty | Joanna | Uk³ad | PM000 | Zespó³-K | Blok | Normalny | Pakiet | L2 |  |  |
| 10SN54-098 |  | Pod³¹czenia i pomiary – trasa 14 |  | 7d | 2028-02-10 | 2028-02-18 | 10SN54-097 FF |  |  |  | 2027-05-04 | 2027-05-12 | 45.6d | 0d |  | ElektroP | 10SN54 | Elektryc | Budowa | Roboty | Joanna | Uk³ad | PM000 | Zespó³-K | Blok | Normalny | Pakiet | L2 |  | Rev C |
| 10SN54-134 |  | Pod³¹czenia i pomiary – trasa 20 |  | 8d | 2028-02-10 | 2028-02-21 | 10SN54-133 FF |  |  |  | 2027-05-04 | 2027-05-13 | 44.6d | 0d |  | ElektroP | 10SN54 | Elektryc | Budowa | Roboty | Joanna | Uk³ad | PM000 | Zespó³-K | Blok | Normalny | Pakiet | L2 |  |  |
| 10SN54-050 |  | Pod³¹czenia i pomiary – trasa 06 |  | 8d | 2028-02-11 | 2028-02-22 | 10SN54-049 FF |  |  |  | 2027-05-05 | 2027-05-14 | 43.6d | 0d |  | ElektroP | 10SN54 | Elektryc | Budowa | Roboty | Joanna | Uk³ad | PM000 | Zespó³-K | Blok | Niski | Pakiet | L2 |  |  |
| 10SN54-110 |  | Pod³¹czenia i pomiary – trasa 16 |  | 3d | 2028-02-22 | 2028-02-24 | 10SN54-109 FF |  |  |  | 2027-05-14 | 2027-05-18 | 41.6d | 0d |  | ElektroP | 10SN54 | Elektryc | Budowa | Roboty | Joanna | Uk³ad | PM000 | Zespó³-K | Blok | Normalny | Pakiet | L2 |  |  |
| 10SN54-146 |  | Pod³¹czenia i pomiary – trasa 22 |  | 3d | 2028-02-22 | 2028-02-24 | 10SN54-145 FF |  |  |  | 2027-05-14 | 2027-05-18 | 41.6d | 0d | Kalendarz 6-dniowy | ElektroP | 10SN54 | Elektryc | Budowa | Roboty | Joanna | Uk³ad | PM000 | Zespó³-I | Blok | Krytyczn | Pakiet | L2 |  | Rev A |

| ID | WBS | Activity | Type | Duration | Start | Finish | Predecessors | Complete | Planned start | Planned finish | Total float | Free float | Calendar | Uwagi harmonogramisty | Rewizja dokumentu | AC_Wykonawca | AC_Obiekt | AC_Dyscyplina | AC_Faza | AC_Zakres | AC_Opiekun | AC_Obszar | AC_PP_PM | AC_Zespol | AC_Blok | AC_Priorytet | AC_Pakiet | AC_Poziom |
| --- | --- | --- | --- | --- | --- | --- | --- | --- | --- | --- | --- | --- | --- | --- | --- | --- | --- | --- | --- | --- | --- | --- | --- | --- | --- | --- | --- | --- |
|  | MONTA¯ | **Monta¿** |  |  | 2026-03-26 | 2028-03-09 |  |  |  |  |  |  |  |  |  |  |  |  |  |  |  |  |  |  |  |  |  |  |
| 10SN54-013 |  | Monta¿ konstrukcji stalowych |  | 23d | 2026-03-26 A | 2026-04-28 A | 10SN54-012 | 100% | 2026-03-27 | 2026-04-28 |  |  |  | Ryzyko opóŸnienia | Rev A | ElektroP | 10SN54 | Mechanic | Budowa | Roboty | Joanna | Uk³ad | PM000 | Zespó³-W | Blok | Normalny | Pakiet | L2 |
| 10SN54-014 |  | Monta¿ urz¹dzeñ g³ównych |  | 22d | 2028-01-14 | 2028-02-14 | 10SN54-013, 10SN54-011 |  | 2027-04-07 | 2027-05-06 | 0d |  |  | Ryzyko opóŸnienia |  | ElektroP | 10SN54 | Mechanic | Budowa | Roboty | Joanna | Uk³ad | PM000 | Zespó³-K | Blok | Normalny | Pakiet | L2 |
| 10SN54-165 |  | KM: Zakoñczenie monta¿u – Rozdzielnia 110 kV | milestone | 0d | 2028-03-09 | 2028-03-09 | 10SN54-156, 10SN54-158, 10SN54-163, 10SN54-164, 10SN54-014 |  | 2027-06-01 | 2027-06-01 | 0d |  |  |  | Rev C | ElektroP | 10SN54 | Mechanic | Budowa | Kamieñ | Joanna | Uk³ad | PM000 | Zespó³-K | Blok | Krytyczn | Pakiet | L2 |
|  | ROBOTY BUD | **Roboty budowlane** |  |  | 2026-01-26 | 2026-03-27 |  |  |  |  |  |  |  |  |  |  |  |  |  |  |  |  |  |  |  |  |  |  |
| 10SN54-012 |  | Fundamenty i roboty ziemne |  | 44d | 2026-01-26 A | 2026-03-27 A | 10SN54-007 FS+20d | 100% | 2026-01-26 | 2026-03-26 |  |  |  | Bez uwag |  | ElektroP | 10SN54 | Budowlan | Budowa | Roboty | Joanna | Uk³ad | PM000 | Zespó³-W | Blok | Wysoki | Pakiet | L2 |
|  | RUROCI¥GI | **Ruroci¹gi** |  |  | 2026-03-30 | 2028-03-24 |  |  |  |  |  |  |  |  |  |  |  |  |  |  |  |  |  |  |  |  |  |  |
|  | SEKCJA 01 | **Sekcja 01** |  |  | 2026-03-30 | 2028-02-21 |  |  |  |  |  |  |  |  |  |  |  |  |  |  |  |  |  |  |  |  |  |  |
| 10SN54-015 |  | Prefabrykacja ruroci¹gów – Sekcja 01 |  | 3.2d | 2026-03-30 A | 2026-04-02 A | 10SN54-012 | 100% | 2026-03-27 | 2026-03-31 |  |  |  | Uzgodnione na koordynacji |  | ElektroP | 10SN54 | Ruroci¹g | Budowa | Roboty | Joanna | Uk³ad | PM000 | Zespó³-K | Blok | Wysoki | Pakiet | L2 |
| 10SN54-016 |  | Monta¿ ruroci¹gów – Sekcja 01 |  | 13d | 2028-01-17 | 2028-02-02 | 10SN54-015, 10SN54-014 SS+1d |  | 2027-04-08 | 2027-04-26 | 12.6d | 0d | Kalendarz 6-dniowy |  | Rev A | ElektroP | 10SN54 | Ruroci¹g | Budowa | Roboty | Joanna | Uk³ad | PM000 | Zespó³-W | Blok | Wysoki | Pakiet | L2 |
| 10SN54-017 |  | Próba ciœnieniowa – Sekcja 01 |  | 4d | 2028-02-03 | 2028-02-08 | 10SN54-016 |  | 2027-04-27 | 2027-04-30 | 12.6d | 0d |  | Bez uwag |  | ElektroP | 10SN54 | Ruroci¹g | Budowa | Roboty | Joanna | Uk³ad | PM000 | Zespó³-W | Blok | Normalny | Pakiet | L2 |
| 10SN54-018 |  | Izolacje – Sekcja 01 |  | 7d | 2028-02-09 | 2028-02-17 | 10SN54-017 |  | 2027-05-03 | 2027-05-11 | 12.6d | 0d |  |  |  | ElektroP | 10SN54 | Ruroci¹g | Budowa | Roboty | Joanna | Uk³ad | PM000 | Zespó³-W | Blok | Normalny | Pakiet | L2 |
| 10SN54-019 |  | Malowanie i oznakowanie – Sekcja 01 |  | 2d | 2028-02-18 | 2028-02-21 | 10SN54-018 FF+2d |  | 2027-05-12 | 2027-05-13 | 12.6d | 0d |  |  |  | ElektroP | 10SN54 | Ruroci¹g | Budowa | Roboty | Joanna | Uk³ad | PM000 | Zespó³-K | Blok | Normalny | Pakiet | L2 |
|  | SEKCJA 02 | **Sekcja 02** |  |  | 2026-04-07 | 2028-02-24 |  |  |  |  |  |  |  |  |  |  |  |  |  |  |  |  |  |  |  |  |  |  |
| 10SN54-020 |  | Prefabrykacja ruroci¹gów – Sekcja 02 |  | 6.4d | 2026-04-07 A | 2026-04-16 A | 10SN54-012, 10SN54-015 SS+5d | 100% | 2026-04-03 | 2026-04-10 |  |  |  |  |  | ElektroP | 10SN54 | Ruroci¹g | Budowa | Roboty | Joanna | Uk³ad | PM000 | Zespó³-W | Blok | Wysoki | Pakiet | L2 |
| 10SN54-021 |  | Monta¿ ruroci¹gów – Sekcja 02 |  | 6.3d | 2028-01-24 | 2028-01-31 | 10SN54-020, 10SN54-014 SS+6d |  | 2027-04-15 | 2027-04-22 | 9.3d | 0d |  |  |  | ElektroP | 10SN54 | Ruroci¹g | Budowa | Roboty | Joanna | Uk³ad | PM000 | Zespó³-K | Blok | Normalny | Pakiet | L2 |
| 10SN54-022 |  | Próba ciœnieniowa – Sekcja 02 |  | 5d | 2028-02-01 | 2028-02-07 | 10SN54-021 |  | 2027-04-23 | 2027-04-29 | 9.3d | 0d |  | Bez uwag |  | ElektroP | 10SN54 | Ruroci¹g | Budowa | Roboty | Joanna | Uk³ad | PM000 | Zespó³-W | Blok | Wysoki | Pakiet | L2 |
| 10SN54-023 |  | Izolacje – Sekcja 02 |  | 11d | 2028-02-08 | 2028-02-22 | 10SN54-022 |  | 2027-04-30 | 2027-05-14 | 9.3d | 0d |  |  |  | ElektroP | 10SN54 | Ruroci¹g | Budowa | Roboty | Joanna | Uk³ad | PM000 | Zespó³-W | Blok | Niski | Pakiet | L2 |
| 10SN54-024 |  | Malowanie i oznakowanie – Sekcja 02 |  | 3d | 2028-02-22 | 2028-02-24 | 10SN54-023 FF+2d |  | 2027-05-14 | 2027-05-18 | 9.3d | 0d |  |  |  | ElektroP | 10SN54 | Ruroci¹g | Budowa | Roboty | Joanna | Uk³ad | PM000 | Zespó³-E | Blok | Niski | Pakiet | L2 |
|  | SEKCJA 03 | **Sekcja 03** |  |  | 2026-04-10 | 2028-02-18 |  |  |  |  |  |  |  |  |  |  |  |  |  |  |  |  |  |  |  |  |  |  |
|  | PODSEKCJA | **Podsekcja 03.A** |  |  | 2026-04-10 | 2028-02-18 |  |  |  |  |  |  |  |  |  |  |  |  |  |  |  |  |  |  |  |  |  |  |
| 10SN54-027 |  | Prefabrykacja ruroci¹gów – Sekcja 03 |  | 9.7d | 2026-04-10 A | 2026-04-23 A | 10SN54-012, 10SN54-020 SS+5d | 100% | 2026-04-10 | 2026-04-22 |  |  |  | Bez uwag |  | ElektroP | 10SN54 | Ruroci¹g | Budowa | Roboty | Joanna | Uk³ad | PM000 | Zespó³-W | Blok | Wysoki | Pakiet | L2 |
| 10SN54-028 |  | Monta¿ ruroci¹gów – Sekcja 03 |  | 13.5d | 2028-01-18 | 2028-02-03 | 10SN54-027, 10SN54-014 SS+2d |  | 2027-04-09 | 2027-04-27 | 45.1d | 0d |  |  |  | ElektroP | 10SN54 | Ruroci¹g | Budowa | Roboty | Joanna | Uk³ad | PM000 | Zespó³-E | Blok | Normalny | Pakiet | L2 |
| 10SN54-029 |  | Próba ciœnieniowa – Sekcja 03 |  | 5d | 2028-02-04 | 2028-02-10 | 10SN54-028 |  | 2027-04-28 | 2027-05-04 | 45.1d | 0d |  | Uzgodnione na koordynacji | Rev A | ElektroP | 10SN54 | Ruroci¹g | Budowa | Roboty | Joanna | Uk³ad | PM000 | Zespó³-W | Blok | Normalny | Pakiet | L2 |
| 10SN54-030 |  | Izolacje – Sekcja 03 |  | 4d | 2028-02-11 | 2028-02-16 | 10SN54-029 |  | 2027-05-05 | 2027-05-10 | 45.1d | 0d |  |  |  | ElektroP | 10SN54 | Ruroci¹g | Budowa | Roboty | Joanna | Uk³ad | PM000 | Zespó³-K | Blok | Normalny | Pakiet | L2 |
| 10SN54-031 |  | Malowanie i oznakowanie – Sekcja 03 |  | 6d | 2028-02-11 | 2028-02-18 | 10SN54-030 FF+2d |  | 2027-05-05 | 2027-05-12 | 45.1d | 0d |  |  |  | ElektroP | 10SN54 | Ruroci¹g | Budowa | Roboty | Joanna | Uk³ad | PM000 | Zespó³-E | Blok | Normalny | Pakiet | L2 |

| ID | WBS | Activity | Duration | Start | Finish | Predecessors | Complete | Planned start | Planned finish | Total float | Free float | Calendar | AC_Wykonawca | AC_Obiekt | AC_Dyscyplina | AC_Faza | AC_Zakres | AC_Opiekun | AC_Obszar | AC_PP_PM | AC_Zespol | AC_Blok | AC_Priorytet | AC_Pakiet | AC_Poziom | Uwagi harmonogramisty | Rewizja dokumentu |
| --- | --- | --- | --- | --- | --- | --- | --- | --- | --- | --- | --- | --- | --- | --- | --- | --- | --- | --- | --- | --- | --- | --- | --- | --- | --- | --- | --- |
|  | SEKCJA 04 | **Sekcja 04** |  | 2026-04-20 | 2028-02-29 |  |  |  |  |  |  |  |  |  |  |  |  |  |  |  |  |  |  |  |  |  |  |
| 10SN54-032 |  | Prefabrykacja ruroci¹gów – Sekcja 04 | 14.5d | 2026-04-20 A | 2026-05-11 A | 10SN54-012, 10SN54-027 SS+5d | 100% | 2026-04-17 | 2026-05-06 |  |  |  | ElektroP | 10SN54 | Ruroci¹g | Budowa | Roboty | Joanna | Uk³ad | PM000 | Zespó³-W | Blok | Wysoki | Pakiet | L2 |  |  |
| 10SN54-033 |  | Monta¿ ruroci¹gów – Sekcja 04 | 16.1d | 2028-01-25 | 2028-02-15 | 10SN54-032, 10SN54-014 SS+7d |  | 2027-04-16 | 2027-05-07 | 38.5d | 0d |  | ElektroP | 10SN54 | Ruroci¹g | Budowa | Roboty | Joanna | Uk³ad | PM000 | Zespó³-W | Blok | Normalny | Pakiet | L2 |  |  |
| 10SN54-034 |  | Próba ciœnieniowa – Sekcja 04 | 5d | 2028-02-16 | 2028-02-22 | 10SN54-033 |  | 2027-05-10 | 2027-05-14 | 38.5d | 0d | Kalendarz 6-dniowy | ElektroP | 10SN54 | Ruroci¹g | Budowa | Roboty | Joanna | Uk³ad | PM300 | Zespó³-I | Blok | Normalny | Pakiet | L2 |  |  |
| 10SN54-035 |  | Izolacje – Sekcja 04 | 3d | 2028-02-23 | 2028-02-25 | 10SN54-034 |  | 2027-05-17 | 2027-05-19 | 38.5d | 0d |  | ElektroP | 10SN54 | Ruroci¹g | Budowa | Roboty | Joanna | Uk³ad | PM300 | Zespó³-I | Blok | Normalny | Pakiet | L2 | Bez uwag |  |
| 10SN54-036 |  | Malowanie i oznakowanie – Sekcja 04 | 4d | 2028-02-24 | 2028-02-29 | 10SN54-035 FF+2d |  | 2027-05-18 | 2027-05-21 | 38.5d | 0d |  | ElektroP | 10SN54 | Ruroci¹g | Budowa | Roboty | Joanna | Uk³ad | PM000 | Zespó³-K | Blok | Normalny | Pakiet | L2 |  |  |
|  | SEKCJA 05 | **Sekcja 05** |  | 2026-04-27 | 2028-02-18 |  |  |  |  |  |  |  |  |  |  |  |  |  |  |  |  |  |  |  |  |  |  |
| 10SN54-039 |  | Prefabrykacja ruroci¹gów – Sekcja 05 | 14.6d | 2026-04-27 A | 2026-05-18 A | 10SN54-012, 10SN54-032 SS+5d | 100% | 2026-04-24 | 2026-05-13 |  |  |  | ElektroP | 10SN54 | Ruroci¹g | Budowa | Roboty | Joanna | Uk³ad | PM000 | Zespó³-W | Blok | Normalny | Pakiet | L2 | Ryzyko opóŸnienia | Rev B |
| 10SN54-040 |  | Monta¿ ruroci¹gów – Sekcja 05 | 12.9d | 2028-01-20 | 2028-02-04 | 10SN54-039, 10SN54-014 SS+4d |  | 2027-04-13 | 2027-04-28 | 44.7d | 0d |  | ElektroP | 10SN54 | Ruroci¹g | Budowa | Roboty | Joanna | Uk³ad | PM300 | Zespó³-E | Blok | Normalny | Pakiet | L2 |  |  |
| 10SN54-041 |  | Próba ciœnieniowa – Sekcja 05 | 4d | 2028-02-07 | 2028-02-10 | 10SN54-040 |  | 2027-04-29 | 2027-05-04 | 44.7d | 0d |  | ElektroP | 10SN54 | Ruroci¹g | Budowa | Roboty | Joanna | Uk³ad | PM000 | Zespó³-K | Blok | Normalny | Pakiet | L2 |  |  |
| 10SN54-042 |  | Izolacje – Sekcja 05 | 4d | 2028-02-11 | 2028-02-16 | 10SN54-041 |  | 2027-05-05 | 2027-05-10 | 44.7d | 0d |  | ElektroP | 10SN54 | Ruroci¹g | Budowa | Roboty | Joanna | Uk³ad | PM000 | Zespó³-K | Blok | Normalny | Pakiet | L2 |  |  |
| 10SN54-043 |  | Malowanie i oznakowanie – Sekcja 05 | 2d | 2028-02-17 | 2028-02-18 | 10SN54-042 FF+2d |  | 2027-05-11 | 2027-05-12 | 44.7d | 0d |  | ElektroP | 10SN54 | Ruroci¹g | Budowa | Roboty | Joanna | Uk³ad | PM000 | Zespó³-K | Blok | Niski | Pakiet | L2 |  |  |
|  | SEKCJA 06 | **Sekcja 06** |  | 2026-04-30 | 2028-03-24 |  |  |  |  |  |  |  |  |  |  |  |  |  |  |  |  |  |  |  |  |  |  |
|  | PODSEKCJA | **Podsekcja 06.A** |  | 2026-04-30 | 2028-03-24 |  |  |  |  |  |  |  |  |  |  |  |  |  |  |  |  |  |  |  |  |  |  |
| 10SN54-044 |  | Prefabrykacja ruroci¹gów – Sekcja 06 | 4.5d | 2026-04-30 A | 2026-05-05 A | 10SN54-012, 10SN54-039 SS+5d | 100% | 2026-05-01 | 2026-05-06 |  |  |  | ElektroP | 10SN54 | Ruroci¹g | Budowa | Roboty | Joanna | Uk³ad | PM000 | Zespó³-W | Blok | Normalny | Pakiet | L2 |  | Rev A |
| 10SN54-045 |  | Monta¿ ruroci¹gów – Sekcja 06 | 23.7d | 2028-01-28 | 2028-02-29 | 10SN54-044, 10SN54-014 SS+10d |  | 2027-04-21 | 2027-05-21 | 19.9d | 0d |  | ElektroP | 10SN54 | Ruroci¹g | Budowa | Roboty | Joanna | Uk³ad | PM000 | Zespó³-K | Blok | Normalny | Pakiet | L2 | Bez uwag |  |
| 10SN54-046 |  | Próba ciœnieniowa – Sekcja 06 | 4d | 2028-03-01 | 2028-03-06 | 10SN54-045 |  | 2027-05-24 | 2027-05-27 | 19.9d | 0d |  | ElektroP | 10SN54 | Ruroci¹g | Budowa | Roboty | Joanna | Uk³ad | PM000 | Zespó³-K | Blok | Normalny | Pakiet | L2 |  |  |
| 10SN54-047 |  | Izolacje – Sekcja 06 | 12d | 2028-03-07 | 2028-03-22 | 10SN54-046 |  | 2027-05-28 | 2027-06-14 | 19.9d | 0d | Kalendarz 6-dniowy | ElektroP | 10SN54 | Ruroci¹g | Budowa | Roboty | Joanna | Uk³ad | PM000 | Zespó³-K | Blok | Normalny | Pakiet | L2 |  | Rev B |
| 10SN54-048 |  | Malowanie i oznakowanie – Sekcja 06 | 8d | 2028-03-15 | 2028-03-24 | 10SN54-047 FF+2d |  | 2027-06-07 | 2027-06-16 | 19.9d | 0d |  | ElektroP | 10SN54 | Ruroci¹g | Budowa | Roboty | Joanna | Uk³ad | PM000 | Zespó³-I | Blok | Niski | Pakiet | L2 | Ryzyko opóŸnienia |  |
|  | SEKCJA 07 | **Sekcja 07** |  | 2026-05-12 | 2028-02-25 |  |  |  |  |  |  |  |  |  |  |  |  |  |  |  |  |  |  |  |  |  |  |
| 10SN54-051 |  | Prefabrykacja ruroci¹gów – Sekcja 07 | 8.6d | 2026-05-12 A | 2026-05-26 A | 10SN54-012, 10SN54-044 SS+5d | 100% | 2026-05-08 | 2026-05-19 |  |  |  | ElektroP | 10SN54 | Ruroci¹g | Budowa | Roboty | Joanna | Uk³ad | PM000 | Zespó³-W | Blok | Normalny | Pakiet | L2 |  |  |
| 10SN54-052 |  | Monta¿ ruroci¹gów – Sekcja 07 | 14.7d | 2028-01-21 | 2028-02-09 | 10SN54-051, 10SN54-014 SS+5d |  | 2027-04-14 | 2027-05-03 | 39.9d | 0d |  | ElektroP | 10SN54 | Ruroci¹g | Budowa | Roboty | Joanna | Uk³ad | PM000 | Zespó³-W | Blok | Wysoki | Pakiet | L2 |  | Rev B |
| 10SN54-053 |  | Próba ciœnieniowa – Sekcja 07 | 4d | 2028-02-10 | 2028-02-15 | 10SN54-052 |  | 2027-05-04 | 2027-05-07 | 39.9d | 0d |  | ElektroP | 10SN54 | Ruroci¹g | Budowa | Roboty | Joanna | Uk³ad | PM000 | Zespó³-K | Blok | Normalny | Pakiet | L2 |  | Rev B |
| 10SN54-054 |  | Izolacje – Sekcja 07 | 6d | 2028-02-16 | 2028-02-23 | 10SN54-053 |  | 2027-05-10 | 2027-05-17 | 39.9d | 0d |  | ElektroP | 10SN54 | Ruroci¹g | Budowa | Roboty | Joanna | Uk³ad | PM000 | Zespó³-W | Blok | Normalny | Pakiet | L2 |  |  |
| 10SN54-055 |  | Malowanie i oznakowanie – Sekcja 07 | 6d | 2028-02-18 | 2028-02-25 | 10SN54-054 FF+2d |  | 2027-05-12 | 2027-05-19 | 39.9d | 0d |  | ElektroP | 10SN54 | Ruroci¹g | Budowa | Roboty | Joanna | Uk³ad | PM000 | Zespó³-K | Blok | Normalny | Pakiet | L2 |  |  |

| ID | WBS | Activity | Duration | Start | Finish | Predecessors | Complete | Planned start | Planned finish | Total float | Free float | Calendar | AC_Wykonawca | AC_Obiekt | AC_Dyscyplina | AC_Faza | AC_Zakres | AC_Opiekun | AC_Obszar | AC_PP_PM | AC_Zespol | AC_Blok | AC_Priorytet | AC_Pakiet | AC_Poziom | Rewizja dokumentu | Uwagi harmonogramisty |
| --- | --- | --- | --- | --- | --- | --- | --- | --- | --- | --- | --- | --- | --- | --- | --- | --- | --- | --- | --- | --- | --- | --- | --- | --- | --- | --- | --- |
|  | SEKCJA 08 | **Sekcja 08** |  | 2026-05-19 | 2028-03-23 |  |  |  |  |  |  |  |  |  |  |  |  |  |  |  |  |  |  |  |  |  |  |
| 10SN54-056 |  | Prefabrykacja ruroci¹gów – Sekcja 08 | 9d | 2026-05-19 A | 2026-06-02 A | 10SN54-012, 10SN54-051 SS+5d | 100% | 2026-05-15 | 2026-05-27 |  |  |  | ElektroP | 10SN54 | Ruroci¹g | Budowa | Roboty | Joanna | Uk³ad | PM000 | Zespó³-K | Blok | Normalny | Pakiet | L2 |  |  |
| 10SN54-057 |  | Monta¿ ruroci¹gów – Sekcja 08 | 24.4d | 2028-01-27 | 2028-02-29 | 10SN54-056, 10SN54-014 SS+9d |  | 2027-04-20 | 2027-05-21 | 21.2d | 0d |  | ElektroP | 10SN54 | Ruroci¹g | Budowa | Roboty | Joanna | Uk³ad | PM000 | Zespó³-W | Blok | Normalny | Pakiet | L2 | Rev C |  |
| 10SN54-058 |  | Próba ciœnieniowa – Sekcja 08 | 3d | 2028-03-01 | 2028-03-03 | 10SN54-057 |  | 2027-05-24 | 2027-05-26 | 21.2d | 0d |  | ElektroP | 10SN54 | Ruroci¹g | Budowa | Roboty | Joanna | Uk³ad | PM000 | Zespó³-K | Blok | Normalny | Pakiet | L2 |  |  |
| 10SN54-059 |  | Izolacje – Sekcja 08 | 12d | 2028-03-06 | 2028-03-21 | 10SN54-058 |  | 2027-05-27 | 2027-06-11 | 21.2d | 0d |  | ElektroP | 10SN54 | Ruroci¹g | Budowa | Roboty | Joanna | Uk³ad | PM000 | Zespó³-K | Blok | Normalny | Pakiet | L2 |  | Czeka na dostawê |
| 10SN54-060 |  | Malowanie i oznakowanie – Sekcja 08 | 3d | 2028-03-21 | 2028-03-23 | 10SN54-059 FF+2d |  | 2027-06-11 | 2027-06-15 | 21.2d | 0d |  | ElektroP | 10SN54 | Ruroci¹g | Budowa | Roboty | Joanna | Uk³ad | PM000 | Zespó³-K | Blok | Normalny | Pakiet | L2 |  |  |
|  | SEKCJA 09 | **Sekcja 09** |  | 2026-05-26 | 2028-02-16 |  |  |  |  |  |  |  |  |  |  |  |  |  |  |  |  |  |  |  |  |  |  |
|  | PODSEKCJA | **Podsekcja 09.A** |  | 2026-05-26 | 2028-02-16 |  |  |  |  |  |  |  |  |  |  |  |  |  |  |  |  |  |  |  |  |  |  |
| 10SN54-063 |  | Prefabrykacja ruroci¹gów – Sekcja 09 | 8.5d | 2026-05-26 A | 2026-06-08 A | 10SN54-012, 10SN54-056 SS+5d | 100% | 2026-05-22 | 2026-06-02 |  |  | Kalendarz 6-dniowy | ElektroP | 10SN54 | Ruroci¹g | Budowa | Roboty | Joanna | Uk³ad | PM000 | Zespó³-I | Blok | Normalny | Pakiet | L2 | Rev B |  |
| 10SN54-064 |  | Monta¿ ruroci¹gów – Sekcja 09 | 8.9d | 2028-01-25 | 2028-02-03 | 10SN54-063, 10SN54-014 SS+7d |  | 2027-04-16 | 2027-04-27 | 46.7d | 0d |  | ElektroP | 10SN54 | Ruroci¹g | Budowa | Roboty | Joanna | Uk³ad | PM000 | Zespó³-I | Blok | Normalny | Pakiet | L2 |  |  |
| 10SN54-065 |  | Próba ciœnieniowa – Sekcja 09 | 4d | 2028-02-04 | 2028-02-09 | 10SN54-064 |  | 2027-04-28 | 2027-05-03 | 46.7d | 0d |  | ElektroP | 10SN54 | Ruroci¹g | Budowa | Roboty | Joanna | Uk³ad | PM000 | Zespó³-W | Blok | Normalny | Pakiet | L2 | Rev B |  |
| 10SN54-067 |  | Malowanie i oznakowanie – Sekcja 09 | 6d | 2028-02-09 | 2028-02-16 | 10SN54-066 FF+2d |  | 2027-05-03 | 2027-05-10 | 46.7d | 0d |  | ElektroP | 10SN54 | Ruroci¹g | Budowa | Roboty | Joanna | Uk³ad | PM000 | Zespó³-W | Blok | Normalny | Pakiet | L2 |  |  |
| 10SN54-066 |  | Izolacje – Sekcja 09 | 3d | 2028-02-10 | 2028-02-14 | 10SN54-065 |  | 2027-05-04 | 2027-05-06 | 46.7d | 0d |  | ElektroP | 10SN54 | Ruroci¹g | Budowa | Roboty | Joanna | Uk³ad | PM000 | Zespó³-K | Blok | Niski | Pakiet | L2 |  | Uzgodnione na koordynacji |
|  | SEKCJA 10 | **Sekcja 10** |  | 2026-06-03 | 2028-03-06 |  |  |  |  |  |  |  |  |  |  |  |  |  |  |  |  |  |  |  |  |  |  |
| 10SN54-068 |  | Prefabrykacja ruroci¹gów – Sekcja 10 | 12.4d | 2026-06-03 A | 2026-06-22 A | 10SN54-012, 10SN54-063 SS+5d | 100% | 2026-05-29 | 2026-06-15 |  |  |  | ElektroP | 10SN54 | Ruroci¹g | Budowa | Roboty | Joanna | Uk³ad | PM000 | Zespó³-W | Blok | Normalny | Pakiet | L2 |  |  |
| 10SN54-069 |  | Monta¿ ruroci¹gów – Sekcja 10 | 15.1d | 2028-01-19 | 2028-02-08 | 10SN54-068, 10SN54-014 SS+3d |  | 2027-04-12 | 2027-04-30 | 34.5d | 0d |  | ElektroP | 10SN54 | Ruroci¹g | Budowa | Roboty | Joanna | Uk³ad | PM000 | Zespó³-K | Blok | Normalny | Pakiet | L2 | Rev A | Czeka na dostawê |
| 10SN54-070 |  | Próba ciœnieniowa – Sekcja 10 | 6d | 2028-02-09 | 2028-02-16 | 10SN54-069 |  | 2027-05-03 | 2027-05-10 | 34.5d | 0d |  | ElektroP | 10SN54 | Ruroci¹g | Budowa | Roboty | Joanna | Uk³ad | PM000 | Zespó³-W | Blok | Normalny | Pakiet | L2 |  |  |
| 10SN54-071 |  | Izolacje – Sekcja 10 | 11d | 2028-02-17 | 2028-03-02 | 10SN54-070 |  | 2027-05-11 | 2027-05-25 | 34.5d | 0d |  | ElektroP | 10SN54 | Ruroci¹g | Budowa | Roboty | Joanna | Uk³ad | PM000 | Zespó³-K | Blok | Normalny | Pakiet | L2 |  |  |
| 10SN54-072 |  | Malowanie i oznakowanie – Sekcja 10 | 2d | 2028-03-03 | 2028-03-06 | 10SN54-071 FF+2d |  | 2027-05-26 | 2027-05-27 | 34.5d | 0d |  | ElektroP | 10SN54 | Ruroci¹g | Budowa | Roboty | Joanna | Uk³ad | PM000 | Zespó³-W | Blok | Normalny | Pakiet | L2 |  |  |
|  | SEKCJA 11 | **Sekcja 11** |  | 2026-06-05 | 2028-02-17 |  |  |  |  |  |  |  |  |  |  |  |  |  |  |  |  |  |  |  |  |  |  |
| 10SN54-075 |  | Prefabrykacja ruroci¹gów – Sekcja 11 | 8.9d | 2026-06-05 A | 2026-06-16 A | 10SN54-012, 10SN54-068 SS+5d | 100% |  |  |  |  |  | ElektroP | 10SN54 | Ruroci¹g | Budowa | Roboty | Joanna | Uk³ad | PM000 | Zespó³-K | Blok | Normalny | Pakiet | L2 |  | Ryzyko opóŸnienia |
| 10SN54-076 |  | Monta¿ ruroci¹gów – Sekcja 11 | 10.7d | 2028-01-14 | 2028-01-27 | 10SN54-075, 10SN54-014 SS |  | 2027-04-07 | 2027-04-20 | 45.9d | 0d |  | ElektroP | 10SN54 | Ruroci¹g | Budowa | Roboty | Joanna | Uk³ad | PM000 | Zespó³-W | Blok | Normalny | Pakiet | L2 | Rev A |  |
| 10SN54-077 |  | Próba ciœnieniowa – Sekcja 11 | 5d | 2028-01-28 | 2028-02-03 | 10SN54-076 |  | 2027-04-21 | 2027-04-27 | 45.9d | 0d |  | ElektroP | 10SN54 | Ruroci¹g | Budowa | Roboty | Joanna | Uk³ad | PM200 | Zespó³-E | Blok | Wysoki | Pakiet | L2 | Rev C | Czeka na dostawê |
| 10SN54-078 |  | Izolacje – Sekcja 11 | 8d | 2028-02-04 | 2028-02-15 | 10SN54-077 |  | 2027-04-28 | 2027-05-07 | 45.9d | 0d |  | ElektroP | 10SN54 | Ruroci¹g | Budowa | Roboty | Joanna | Uk³ad | PM000 | Zespó³-W | Blok | Niski | Pakiet | L2 |  |  |
| 10SN54-079 |  | Malowanie i oznakowanie – Sekcja 11 | 7d | 2028-02-09 | 2028-02-17 | 10SN54-078 FF+2d |  | 2027-05-03 | 2027-05-11 | 45.9d | 0d |  | ElektroP | 10SN54 | Ruroci¹g | Budowa | Roboty | Joanna | Uk³ad | PM000 | Zespó³-W | Blok | Normalny | Pakiet | L2 | Rev B |  |

| ID | WBS | Activity | Duration | Start | Finish | Predecessors | Complete | Planned start | Planned finish | Total float | Free float | Calendar | AC_Wykonawca | AC_Obiekt | AC_Dyscyplina | AC_Faza | AC_Zakres | AC_Opiekun | AC_Obszar | AC_PP_PM | AC_Zespol | AC_Blok | AC_Priorytet | AC_Pakiet | AC_Poziom | Rewizja dokumentu | Uwagi harmonogramisty |
| --- | --- | --- | --- | --- | --- | --- | --- | --- | --- | --- | --- | --- | --- | --- | --- | --- | --- | --- | --- | --- | --- | --- | --- | --- | --- | --- | --- |
|  | SEKCJA 12 | **Sekcja 12** |  | 2026-06-11 | 2028-03-14 |  |  |  |  |  |  |  |  |  |  |  |  |  |  |  |  |  |  |  |  |  |  |
|  | PODSEKCJA | **Podsekcja 12.A** |  | 2026-06-11 | 2028-03-14 |  |  |  |  |  |  |  |  |  |  |  |  |  |  |  |  |  |  |  |  |  |  |
| 10SN54-080 |  | Prefabrykacja ruroci¹gów – Sekcja 12 | 12d | 2026-06-11 A | 2026-06-29 A | 10SN54-012, 10SN54-075 SS+5d | 100% | 2026-06-12 | 2026-06-29 |  |  |  | ElektroP | 10SN54 | Ruroci¹g | Budowa | Roboty | Joanna | Uk³ad | PM000 | Zespó³-K | Blok | Normalny | Pakiet | L2 |  |  |
| 10SN54-081 |  | Monta¿ ruroci¹gów – Sekcja 12 | 18d | 2028-01-28 | 2028-02-22 | 10SN54-080, 10SN54-014 SS+10d |  | 2027-04-21 | 2027-05-14 | 28.6d | 0d |  | ElektroP | 10SN54 | Ruroci¹g | Budowa | Roboty | Joanna | Uk³ad | PM000 | Zespó³-W | Blok | Normalny | Pakiet | L2 | Rev C |  |
| 10SN54-082 |  | Próba ciœnieniowa – Sekcja 12 | 4d | 2028-02-23 | 2028-02-28 | 10SN54-081 |  | 2027-05-17 | 2027-05-20 | 28.6d | 0d |  | ElektroP | 10SN54 | Ruroci¹g | Budowa | Roboty | Joanna | Uk³ad | PM100 | Zespó³-E | Blok | Wysoki | Pakiet | L2 | Rev A |  |
| 10SN54-083 |  | Izolacje – Sekcja 12 | 9d | 2028-02-29 | 2028-03-10 | 10SN54-082 |  | 2027-05-21 | 2027-06-02 | 28.6d | 0d |  | ElektroP | 10SN54 | Ruroci¹g | Budowa | Roboty | Joanna | Uk³ad | PM000 | Zespó³-W | Blok | Normalny | Pakiet | L2 |  | Bez uwag |
| 10SN54-084 |  | Malowanie i oznakowanie – Sekcja 12 | 4d | 2028-03-09 | 2028-03-14 | 10SN54-083 FF+2d |  | 2027-06-01 | 2027-06-04 | 28.6d | 0d |  | ElektroP | 10SN54 | Ruroci¹g | Budowa | Roboty | Joanna | Uk³ad | PM000 | Zespó³-W | Blok | Normalny | Pakiet | L2 |  |  |
|  | SEKCJA 13 | **Sekcja 13** |  | 2026-06-22 | 2028-03-16 |  |  |  |  |  |  |  |  |  |  |  |  |  |  |  |  |  |  |  |  |  |  |
| 10SN54-087 |  | Prefabrykacja ruroci¹gów – Sekcja 13 | 10.1d | 2026-06-22 A | 2026-07-06 A | 10SN54-012, 10SN54-080 SS+5d | 100% | 2026-06-19 | 2026-07-02 |  |  |  | ElektroP | 10SN54 | Ruroci¹g | Budowa | Roboty | Joanna | Uk³ad | PM000 | Zespó³-W | Blok | Niski | Pakiet | L2 | Rev B |  |
| 10SN54-088 |  | Monta¿ ruroci¹gów – Sekcja 13 | 23.4d | 2028-01-26 | 2028-02-25 | 10SN54-087, 10SN54-014 SS+8d |  | 2027-04-19 | 2027-05-19 | 26.2d | 0d |  | ElektroP | 10SN54 | Ruroci¹g | Budowa | Roboty | Joanna | Uk³ad | PM000 | Zespó³-K | Blok | Normalny | Pakiet | L2 |  |  |
| 10SN54-089 |  | Próba ciœnieniowa – Sekcja 13 | 2d | 2028-02-28 | 2028-02-29 | 10SN54-088 |  | 2027-05-20 | 2027-05-21 | 26.2d | 0d |  | ElektroP | 10SN54 | Ruroci¹g | Budowa | Roboty | Joanna | Uk³ad | PM000 | Zespó³-K | Blok | Normalny | Pakiet | L2 |  |  |
| 10SN54-090 |  | Izolacje – Sekcja 13 | 10d | 2028-03-01 | 2028-03-14 | 10SN54-089 |  | 2027-05-24 | 2027-06-04 | 26.2d | 0d |  | ElektroP | 10SN54 | Ruroci¹g | Budowa | Roboty | Joanna | Uk³ad | PM000 | Zespó³-W | Blok | Normalny | Pakiet | L2 | Rev A |  |
| 10SN54-091 |  | Malowanie i oznakowanie – Sekcja 13 | 5d | 2028-03-10 | 2028-03-16 | 10SN54-090 FF+2d |  | 2027-06-02 | 2027-06-08 | 26.2d | 0d |  | ElektroP | 10SN54 | Ruroci¹g | Budowa | Roboty | Joanna | Uk³ad | PM100 | Zespó³-I | Blok | Normalny | Pakiet | L2 |  |  |
|  | SEKCJA 14 | **Sekcja 14** |  | 2026-06-26 | 2028-03-01 |  |  |  |  |  |  |  |  |  |  |  |  |  |  |  |  |  |  |  |  |  |  |
| 10SN54-092 |  | Prefabrykacja ruroci¹gów – Sekcja 14 | 9.4d | 2026-06-26 A | 2026-07-10 A | 10SN54-012, 10SN54-087 SS+5d | 100% | 2026-06-26 | 2026-07-08 |  |  |  | ElektroP | 10SN54 | Ruroci¹g | Budowa | Roboty | Joanna | Uk³ad | PM000 | Zespó³-W | Blok | Normalny | Pakiet | L2 | Rev B | Ryzyko opóŸnienia |
| 10SN54-093 |  | Monta¿ ruroci¹gów – Sekcja 14 | 13.9d | 2028-01-24 | 2028-02-09 | 10SN54-092, 10SN54-014 SS+6d |  | 2027-04-15 | 2027-05-03 | 36.7d | 0d | Kalendarz 6-dniowy | ElektroP | 10SN54 | Ruroci¹g | Budowa | Roboty | Joanna | Uk³ad | PM000 | Zespó³-K | Blok | Wysoki | Pakiet | L2 | Rev A | Czeka na dostawê |
| 10SN54-094 |  | Próba ciœnieniowa – Sekcja 14 | 2d | 2028-02-10 | 2028-02-11 | 10SN54-093 |  | 2027-05-04 | 2027-05-05 | 36.7d | 0d |  | ElektroP | 10SN54 | Ruroci¹g | Budowa | Roboty | Joanna | Uk³ad | PM300 | Zespó³-I | Blok | Normalny | Pakiet | L2 |  |  |
| 10SN54-095 |  | Izolacje – Sekcja 14 | 11d | 2028-02-14 | 2028-02-28 | 10SN54-094 |  | 2027-05-06 | 2027-05-20 | 36.7d | 0d |  | ElektroP | 10SN54 | Ruroci¹g | Budowa | Roboty | Joanna | Uk³ad | PM000 | Zespó³-W | Blok | Niski | Pakiet | L2 |  |  |
| 10SN54-096 |  | Malowanie i oznakowanie – Sekcja 14 | 3d | 2028-02-28 | 2028-03-01 | 10SN54-095 FF+2d |  | 2027-05-20 | 2027-05-24 | 36.7d | 0d |  | ElektroP | 10SN54 | Ruroci¹g | Budowa | Roboty | Joanna | Uk³ad | PM000 | Zespó³-W | Blok | Wysoki | Pakiet | L2 |  |  |
|  | SEKCJA 15 | **Sekcja 15** |  | 2026-07-07 | 2028-02-24 |  |  |  |  |  |  |  |  |  |  |  |  |  |  |  |  |  |  |  |  |  |  |
|  | PODSEKCJA | **Podsekcja 15.A** |  | 2026-07-07 | 2028-02-24 |  |  |  |  |  |  |  |  |  |  |  |  |  |  |  |  |  |  |  |  |  |  |
| 10SN54-099 |  | Prefabrykacja ruroci¹gów – Sekcja 15 | 6d | 2026-07-07 A | 2026-07-16 A | 10SN54-012, 10SN54-092 SS+5d | 100% | 2026-07-03 | 2026-07-10 |  |  |  | ElektroP | 10SN54 | Ruroci¹g | Budowa | Roboty | Joanna | Uk³ad | PM000 | Zespó³-K | Blok | Normalny | Pakiet | L2 |  |  |
| 10SN54-100 |  | Monta¿ ruroci¹gów – Sekcja 15 | 12d | 2028-01-21 | 2028-02-07 | 10SN54-099, 10SN54-014 SS+5d |  | 2027-04-14 | 2027-04-29 | 41.6d | 0d |  | ElektroP | 10SN54 | Ruroci¹g | Budowa | Roboty | Joanna | Uk³ad | PM000 | Zespó³-K | Blok | Normalny | Pakiet | L2 |  | Ryzyko opóŸnienia |
| 10SN54-101 |  | Próba ciœnieniowa – Sekcja 15 | 2d | 2028-02-08 | 2028-02-09 | 10SN54-100 |  | 2027-04-30 | 2027-05-03 | 41.6d | 0d |  | ElektroP | 10SN54 | Ruroci¹g | Budowa | Roboty | Joanna | Uk³ad | PM000 | Zespó³-W | Blok | Wysoki | Pakiet | L2 |  |  |
| 10SN54-102 |  | Izolacje – Sekcja 15 | 9d | 2028-02-10 | 2028-02-22 | 10SN54-101 |  | 2027-05-04 | 2027-05-14 | 41.6d | 0d |  | ElektroP | 10SN54 | Ruroci¹g | Budowa | Roboty | Joanna | Uk³ad | PM000 | Zespó³-K | Blok | Niski | Pakiet | L2 | Rev C | Do weryfikacji z wykonawc¹ |
| 10SN54-103 |  | Malowanie i oznakowanie – Sekcja 15 | 5d | 2028-02-18 | 2028-02-24 | 10SN54-102 FF+2d |  | 2027-05-12 | 2027-05-18 | 41.6d | 0d |  | ElektroP | 10SN54 | Ruroci¹g | Budowa | Roboty | Joanna | Uk³ad | PM000 | Zespó³-W | Blok | Normalny | Pakiet | L2 |  | Czeka na dostawê |

| ID | WBS | Activity | Duration | Start | Finish | Predecessors | Complete | Planned start | Planned finish | Total float | Free float | Calendar | Uwagi harmonogramisty | Rewizja dokumentu | AC_Wykonawca | AC_Obiekt | AC_Dyscyplina | AC_Faza | AC_Zakres | AC_Opiekun | AC_Obszar | AC_PP_PM | AC_Zespol | AC_Blok | AC_Priorytet | AC_Pakiet | AC_Poziom |
| --- | --- | --- | --- | --- | --- | --- | --- | --- | --- | --- | --- | --- | --- | --- | --- | --- | --- | --- | --- | --- | --- | --- | --- | --- | --- | --- | --- |
|  | SEKCJA 16 | **Sekcja 16** |  | 2026-07-15 | 2028-02-29 |  |  |  |  |  |  |  |  |  |  |  |  |  |  |  |  |  |  |  |  |  |  |
| 10SN54-104 |  | Prefabrykacja ruroci¹gów – Sekcja 16 | 12.6d | 2026-07-15 A | 2026-07-30 A | 10SN54-012, 10SN54-099 SS+5d | 100% | 2026-07-10 | 2026-07-27 |  |  |  | Do weryfikacji z wykonawc¹ | Rev B | ElektroP | 10SN54 | Ruroci¹g | Budowa | Roboty | Joanna | Uk³ad | PM000 | Zespó³-K | Blok | Normalny | Pakiet | L2 |
| 10SN54-105 |  | Monta¿ ruroci¹gów – Sekcja 16 | 17.6d | 2028-01-26 | 2028-02-17 | 10SN54-104, 10SN54-014 SS+8d |  | 2027-04-19 | 2027-05-11 | 38d | 0d |  | Uzgodnione na koordynacji |  | ElektroP | 10SN54 | Ruroci¹g | Budowa | Roboty | Joanna | Uk³ad | PM000 | Zespó³-W | Blok | Krytyczn | Pakiet | L2 |
| 10SN54-106 |  | Próba ciœnieniowa – Sekcja 16 | 2d | 2028-02-18 | 2028-02-21 | 10SN54-105 |  | 2027-05-12 | 2027-05-13 | 38d | 0d |  | Do weryfikacji z wykonawc¹ | Rev C | ElektroP | 10SN54 | Ruroci¹g | Budowa | Roboty | Joanna | Uk³ad | PM000 | Zespó³-W | Blok | Niski | Pakiet | L2 |
| 10SN54-108 |  | Malowanie i oznakowanie – Sekcja 16 | 8d | 2028-02-18 | 2028-02-29 | 10SN54-107 FF+2d |  | 2027-05-12 | 2027-05-21 | 38d | 0d |  | Ryzyko opóŸnienia |  | ElektroP | 10SN54 | Ruroci¹g | Budowa | Roboty | Joanna | Uk³ad | PM000 | Zespó³-K | Blok | Wysoki | Pakiet | L2 |
| 10SN54-107 |  | Izolacje – Sekcja 16 | 4d | 2028-02-22 | 2028-02-25 | 10SN54-106 |  | 2027-05-14 | 2027-05-19 | 38d | 0d |  |  |  | ElektroP | 10SN54 | Ruroci¹g | Budowa | Roboty | Joanna | Uk³ad | PM000 | Zespó³-W | Blok | Wysoki | Pakiet | L2 |
|  | SEKCJA 17 | **Sekcja 17** |  | 2026-07-21 | 2028-03-15 |  |  |  |  |  |  |  |  |  |  |  |  |  |  |  |  |  |  |  |  |  |  |
| 10SN54-111 |  | Prefabrykacja ruroci¹gów – Sekcja 17 | 8.5d | 2026-07-21 A | 2026-07-31 A | 10SN54-012, 10SN54-104 SS+5d | 100% | 2026-07-17 | 2026-07-28 |  |  |  |  |  | ElektroP | 10SN54 | Ruroci¹g | Budowa | Roboty | Joanna | Uk³ad | PM000 | Zespó³-W | Blok | Niski | Pakiet | L2 |
| 10SN54-112 |  | Monta¿ ruroci¹gów – Sekcja 17 | 24.2d | 2028-01-17 | 2028-02-17 | 10SN54-111, 10SN54-014 SS+1d |  | 2027-04-08 | 2027-05-11 | 27.4d | 0d |  |  | Rev A | ElektroP | 10SN54 | Ruroci¹g | Budowa | Roboty | Joanna | Uk³ad | PM000 | Zespó³-W | Blok | Normalny | Pakiet | L2 |
| 10SN54-113 |  | Próba ciœnieniowa – Sekcja 17 | 6d | 2028-02-18 | 2028-02-25 | 10SN54-112 |  | 2027-05-12 | 2027-05-19 | 27.4d | 0d |  |  |  | ElektroP | 10SN54 | Ruroci¹g | Budowa | Roboty | Joanna | Uk³ad | PM300 | Zespó³-E | Blok | Normalny | Pakiet | L2 |
| 10SN54-114 |  | Izolacje – Sekcja 17 | 11d | 2028-02-28 | 2028-03-13 | 10SN54-113 |  | 2027-05-20 | 2027-06-03 | 27.4d | 0d |  | Bez uwag | Rev B | ElektroP | 10SN54 | Ruroci¹g | Budowa | Roboty | Joanna | Uk³ad | PM000 | Zespó³-W | Blok | Normalny | Pakiet | L2 |
| 10SN54-115 |  | Malowanie i oznakowanie – Sekcja 17 | 4d | 2028-03-10 | 2028-03-15 | 10SN54-114 FF+2d |  | 2027-06-02 | 2027-06-07 | 27.4d | 0d | Kalendarz 6-dniowy |  |  | ElektroP | 10SN54 | Ruroci¹g | Budowa | Roboty | Joanna | Uk³ad | PM000 | Zespó³-W | Blok | Normalny | Pakiet | L2 |
|  | SEKCJA 18 | **Sekcja 18** |  | 2026-07-23 | 2028-02-24 |  |  |  |  |  |  |  |  |  |  |  |  |  |  |  |  |  |  |  |  |  |  |
|  | PODSEKCJA | **Podsekcja 18.A** |  | 2026-07-23 | 2028-02-24 |  |  |  |  |  |  |  |  |  |  |  |  |  |  |  |  |  |  |  |  |  |  |
| 10SN54-116 |  | Prefabrykacja ruroci¹gów – Sekcja 18 | 13.4d | 2026-07-23 A | 2026-08-10 A | 10SN54-012, 10SN54-111 SS+5d | 100% | 2026-07-24 | 2026-08-11 |  |  |  | Bez uwag |  | ElektroP | 10SN54 | Ruroci¹g | Budowa | Roboty | Joanna | Uk³ad | PM000 | Zespó³-W | Blok | Normalny | Pakiet | L2 |
| 10SN54-117 |  | Monta¿ ruroci¹gów – Sekcja 18 | 14.9d | 2028-01-20 | 2028-02-08 | 10SN54-116, 10SN54-014 SS+4d |  | 2027-04-13 | 2027-04-30 | 40.7d | 0d |  |  |  | ElektroP | 10SN54 | Ruroci¹g | Budowa | Roboty | Joanna | Uk³ad | PM000 | Zespó³-W | Blok | Normalny | Pakiet | L2 |
| 10SN54-118 |  | Próba ciœnieniowa – Sekcja 18 | 6d | 2028-02-09 | 2028-02-16 | 10SN54-117 |  | 2027-05-03 | 2027-05-10 | 40.7d | 0d |  |  |  | ElektroP | 10SN54 | Ruroci¹g | Budowa | Roboty | Joanna | Uk³ad | PM000 | Zespó³-W | Blok | Niski | Pakiet | L2 |
| 10SN54-119 |  | Izolacje – Sekcja 18 | 4d | 2028-02-17 | 2028-02-22 | 10SN54-118 |  | 2027-05-11 | 2027-05-14 | 40.7d | 0d |  |  | Rev B | ElektroP | 10SN54 | Ruroci¹g | Budowa | Roboty | Joanna | Uk³ad | PM000 | Zespó³-K | Blok | Krytyczn | Pakiet | L2 |
| 10SN54-120 |  | Malowanie i oznakowanie – Sekcja 18 | 4d | 2028-02-21 | 2028-02-24 | 10SN54-119 FF+2d |  | 2027-05-13 | 2027-05-18 | 40.7d | 0d |  |  |  | ElektroP | 10SN54 | Ruroci¹g | Budowa | Roboty | Joanna | Uk³ad | PM000 | Zespó³-E | Blok | Wysoki | Pakiet | L2 |
|  | SEKCJA 19 | **Sekcja 19** |  | 2026-08-04 | 2028-02-28 |  |  |  |  |  |  |  |  |  |  |  |  |  |  |  |  |  |  |  |  |  |  |
| 10SN54-123 |  | Prefabrykacja ruroci¹gów – Sekcja 19 | 12d | 2026-08-04 A | 2026-08-20 A | 10SN54-012, 10SN54-116 SS+5d | 100% | 2026-07-31 | 2026-08-17 |  |  |  |  | Rev A | ElektroP | 10SN54 | Ruroci¹g | Budowa | Roboty | Joanna | Uk³ad | PM000 | Zespó³-W | Blok | Krytyczn | Pakiet | L2 |
| 10SN54-124 |  | Monta¿ ruroci¹gów – Sekcja 19 | 23.7d | 2028-01-17 | 2028-02-16 | 10SN54-123, 10SN54-014 SS+1d |  | 2027-04-08 | 2027-05-10 | 38.9d | 0d |  |  | Rev A | ElektroP | 10SN54 | Ruroci¹g | Budowa | Roboty | Joanna | Uk³ad | PM000 | Zespó³-W | Blok | Normalny | Pakiet | L2 |
| 10SN54-125 |  | Próba ciœnieniowa – Sekcja 19 | 2d | 2028-02-17 | 2028-02-18 | 10SN54-124 |  | 2027-05-11 | 2027-05-12 | 38.9d | 0d |  |  |  | ElektroP | 10SN54 | Ruroci¹g | Budowa | Roboty | Joanna | Uk³ad | PM000 | Zespó³-K | Blok | Wysoki | Pakiet | L2 |
| 10SN54-126 |  | Izolacje – Sekcja 19 | 4d | 2028-02-21 | 2028-02-24 | 10SN54-125 |  | 2027-05-13 | 2027-05-18 | 38.9d | 0d |  | Do weryfikacji z wykonawc¹ | Rev A | ElektroP | 10SN54 | Ruroci¹g | Budowa | Roboty | Joanna | Uk³ad | PM000 | Zespó³-W | Blok | Normalny | Pakiet | L2 |
| 10SN54-127 |  | Malowanie i oznakowanie – Sekcja 19 | 2d | 2028-02-25 | 2028-02-28 | 10SN54-126 FF+2d |  | 2027-05-19 | 2027-05-20 | 38.9d | 0d |  | Uzgodnione na koordynacji |  | ElektroP | 10SN54 | Ruroci¹g | Budowa | Roboty | Joanna | Uk³ad | PM100 | Zespó³-E | Blok | Wysoki | Pakiet | L2 |

| ID | WBS | Activity | Duration | Start | Finish | Predecessors | Complete | Planned start | Planned finish | Total float | Free float | Calendar | Rewizja dokumentu | AC_Wykonawca | AC_Obiekt | AC_Dyscyplina | AC_Faza | AC_Zakres | AC_Opiekun | AC_Obszar | AC_PP_PM | AC_Zespol | AC_Blok | AC_Priorytet | AC_Pakiet | AC_Poziom | Uwagi harmonogramisty |
| --- | --- | --- | --- | --- | --- | --- | --- | --- | --- | --- | --- | --- | --- | --- | --- | --- | --- | --- | --- | --- | --- | --- | --- | --- | --- | --- | --- |
|  | SEKCJA 20 | **Sekcja 20** |  | 2026-08-12 | 2028-03-02 |  |  |  |  |  |  |  |  |  |  |  |  |  |  |  |  |  |  |  |  |  |  |
| 10SN54-128 |  | Prefabrykacja ruroci¹gów – Sekcja 20 | 10.1d | 2026-08-12 A | 2026-08-28 A | 10SN54-012, 10SN54-123 SS+5d | 100% | 2026-08-07 | 2026-08-20 |  |  |  | Rev C | ElektroP | 10SN54 | Ruroci¹g | Budowa | Roboty | Joanna | Uk³ad | PM000 | Zespó³-W | Blok | Wysoki | Pakiet | L2 |  |
| 10SN54-129 |  | Monta¿ ruroci¹gów – Sekcja 20 | 15.1d | 2028-01-21 | 2028-02-10 | 10SN54-128, 10SN54-014 SS+5d |  | 2027-04-14 | 2027-05-04 | 36.5d | 0d |  | Rev A | ElektroP | 10SN54 | Ruroci¹g | Budowa | Roboty | Joanna | Uk³ad | PM000 | Zespó³-K | Blok | Niski | Pakiet | L2 |  |
| 10SN54-130 |  | Próba ciœnieniowa – Sekcja 20 | 4d | 2028-02-11 | 2028-02-16 | 10SN54-129 |  | 2027-05-05 | 2027-05-10 | 36.5d | 0d |  |  | ElektroP | 10SN54 | Ruroci¹g | Budowa | Roboty | Joanna | Uk³ad | PM000 | Zespó³-W | Blok | Normalny | Pakiet | L2 |  |
| 10SN54-131 |  | Izolacje – Sekcja 20 | 9d | 2028-02-17 | 2028-02-29 | 10SN54-130 |  | 2027-05-11 | 2027-05-21 | 36.5d | 0d |  | Rev A | ElektroP | 10SN54 | Ruroci¹g | Budowa | Roboty | Joanna | Uk³ad | PM000 | Zespó³-W | Blok | Normalny | Pakiet | L2 |  |
| 10SN54-132 |  | Malowanie i oznakowanie – Sekcja 20 | 7d | 2028-02-23 | 2028-03-02 | 10SN54-131 FF+2d |  | 2027-05-17 | 2027-05-25 | 36.5d | 0d |  |  | ElektroP | 10SN54 | Ruroci¹g | Budowa | Roboty | Joanna | Uk³ad | PM000 | Zespó³-K | Blok | Normalny | Pakiet | L2 |  |
|  | SEKCJA 21 | **Sekcja 21** |  | 2026-08-14 | 2028-02-22 |  |  |  |  |  |  |  |  |  |  |  |  |  |  |  |  |  |  |  |  |  |  |
|  | PODSEKCJA | **Podsekcja 21.A** |  | 2026-08-14 | 2028-02-22 |  |  |  |  |  |  |  |  |  |  |  |  |  |  |  |  |  |  |  |  |  |  |
| 10SN54-135 |  | Prefabrykacja ruroci¹gów – Sekcja 21 | 5d | 2026-08-14 A | 2026-08-20 A | 10SN54-012, 10SN54-128 SS+5d | 100% |  |  |  |  |  |  | ElektroP | 10SN54 | Ruroci¹g | Budowa | Roboty | Joanna | Uk³ad | PM100 | Zespó³-E | Blok | Normalny | Pakiet | L2 |  |
| 10SN54-136 |  | Monta¿ ruroci¹gów – Sekcja 21 | 7.3d | 2028-01-28 | 2028-02-07 | 10SN54-135, 10SN54-014 SS+10d |  | 2027-04-21 | 2027-04-29 | 43.3d | 0d |  | Rev A | ElektroP | 10SN54 | Ruroci¹g | Budowa | Roboty | Joanna | Uk³ad | PM000 | Zespó³-K | Blok | Normalny | Pakiet | L2 | Uzgodnione na koordynacji |
| 10SN54-137 |  | Próba ciœnieniowa – Sekcja 21 | 5d | 2028-02-08 | 2028-02-14 | 10SN54-136 |  | 2027-04-30 | 2027-05-06 | 43.3d | 0d |  | Rev A | ElektroP | 10SN54 | Ruroci¹g | Budowa | Roboty | Joanna | Uk³ad | PM000 | Zespó³-K | Blok | Normalny | Pakiet | L2 | Do weryfikacji z wykonawc¹ |
| 10SN54-138 |  | Izolacje – Sekcja 21 | 4d | 2028-02-15 | 2028-02-18 | 10SN54-137 |  | 2027-05-07 | 2027-05-12 | 43.3d | 0d |  | Rev B | ElektroP | 10SN54 | Ruroci¹g | Budowa | Roboty | Joanna | Uk³ad | PM000 | Zespó³-W | Blok | Normalny | Pakiet | L2 |  |
| 10SN54-139 |  | Malowanie i oznakowanie – Sekcja 21 | 6d | 2028-02-15 | 2028-02-22 | 10SN54-138 FF+2d |  | 2027-05-07 | 2027-05-14 | 43.3d | 0d |  |  | ElektroP | 10SN54 | Ruroci¹g | Budowa | Roboty | Joanna | Uk³ad | PM000 | Zespó³-W | Blok | Normalny | Pakiet | L2 |  |
|  | SEKCJA 22 | **Sekcja 22** |  | 2026-08-20 | 2028-03-01 |  |  |  |  |  |  |  |  |  |  |  |  |  |  |  |  |  |  |  |  |  |  |
| 10SN54-140 |  | Prefabrykacja ruroci¹gów – Sekcja 22 | 7.1d | 2026-08-20 A | 2026-09-02 A | 10SN54-012, 10SN54-135 SS+5d | 100% | 2026-08-21 | 2026-08-31 |  |  |  |  | ElektroP | 10SN54 | Ruroci¹g | Budowa | Roboty | Joanna | Uk³ad | PM000 | Zespó³-K | Blok | Normalny | Pakiet | L2 |  |
| 10SN54-141 |  | Monta¿ ruroci¹gów – Sekcja 22 | 20.2d | 2028-01-18 | 2028-02-14 | 10SN54-140, 10SN54-014 SS+2d |  | 2027-04-09 | 2027-05-06 | 37.4d | 0d |  |  | ElektroP | 10SN54 | Ruroci¹g | Budowa | Roboty | Joanna | Uk³ad | PM100 | Zespó³-I | Blok | Wysoki | Pakiet | L2 |  |
| 10SN54-142 |  | Próba ciœnieniowa – Sekcja 22 | 5d | 2028-02-15 | 2028-02-21 | 10SN54-141 |  | 2027-05-07 | 2027-05-13 | 37.4d | 0d |  |  | ElektroP | 10SN54 | Ruroci¹g | Budowa | Roboty | Joanna | Uk³ad | PM000 | Zespó³-W | Blok | Wysoki | Pakiet | L2 | Czeka na dostawê |
| 10SN54-143 |  | Izolacje – Sekcja 22 | 5d | 2028-02-22 | 2028-02-28 | 10SN54-142 |  | 2027-05-14 | 2027-05-20 | 37.4d | 0d |  | Rev B | ElektroP | 10SN54 | Ruroci¹g | Budowa | Roboty | Joanna | Uk³ad | PM000 | Zespó³-W | Blok | Normalny | Pakiet | L2 |  |
| 10SN54-144 |  | Malowanie i oznakowanie – Sekcja 22 | 3d | 2028-02-28 | 2028-03-01 | 10SN54-143 FF+2d |  | 2027-05-20 | 2027-05-24 | 37.4d | 0d | Kalendarz 6-dniowy |  | ElektroP | 10SN54 | Ruroci¹g | Budowa | Roboty | Joanna | Uk³ad | PM000 | Zespó³-W | Blok | Niski | Pakiet | L2 | Ryzyko opóŸnienia |
|  | SEKCJA 23 | **Sekcja 23** |  | 2026-08-28 | 2028-03-13 |  |  |  |  |  |  |  |  |  |  |  |  |  |  |  |  |  |  |  |  |  |  |
| 10SN54-147 |  | Prefabrykacja ruroci¹gów – Sekcja 23 | 11.6d | 2026-08-28 A | 2026-09-14 A | 10SN54-012, 10SN54-140 SS+5d | 100% | 2026-08-28 | 2026-09-11 |  |  |  | Rev B | ElektroP | 10SN54 | Ruroci¹g | Budowa | Roboty | Joanna | Uk³ad | PM300 | Zespó³-E | Blok | Krytyczn | Pakiet | L2 |  |
| 10SN54-148 |  | Monta¿ ruroci¹gów – Sekcja 23 | 21.5d | 2028-01-17 | 2028-02-14 | 10SN54-147, 10SN54-014 SS+1d |  | 2027-04-08 | 2027-05-06 | 29.1d | 0d | Kalendarz 6-dniowy |  | ElektroP | 10SN54 | Ruroci¹g | Budowa | Roboty | Joanna | Uk³ad | PM000 | Zespó³-W | Blok | Wysoki | Pakiet | L2 |  |
| 10SN54-149 |  | Próba ciœnieniowa – Sekcja 23 | 6d | 2028-02-15 | 2028-02-22 | 10SN54-148 |  | 2027-05-07 | 2027-05-14 | 29.1d | 0d |  |  | ElektroP | 10SN54 | Ruroci¹g | Budowa | Roboty | Joanna | Uk³ad | PM000 | Zespó³-W | Blok | Normalny | Pakiet | L2 | Bez uwag |
| 10SN54-150 |  | Izolacje – Sekcja 23 | 12d | 2028-02-23 | 2028-03-09 | 10SN54-149 |  | 2027-05-17 | 2027-06-01 | 29.1d | 0d |  |  | ElektroP | 10SN54 | Ruroci¹g | Budowa | Roboty | Joanna | Uk³ad | PM000 | Zespó³-K | Blok | Niski | Pakiet | L2 | Do weryfikacji z wykonawc¹ |
| 10SN54-151 |  | Malowanie i oznakowanie – Sekcja 23 | 2d | 2028-03-10 | 2028-03-13 | 10SN54-150 FF+2d |  | 2027-06-02 | 2027-06-03 | 29.1d | 0d |  |  | ElektroP | 10SN54 | Ruroci¹g | Budowa | Roboty | Joanna | Uk³ad | PM000 | Zespó³-K | Blok | Wysoki | Pakiet | L2 |  |

| ID | WBS | Activity | Type | Duration | Start | Finish | Predecessors | Complete | Actual finish | Planned start | Planned finish | Total float | Free float | Calendar | AC_Wykonawca | AC_Obiekt | AC_Dyscyplina | AC_Faza | AC_Zakres | AC_Opiekun | AC_Obszar | AC_PP_PM | AC_Zespol | AC_Blok | AC_Priorytet | AC_Pakiet | AC_Poziom | Rewizja dokumentu | Uwagi harmonogramisty |
| --- | --- | --- | --- | --- | --- | --- | --- | --- | --- | --- | --- | --- | --- | --- | --- | --- | --- | --- | --- | --- | --- | --- | --- | --- | --- | --- | --- | --- | --- |
|  | SEKCJA 24 | **Sekcja 24** |  |  | 2026-09-04 | 2028-03-08 |  |  |  |  |  |  |  |  |  |  |  |  |  |  |  |  |  |  |  |  |  |  |  |
|  | PODSEKCJA | **Podsekcja 24.A** |  |  | 2026-09-04 | 2028-03-08 |  |  |  |  |  |  |  |  |  |  |  |  |  |  |  |  |  |  |  |  |  |  |  |
| 10SN54-152 |  | Prefabrykacja ruroci¹gów – Sekcja 24 |  | 10.4d | 2026-09-04 A | 2026-09-17 A | 10SN54-012, 10SN54-147 SS+5d | 100% |  |  |  |  |  | Kalendarz 6-dniowy | ElektroP | 10SN54 | Ruroci¹g | Budowa | Roboty | Joanna | Uk³ad | PM000 | Zespó³-K | Blok | Normalny | Pakiet | L2 |  |  |
| 10SN54-153 |  | Monta¿ ruroci¹gów – Sekcja 24 |  | 22.6d | 2028-01-14 | 2028-02-14 | 10SN54-152, 10SN54-014 SS |  |  | 2027-04-07 | 2027-05-06 | 0d |  |  | ElektroP | 10SN54 | Ruroci¹g | Budowa | Roboty | Joanna | Uk³ad | PM000 | Zespó³-W | Blok | Normalny | Pakiet | L2 | Rev B |  |
| 10SN54-154 |  | Próba ciœnieniowa – Sekcja 24 |  | 6d | 2028-02-15 | 2028-02-22 | 10SN54-153 |  |  | 2027-05-07 | 2027-05-14 | 0d |  |  | ElektroP | 10SN54 | Ruroci¹g | Budowa | Roboty | Joanna | Uk³ad | PM000 | Zespó³-W | Blok | Normalny | Pakiet | L2 |  | Uzgodnione na koordynacji |
| 10SN54-155 |  | Izolacje – Sekcja 24 |  | 9d | 2028-02-23 | 2028-03-06 | 10SN54-154 |  |  | 2027-05-17 | 2027-05-27 | 0d |  |  | ElektroP | 10SN54 | Ruroci¹g | Budowa | Roboty | Joanna | Uk³ad | PM000 | Zespó³-W | Blok | Normalny | Pakiet | L2 |  | Bez uwag |
| 10SN54-156 |  | Malowanie i oznakowanie – Sekcja 24 |  | 4d | 2028-03-03 | 2028-03-08 | 10SN54-155 FF+2d |  |  | 2027-05-26 | 2027-05-31 | 0d |  |  | ElektroP | 10SN54 | Ruroci¹g | Budowa | Roboty | Joanna | Uk³ad | PM000 | Zespó³-W | Blok | Normalny | Pakiet | L2 |  |  |
|  | SEKCJA 25 | **Sekcja 25** |  |  | 2026-09-15 | 2028-02-29 |  |  |  |  |  |  |  |  |  |  |  |  |  |  |  |  |  |  |  |  |  |  |  |
| 10SN54-159 |  | Prefabrykacja ruroci¹gów – Sekcja 25 |  | 13.9d | 2026-09-15 A | 2026-10-01 A | 10SN54-012, 10SN54-152 SS+5d | 100% |  | 2026-09-11 | 2026-09-29 |  |  | Kalendarz 6-dniowy | ElektroP | 10SN54 | Ruroci¹g | Budowa | Roboty | Joanna | Uk³ad | PM000 | Zespó³-K | Blok | Normalny | Pakiet | L2 | Rev C | Czeka na dostawê |
| 10SN54-160 |  | Monta¿ ruroci¹gów – Sekcja 25 |  | 20.7d | 2028-01-17 | 2028-02-11 | 10SN54-159, 10SN54-014 SS+1d |  |  | 2027-04-08 | 2027-05-05 | 5.9d | 0d |  | ElektroP | 10SN54 | Ruroci¹g | Budowa | Roboty | Joanna | Uk³ad | PM000 | Zespó³-K | Blok | Normalny | Pakiet | L2 |  |  |
| 10SN54-161 |  | Próba ciœnieniowa – Sekcja 25 |  | 4d | 2028-02-14 | 2028-02-17 | 10SN54-160 |  |  | 2027-05-06 | 2027-05-11 | 5.9d | 0d |  | ElektroP | 10SN54 | Ruroci¹g | Budowa | Roboty | Joanna | Uk³ad | PM000 | Zespó³-W | Blok | Krytyczn | Pakiet | L2 |  |  |
| 10SN54-162 |  | Izolacje – Sekcja 25 |  | 6d | 2028-02-18 | 2028-02-25 | 10SN54-161 |  |  | 2027-05-12 | 2027-05-19 | 5.9d | 0d |  | ElektroP | 10SN54 | Ruroci¹g | Budowa | Roboty | Joanna | Uk³ad | PM000 | Zespó³-E | Blok | Wysoki | Pakiet | L2 | Rev B |  |
| 10SN54-163 |  | Malowanie i oznakowanie – Sekcja 25 |  | 4d | 2028-02-24 | 2028-02-29 | 10SN54-162 FF+2d |  |  | 2027-05-18 | 2027-05-21 | 5.9d | 0d |  | ElektroP | 10SN54 | Ruroci¹g | Budowa | Roboty | Joanna | Uk³ad | PM000 | Zespó³-W | Blok | Normalny | Pakiet | L2 |  |  |
|  | PROJ | **Projektowanie** |  |  | 2025-06-20 | 2025-12-22 |  |  |  |  |  |  |  |  |  |  |  |  |  |  |  |  |  |  |  |  |  |  |  |
|  | DOKUMENTAC | **Dokumentacja** |  |  | 2025-06-20 | 2025-12-22 |  |  |  |  |  |  |  |  |  |  |  |  |  |  |  |  |  |  |  |  |  |  |  |
| 10SN54-001 |  | Projekt wykonawczy – Rozdzielnia 110 kV |  | 100d | 2025-06-20 A | 2025-11-07 A |  | 100% |  | 2025-06-19 | 2025-11-05 |  |  | Kalendarz 6-dniowy | ElektroP | 10SN54 | Budowlan | Projekto | Projekt | Joanna | Uk³ad | PM000 | Zespó³-K | Blok | Normalny | Pakiet | L2 |  |  |
| 10SN54-002 |  | Uzgodnienie dokumentacji z Inwestorem |  | 24d | 2025-11-10 A | 2025-12-11 A | 10SN54-001 | 100% |  | 2025-11-06 | 2025-12-09 |  |  |  | ElektroP | 10SN54 | Budowlan | Projekto | Projekt | Joanna | Uk³ad | PM000 | Zespó³-K | Blok | Normalny | Pakiet | L2 |  | Czeka na dostawê |
| 10SN54-003 |  | Zatwierdzenie dokumentacji do realizacji |  | 7d | 2025-12-09 A | 2025-12-17 A | 10SN54-002 | 100% |  | 2025-12-10 | 2025-12-18 |  |  |  | ElektroP | 10SN54 | Budowlan | Projekto | Projekt | Joanna | Uk³ad | PM000 | Zespó³-W | Blok | Normalny | Pakiet | L2 |  |  |
| 10SN54-004 |  | KM: Dokumentacja zatwierdzona – Rozdzielnia 110 kV | milestone | 0d | 2025-12-22 A | 2025-12-22 | 10SN54-003 | 100% | 2025-12-19 | 2025-12-19 | 2025-12-19 |  |  |  | ElektroP | 10SN54 | Budowlan | Projekto | Kamieñ | Joanna | Uk³ad | PM000 | Zespó³-W | Blok | Niski | Pakiet | L1 |  |  |
|  | ROZR | **Rozruch** |  |  | 2028-03-09 | 2028-04-10 |  |  |  |  |  |  |  |  |  |  |  |  |  |  |  |  |  |  |  |  |  |  |  |
|  | ROZRUCH | **Rozruch** |  |  | 2028-03-09 | 2028-04-10 |  |  |  |  |  |  |  |  |  |  |  |  |  |  |  |  |  |  |  |  |  |  |  |
| 10SN54-166 |  | Przegl¹d gotowoœci do rozruchu |  | 4d | 2028-03-09 | 2028-03-14 | 10SN54-165, 10SN54-019, 10SN54-024, 10SN54-026 |  |  | 2027-06-01 | 2027-06-04 | 0d |  |  | ElektroP | 10SN54 | Rozruch | Rozruch | Rozruch | Joanna | Uk³ad | PM000 | Zespó³-W | Blok | Normalny | Pakiet | L2 |  | Bez uwag |
| 10SN54-167 |  | Rozruch na zimno |  | 5d | 2028-03-15 | 2028-03-21 | 10SN54-166 |  |  | 2027-06-07 | 2027-06-11 | 0d |  |  | ElektroP | 10SN54 | Rozruch | Rozruch | Rozruch | Joanna | Uk³ad | PM000 | Zespó³-W | Blok | Niski | Pakiet | L2 |  |  |
| 10SN54-168 |  | Rozruch na gor¹co / próby ruchowe |  | 13d | 2028-03-22 | 2028-04-07 | 10SN54-167 |  |  | 2027-06-14 | 2027-06-30 | 0d |  |  | ElektroP | 10SN54 | Rozruch | Rozruch | Rozruch | Joanna | Uk³ad | PM000 | Zespó³-W | Blok | Normalny | Pakiet | L2 | Rev A |  |
| 10SN54-169 |  | KM: Odbiór koñcowy – Rozdzielnia 110 kV | milestone | 0d | 2028-04-10 | 2028-04-10 | 10SN54-168 |  |  | 2027-07-01 | 2027-07-01 | 0d |  |  | ElektroP | 10SN54 | Rozruch | Rozruch | Kamieñ | Joanna | Uk³ad | PM000 | Zespó³-W | Blok | Wysoki | Pakiet | L1 | Rev A |  |

| ID | WBS | Activity | Type | Duration | Start | Finish | Predecessors | Complete | Planned start | Planned finish | Total float | Free float | Calendar | Rewizja dokumentu | AC_Wykonawca | AC_Obiekt | AC_Dyscyplina | AC_Faza | AC_Zakres | AC_Opiekun | AC_Obszar | AC_PP_PM | AC_Zespol | AC_Blok | AC_Priorytet | AC_Pakiet | AC_Poziom | Uwagi harmonogramisty |
| --- | --- | --- | --- | --- | --- | --- | --- | --- | --- | --- | --- | --- | --- | --- | --- | --- | --- | --- | --- | --- | --- | --- | --- | --- | --- | --- | --- | --- |
|  | ZAKU | **Zakupy** |  |  | 2025-07-18 | 2028-01-14 |  |  |  |  |  |  |  |  |  |  |  |  |  |  |  |  |  |  |  |  |  |  |
|  | DOSTAWY | **Dostawy** |  |  | 2026-10-07 | 2028-01-14 |  |  |  |  |  |  |  |  |  |  |  |  |  |  |  |  |  |  |  |  |  |  |
| 10SN54-008 |  | Produkcja u dostawcy |  | 300d | 2026-10-07 | 2027-11-30 | 10SN54-007 |  | 2025-12-29 | 2027-02-19 | 0d |  |  | Rev B | ElektroP | 10SN54 | Mechanic | Zakupy | Dostawa | Joanna | Uk³ad | PM000 | Zespó³-K | Blok | Normalny | Pakiet | L2 |  |
| 10SN54-009 |  | Testy FAT |  | 6d | 2027-12-01 | 2027-12-08 | 10SN54-008 |  | 2027-02-22 | 2027-03-01 | 0d |  |  |  | ElektroP | 10SN54 | Mechanic | Zakupy | Dostawa | Joanna | Uk³ad | PM000 | Zespó³-K | Blok | Normalny | Pakiet | L2 |  |
| 10SN54-010 |  | Transport i dostawa na plac budowy |  | 26d | 2027-12-09 | 2028-01-13 | 10SN54-009 |  | 2027-03-02 | 2027-04-06 | 0d |  |  |  | ElektroP | 10SN54 | Mechanic | Zakupy | Dostawa | Joanna | Uk³ad | PM000 | Zespó³-K | Blok | Normalny | Pakiet | L2 |  |
| 10SN54-011 |  | KM: Dostawa na budowê – Rozdzielnia 110 kV | milestone | 0d | 2028-01-14 | 2028-01-14 | 10SN54-010 |  | 2027-04-07 | 2027-04-07 | 0d |  |  | Rev B | ElektroP | 10SN54 | Mechanic | Zakupy | Kamieñ | Joanna | Uk³ad | PM000 | Zespó³-W | Blok | Normalny | Pakiet | L1 |  |
|  | ZAMÓWIENIA | **Zamówienia** |  |  | 2025-07-18 | 2026-01-02 |  |  |  |  |  |  |  |  |  |  |  |  |  |  |  |  |  |  |  |  |  |  |
| 10SN54-005 |  | Zapytanie ofertowe |  | 29d | 2025-07-18 A | 2025-08-27 A | 10SN54-001 SS+20d | 100% | 2025-07-17 | 2025-08-26 |  |  |  |  | ElektroP | 10SN54 | Mechanic | Zakupy | Dostawa | Joanna | Uk³ad | PM000 | Zespó³-K | Blok | Niski | Pakiet | L2 |  |
| 10SN54-006 |  | Analiza i wybór ofert |  | 11d | 2025-08-29 A | 2025-09-16 A | 10SN54-005 | 100% | 2025-08-27 | 2025-09-10 |  |  |  |  | ElektroP | 10SN54 | Mechanic | Zakupy | Dostawa | Joanna | Uk³ad | PM000 | Zespó³-W | Blok | Normalny | Pakiet | L2 | Czeka na dostawê |
| 10SN54-007 |  | Zawarcie umowy / zamówienie |  | 6d | 2025-12-24 A | 2026-01-02 A | 10SN54-006, 10SN54-004 SS, 28BW90-004 (other project) FS+12d | 100% | 2025-12-19 | 2025-12-26 |  |  |  |  | ElektroP | 10SN54 | Mechanic | Zakupy | Dostawa | Joanna | Uk³ad | PM000 | Zespó³-E | Blok | Normalny | Pakiet | L1 | Do weryfikacji z wykonawc¹ |
|  | 11XQ69 | **11XQ69 – Zasilanie awaryjne** |  |  | 2025-06-18 | 2027-03-29 |  |  |  |  |  |  |  |  |  |  |  |  |  |  |  |  |  |  |  |  |  |  |
|  | BUDO | **Budowa** |  |  | 2025-11-24 | 2027-01-26 |  |  |  |  |  |  |  |  |  |  |  |  |  |  |  |  |  |  |  |  |  |  |
|  | AKPIA | **AKPiA** |  |  | 2026-11-02 | 2026-12-03 |  |  |  |  |  |  |  |  |  |  |  |  |  |  |  |  |  |  |  |  |  |  |
| 11XQ69-087 |  | Monta¿ uk³adów AKPiA |  | 24d | 2026-11-02 | 2026-12-03 | 11XQ69-014 SS+5d |  | 2026-11-11 | 2026-12-14 | 307.8d | 0d |  |  | Pomorski | 11XQ69 | AKPiA | Budowa | Roboty | Agnieszk | Uk³ad | PM000 | Zespó³-K | Blok | Normalny | Pakiet | L2 |  |
|  | ELEKTRYKA | **Elektryka** |  |  | 2026-11-04 | 2026-12-31 |  |  |  |  |  |  |  |  |  |  |  |  |  |  |  |  |  |  |  |  |  |  |
| 11XQ69-026 |  | Pod³¹czenia i pomiary – trasa 02 |  | 7d | 2026-11-04 | 2026-11-12 | 11XQ69-025 FF |  | 2026-11-13 | 2026-11-23 | 322.8d | 0d |  | Rev A | Pomorski | 11XQ69 | Elektryc | Budowa | Roboty | Agnieszk | Uk³ad | PM000 | Zespó³-W | Blok | Normalny | Pakiet | L2 |  |
| 11XQ69-025 |  | Uk³adanie kabli – trasa 02 |  | 4d | 2026-11-09 | 2026-11-12 | 11XQ69-014 SS+10d |  | 2026-11-18 | 2026-11-23 | 322.8d | 0d |  |  | Pomorski | 11XQ69 | Elektryc | Budowa | Roboty | Agnieszk | Uk³ad | PM000 | Zespó³-W | Blok | Normalny | Pakiet | L2 | Do weryfikacji z wykonawc¹ |
| 11XQ69-037 |  | Uk³adanie kabli – trasa 04 |  | 9d | 2026-11-09 | 2026-11-19 | 11XQ69-014 SS+10d |  | 2026-11-18 | 2026-11-30 | 370.8d | 0d |  |  | Pomorski | 11XQ69 | Elektryc | Budowa | Roboty | Agnieszk | Uk³ad | PM000 | Zespó³-W | Blok | Niski | Pakiet | L2 |  |
| 11XQ69-049 |  | Uk³adanie kabli – trasa 06 |  | 18d | 2026-11-09 | 2026-12-02 | 11XQ69-014 SS+10d |  | 2026-11-18 | 2026-12-11 | 361.8d | 0d |  |  | Pomorski | 11XQ69 | Elektryc | Budowa | Roboty | Agnieszk | Uk³ad | PM000 | Zespó³-W | Blok | Wysoki | Pakiet | L2 |  |
| 11XQ69-061 |  | Uk³adanie kabli – trasa 08 |  | 16d | 2026-11-09 | 2026-11-30 | 11XQ69-014 SS+10d |  | 2026-11-18 | 2026-12-09 | 363.8d | 0d |  | Rev A | Pomorski | 11XQ69 | Elektryc | Budowa | Roboty | Agnieszk | Uk³ad | PM000 | Zespó³-W | Blok | Normalny | Pakiet | L2 |  |
| 11XQ69-085 |  | Uk³adanie kabli – trasa 12 |  | 4d | 2026-11-09 | 2026-11-12 | 11XQ69-014 SS+10d |  | 2026-11-18 | 2026-11-23 | 322.8d | 0d |  |  | Pomorski | 11XQ69 | Elektryc | Budowa | Roboty | Agnieszk | Uk³ad | PM000 | Zespó³-W | Blok | Normalny | Pakiet | L2 |  |
| 11XQ69-086 |  | Pod³¹czenia i pomiary – trasa 12 |  | 3d | 2026-11-10 | 2026-11-12 | 11XQ69-085 FF |  | 2026-11-19 | 2026-11-23 | 322.8d | 0d |  | Rev C | Pomorski | 11XQ69 | Elektryc | Budowa | Roboty | Agnieszk | Uk³ad | PM000 | Zespó³-K | Blok | Normalny | Pakiet | L2 |  |
| 11XQ69-038 |  | Pod³¹czenia i pomiary – trasa 04 |  | 4d | 2026-11-16 | 2026-11-19 | 11XQ69-037 FF |  | 2026-11-25 | 2026-11-30 | 370.8d | 0d |  |  | Pomorski | 11XQ69 | Elektryc | Budowa | Roboty | Agnieszk | Uk³ad | PM000 | Zespó³-K | Blok | Normalny | Pakiet | L2 | Czeka na dostawê |
| 11XQ69-050 |  | Pod³¹czenia i pomiary – trasa 06 |  | 10d | 2026-11-19 | 2026-12-02 | 11XQ69-049 FF |  | 2026-11-30 | 2026-12-11 | 361.8d | 0d |  |  | Pomorski | 11XQ69 | Elektryc | Budowa | Roboty | Agnieszk | Uk³ad | PM000 | Zespó³-K | Blok | Wysoki | Pakiet | L2 |  |
| 11XQ69-062 |  | Pod³¹czenia i pomiary – trasa 08 |  | 4d | 2026-11-25 | 2026-11-30 | 11XQ69-061 FF |  | 2026-12-04 | 2026-12-09 | 363.8d | 0d |  |  | Pomorski | 11XQ69 | Elektryc | Budowa | Roboty | Agnieszk | Uk³ad | PM000 | Zespó³-W | Blok | Normalny | Pakiet | L2 |  |
| 11XQ69-073 |  | Uk³adanie kabli – trasa 10 |  | 18d | 2026-12-08 | 2026-12-31 | 11XQ69-014 SS+10d |  | 2026-11-18 | 2026-12-11 | 341.6d | 0d | Kalendarz 6-dniowy |  | Pomorski | 11XQ69 | Elektryc | Budowa | Roboty | Agnieszk | Uk³ad | PM000 | Zespó³-I | Blok | Normalny | Pakiet | L2 |  |
| 11XQ69-074 |  | Pod³¹czenia i pomiary – trasa 10 |  | 4d | 2026-12-28 | 2026-12-31 | 11XQ69-073 FF |  | 2026-12-08 | 2026-12-11 | 341.6d | 0d |  | Rev C | Pomorski | 11XQ69 | Elektryc | Budowa | Roboty | Agnieszk | Uk³ad | PM000 | Zespó³-K | Blok | Wysoki | Pakiet | L2 |  |

| ID | WBS | Activity | Type | Duration | Start | Finish | Predecessors | Complete | Planned start | Planned finish | Total float | Free float | AC_Wykonawca | AC_Obiekt | AC_Dyscyplina | AC_Faza | AC_Zakres | AC_Opiekun | AC_Obszar | AC_PP_PM | AC_Zespol | AC_Blok | AC_Priorytet | AC_Pakiet | AC_Poziom | Uwagi harmonogramisty | Rewizja dokumentu |
| --- | --- | --- | --- | --- | --- | --- | --- | --- | --- | --- | --- | --- | --- | --- | --- | --- | --- | --- | --- | --- | --- | --- | --- | --- | --- | --- | --- |
|  | MONTA¯ | **Monta¿** |  |  | 2026-02-09 | 2026-12-23 |  |  |  |  |  |  |  |  |  |  |  |  |  |  |  |  |  |  |  |  |  |
| 11XQ69-013 |  | Monta¿ konstrukcji stalowych |  | 23d | 2026-02-09 A | 2026-03-13 A | 11XQ69-012 | 100% | 2026-02-10 | 2026-03-12 |  |  | Pomorski | 11XQ69 | Mechanic | Budowa | Roboty | Agnieszk | Uk³ad | PM000 | Zespó³-W | Blok | Niski | Pakiet | L2 |  |  |
| 11XQ69-014 |  | Monta¿ urz¹dzeñ g³ównych |  | 35d | 2026-10-26 | 2026-12-11 | 11XQ69-013, 11XQ69-011 |  | 2026-11-04 | 2026-12-22 | 295.6d | 0d | Pomorski | 11XQ69 | Mechanic | Budowa | Roboty | Agnieszk | Uk³ad | PM000 | Zespó³-K | Blok | Normalny | Pakiet | L2 |  |  |
| 11XQ69-088 |  | KM: Zakoñczenie monta¿u – Zasilanie awaryjne | milestone | 0d | 2026-12-23 | 2026-12-23 | 11XQ69-079, 11XQ69-084, 11XQ69-086, 11XQ69-087, 11XQ69-014 |  | 2026-12-31 | 2026-12-31 | 295.6d | 0d | Pomorski | 11XQ69 | Mechanic | Budowa | Kamieñ | Agnieszk | Uk³ad | PM000 | Zespó³-W | Blok | Wysoki | Pakiet | L2 |  |  |
|  | ROBOTY BUD | **Roboty budowlane** |  |  | 2025-11-24 | 2026-02-09 |  |  |  |  |  |  |  |  |  |  |  |  |  |  |  |  |  |  |  |  |  |
| 11XQ69-012 |  | Fundamenty i roboty ziemne |  | 56d | 2025-11-24 A | 2026-02-09 A | 11XQ69-007 FS+10d | 100% |  |  |  |  | Pomorski | 11XQ69 | Budowlan | Budowa | Roboty | Agnieszk | Uk³ad | PM000 | Zespó³-W | Blok | Normalny | Pakiet | L2 | Bez uwag |  |
|  | RUROCI¥GI | **Ruroci¹gi** |  |  | 2026-02-09 | 2027-01-26 |  |  |  |  |  |  |  |  |  |  |  |  |  |  |  |  |  |  |  |  |  |
|  | SEKCJA 01 | **Sekcja 01** |  |  | 2026-02-09 | 2027-01-26 |  |  |  |  |  |  |  |  |  |  |  |  |  |  |  |  |  |  |  |  |  |
| 11XQ69-015 |  | Prefabrykacja ruroci¹gów – Sekcja 01 |  | 10.1d | 2026-02-09 A | 2026-02-20 A | 11XQ69-012 | 100% | 2026-02-10 | 2026-02-23 |  |  | Pomorski | 11XQ69 | Ruroci¹g | Budowa | Roboty | Agnieszk | Uk³ad | PM000 | Zespó³-K | Blok | Normalny | Pakiet | L2 | Do weryfikacji z wykonawc¹ |  |
| 11XQ69-016 |  | Monta¿ ruroci¹gów – Sekcja 01 |  | 13.8d | 2026-12-16 | 2027-01-01 | 11XQ69-015, 11XQ69-014 SS+9d |  | 2026-11-17 | 2026-12-03 | 269.8d | 0d | Pomorski | 11XQ69 | Ruroci¹g | Budowa | Roboty | Agnieszk | Uk³ad | PM300 | Zespó³-I | Blok | Normalny | Pakiet | L2 |  |  |
| 11XQ69-017 |  | Próba ciœnieniowa – Sekcja 01 |  | 3d | 2027-01-04 | 2027-01-06 | 11XQ69-016 |  | 2026-12-04 | 2026-12-08 | 269.8d | 0d | Pomorski | 11XQ69 | Ruroci¹g | Budowa | Roboty | Agnieszk | Uk³ad | PM000 | Zespó³-W | Blok | Wysoki | Pakiet | L2 |  |  |
| 11XQ69-018 |  | Izolacje – Sekcja 01 |  | 12d | 2027-01-07 | 2027-01-22 | 11XQ69-017 |  | 2026-12-09 | 2026-12-24 | 269.8d | 0d | Pomorski | 11XQ69 | Ruroci¹g | Budowa | Roboty | Agnieszk | Uk³ad | PM000 | Zespó³-W | Blok | Niski | Pakiet | L2 |  |  |
| 11XQ69-019 |  | Malowanie i oznakowanie – Sekcja 01 |  | 6d | 2027-01-19 | 2027-01-26 | 11XQ69-018 FF+2d |  | 2026-12-21 | 2026-12-28 | 269.8d | 0d | Pomorski | 11XQ69 | Ruroci¹g | Budowa | Roboty | Agnieszk | Uk³ad | PM000 | Zespó³-K | Blok | Niski | Pakiet | L2 |  | Rev A |
|  | SEKCJA 02 | **Sekcja 02** |  |  | 2026-02-16 | 2026-12-17 |  |  |  |  |  |  |  |  |  |  |  |  |  |  |  |  |  |  |  |  |  |
| 11XQ69-020 |  | Prefabrykacja ruroci¹gów – Sekcja 02 |  | 9.6d | 2026-02-16 A | 2026-03-02 A | 11XQ69-012, 11XQ69-015 SS+5d | 100% | 2026-02-17 | 2026-02-27 |  |  | Pomorski | 11XQ69 | Ruroci¹g | Budowa | Roboty | Agnieszk | Uk³ad | PM000 | Zespó³-W | Blok | Normalny | Pakiet | L2 |  |  |
| 11XQ69-021 |  | Monta¿ ruroci¹gów – Sekcja 02 |  | 21.7d | 2026-10-26 | 2026-11-24 | 11XQ69-020, 11XQ69-014 SS |  | 2026-11-04 | 2026-12-02 | 300.1d | 0d | Pomorski | 11XQ69 | Ruroci¹g | Budowa | Roboty | Agnieszk | Uk³ad | PM000 | Zespó³-K | Blok | Normalny | Pakiet | L2 |  |  |
| 11XQ69-022 |  | Próba ciœnieniowa – Sekcja 02 |  | 4d | 2026-11-25 | 2026-11-30 | 11XQ69-021 |  | 2026-12-03 | 2026-12-08 | 300.1d | 0d | Pomorski | 11XQ69 | Ruroci¹g | Budowa | Roboty | Agnieszk | Uk³ad | PM000 | Zespó³-K | Blok | Wysoki | Pakiet | L2 |  | Rev C |
| 11XQ69-023 |  | Izolacje – Sekcja 02 |  | 9d | 2026-12-03 | 2026-12-15 | 11XQ69-022 |  | 2026-12-09 | 2026-12-21 | 298.6d | 0d | Pomorski | 11XQ69 | Ruroci¹g | Budowa | Roboty | Agnieszk | Uk³ad | PM300 | Zespó³-I | Blok | Normalny | Pakiet | L2 |  |  |
| 11XQ69-024 |  | Malowanie i oznakowanie – Sekcja 02 |  | 7d | 2026-12-09 | 2026-12-17 | 11XQ69-023 FF+2d |  | 2026-12-15 | 2026-12-23 | 298.6d | 0d | Pomorski | 11XQ69 | Ruroci¹g | Budowa | Roboty | Agnieszk | Uk³ad | PM000 | Zespó³-W | Blok | Normalny | Pakiet | L2 |  | Rev C |
|  | SEKCJA 03 | **Sekcja 03** |  |  | 2026-02-24 | 2026-12-10 |  |  |  |  |  |  |  |  |  |  |  |  |  |  |  |  |  |  |  |  |  |
|  | PODSEKCJA | **Podsekcja 03.A** |  |  | 2026-02-24 | 2026-12-10 |  |  |  |  |  |  |  |  |  |  |  |  |  |  |  |  |  |  |  |  |  |
| 11XQ69-027 |  | Prefabrykacja ruroci¹gów – Sekcja 03 |  | 12.2d | 2026-02-24 A | 2026-03-13 A | 11XQ69-012, 11XQ69-020 SS+5d | 100% | 2026-02-24 | 2026-03-11 |  |  | Pomorski | 11XQ69 | Ruroci¹g | Budowa | Roboty | Agnieszk | Uk³ad | PM000 | Zespó³-W | Blok | Wysoki | Pakiet | L2 | Czeka na dostawê |  |
| 11XQ69-028 |  | Monta¿ ruroci¹gów – Sekcja 03 |  | 10.8d | 2026-11-05 | 2026-11-19 | 11XQ69-027, 11XQ69-014 SS+8d |  | 2026-11-16 | 2026-11-27 | 357d | 0d | Pomorski | 11XQ69 | Ruroci¹g | Budowa | Roboty | Agnieszk | Uk³ad | PM000 | Zespó³-W | Blok | Normalny | Pakiet | L2 |  |  |
| 11XQ69-029 |  | Próba ciœnieniowa – Sekcja 03 |  | 2d | 2026-11-20 | 2026-11-23 | 11XQ69-028 |  | 2026-11-30 | 2026-12-01 | 357d | 0d | Pomorski | 11XQ69 | Ruroci¹g | Budowa | Roboty | Agnieszk | Uk³ad | PM000 | Zespó³-W | Blok | Normalny | Pakiet | L2 |  |  |
| 11XQ69-030 |  | Izolacje – Sekcja 03 |  | 10d | 2026-11-24 | 2026-12-07 | 11XQ69-029 |  | 2026-12-02 | 2026-12-15 | 357d | 0d | Pomorski | 11XQ69 | Ruroci¹g | Budowa | Roboty | Agnieszk | Uk³ad | PM000 | Zespó³-W | Blok | Normalny | Pakiet | L2 | Ryzyko opóŸnienia | Rev C |
| 11XQ69-031 |  | Malowanie i oznakowanie – Sekcja 03 |  | 5d | 2026-12-04 | 2026-12-10 | 11XQ69-030 FF+2d |  | 2026-12-11 | 2026-12-17 | 356.6d | 0d | Pomorski | 11XQ69 | Ruroci¹g | Budowa | Roboty | Agnieszk | Uk³ad | PM000 | Zespó³-I | Blok | Normalny | Pakiet | L2 |  |  |

| ID | WBS | Activity | Duration | Start | Finish | Predecessors | Complete | Planned start | Planned finish | Total float | Free float | Calendar | Uwagi harmonogramisty | AC_Wykonawca | AC_Obiekt | AC_Dyscyplina | AC_Faza | AC_Zakres | AC_Opiekun | AC_Obszar | AC_PP_PM | AC_Zespol | AC_Blok | AC_Priorytet | AC_Pakiet | AC_Poziom | Rewizja dokumentu |
| --- | --- | --- | --- | --- | --- | --- | --- | --- | --- | --- | --- | --- | --- | --- | --- | --- | --- | --- | --- | --- | --- | --- | --- | --- | --- | --- | --- |
|  | SEKCJA 04 | **Sekcja 04** |  | 2026-03-05 | 2026-12-07 |  |  |  |  |  |  |  |  |  |  |  |  |  |  |  |  |  |  |  |  |  |  |
| 11XQ69-032 |  | Prefabrykacja ruroci¹gów – Sekcja 04 | 4.3d | 2026-03-05 A | 2026-03-12 A | 11XQ69-012, 11XQ69-027 SS+5d | 100% | 2026-03-03 | 2026-03-06 |  |  |  | Bez uwag | Pomorski | 11XQ69 | Ruroci¹g | Budowa | Roboty | Agnieszk | Uk³ad | PM000 | Zespó³-K | Blok | Wysoki | Pakiet | L2 |  |
| 11XQ69-033 |  | Monta¿ ruroci¹gów – Sekcja 04 | 13.8d | 2026-11-04 | 2026-11-23 | 11XQ69-032, 11XQ69-014 SS+7d |  | 2026-11-13 | 2026-12-01 | 359d | 0d |  |  | Pomorski | 11XQ69 | Ruroci¹g | Budowa | Roboty | Agnieszk | Uk³ad | PM000 | Zespó³-K | Blok | Wysoki | Pakiet | L2 |  |
| 11XQ69-034 |  | Próba ciœnieniowa – Sekcja 04 | 5d | 2026-11-24 | 2026-11-30 | 11XQ69-033 |  | 2026-12-02 | 2026-12-08 | 359d | 0d |  |  | Pomorski | 11XQ69 | Ruroci¹g | Budowa | Roboty | Agnieszk | Uk³ad | PM000 | Zespó³-K | Blok | Normalny | Pakiet | L2 |  |
| 11XQ69-036 |  | Malowanie i oznakowanie – Sekcja 04 | 6d | 2026-11-30 | 2026-12-07 | 11XQ69-035 FF+2d |  | 2026-12-08 | 2026-12-15 | 359d | 0d |  |  | Pomorski | 11XQ69 | Ruroci¹g | Budowa | Roboty | Agnieszk | Uk³ad | PM000 | Zespó³-K | Blok | Normalny | Pakiet | L2 |  |
| 11XQ69-035 |  | Izolacje – Sekcja 04 | 3d | 2026-12-01 | 2026-12-03 | 11XQ69-034 |  | 2026-12-09 | 2026-12-11 | 359d | 0d |  | Bez uwag | Pomorski | 11XQ69 | Ruroci¹g | Budowa | Roboty | Agnieszk | Uk³ad | PM000 | Zespó³-W | Blok | Normalny | Pakiet | L2 | Rev B |
|  | SEKCJA 05 | **Sekcja 05** |  | 2026-03-12 | 2026-12-11 |  |  |  |  |  |  |  |  |  |  |  |  |  |  |  |  |  |  |  |  |  |  |
| 11XQ69-039 |  | Prefabrykacja ruroci¹gów – Sekcja 05 | 13.4d | 2026-03-12 A | 2026-03-30 A | 11XQ69-012, 11XQ69-032 SS+5d | 100% | 2026-03-10 | 2026-03-26 |  |  |  |  | Pomorski | 11XQ69 | Ruroci¹g | Budowa | Roboty | Agnieszk | Uk³ad | PM000 | Zespó³-I | Blok | Normalny | Pakiet | L2 |  |
| 11XQ69-040 |  | Monta¿ ruroci¹gów – Sekcja 05 | 20.9d | 2026-10-27 | 2026-11-24 | 11XQ69-039, 11XQ69-014 SS+1d |  | 2026-11-05 | 2026-12-02 | 354.9d | 0d |  | Uzgodnione na koordynacji | Pomorski | 11XQ69 | Ruroci¹g | Budowa | Roboty | Agnieszk | Uk³ad | PM200 | Zespó³-E | Blok | Wysoki | Pakiet | L2 |  |
| 11XQ69-041 |  | Próba ciœnieniowa – Sekcja 05 | 3d | 2026-11-25 | 2026-11-27 | 11XQ69-040 |  | 2026-12-03 | 2026-12-07 | 354.9d | 0d |  |  | Pomorski | 11XQ69 | Ruroci¹g | Budowa | Roboty | Agnieszk | Uk³ad | PM000 | Zespó³-K | Blok | Wysoki | Pakiet | L2 |  |
| 11XQ69-042 |  | Izolacje – Sekcja 05 | 8d | 2026-11-30 | 2026-12-09 | 11XQ69-041 |  | 2026-12-08 | 2026-12-17 | 354.9d | 0d |  |  | Pomorski | 11XQ69 | Ruroci¹g | Budowa | Roboty | Agnieszk | Uk³ad | PM000 | Zespó³-W | Blok | Normalny | Pakiet | L2 |  |
| 11XQ69-043 |  | Malowanie i oznakowanie – Sekcja 05 | 4d | 2026-12-08 | 2026-12-11 | 11XQ69-042 FF+2d |  | 2026-12-16 | 2026-12-21 | 354.9d | 0d |  | Czeka na dostawê | Pomorski | 11XQ69 | Ruroci¹g | Budowa | Roboty | Agnieszk | Uk³ad | PM000 | Zespó³-K | Blok | Normalny | Pakiet | L2 | Rev B |
|  | SEKCJA 06 | **Sekcja 06** |  | 2026-03-20 | 2026-12-16 |  |  |  |  |  |  |  |  |  |  |  |  |  |  |  |  |  |  |  |  |  |  |
|  | PODSEKCJA | **Podsekcja 06.A** |  | 2026-03-20 | 2026-12-16 |  |  |  |  |  |  |  |  |  |  |  |  |  |  |  |  |  |  |  |  |  |  |
| 11XQ69-044 |  | Prefabrykacja ruroci¹gów – Sekcja 06 | 8d | 2026-03-20 A | 2026-04-02 A | 11XQ69-012, 11XQ69-039 SS+5d | 100% | 2026-03-17 | 2026-03-26 |  |  |  |  | Pomorski | 11XQ69 | Ruroci¹g | Budowa | Roboty | Agnieszk | Uk³ad | PM000 | Zespó³-K | Blok | Normalny | Pakiet | L2 |  |
| 11XQ69-045 |  | Monta¿ ruroci¹gów – Sekcja 06 | 23.8d | 2026-10-30 | 2026-12-02 | 11XQ69-044, 11XQ69-014 SS+4d |  | 2026-11-10 | 2026-12-10 | 352d | 0d | Kalendarz 6-dniowy |  | Pomorski | 11XQ69 | Ruroci¹g | Budowa | Roboty | Agnieszk | Uk³ad | PM000 | Zespó³-K | Blok | Normalny | Pakiet | L2 |  |
| 11XQ69-046 |  | Próba ciœnieniowa – Sekcja 06 | 4d | 2026-12-03 | 2026-12-08 | 11XQ69-045 |  | 2026-12-11 | 2026-12-16 | 352d | 0d |  |  | Pomorski | 11XQ69 | Ruroci¹g | Budowa | Roboty | Agnieszk | Uk³ad | PM000 | Zespó³-W | Blok | Normalny | Pakiet | L2 | Rev C |
| 11XQ69-047 |  | Izolacje – Sekcja 06 | 4d | 2026-12-09 | 2026-12-14 | 11XQ69-046 |  | 2026-12-17 | 2026-12-22 | 352d | 0d |  |  | Pomorski | 11XQ69 | Ruroci¹g | Budowa | Roboty | Agnieszk | Uk³ad | PM000 | Zespó³-W | Blok | Normalny | Pakiet | L2 |  |
| 11XQ69-048 |  | Malowanie i oznakowanie – Sekcja 06 | 4d | 2026-12-11 | 2026-12-16 | 11XQ69-047 FF+2d |  | 2026-12-21 | 2026-12-24 | 352d | 0d |  |  | Pomorski | 11XQ69 | Ruroci¹g | Budowa | Roboty | Agnieszk | Uk³ad | PM000 | Zespó³-K | Blok | Normalny | Pakiet | L2 |  |
|  | SEKCJA 07 | **Sekcja 07** |  | 2026-03-25 | 2026-12-16 |  |  |  |  |  |  |  |  |  |  |  |  |  |  |  |  |  |  |  |  |  |  |
| 11XQ69-051 |  | Prefabrykacja ruroci¹gów – Sekcja 07 | 8.6d | 2026-03-25 A | 2026-04-03 A | 11XQ69-012, 11XQ69-044 SS+5d | 100% | 2026-03-24 | 2026-04-02 |  |  |  |  | Pomorski | 11XQ69 | Ruroci¹g | Budowa | Roboty | Agnieszk | Uk³ad | PM000 | Zespó³-W | Blok | Normalny | Pakiet | L2 |  |
| 11XQ69-052 |  | Monta¿ ruroci¹gów – Sekcja 07 | 17.7d | 2026-11-09 | 2026-12-02 | 11XQ69-051, 11XQ69-014 SS+10d |  | 2026-11-18 | 2026-12-10 | 352.1d | 0d |  |  | Pomorski | 11XQ69 | Ruroci¹g | Budowa | Roboty | Agnieszk | Uk³ad | PM000 | Zespó³-K | Blok | Niski | Pakiet | L2 |  |
| 11XQ69-053 |  | Próba ciœnieniowa – Sekcja 07 | 3d | 2026-12-03 | 2026-12-07 | 11XQ69-052 |  | 2026-12-11 | 2026-12-15 | 352.1d | 0d | Kalendarz 6-dniowy |  | Pomorski | 11XQ69 | Ruroci¹g | Budowa | Roboty | Agnieszk | Uk³ad | PM000 | Zespó³-K | Blok | Niski | Pakiet | L2 |  |
| 11XQ69-054 |  | Izolacje – Sekcja 07 | 5d | 2026-12-08 | 2026-12-14 | 11XQ69-053 |  | 2026-12-16 | 2026-12-22 | 352.1d | 0d |  |  | Pomorski | 11XQ69 | Ruroci¹g | Budowa | Roboty | Agnieszk | Uk³ad | PM000 | Zespó³-K | Blok | Normalny | Pakiet | L2 |  |
| 11XQ69-055 |  | Malowanie i oznakowanie – Sekcja 07 | 6d | 2026-12-09 | 2026-12-16 | 11XQ69-054 FF+2d |  | 2026-12-17 | 2026-12-24 | 352.1d | 0d |  | Bez uwag | Pomorski | 11XQ69 | Ruroci¹g | Budowa | Roboty | Agnieszk | Uk³ad | PM000 | Zespó³-W | Blok | Wysoki | Pakiet | L2 |  |

| ID | WBS | Activity | Duration | Start | Finish | Predecessors | Complete | Planned start | Planned finish | Total float | Free float | Calendar | Uwagi harmonogramisty | Rewizja dokumentu | AC_Wykonawca | AC_Obiekt | AC_Dyscyplina | AC_Faza | AC_Zakres | AC_Opiekun | AC_Obszar | AC_PP_PM | AC_Zespol | AC_Blok | AC_Priorytet | AC_Pakiet | AC_Poziom |
| --- | --- | --- | --- | --- | --- | --- | --- | --- | --- | --- | --- | --- | --- | --- | --- | --- | --- | --- | --- | --- | --- | --- | --- | --- | --- | --- | --- |
|  | SEKCJA 08 | **Sekcja 08** |  | 2026-04-01 | 2026-11-27 |  |  |  |  |  |  |  |  |  |  |  |  |  |  |  |  |  |  |  |  |  |  |
| 11XQ69-056 |  | Prefabrykacja ruroci¹gów – Sekcja 08 | 14.4d | 2026-04-01 A | 2026-04-20 A | 11XQ69-012, 11XQ69-051 SS+5d | 100% | 2026-03-31 | 2026-04-17 |  |  |  | Czeka na dostawê | Rev B | Pomorski | 11XQ69 | Ruroci¹g | Budowa | Roboty | Agnieszk | Uk³ad | PM000 | Zespó³-W | Blok | Normalny | Pakiet | L2 |
| 11XQ69-057 |  | Monta¿ ruroci¹gów – Sekcja 08 | 6.1d | 2026-11-02 | 2026-11-09 | 11XQ69-056, 11XQ69-014 SS+5d |  | 2026-11-11 | 2026-11-18 | 364.7d | 0d |  | Do weryfikacji z wykonawc¹ |  | Pomorski | 11XQ69 | Ruroci¹g | Budowa | Roboty | Agnieszk | Uk³ad | PM000 | Zespó³-W | Blok | Normalny | Pakiet | L2 |
| 11XQ69-058 |  | Próba ciœnieniowa – Sekcja 08 | 5d | 2026-11-10 | 2026-11-16 | 11XQ69-057 |  | 2026-11-19 | 2026-11-25 | 364.7d | 0d |  | Bez uwag | Rev A | Pomorski | 11XQ69 | Ruroci¹g | Budowa | Roboty | Agnieszk | Uk³ad | PM000 | Zespó³-K | Blok | Normalny | Pakiet | L2 |
| 11XQ69-059 |  | Izolacje – Sekcja 08 | 7d | 2026-11-17 | 2026-11-25 | 11XQ69-058 |  | 2026-11-26 | 2026-12-04 | 364.7d | 0d |  | Czeka na dostawê |  | Pomorski | 11XQ69 | Ruroci¹g | Budowa | Roboty | Agnieszk | Uk³ad | PM000 | Zespó³-K | Blok | Normalny | Pakiet | L2 |
| 11XQ69-060 |  | Malowanie i oznakowanie – Sekcja 08 | 5d | 2026-11-23 | 2026-11-27 | 11XQ69-059 FF+2d |  | 2026-12-02 | 2026-12-08 | 364.7d | 0d |  |  | Rev C | Pomorski | 11XQ69 | Ruroci¹g | Budowa | Roboty | Agnieszk | Uk³ad | PM000 | Zespó³-W | Blok | Normalny | Pakiet | L2 |
|  | SEKCJA 09 | **Sekcja 09** |  | 2026-04-09 | 2026-12-24 |  |  |  |  |  |  |  |  |  |  |  |  |  |  |  |  |  |  |  |  |  |  |
|  | PODSEKCJA | **Podsekcja 09.A** |  | 2026-04-09 | 2026-12-24 |  |  |  |  |  |  |  |  |  |  |  |  |  |  |  |  |  |  |  |  |  |  |
| 11XQ69-063 |  | Prefabrykacja ruroci¹gów – Sekcja 09 | 14.6d | 2026-04-09 A | 2026-04-28 A | 11XQ69-012, 11XQ69-056 SS+5d | 100% | 2026-04-07 | 2026-04-24 |  |  |  | Uzgodnione na koordynacji | Rev A | Pomorski | 11XQ69 | Ruroci¹g | Budowa | Roboty | Agnieszk | Uk³ad | PM000 | Zespó³-E | Blok | Normalny | Pakiet | L2 |
| 11XQ69-064 |  | Monta¿ ruroci¹gów – Sekcja 09 | 17.6d | 2026-11-09 | 2026-12-02 | 11XQ69-063, 11XQ69-014 SS+10d |  | 2026-11-18 | 2026-12-10 | 346.2d | 0d |  | Czeka na dostawê |  | Pomorski | 11XQ69 | Ruroci¹g | Budowa | Roboty | Agnieszk | Uk³ad | PM000 | Zespó³-K | Blok | Normalny | Pakiet | L2 |
| 11XQ69-065 |  | Próba ciœnieniowa – Sekcja 09 | 6d | 2026-12-03 | 2026-12-10 | 11XQ69-064 |  | 2026-12-11 | 2026-12-18 | 346.2d | 0d | Kalendarz 6-dniowy |  | Rev A | Pomorski | 11XQ69 | Ruroci¹g | Budowa | Roboty | Agnieszk | Uk³ad | PM000 | Zespó³-W | Blok | Normalny | Pakiet | L2 |
| 11XQ69-066 |  | Izolacje – Sekcja 09 | 8d | 2026-12-11 | 2026-12-22 | 11XQ69-065 |  | 2026-12-21 | 2026-12-30 | 346.2d | 0d |  |  | Rev C | Pomorski | 11XQ69 | Ruroci¹g | Budowa | Roboty | Agnieszk | Uk³ad | PM000 | Zespó³-I | Blok | Wysoki | Pakiet | L2 |
| 11XQ69-067 |  | Malowanie i oznakowanie – Sekcja 09 | 2d | 2026-12-23 | 2026-12-24 | 11XQ69-066 FF+2d |  | 2026-12-31 | 2027-01-01 | 346.2d | 0d |  |  |  | Pomorski | 11XQ69 | Ruroci¹g | Budowa | Roboty | Agnieszk | Uk³ad | PM000 | Zespó³-K | Blok | Niski | Pakiet | L2 |
|  | SEKCJA 10 | **Sekcja 10** |  | 2026-04-13 | 2026-11-19 |  |  |  |  |  |  |  |  |  |  |  |  |  |  |  |  |  |  |  |  |  |  |
| 11XQ69-068 |  | Prefabrykacja ruroci¹gów – Sekcja 10 | 13d | 2026-04-13 A | 2026-04-30 A | 11XQ69-012, 11XQ69-063 SS+5d | 100% | 2026-04-14 | 2026-04-30 |  |  |  | Do weryfikacji z wykonawc¹ |  | Pomorski | 11XQ69 | Ruroci¹g | Budowa | Roboty | Agnieszk | Uk³ad | PM000 | Zespó³-W | Blok | Normalny | Pakiet | L2 |
| 11XQ69-069 |  | Monta¿ ruroci¹gów – Sekcja 10 | 5.9d | 2026-10-27 | 2026-11-03 | 11XQ69-068, 11XQ69-014 SS+1d |  | 2026-11-05 | 2026-11-11 | 370.9d | 0d |  |  | Rev B | Pomorski | 11XQ69 | Ruroci¹g | Budowa | Roboty | Agnieszk | Uk³ad | PM300 | Zespó³-I | Blok | Wysoki | Pakiet | L2 |
| 11XQ69-070 |  | Próba ciœnieniowa – Sekcja 10 | 5d | 2026-11-04 | 2026-11-10 | 11XQ69-069 |  | 2026-11-12 | 2026-11-18 | 370.9d | 0d | Kalendarz 6-dniowy |  |  | Pomorski | 11XQ69 | Ruroci¹g | Budowa | Roboty | Agnieszk | Uk³ad | PM000 | Zespó³-W | Blok | Normalny | Pakiet | L2 |
| 11XQ69-071 |  | Izolacje – Sekcja 10 | 5d | 2026-11-11 | 2026-11-17 | 11XQ69-070 |  | 2026-11-19 | 2026-11-25 | 370.9d | 0d |  |  |  | Pomorski | 11XQ69 | Ruroci¹g | Budowa | Roboty | Agnieszk | Uk³ad | PM000 | Zespó³-K | Blok | Normalny | Pakiet | L2 |
| 11XQ69-072 |  | Malowanie i oznakowanie – Sekcja 10 | 4d | 2026-11-16 | 2026-11-19 | 11XQ69-071 FF+2d |  | 2026-11-24 | 2026-11-27 | 370.9d | 0d |  |  |  | Pomorski | 11XQ69 | Ruroci¹g | Budowa | Roboty | Agnieszk | Uk³ad | PM000 | Zespó³-W | Blok | Normalny | Pakiet | L2 |
|  | SEKCJA 11 | **Sekcja 11** |  | 2026-04-24 | 2026-12-01 |  |  |  |  |  |  |  |  |  |  |  |  |  |  |  |  |  |  |  |  |  |  |
| 11XQ69-075 |  | Prefabrykacja ruroci¹gów – Sekcja 11 | 12.5d | 2026-04-24 A | 2026-05-12 A | 11XQ69-012, 11XQ69-068 SS+5d | 100% | 2026-04-21 | 2026-05-06 |  |  |  |  | Rev C | Pomorski | 11XQ69 | Ruroci¹g | Budowa | Roboty | Agnieszk | Uk³ad | PM000 | Zespó³-W | Blok | Normalny | Pakiet | L2 |
| 11XQ69-076 |  | Monta¿ ruroci¹gów – Sekcja 11 | 13.4d | 2026-10-30 | 2026-11-18 | 11XQ69-075, 11XQ69-014 SS+4d |  | 2026-11-10 | 2026-11-26 | 310.4d | 0d |  |  | Rev A | Pomorski | 11XQ69 | Ruroci¹g | Budowa | Roboty | Agnieszk | Uk³ad | PM000 | Zespó³-W | Blok | Normalny | Pakiet | L2 |
| 11XQ69-077 |  | Próba ciœnieniowa – Sekcja 11 | 4d | 2026-11-19 | 2026-11-24 | 11XQ69-076 |  | 2026-11-27 | 2026-12-02 | 310.4d | 0d |  |  | Rev A | Pomorski | 11XQ69 | Ruroci¹g | Budowa | Roboty | Agnieszk | Uk³ad | PM000 | Zespó³-K | Blok | Normalny | Pakiet | L2 |
| 11XQ69-079 |  | Malowanie i oznakowanie – Sekcja 11 | 7d | 2026-11-23 | 2026-12-01 | 11XQ69-078 FF+2d |  | 2026-12-01 | 2026-12-09 | 310.4d | 0d | Kalendarz 6-dniowy |  |  | Pomorski | 11XQ69 | Ruroci¹g | Budowa | Roboty | Agnieszk | Uk³ad | PM000 | Zespó³-K | Blok | Normalny | Pakiet | L2 |
| 11XQ69-078 |  | Izolacje – Sekcja 11 | 3d | 2026-11-25 | 2026-11-27 | 11XQ69-077 |  | 2026-12-03 | 2026-12-07 | 310.4d | 0d |  |  | Rev A | Pomorski | 11XQ69 | Ruroci¹g | Budowa | Roboty | Agnieszk | Uk³ad | PM000 | Zespó³-W | Blok | Wysoki | Pakiet | L2 |

| ID | WBS | Activity | Type | Duration | Start | Finish | Predecessors | Complete | Remaining | Actual finish | Planned start | Planned finish | Total float | Free float | Calendar | AC_Wykonawca | AC_Obiekt | AC_Dyscyplina | AC_Faza | AC_Zakres | AC_Opiekun | AC_Obszar | AC_PP_PM | AC_Zespol | AC_Blok | AC_Priorytet | AC_Pakiet | AC_Poziom | Rewizja dokumentu | Uwagi harmonogramisty |
| --- | --- | --- | --- | --- | --- | --- | --- | --- | --- | --- | --- | --- | --- | --- | --- | --- | --- | --- | --- | --- | --- | --- | --- | --- | --- | --- | --- | --- | --- | --- |
|  | SEKCJA 12 | **Sekcja 12** |  |  | 2026-04-29 | 2026-12-22 |  |  |  |  |  |  |  |  |  |  |  |  |  |  |  |  |  |  |  |  |  |  |  |  |
|  | PODSEKCJA | **Podsekcja 12.A** |  |  | 2026-04-29 | 2026-12-22 |  |  |  |  |  |  |  |  |  |  |  |  |  |  |  |  |  |  |  |  |  |  |  |  |
| 11XQ69-080 |  | Prefabrykacja ruroci¹gów – Sekcja 12 |  | 14.2d | 2026-04-29 A | 2026-05-19 A | 11XQ69-012, 11XQ69-075 SS+5d | 100% |  |  | 2026-04-28 | 2026-05-15 |  |  |  | Pomorski | 11XQ69 | Ruroci¹g | Budowa | Roboty | Agnieszk | Uk³ad | PM000 | Zespó³-K | Blok | Wysoki | Pakiet | L2 |  |  |
| 11XQ69-081 |  | Monta¿ ruroci¹gów – Sekcja 12 |  | 18.2d | 2026-11-02 | 2026-11-26 | 11XQ69-080, 11XQ69-014 SS+5d |  |  |  | 2026-11-11 | 2026-12-04 | 295.6d | 0d |  | Pomorski | 11XQ69 | Ruroci¹g | Budowa | Roboty | Agnieszk | Uk³ad | PM000 | Zespó³-W | Blok | Normalny | Pakiet | L2 |  |  |
| 11XQ69-082 |  | Próba ciœnieniowa – Sekcja 12 |  | 6d | 2026-11-27 | 2026-12-04 | 11XQ69-081 |  |  |  | 2026-12-07 | 2026-12-14 | 295.6d | 0d |  | Pomorski | 11XQ69 | Ruroci¹g | Budowa | Roboty | Agnieszk | Uk³ad | PM000 | Zespó³-K | Blok | Normalny | Pakiet | L2 |  |  |
| 11XQ69-083 |  | Izolacje – Sekcja 12 |  | 10d | 2026-12-07 | 2026-12-18 | 11XQ69-082 |  |  |  | 2026-12-15 | 2026-12-28 | 295.6d | 0d |  | Pomorski | 11XQ69 | Ruroci¹g | Budowa | Roboty | Agnieszk | Uk³ad | PM000 | Zespó³-W | Blok | Normalny | Pakiet | L2 |  |  |
| 11XQ69-084 |  | Malowanie i oznakowanie – Sekcja 12 |  | 5d | 2026-12-16 | 2026-12-22 | 11XQ69-083 FF+2d |  |  |  | 2026-12-24 | 2026-12-30 | 295.6d | 0d | Kalendarz 6-dniowy | Pomorski | 11XQ69 | Ruroci¹g | Budowa | Roboty | Agnieszk | Uk³ad | PM200 | Zespó³-E | Blok | Normalny | Pakiet | L2 |  |  |
|  | PROJ | **Projektowanie** |  |  | 2025-06-18 | 2025-10-31 |  |  |  |  |  |  |  |  |  |  |  |  |  |  |  |  |  |  |  |  |  |  |  |  |
|  | DOKUMENTAC | **Dokumentacja** |  |  | 2025-06-18 | 2025-10-31 |  |  |  |  |  |  |  |  |  |  |  |  |  |  |  |  |  |  |  |  |  |  |  |  |
| 11XQ69-001 |  | Projekt wykonawczy – Zasilanie awaryjne |  | 65d | 2025-06-18 A | 2025-09-16 A |  | 100% |  |  | 2025-06-19 | 2025-09-17 |  |  |  | Pomorski | 11XQ69 | Budowlan | Projekto | Projekt | Agnieszk | Uk³ad | PM000 | Zespó³-W | Blok | Normalny | Pakiet | L2 | Rev A |  |
| 11XQ69-002 |  | Uzgodnienie dokumentacji z Inwestorem |  | 21d | 2025-09-22 A | 2025-10-21 A | 11XQ69-001 | 100% |  |  | 2025-09-18 | 2025-10-16 |  |  |  | Pomorski | 11XQ69 | Budowlan | Projekto | Projekt | Agnieszk | Uk³ad | PM000 | Zespó³-W | Blok | Normalny | Pakiet | L2 |  |  |
| 11XQ69-003 |  | Zatwierdzenie dokumentacji do realizacji |  | 9d | 2025-10-21 A | 2025-10-31 A | 11XQ69-002 | 100% |  |  | 2025-10-17 | 2025-10-29 |  |  |  | Pomorski | 11XQ69 | Budowlan | Projekto | Projekt | Agnieszk | Uk³ad | PM000 | Zespó³-K | Blok | Normalny | Pakiet | L2 |  |  |
| 11XQ69-004 |  | KM: Dokumentacja zatwierdzona – Zasilanie awaryjne | milestone | 0d | 2025-10-30 A | 2025-10-30 | 11XQ69-003 | 100% |  | 2025-10-29 |  |  |  |  |  | Pomorski | 11XQ69 | Budowlan | Projekto | Kamieñ | Agnieszk | Uk³ad | PM000 | Zespó³-K | Blok | Normalny | Pakiet | L1 | Rev A |  |
|  | ROZR | **Rozruch** |  |  | 2027-01-27 | 2027-03-29 |  |  |  |  |  |  |  |  |  |  |  |  |  |  |  |  |  |  |  |  |  |  |  |  |
|  | ROZRUCH | **Rozruch** |  |  | 2027-01-27 | 2027-03-29 |  |  |  |  |  |  |  |  |  |  |  |  |  |  |  |  |  |  |  |  |  |  |  |  |
| 11XQ69-089 |  | Przegl¹d gotowoœci do rozruchu |  | 8d | 2027-01-27 | 2027-02-05 | 11XQ69-088, 11XQ69-019, 11XQ69-024, 11XQ69-026 |  |  |  | 2026-12-31 | 2027-01-11 | 269.8d | 0d |  | Pomorski | 11XQ69 | Rozruch | Rozruch | Rozruch | Agnieszk | Uk³ad | PM000 | Zespó³-K | Blok | Niski | Pakiet | L2 | Rev A |  |
| 11XQ69-090 |  | Rozruch na zimno |  | 13d | 2027-02-08 | 2027-02-24 | 11XQ69-089 |  |  |  | 2027-01-12 | 2027-01-28 | 269.8d | 0d |  | Pomorski | 11XQ69 | Rozruch | Rozruch | Rozruch | Agnieszk | Uk³ad | PM000 | Zespó³-K | Blok | Normalny | Pakiet | L2 |  |  |
| 11XQ69-091 |  | Rozruch na gor¹co / próby ruchowe |  | 22d | 2027-02-25 | 2027-03-26 | 11XQ69-090 |  |  |  | 2027-01-29 | 2027-03-01 | 269.8d | 0d |  | Pomorski | 11XQ69 | Rozruch | Rozruch | Rozruch | Agnieszk | Uk³ad | PM000 | Zespó³-W | Blok | Normalny | Pakiet | L2 | Rev B |  |
| 11XQ69-092 |  | KM: Odbiór koñcowy – Zasilanie awaryjne | milestone | 0d | 2027-03-29 | 2027-03-29 | 11XQ69-091 |  |  |  | 2027-03-02 | 2027-03-02 | 269.8d | 0d |  | Pomorski | 11XQ69 | Rozruch | Rozruch | Kamieñ | Agnieszk | Uk³ad | PM000 | Zespó³-K | Blok | Normalny | Pakiet | L1 | Rev C |  |
|  | ZAKU | **Zakupy** |  |  | 2025-07-22 | 2026-10-26 |  |  |  |  |  |  |  |  |  |  |  |  |  |  |  |  |  |  |  |  |  |  |  |  |
|  | DOSTAWY | **Dostawy** |  |  | 2025-11-12 | 2026-10-26 |  |  |  |  |  |  |  |  |  |  |  |  |  |  |  |  |  |  |  |  |  |  |  |  |
| 11XQ69-008 |  | Produkcja u dostawcy |  | 216d | 2025-11-12 A | 2026-09-11 A | 11XQ69-007 | 100% |  |  | 2025-11-10 | 2026-09-07 |  |  |  | Pomorski | 11XQ69 | Mechanic | Zakupy | Dostawa | Agnieszk | Uk³ad | PM200 | Zespó³-I | Blok | Normalny | Pakiet | L2 | Rev A |  |
| 11XQ69-009 |  | Testy FAT |  | 8d | 2026-09-07 A | 2026-09-18 A | 11XQ69-008 | 100% |  |  | 2026-09-08 | 2026-09-17 |  |  |  | Pomorski | 11XQ69 | Mechanic | Zakupy | Dostawa | Agnieszk | Uk³ad | PM000 | Zespó³-W | Blok | Normalny | Pakiet | L2 |  |  |
| 11XQ69-010 |  | Transport i dostawa na plac budowy |  | 33d | 2026-09-21 A | 2026-10-23 | 11XQ69-009 | 58% | 13.8d |  | 2026-09-18 | 2026-11-03 | 288.4d | 0d |  | Pomorski | 11XQ69 | Mechanic | Zakupy | Dostawa | Agnieszk | Uk³ad | PM200 | Zespó³-I | Blok | Normalny | Pakiet | L2 |  | Uzgodnione na koordynacji |
| 11XQ69-011 |  | KM: Dostawa na budowê – Zasilanie awaryjne | milestone | 0d | 2026-10-26 | 2026-10-26 | 11XQ69-010 |  |  |  | 2026-11-04 | 2026-11-04 | 295.6d | 0d |  | Pomorski | 11XQ69 | Mechanic | Zakupy | Kamieñ | Agnieszk | Uk³ad | PM000 | Zespó³-W | Blok | Normalny | Pakiet | L1 |  |  |

| ID | WBS | Activity | Duration | Start | Finish | Predecessors | Complete | Planned start | Planned finish | Total float | Free float | Calendar | AC_Wykonawca | AC_Obiekt | AC_Dyscyplina | AC_Faza | AC_Zakres | AC_Opiekun | AC_Obszar | AC_PP_PM | AC_Zespol | AC_Blok | AC_Priorytet | AC_Pakiet | AC_Poziom | Rewizja dokumentu | Uwagi harmonogramisty |
| --- | --- | --- | --- | --- | --- | --- | --- | --- | --- | --- | --- | --- | --- | --- | --- | --- | --- | --- | --- | --- | --- | --- | --- | --- | --- | --- | --- |
|  | ZAMÓWIENIA | **Zamówienia** |  | 2025-07-22 | 2025-11-12 |  |  |  |  |  |  |  |  |  |  |  |  |  |  |  |  |  |  |  |  |  |  |
| 11XQ69-005 |  | Zapytanie ofertowe | 17d | 2025-07-22 A | 2025-08-18 A | 11XQ69-001 SS+20d | 100% | 2025-07-17 | 2025-08-08 |  |  | Kalendarz 6-dniowy | Pomorski | 11XQ69 | Mechanic | Zakupy | Dostawa | Agnieszk | Uk³ad | PM100 | Zespó³-E | Blok | Normalny | Pakiet | L2 |  |  |
| 11XQ69-006 |  | Analiza i wybór ofert | 20d | 2025-08-11 A | 2025-09-10 A | 11XQ69-005 | 100% | 2025-08-11 | 2025-09-05 |  |  |  | Pomorski | 11XQ69 | Mechanic | Zakupy | Dostawa | Agnieszk | Uk³ad | PM000 | Zespó³-K | Blok | Normalny | Pakiet | L2 |  |  |
| 11XQ69-007 |  | Zawarcie umowy / zamówienie | 7d | 2025-10-30 A | 2025-11-12 A | 11XQ69-006, 11XQ69-004 SS, 10TM34-004 (other project) FS+4d | 100% | 2025-10-30 | 2025-11-07 |  |  |  | Pomorski | 11XQ69 | Mechanic | Zakupy | Dostawa | Agnieszk | Uk³ad | PM000 | Zespó³-W | Blok | Niski | Pakiet | L1 | Rev B |  |
|  | 14WE74 | **14WE74 – Uk³ady wyprowadzenia mocy** |  | 2025-01-31 | 2027-10-05 |  |  |  |  |  |  |  |  |  |  |  |  |  |  |  |  |  |  |  |  |  |  |
|  | BUDO | **Budowa** |  | 2025-10-03 | 2027-09-03 |  |  |  |  |  |  |  |  |  |  |  |  |  |  |  |  |  |  |  |  |  |  |
|  | AKPIA | **AKPiA** |  | 2026-11-03 | 2026-11-27 |  |  |  |  |  |  |  |  |  |  |  |  |  |  |  |  |  |  |  |  |  |  |
| 14WE74-111 |  | Monta¿ uk³adów AKPiA | 19d | 2026-11-03 | 2026-11-27 | 14WE74-014 SS+5d |  |  |  | 332.6d | 0d |  | HydroIns | 14WE74 | AKPiA | Budowa | Roboty | Agnieszk | Uk³ad | PM000 | Zespó³-K | Blok | Krytyczn | Pakiet | L2 |  |  |
|  | ELEKTRYKA | **Elektryka** |  | 2026-11-09 | 2027-07-19 |  |  |  |  |  |  |  |  |  |  |  |  |  |  |  |  |  |  |  |  |  |  |
| 14WE74-026 |  | Pod³¹czenia i pomiary – trasa 02 | 7d | 2026-11-09 | 2026-11-17 | 14WE74-025 FF |  |  |  | 340.6d | 0d |  | HydroIns | 14WE74 | Elektryc | Budowa | Roboty | Agnieszk | Uk³ad | PM000 | Zespó³-W | Blok | Normalny | Pakiet | L2 | Rev A |  |
| 14WE74-025 |  | Uk³adanie kabli – trasa 02 | 6d | 2026-11-10 | 2026-11-17 | 14WE74-014 SS+10d |  |  |  | 340.6d | 0d |  | HydroIns | 14WE74 | Elektryc | Budowa | Roboty | Agnieszk | Uk³ad | PM000 | Zespó³-K | Blok | Wysoki | Pakiet | L2 | Rev B |  |
| 14WE74-037 |  | Uk³adanie kabli – trasa 04 | 19d | 2026-11-10 | 2026-12-04 | 14WE74-014 SS+10d |  |  |  | 360.6d | 0d |  | HydroIns | 14WE74 | Elektryc | Budowa | Roboty | Agnieszk | Uk³ad | PM000 | Zespó³-K | Blok | Normalny | Pakiet | L2 |  | Ryzyko opóŸnienia |
| 14WE74-049 |  | Uk³adanie kabli – trasa 06 | 12d | 2026-11-10 | 2026-11-25 | 14WE74-014 SS+10d |  |  |  | 367.6d | 0d |  | HydroIns | 14WE74 | Elektryc | Budowa | Roboty | Agnieszk | Uk³ad | PM000 | Zespó³-W | Blok | Normalny | Pakiet | L2 |  |  |
| 14WE74-061 |  | Uk³adanie kabli – trasa 08 | 11d | 2026-11-10 | 2026-11-24 | 14WE74-014 SS+10d |  |  |  | 368.6d | 0d |  | HydroIns | 14WE74 | Elektryc | Budowa | Roboty | Agnieszk | Uk³ad | PM000 | Zespó³-W | Blok | Wysoki | Pakiet | L2 |  |  |
| 14WE74-073 |  | Uk³adanie kabli – trasa 10 | 18d | 2026-11-10 | 2026-12-03 | 14WE74-014 SS+10d |  |  |  | 361.6d | 0d |  | HydroIns | 14WE74 | Elektryc | Budowa | Roboty | Agnieszk | Uk³ad | PM000 | Zespó³-W | Blok | Normalny | Pakiet | L2 |  |  |
| 14WE74-085 |  | Uk³adanie kabli – trasa 12 | 12d | 2026-11-10 | 2026-11-25 | 14WE74-014 SS+10d |  |  |  | 367.6d | 0d |  | HydroIns | 14WE74 | Elektryc | Budowa | Roboty | Agnieszk | Uk³ad | PM000 | Zespó³-W | Blok | Normalny | Pakiet | L2 | Rev B |  |
| 14WE74-097 |  | Uk³adanie kabli – trasa 14 | 8d | 2026-11-10 | 2026-11-19 | 14WE74-014 SS+10d |  |  |  | 371.6d | 0d |  | HydroIns | 14WE74 | Elektryc | Budowa | Roboty | Agnieszk | Uk³ad | PM000 | Zespó³-W | Blok | Normalny | Pakiet | L2 |  |  |
| 14WE74-109 |  | Uk³adanie kabli – trasa 16 | 7d | 2026-11-10 | 2026-11-18 | 14WE74-014 SS+10d |  |  |  | 339.6d | 0d |  | HydroIns | 14WE74 | Elektryc | Budowa | Roboty | Agnieszk | Uk³ad | PM000 | Zespó³-W | Blok | Normalny | Pakiet | L2 | Rev B | Do weryfikacji z wykonawc¹ |
| 14WE74-110 |  | Pod³¹czenia i pomiary – trasa 16 | 4d | 2026-11-13 | 2026-11-18 | 14WE74-109 FF |  |  |  | 339.6d | 0d |  | HydroIns | 14WE74 | Elektryc | Budowa | Roboty | Agnieszk | Uk³ad | PM000 | Zespó³-K | Blok | Normalny | Pakiet | L2 |  |  |
| 14WE74-050 |  | Pod³¹czenia i pomiary – trasa 06 | 7d | 2026-11-17 | 2026-11-25 | 14WE74-049 FF |  |  |  | 367.6d | 0d |  | HydroIns | 14WE74 | Elektryc | Budowa | Roboty | Agnieszk | Uk³ad | PM300 | Zespó³-I | Blok | Normalny | Pakiet | L2 |  |  |
| 14WE74-098 |  | Pod³¹czenia i pomiary – trasa 14 | 3d | 2026-11-17 | 2026-11-19 | 14WE74-097 FF |  |  |  | 371.6d | 0d |  | HydroIns | 14WE74 | Elektryc | Budowa | Roboty | Agnieszk | Uk³ad | PM000 | Zespó³-K | Blok | Normalny | Pakiet | L2 |  |  |
| 14WE74-062 |  | Pod³¹czenia i pomiary – trasa 08 | 3d | 2026-11-20 | 2026-11-24 | 14WE74-061 FF |  |  |  | 368.6d | 0d |  | HydroIns | 14WE74 | Elektryc | Budowa | Roboty | Agnieszk | Uk³ad | PM000 | Zespó³-K | Blok | Normalny | Pakiet | L2 |  |  |
| 14WE74-086 |  | Pod³¹czenia i pomiary – trasa 12 | 4d | 2026-11-20 | 2026-11-25 | 14WE74-085 FF |  |  |  | 367.6d | 0d |  | HydroIns | 14WE74 | Elektryc | Budowa | Roboty | Agnieszk | Uk³ad | PM000 | Zespó³-K | Blok | Wysoki | Pakiet | L2 |  | Czeka na dostawê |
| 14WE74-074 |  | Pod³¹czenia i pomiary – trasa 10 | 7d | 2026-11-25 | 2026-12-03 | 14WE74-073 FF |  |  |  | 361.6d | 0d |  | HydroIns | 14WE74 | Elektryc | Budowa | Roboty | Agnieszk | Uk³ad | PM000 | Zespó³-W | Blok | Niski | Pakiet | L2 |  |  |
| 14WE74-038 |  | Pod³¹czenia i pomiary – trasa 04 | 7d | 2027-07-09 | 2027-07-19 | 14WE74-037 FF |  | 2026-11-26 | 2026-12-04 | 199.6d | 0d |  | HydroIns | 14WE74 | Elektryc | Budowa | Roboty | Agnieszk | Uk³ad | PM000 | Zespó³-I | Blok | Normalny | Pakiet | L2 | Rev A |  |

| ID | WBS | Activity | Type | Duration | Start | Finish | Predecessors | Complete | Planned start | Planned finish | Total float | Free float | Rewizja dokumentu | AC_Wykonawca | AC_Obiekt | AC_Dyscyplina | AC_Faza | AC_Zakres | AC_Opiekun | AC_Obszar | AC_PP_PM | AC_Zespol | AC_Blok | AC_Priorytet | AC_Pakiet | AC_Poziom | Uwagi harmonogramisty |
| --- | --- | --- | --- | --- | --- | --- | --- | --- | --- | --- | --- | --- | --- | --- | --- | --- | --- | --- | --- | --- | --- | --- | --- | --- | --- | --- | --- |
|  | MONTA¯ | **Monta¿** |  |  | 2025-11-14 | 2026-12-11 |  |  |  |  |  |  |  |  |  |  |  |  |  |  |  |  |  |  |  |  |  |
| 14WE74-013 |  | Monta¿ konstrukcji stalowych |  | 41d | 2025-11-14 A | 2026-01-12 A | 14WE74-012 | 100% | 2025-11-17 | 2026-01-12 |  |  | Rev C | HydroIns | 14WE74 | Mechanic | Budowa | Roboty | Agnieszk | Uk³ad | PM000 | Zespó³-W | Blok | Normalny | Pakiet | L2 |  |
| 14WE74-014 |  | Monta¿ urz¹dzeñ g³ównych |  | 33d | 2026-10-27 | 2026-12-10 | 14WE74-013, 14WE74-011 |  |  |  | 314.7d | 0d | Rev A | HydroIns | 14WE74 | Mechanic | Budowa | Roboty | Agnieszk | Uk³ad | PM000 | Zespó³-K | Blok | Niski | Pakiet | L2 |  |
| 14WE74-112 |  | KM: Zakoñczenie monta¿u – Uk³ady wyprowadzenia mocy | milestone | 0d | 2026-12-11 | 2026-12-11 | 14WE74-103, 14WE74-108, 14WE74-110, 14WE74-111, 14WE74-014 |  |  |  | 323.6d | 0d | Rev C | HydroIns | 14WE74 | Mechanic | Budowa | Kamieñ | Agnieszk | Uk³ad | PM300 | Zespó³-I | Blok | Niski | Pakiet | L2 |  |
|  | ROBOTY BUD | **Roboty budowlane** |  |  | 2025-10-03 | 2025-11-20 |  |  |  |  |  |  |  |  |  |  |  |  |  |  |  |  |  |  |  |  |  |
| 14WE74-012 |  | Fundamenty i roboty ziemne |  | 33d | 2025-10-03 A | 2025-11-20 A | 14WE74-007 FS+11d | 100% | 2025-10-01 | 2025-11-14 |  |  |  | HydroIns | 14WE74 | Budowlan | Budowa | Roboty | Agnieszk | Uk³ad | PM000 | Zespó³-W | Blok | Normalny | Pakiet | L2 | Uzgodnione na koordynacji |
|  | RUROCI¥GI | **Ruroci¹gi** |  |  | 2025-11-14 | 2027-09-03 |  |  |  |  |  |  |  |  |  |  |  |  |  |  |  |  |  |  |  |  |  |
|  | SEKCJA 01 | **Sekcja 01** |  |  | 2025-11-14 | 2027-07-26 |  |  |  |  |  |  |  |  |  |  |  |  |  |  |  |  |  |  |  |  |  |
| 14WE74-015 |  | Prefabrykacja ruroci¹gów – Sekcja 01 |  | 10.9d | 2025-11-14 A | 2025-11-27 A | 14WE74-012 | 100% | 2025-11-17 | 2025-11-28 |  |  |  | HydroIns | 14WE74 | Ruroci¹g | Budowa | Roboty | Agnieszk | Uk³ad | PM000 | Zespó³-K | Blok | Normalny | Pakiet | L2 |  |
| 14WE74-016 |  | Monta¿ ruroci¹gów – Sekcja 01 |  | 22.9d | 2027-06-03 | 2027-07-02 | 14WE74-015, 14WE74-014 SS+3d |  | 2026-10-30 | 2026-11-30 | 160.7d | 0d | Rev B | HydroIns | 14WE74 | Ruroci¹g | Budowa | Roboty | Agnieszk | Uk³ad | PM200 | Zespó³-E | Blok | Niski | Pakiet | L2 | Ryzyko opóŸnienia |
| 14WE74-017 |  | Próba ciœnieniowa – Sekcja 01 |  | 4d | 2027-07-05 | 2027-07-08 | 14WE74-016 |  | 2026-12-01 | 2026-12-04 | 160.7d | 0d | Rev B | HydroIns | 14WE74 | Ruroci¹g | Budowa | Roboty | Agnieszk | Uk³ad | PM000 | Zespó³-K | Blok | Normalny | Pakiet | L2 |  |
| 14WE74-018 |  | Izolacje – Sekcja 01 |  | 10d | 2027-07-09 | 2027-07-22 | 14WE74-017 |  | 2026-12-07 | 2026-12-18 | 160.7d | 0d |  | HydroIns | 14WE74 | Ruroci¹g | Budowa | Roboty | Agnieszk | Uk³ad | PM000 | Zespó³-W | Blok | Normalny | Pakiet | L2 |  |
| 14WE74-019 |  | Malowanie i oznakowanie – Sekcja 01 |  | 7d | 2027-07-16 | 2027-07-26 | 14WE74-018 FF+2d |  | 2026-12-14 | 2026-12-22 | 160.7d | 0d | Rev C | HydroIns | 14WE74 | Ruroci¹g | Budowa | Roboty | Agnieszk | Uk³ad | PM000 | Zespó³-W | Blok | Niski | Pakiet | L2 |  |
|  | SEKCJA 02 | **Sekcja 02** |  |  | 2025-11-21 | 2026-12-10 |  |  |  |  |  |  |  |  |  |  |  |  |  |  |  |  |  |  |  |  |  |
| 14WE74-020 |  | Prefabrykacja ruroci¹gów – Sekcja 02 |  | 9.7d | 2025-11-21 A | 2025-12-08 A | 14WE74-012, 14WE74-015 SS+5d | 100% | 2025-11-24 | 2025-12-04 |  |  |  | HydroIns | 14WE74 | Ruroci¹g | Budowa | Roboty | Agnieszk | Uk³ad | PM000 | Zespó³-W | Blok | Normalny | Pakiet | L2 | Do weryfikacji z wykonawc¹ |
| 14WE74-021 |  | Monta¿ ruroci¹gów – Sekcja 02 |  | 19.1d | 2026-10-29 | 2026-11-24 | 14WE74-020, 14WE74-014 SS+2d |  |  |  | 323.5d | 0d |  | HydroIns | 14WE74 | Ruroci¹g | Budowa | Roboty | Agnieszk | Uk³ad | PM000 | Zespó³-W | Blok | Normalny | Pakiet | L2 |  |
| 14WE74-022 |  | Próba ciœnieniowa – Sekcja 02 |  | 3d | 2026-11-25 | 2026-11-27 | 14WE74-021 |  |  |  | 323.5d | 0d |  | HydroIns | 14WE74 | Ruroci¹g | Budowa | Roboty | Agnieszk | Uk³ad | PM000 | Zespó³-W | Blok | Normalny | Pakiet | L2 |  |
| 14WE74-023 |  | Izolacje – Sekcja 02 |  | 7d | 2026-11-30 | 2026-12-08 | 14WE74-022 |  |  |  | 323.5d | 0d |  | HydroIns | 14WE74 | Ruroci¹g | Budowa | Roboty | Agnieszk | Uk³ad | PM000 | Zespó³-K | Blok | Normalny | Pakiet | L2 |  |
| 14WE74-024 |  | Malowanie i oznakowanie – Sekcja 02 |  | 4d | 2026-12-07 | 2026-12-10 | 14WE74-023 FF+2d |  |  |  | 323.5d | 0d |  | HydroIns | 14WE74 | Ruroci¹g | Budowa | Roboty | Agnieszk | Uk³ad | PM000 | Zespó³-K | Blok | Normalny | Pakiet | L2 |  |
|  | SEKCJA 03 | **Sekcja 03** |  |  | 2025-12-04 | 2026-12-01 |  |  |  |  |  |  |  |  |  |  |  |  |  |  |  |  |  |  |  |  |  |
|  | PODSEKCJA | **Podsekcja 03.A** |  |  | 2025-12-04 | 2026-12-01 |  |  |  |  |  |  |  |  |  |  |  |  |  |  |  |  |  |  |  |  |  |
| 14WE74-027 |  | Prefabrykacja ruroci¹gów – Sekcja 03 |  | 7.2d | 2025-12-04 A | 2025-12-17 A | 14WE74-012, 14WE74-020 SS+5d | 100% | 2025-12-01 | 2025-12-09 |  |  | Rev A | HydroIns | 14WE74 | Ruroci¹g | Budowa | Roboty | Agnieszk | Uk³ad | PM000 | Zespó³-W | Blok | Normalny | Pakiet | L2 | Ryzyko opóŸnienia |
| 14WE74-028 |  | Monta¿ ruroci¹gów – Sekcja 03 |  | 7.5d | 2026-11-03 | 2026-11-11 | 14WE74-027, 14WE74-014 SS+5d |  |  |  | 363.1d | 0d |  | HydroIns | 14WE74 | Ruroci¹g | Budowa | Roboty | Agnieszk | Uk³ad | PM000 | Zespó³-K | Blok | Normalny | Pakiet | L2 |  |
| 14WE74-029 |  | Próba ciœnieniowa – Sekcja 03 |  | 6d | 2026-11-12 | 2026-11-19 | 14WE74-028 |  |  |  | 363.1d | 0d |  | HydroIns | 14WE74 | Ruroci¹g | Budowa | Roboty | Agnieszk | Uk³ad | PM000 | Zespó³-I | Blok | Krytyczn | Pakiet | L2 |  |
| 14WE74-030 |  | Izolacje – Sekcja 03 |  | 6d | 2026-11-20 | 2026-11-27 | 14WE74-029 |  |  |  | 363.1d | 0d |  | HydroIns | 14WE74 | Ruroci¹g | Budowa | Roboty | Agnieszk | Uk³ad | PM000 | Zespó³-I | Blok | Normalny | Pakiet | L2 | Ryzyko opóŸnienia |
| 14WE74-031 |  | Malowanie i oznakowanie – Sekcja 03 |  | 5d | 2026-11-25 | 2026-12-01 | 14WE74-030 FF+2d |  |  |  | 363.1d | 0d |  | HydroIns | 14WE74 | Ruroci¹g | Budowa | Roboty | Agnieszk | Uk³ad | PM000 | Zespó³-W | Blok | Normalny | Pakiet | L2 |  |

| ID | WBS | Activity | Duration | Start | Finish | Predecessors | Complete | Planned start | Planned finish | Total float | Free float | Calendar | AC_Wykonawca | AC_Obiekt | AC_Dyscyplina | AC_Faza | AC_Zakres | AC_Opiekun | AC_Obszar | AC_PP_PM | AC_Zespol | AC_Blok | AC_Priorytet | AC_Pakiet | AC_Poziom | Rewizja dokumentu | Uwagi harmonogramisty |
| --- | --- | --- | --- | --- | --- | --- | --- | --- | --- | --- | --- | --- | --- | --- | --- | --- | --- | --- | --- | --- | --- | --- | --- | --- | --- | --- | --- |
|  | SEKCJA 04 | **Sekcja 04** |  | 2025-12-09 | 2026-12-23 |  |  |  |  |  |  |  |  |  |  |  |  |  |  |  |  |  |  |  |  |  |  |
| 14WE74-032 |  | Prefabrykacja ruroci¹gów – Sekcja 04 | 10.9d | 2025-12-09 A | 2025-12-22 A | 14WE74-012, 14WE74-027 SS+5d | 100% | 2025-12-08 | 2025-12-19 |  |  |  | HydroIns | 14WE74 | Ruroci¹g | Budowa | Roboty | Agnieszk | Uk³ad | PM000 | Zespó³-K | Blok | Wysoki | Pakiet | L2 |  |  |
| 14WE74-033 |  | Monta¿ ruroci¹gów – Sekcja 04 | 22.1d | 2026-11-10 | 2026-12-09 | 14WE74-032, 14WE74-014 SS+10d |  |  |  | 347.5d | 0d |  | HydroIns | 14WE74 | Ruroci¹g | Budowa | Roboty | Agnieszk | Uk³ad | PM000 | Zespó³-W | Blok | Normalny | Pakiet | L2 | Rev A |  |
| 14WE74-034 |  | Próba ciœnieniowa – Sekcja 04 | 2d | 2026-12-10 | 2026-12-11 | 14WE74-033 |  |  |  | 347.5d | 0d |  | HydroIns | 14WE74 | Ruroci¹g | Budowa | Roboty | Agnieszk | Uk³ad | PM000 | Zespó³-W | Blok | Niski | Pakiet | L2 |  |  |
| 14WE74-035 |  | Izolacje – Sekcja 04 | 6d | 2026-12-14 | 2026-12-21 | 14WE74-034 |  |  |  | 347.5d | 0d |  | HydroIns | 14WE74 | Ruroci¹g | Budowa | Roboty | Agnieszk | Uk³ad | PM000 | Zespó³-W | Blok | Normalny | Pakiet | L2 | Rev B | Czeka na dostawê |
| 14WE74-036 |  | Malowanie i oznakowanie – Sekcja 04 | 3d | 2026-12-21 | 2026-12-23 | 14WE74-035 FF+2d |  |  |  | 347.5d | 0d |  | HydroIns | 14WE74 | Ruroci¹g | Budowa | Roboty | Agnieszk | Uk³ad | PM000 | Zespó³-W | Blok | Normalny | Pakiet | L2 | Rev B |  |
|  | SEKCJA 05 | **Sekcja 05** |  | 2025-12-15 | 2026-12-17 |  |  |  |  |  |  |  |  |  |  |  |  |  |  |  |  |  |  |  |  |  |  |
| 14WE74-039 |  | Prefabrykacja ruroci¹gów – Sekcja 05 | 13.9d | 2025-12-15 A | 2026-01-02 A | 14WE74-012, 14WE74-032 SS+5d | 100% | 2025-12-15 | 2025-12-31 |  |  |  | HydroIns | 14WE74 | Ruroci¹g | Budowa | Roboty | Agnieszk | Uk³ad | PM000 | Zespó³-W | Blok | Normalny | Pakiet | L2 | Rev A |  |
| 14WE74-040 |  | Monta¿ ruroci¹gów – Sekcja 05 | 19.7d | 2026-10-30 | 2026-11-25 | 14WE74-039, 14WE74-014 SS+3d |  |  |  | 350.9d | 0d |  | HydroIns | 14WE74 | Ruroci¹g | Budowa | Roboty | Agnieszk | Uk³ad | PM000 | Zespó³-W | Blok | Normalny | Pakiet | L2 | Rev C | Czeka na dostawê |
| 14WE74-041 |  | Próba ciœnieniowa – Sekcja 05 | 2d | 2026-11-26 | 2026-11-27 | 14WE74-040 |  |  |  | 350.9d | 0d |  | HydroIns | 14WE74 | Ruroci¹g | Budowa | Roboty | Agnieszk | Uk³ad | PM000 | Zespó³-W | Blok | Normalny | Pakiet | L2 | Rev A | Czeka na dostawê |
| 14WE74-042 |  | Izolacje – Sekcja 05 | 12d | 2026-11-30 | 2026-12-15 | 14WE74-041 |  |  |  | 350.9d | 0d |  | HydroIns | 14WE74 | Ruroci¹g | Budowa | Roboty | Agnieszk | Uk³ad | PM000 | Zespó³-W | Blok | Normalny | Pakiet | L2 | Rev A |  |
| 14WE74-043 |  | Malowanie i oznakowanie – Sekcja 05 | 6d | 2026-12-10 | 2026-12-17 | 14WE74-042 FF+2d |  |  |  | 350.9d | 0d |  | HydroIns | 14WE74 | Ruroci¹g | Budowa | Roboty | Agnieszk | Uk³ad | PM000 | Zespó³-K | Blok | Normalny | Pakiet | L2 |  |  |
|  | SEKCJA 06 | **Sekcja 06** |  | 2025-12-24 | 2026-12-21 |  |  |  |  |  |  |  |  |  |  |  |  |  |  |  |  |  |  |  |  |  |  |
|  | PODSEKCJA | **Podsekcja 06.A** |  | 2025-12-24 | 2026-12-21 |  |  |  |  |  |  |  |  |  |  |  |  |  |  |  |  |  |  |  |  |  |  |
| 14WE74-044 |  | Prefabrykacja ruroci¹gów – Sekcja 06 | 14.3d | 2025-12-24 A | 2026-01-14 A | 14WE74-012, 14WE74-039 SS+5d | 100% | 2025-12-22 | 2026-01-08 |  |  |  | HydroIns | 14WE74 | Ruroci¹g | Budowa | Roboty | Agnieszk | Uk³ad | PM000 | Zespó³-W | Blok | Normalny | Pakiet | L2 |  | Ryzyko opóŸnienia |
| 14WE74-045 |  | Monta¿ ruroci¹gów – Sekcja 06 | 16.1d | 2026-11-10 | 2026-12-01 | 14WE74-044, 14WE74-014 SS+10d |  |  |  | 349.5d | 0d |  | HydroIns | 14WE74 | Ruroci¹g | Budowa | Roboty | Agnieszk | Uk³ad | PM000 | Zespó³-W | Blok | Wysoki | Pakiet | L2 | Rev A |  |
| 14WE74-046 |  | Próba ciœnieniowa – Sekcja 06 | 2d | 2026-12-02 | 2026-12-03 | 14WE74-045 |  |  |  | 349.5d | 0d |  | HydroIns | 14WE74 | Ruroci¹g | Budowa | Roboty | Agnieszk | Uk³ad | PM000 | Zespó³-K | Blok | Wysoki | Pakiet | L2 |  |  |
| 14WE74-047 |  | Izolacje – Sekcja 06 | 10d | 2026-12-04 | 2026-12-17 | 14WE74-046 |  |  |  | 349.5d | 0d | Kalendarz 6-dniowy | HydroIns | 14WE74 | Ruroci¹g | Budowa | Roboty | Agnieszk | Uk³ad | PM000 | Zespó³-K | Blok | Niski | Pakiet | L2 |  | Do weryfikacji z wykonawc¹ |
| 14WE74-048 |  | Malowanie i oznakowanie – Sekcja 06 | 5d | 2026-12-15 | 2026-12-21 | 14WE74-047 FF+2d |  |  |  | 349.5d | 0d |  | HydroIns | 14WE74 | Ruroci¹g | Budowa | Roboty | Agnieszk | Uk³ad | PM000 | Zespó³-K | Blok | Normalny | Pakiet | L2 |  |  |
|  | SEKCJA 07 | **Sekcja 07** |  | 2025-12-31 | 2027-07-02 |  |  |  |  |  |  |  |  |  |  |  |  |  |  |  |  |  |  |  |  |  |  |
| 14WE74-051 |  | Prefabrykacja ruroci¹gów – Sekcja 07 | 10.3d | 2025-12-31 A | 2026-01-15 A | 14WE74-012, 14WE74-044 SS+5d | 100% | 2025-12-29 | 2026-01-09 |  |  |  | HydroIns | 14WE74 | Ruroci¹g | Budowa | Roboty | Agnieszk | Uk³ad | PM000 | Zespó³-I | Blok | Normalny | Pakiet | L2 |  |  |
| 14WE74-052 |  | Monta¿ ruroci¹gów – Sekcja 07 | 12.3d | 2026-11-06 | 2026-11-23 | 14WE74-051, 14WE74-014 SS+8d |  |  |  | 360.3d | 0d |  | HydroIns | 14WE74 | Ruroci¹g | Budowa | Roboty | Agnieszk | Uk³ad | PM000 | Zespó³-K | Blok | Krytyczn | Pakiet | L2 |  |  |
| 14WE74-053 |  | Próba ciœnieniowa – Sekcja 07 | 2d | 2026-11-24 | 2026-11-25 | 14WE74-052 |  |  |  | 360.3d | 0d |  | HydroIns | 14WE74 | Ruroci¹g | Budowa | Roboty | Agnieszk | Uk³ad | PM000 | Zespó³-W | Blok | Normalny | Pakiet | L2 | Rev C | Do weryfikacji z wykonawc¹ |
| 14WE74-055 |  | Malowanie i oznakowanie – Sekcja 07 | 8d | 2027-06-23 | 2027-07-02 | 14WE74-054 FF+2d |  | 2026-11-25 | 2026-12-04 | 210.6d | 0d |  | HydroIns | 14WE74 | Ruroci¹g | Budowa | Roboty | Agnieszk | Uk³ad | PM000 | Zespó³-K | Blok | Normalny | Pakiet | L2 |  | Bez uwag |
| 14WE74-054 |  | Izolacje – Sekcja 07 | 5d | 2027-06-24 | 2027-06-30 | 14WE74-053 |  | 2026-11-26 | 2026-12-02 | 210.6d | 0d |  | HydroIns | 14WE74 | Ruroci¹g | Budowa | Roboty | Agnieszk | Uk³ad | PM000 | Zespó³-E | Blok | Normalny | Pakiet | L2 |  |  |

| ID | WBS | Activity | Duration | Start | Finish | Predecessors | Complete | Planned start | Planned finish | Total float | Free float | Calendar | AC_Wykonawca | AC_Obiekt | AC_Dyscyplina | AC_Faza | AC_Zakres | AC_Opiekun | AC_Obszar | AC_PP_PM | AC_Zespol | AC_Blok | AC_Priorytet | AC_Pakiet | AC_Poziom | Uwagi harmonogramisty | Rewizja dokumentu |
| --- | --- | --- | --- | --- | --- | --- | --- | --- | --- | --- | --- | --- | --- | --- | --- | --- | --- | --- | --- | --- | --- | --- | --- | --- | --- | --- | --- |
|  | SEKCJA 08 | **Sekcja 08** |  | 2026-01-08 | 2026-12-29 |  |  |  |  |  |  |  |  |  |  |  |  |  |  |  |  |  |  |  |  |  |  |
| 14WE74-056 |  | Prefabrykacja ruroci¹gów – Sekcja 08 | 5.7d | 2026-01-08 A | 2026-01-19 A | 14WE74-012, 14WE74-051 SS+5d | 100% | 2026-01-05 | 2026-01-09 |  |  |  | HydroIns | 14WE74 | Ruroci¹g | Budowa | Roboty | Agnieszk | Uk³ad | PM000 | Zespó³-W | Blok | Normalny | Pakiet | L2 |  |  |
| 14WE74-057 |  | Monta¿ ruroci¹gów – Sekcja 08 | 24.3d | 2026-11-10 | 2026-12-11 | 14WE74-056, 14WE74-014 SS+10d |  |  |  | 343.3d | 0d |  | HydroIns | 14WE74 | Ruroci¹g | Budowa | Roboty | Agnieszk | Uk³ad | PM000 | Zespó³-W | Blok | Niski | Pakiet | L2 |  |  |
| 14WE74-058 |  | Próba ciœnieniowa – Sekcja 08 | 2d | 2026-12-14 | 2026-12-15 | 14WE74-057 |  |  |  | 343.3d | 0d |  | HydroIns | 14WE74 | Ruroci¹g | Budowa | Roboty | Agnieszk | Uk³ad | PM000 | Zespó³-K | Blok | Normalny | Pakiet | L2 |  |  |
| 14WE74-059 |  | Izolacje – Sekcja 08 | 8d | 2026-12-16 | 2026-12-25 | 14WE74-058 |  |  |  | 343.3d | 0d |  | HydroIns | 14WE74 | Ruroci¹g | Budowa | Roboty | Agnieszk | Uk³ad | PM000 | Zespó³-K | Blok | Normalny | Pakiet | L2 | Czeka na dostawê | Rev B |
| 14WE74-060 |  | Malowanie i oznakowanie – Sekcja 08 | 2d | 2026-12-28 | 2026-12-29 | 14WE74-059 FF+2d |  |  |  | 343.3d | 0d |  | HydroIns | 14WE74 | Ruroci¹g | Budowa | Roboty | Agnieszk | Uk³ad | PM000 | Zespó³-W | Blok | Normalny | Pakiet | L2 |  | Rev B |
|  | SEKCJA 09 | **Sekcja 09** |  | 2026-01-14 | 2027-08-05 |  |  |  |  |  |  |  |  |  |  |  |  |  |  |  |  |  |  |  |  |  |  |
|  | PODSEKCJA | **Podsekcja 09.A** |  | 2026-01-14 | 2027-08-05 |  |  |  |  |  |  |  |  |  |  |  |  |  |  |  |  |  |  |  |  |  |  |
| 14WE74-063 |  | Prefabrykacja ruroci¹gów – Sekcja 09 | 11.6d | 2026-01-14 A | 2026-01-29 A | 14WE74-012, 14WE74-056 SS+5d | 100% | 2026-01-12 | 2026-01-26 |  |  |  | HydroIns | 14WE74 | Ruroci¹g | Budowa | Roboty | Agnieszk | Uk³ad | PM100 | Zespó³-I | Blok | Normalny | Pakiet | L2 |  | Rev B |
| 14WE74-064 |  | Monta¿ ruroci¹gów – Sekcja 09 | 24.6d | 2026-11-04 | 2026-12-07 | 14WE74-063, 14WE74-014 SS+6d |  |  |  | 342d | 0d |  | HydroIns | 14WE74 | Ruroci¹g | Budowa | Roboty | Agnieszk | Uk³ad | PM000 | Zespó³-W | Blok | Normalny | Pakiet | L2 |  |  |
| 14WE74-065 |  | Próba ciœnieniowa – Sekcja 09 | 5d | 2027-07-14 | 2027-07-20 | 14WE74-064 |  | 2026-12-08 | 2026-12-14 | 186.6d | 0d |  | HydroIns | 14WE74 | Ruroci¹g | Budowa | Roboty | Agnieszk | Uk³ad | PM000 | Zespó³-E | Blok | Krytyczn | Pakiet | L2 | Bez uwag |  |
| 14WE74-066 |  | Izolacje – Sekcja 09 | 10d | 2027-07-21 | 2027-08-03 | 14WE74-065 |  | 2026-12-15 | 2026-12-28 | 186.6d | 0d |  | HydroIns | 14WE74 | Ruroci¹g | Budowa | Roboty | Agnieszk | Uk³ad | PM000 | Zespó³-K | Blok | Normalny | Pakiet | L2 | Ryzyko opóŸnienia |  |
| 14WE74-067 |  | Malowanie i oznakowanie – Sekcja 09 | 3d | 2027-08-03 | 2027-08-05 | 14WE74-066 FF+2d |  | 2026-12-28 | 2026-12-30 | 186.6d | 0d |  | HydroIns | 14WE74 | Ruroci¹g | Budowa | Roboty | Agnieszk | Uk³ad | PM000 | Zespó³-W | Blok | Wysoki | Pakiet | L2 |  |  |
|  | SEKCJA 10 | **Sekcja 10** |  | 2026-01-21 | 2026-12-11 |  |  |  |  |  |  |  |  |  |  |  |  |  |  |  |  |  |  |  |  |  |  |
| 14WE74-068 |  | Prefabrykacja ruroci¹gów – Sekcja 10 | 5.2d | 2026-01-21 A | 2026-01-30 A | 14WE74-012, 14WE74-063 SS+5d | 100% | 2026-01-19 | 2026-01-23 |  |  |  | HydroIns | 14WE74 | Ruroci¹g | Budowa | Roboty | Agnieszk | Uk³ad | PM000 | Zespó³-W | Blok | Normalny | Pakiet | L2 | Uzgodnione na koordynacji |  |
| 14WE74-069 |  | Monta¿ ruroci¹gów – Sekcja 10 | 13.1d | 2026-11-09 | 2026-11-25 | 14WE74-068, 14WE74-014 SS+9d |  |  |  | 355.5d | 0d |  | HydroIns | 14WE74 | Ruroci¹g | Budowa | Roboty | Agnieszk | Uk³ad | PM000 | Zespó³-I | Blok | Normalny | Pakiet | L2 |  |  |
| 14WE74-070 |  | Próba ciœnieniowa – Sekcja 10 | 6d | 2026-11-26 | 2026-12-03 | 14WE74-069 |  |  |  | 355.5d | 0d |  | HydroIns | 14WE74 | Ruroci¹g | Budowa | Roboty | Agnieszk | Uk³ad | PM000 | Zespó³-K | Blok | Normalny | Pakiet | L2 |  |  |
| 14WE74-071 |  | Izolacje – Sekcja 10 | 4d | 2026-12-04 | 2026-12-09 | 14WE74-070 |  |  |  | 355.5d | 0d |  | HydroIns | 14WE74 | Ruroci¹g | Budowa | Roboty | Agnieszk | Uk³ad | PM000 | Zespó³-W | Blok | Normalny | Pakiet | L2 | Bez uwag |  |
| 14WE74-072 |  | Malowanie i oznakowanie – Sekcja 10 | 5d | 2026-12-07 | 2026-12-11 | 14WE74-071 FF+2d |  |  |  | 355.5d | 0d |  | HydroIns | 14WE74 | Ruroci¹g | Budowa | Roboty | Agnieszk | Uk³ad | PM000 | Zespó³-K | Blok | Normalny | Pakiet | L2 |  |  |
|  | SEKCJA 11 | **Sekcja 11** |  | 2026-01-23 | 2027-09-03 |  |  |  |  |  |  |  |  |  |  |  |  |  |  |  |  |  |  |  |  |  |  |
| 14WE74-075 |  | Prefabrykacja ruroci¹gów – Sekcja 11 | 15d | 2026-01-23 A | 2026-02-17 A | 14WE74-012, 14WE74-068 SS+5d | 100% | 2026-01-26 | 2026-02-13 |  |  |  | HydroIns | 14WE74 | Ruroci¹g | Budowa | Roboty | Agnieszk | Uk³ad | PM000 | Zespó³-W | Blok | Normalny | Pakiet | L2 |  |  |
| 14WE74-076 |  | Monta¿ ruroci¹gów – Sekcja 11 | 18.3d | 2027-07-22 | 2027-08-16 | 14WE74-075, 14WE74-014 SS+10d |  | 2026-11-10 | 2026-12-03 | 165.3d | 0d | Kalendarz 6-dniowy | HydroIns | 14WE74 | Ruroci¹g | Budowa | Roboty | Agnieszk | Uk³ad | PM100 | Zespó³-E | Blok | Normalny | Pakiet | L2 |  |  |
| 14WE74-077 |  | Próba ciœnieniowa – Sekcja 11 | 2d | 2027-08-17 | 2027-08-18 | 14WE74-076 |  | 2026-12-04 | 2026-12-07 | 165.3d | 0d |  | HydroIns | 14WE74 | Ruroci¹g | Budowa | Roboty | Agnieszk | Uk³ad | PM000 | Zespó³-K | Blok | Normalny | Pakiet | L2 | Bez uwag |  |
| 14WE74-078 |  | Izolacje – Sekcja 11 | 10d | 2027-08-19 | 2027-09-01 | 14WE74-077 |  | 2026-12-08 | 2026-12-21 | 165.3d | 0d |  | HydroIns | 14WE74 | Ruroci¹g | Budowa | Roboty | Agnieszk | Uk³ad | PM000 | Zespó³-K | Blok | Normalny | Pakiet | L2 |  | Rev B |
| 14WE74-079 |  | Malowanie i oznakowanie – Sekcja 11 | 4d | 2027-08-31 | 2027-09-03 | 14WE74-078 FF+2d |  | 2026-12-18 | 2026-12-23 | 165.3d | 0d |  | HydroIns | 14WE74 | Ruroci¹g | Budowa | Roboty | Agnieszk | Uk³ad | PM000 | Zespó³-K | Blok | Normalny | Pakiet | L2 | Bez uwag |  |

| ID | WBS | Activity | Duration | Start | Finish | Predecessors | Complete | Planned start | Planned finish | Total float | Free float | Calendar | Uwagi harmonogramisty | AC_Wykonawca | AC_Obiekt | AC_Dyscyplina | AC_Faza | AC_Zakres | AC_Opiekun | AC_Obszar | AC_PP_PM | AC_Zespol | AC_Blok | AC_Priorytet | AC_Pakiet | AC_Poziom | Rewizja dokumentu |
| --- | --- | --- | --- | --- | --- | --- | --- | --- | --- | --- | --- | --- | --- | --- | --- | --- | --- | --- | --- | --- | --- | --- | --- | --- | --- | --- | --- |
|  | SEKCJA 12 | **Sekcja 12** |  | 2026-02-03 | 2026-12-14 |  |  |  |  |  |  |  |  |  |  |  |  |  |  |  |  |  |  |  |  |  |  |
|  | PODSEKCJA | **Podsekcja 12.A** |  | 2026-02-03 | 2026-12-14 |  |  |  |  |  |  |  |  |  |  |  |  |  |  |  |  |  |  |  |  |  |  |
| 14WE74-080 |  | Prefabrykacja ruroci¹gów – Sekcja 12 | 10.4d | 2026-02-03 A | 2026-02-16 A | 14WE74-012, 14WE74-075 SS+5d | 100% | 2026-02-02 | 2026-02-13 |  |  |  | Uzgodnione na koordynacji | HydroIns | 14WE74 | Ruroci¹g | Budowa | Roboty | Agnieszk | Uk³ad | PM000 | Zespó³-W | Blok | Niski | Pakiet | L2 |  |
| 14WE74-081 |  | Monta¿ ruroci¹gów – Sekcja 12 | 9.3d | 2026-11-10 | 2026-11-20 | 14WE74-080, 14WE74-014 SS+10d |  |  |  | 354.3d | 0d |  |  | HydroIns | 14WE74 | Ruroci¹g | Budowa | Roboty | Agnieszk | Uk³ad | PM000 | Zespó³-K | Blok | Krytyczn | Pakiet | L2 |  |
| 14WE74-082 |  | Próba ciœnieniowa – Sekcja 12 | 2d | 2026-11-23 | 2026-11-24 | 14WE74-081 |  |  |  | 354.3d | 0d |  |  | HydroIns | 14WE74 | Ruroci¹g | Budowa | Roboty | Agnieszk | Uk³ad | PM000 | Zespó³-K | Blok | Normalny | Pakiet | L2 | Rev A |
| 14WE74-083 |  | Izolacje – Sekcja 12 | 12d | 2026-11-25 | 2026-12-10 | 14WE74-082 |  |  |  | 354.3d | 0d |  |  | HydroIns | 14WE74 | Ruroci¹g | Budowa | Roboty | Agnieszk | Uk³ad | PM000 | Zespó³-W | Blok | Normalny | Pakiet | L2 | Rev B |
| 14WE74-084 |  | Malowanie i oznakowanie – Sekcja 12 | 5d | 2026-12-08 | 2026-12-14 | 14WE74-083 FF+2d |  |  |  | 354.3d | 0d |  |  | HydroIns | 14WE74 | Ruroci¹g | Budowa | Roboty | Agnieszk | Uk³ad | PM000 | Zespó³-W | Blok | Normalny | Pakiet | L2 | Rev A |
|  | SEKCJA 13 | **Sekcja 13** |  | 2026-02-11 | 2026-12-08 |  |  |  |  |  |  |  |  |  |  |  |  |  |  |  |  |  |  |  |  |  |  |
| 14WE74-087 |  | Prefabrykacja ruroci¹gów – Sekcja 13 | 7.8d | 2026-02-11 A | 2026-02-20 A | 14WE74-012, 14WE74-080 SS+5d | 100% | 2026-02-09 | 2026-02-17 |  |  |  |  | HydroIns | 14WE74 | Ruroci¹g | Budowa | Roboty | Agnieszk | Uk³ad | PM000 | Zespó³-W | Blok | Normalny | Pakiet | L2 | Rev C |
| 14WE74-088 |  | Monta¿ ruroci¹gów – Sekcja 13 | 17.8d | 2026-10-28 | 2026-11-19 | 14WE74-087, 14WE74-014 SS+1d |  |  |  | 357.8d | 0d |  | Do weryfikacji z wykonawc¹ | HydroIns | 14WE74 | Ruroci¹g | Budowa | Roboty | Agnieszk | Uk³ad | PM000 | Zespó³-K | Blok | Normalny | Pakiet | L2 |  |
| 14WE74-089 |  | Próba ciœnieniowa – Sekcja 13 | 5d | 2026-11-20 | 2026-11-26 | 14WE74-088 |  |  |  | 357.8d | 0d |  |  | HydroIns | 14WE74 | Ruroci¹g | Budowa | Roboty | Agnieszk | Uk³ad | PM000 | Zespó³-K | Blok | Wysoki | Pakiet | L2 |  |
| 14WE74-090 |  | Izolacje – Sekcja 13 | 6d | 2026-11-27 | 2026-12-04 | 14WE74-089 |  |  |  | 357.8d | 0d | Kalendarz 6-dniowy |  | HydroIns | 14WE74 | Ruroci¹g | Budowa | Roboty | Agnieszk | Uk³ad | PM000 | Zespó³-K | Blok | Normalny | Pakiet | L2 |  |
| 14WE74-091 |  | Malowanie i oznakowanie – Sekcja 13 | 5d | 2026-12-02 | 2026-12-08 | 14WE74-090 FF+2d |  |  |  | 357.8d | 0d |  |  | HydroIns | 14WE74 | Ruroci¹g | Budowa | Roboty | Agnieszk | Uk³ad | PM000 | Zespó³-W | Blok | Normalny | Pakiet | L2 |  |
|  | SEKCJA 14 | **Sekcja 14** |  | 2026-02-17 | 2026-12-02 |  |  |  |  |  |  |  |  |  |  |  |  |  |  |  |  |  |  |  |  |  |  |
| 14WE74-092 |  | Prefabrykacja ruroci¹gów – Sekcja 14 | 4.2d | 2026-02-17 A | 2026-02-25 A | 14WE74-012, 14WE74-087 SS+5d | 100% | 2026-02-16 | 2026-02-19 |  |  |  |  | HydroIns | 14WE74 | Ruroci¹g | Budowa | Roboty | Agnieszk | Uk³ad | PM000 | Zespó³-W | Blok | Normalny | Pakiet | L2 |  |
| 14WE74-093 |  | Monta¿ ruroci¹gów – Sekcja 14 | 8.7d | 2026-11-02 | 2026-11-11 | 14WE74-092, 14WE74-014 SS+4d |  |  |  | 361.9d | 0d |  |  | HydroIns | 14WE74 | Ruroci¹g | Budowa | Roboty | Agnieszk | Uk³ad | PM000 | Zespó³-W | Blok | Normalny | Pakiet | L2 |  |
| 14WE74-094 |  | Próba ciœnieniowa – Sekcja 14 | 3d | 2026-11-12 | 2026-11-16 | 14WE74-093 |  |  |  | 361.9d | 0d |  |  | HydroIns | 14WE74 | Ruroci¹g | Budowa | Roboty | Agnieszk | Uk³ad | PM000 | Zespó³-K | Blok | Niski | Pakiet | L2 |  |
| 14WE74-095 |  | Izolacje – Sekcja 14 | 10d | 2026-11-17 | 2026-11-30 | 14WE74-094 |  |  |  | 361.9d | 0d |  |  | HydroIns | 14WE74 | Ruroci¹g | Budowa | Roboty | Agnieszk | Uk³ad | PM000 | Zespó³-W | Blok | Normalny | Pakiet | L2 |  |
| 14WE74-096 |  | Malowanie i oznakowanie – Sekcja 14 | 2d | 2026-12-01 | 2026-12-02 | 14WE74-095 FF+2d |  |  |  | 361.9d | 0d |  |  | HydroIns | 14WE74 | Ruroci¹g | Budowa | Roboty | Agnieszk | Uk³ad | PM000 | Zespó³-K | Blok | Normalny | Pakiet | L2 |  |
|  | SEKCJA 15 | **Sekcja 15** |  | 2026-02-26 | 2026-11-20 |  |  |  |  |  |  |  |  |  |  |  |  |  |  |  |  |  |  |  |  |  |  |
|  | PODSEKCJA | **Podsekcja 15.A** |  | 2026-02-26 | 2026-11-20 |  |  |  |  |  |  |  |  |  |  |  |  |  |  |  |  |  |  |  |  |  |  |
| 14WE74-099 |  | Prefabrykacja ruroci¹gów – Sekcja 15 | 9.6d | 2026-02-26 A | 2026-03-10 A | 14WE74-012, 14WE74-092 SS+5d | 100% | 2026-02-23 | 2026-03-05 |  |  |  |  | HydroIns | 14WE74 | Ruroci¹g | Budowa | Roboty | Agnieszk | Uk³ad | PM000 | Zespó³-W | Blok | Wysoki | Pakiet | L2 |  |
| 14WE74-100 |  | Monta¿ ruroci¹gów – Sekcja 15 | 6.4d | 2026-11-03 | 2026-11-10 | 14WE74-099, 14WE74-014 SS+5d |  |  |  | 337.2d | 0d |  |  | HydroIns | 14WE74 | Ruroci¹g | Budowa | Roboty | Agnieszk | Uk³ad | PM000 | Zespó³-K | Blok | Normalny | Pakiet | L2 |  |
| 14WE74-101 |  | Próba ciœnieniowa – Sekcja 15 | 3d | 2026-11-11 | 2026-11-13 | 14WE74-100 |  |  |  | 337.2d | 0d |  |  | HydroIns | 14WE74 | Ruroci¹g | Budowa | Roboty | Agnieszk | Uk³ad | PM000 | Zespó³-K | Blok | Normalny | Pakiet | L2 | Rev C |
| 14WE74-102 |  | Izolacje – Sekcja 15 | 3d | 2026-11-16 | 2026-11-18 | 14WE74-101 |  |  |  | 337.2d | 0d |  | Uzgodnione na koordynacji | HydroIns | 14WE74 | Ruroci¹g | Budowa | Roboty | Agnieszk | Uk³ad | PM000 | Zespó³-W | Blok | Normalny | Pakiet | L2 |  |
| 14WE74-103 |  | Malowanie i oznakowanie – Sekcja 15 | 5d | 2026-11-16 | 2026-11-20 | 14WE74-102 FF+2d |  |  |  | 337.2d | 0d |  |  | HydroIns | 14WE74 | Ruroci¹g | Budowa | Roboty | Agnieszk | Uk³ad | PM000 | Zespó³-W | Blok | Normalny | Pakiet | L2 | Rev C |

| ID | WBS | Activity | Type | Duration | Start | Finish | Predecessors | Complete | Remaining | Actual finish | Planned start | Planned finish | Total float | Free float | Uwagi harmonogramisty | Rewizja dokumentu | AC_Wykonawca | AC_Obiekt | AC_Dyscyplina | AC_Faza | AC_Zakres | AC_Opiekun | AC_Obszar | AC_PP_PM | AC_Zespol | AC_Blok | AC_Priorytet | AC_Pakiet | AC_Poziom |
| --- | --- | --- | --- | --- | --- | --- | --- | --- | --- | --- | --- | --- | --- | --- | --- | --- | --- | --- | --- | --- | --- | --- | --- | --- | --- | --- | --- | --- | --- |
|  | SEKCJA 16 | **Sekcja 16** |  |  | 2026-03-04 | 2026-12-01 |  |  |  |  |  |  |  |  |  |  |  |  |  |  |  |  |  |  |  |  |  |  |  |
| 14WE74-104 |  | Prefabrykacja ruroci¹gów – Sekcja 16 |  | 13d | 2026-03-04 A | 2026-03-24 A | 14WE74-012, 14WE74-099 SS+5d | 100% |  |  | 2026-03-02 | 2026-03-18 |  |  | Uzgodnione na koordynacji | Rev C | HydroIns | 14WE74 | Ruroci¹g | Budowa | Roboty | Agnieszk | Uk³ad | PM000 | Zespó³-K | Blok | Niski | Pakiet | L2 |
| 14WE74-105 |  | Monta¿ ruroci¹gów – Sekcja 16 |  | 6.5d | 2026-11-03 | 2026-11-10 | 14WE74-104, 14WE74-014 SS+5d |  |  |  |  |  | 330.1d | 0d |  | Rev A | HydroIns | 14WE74 | Ruroci¹g | Budowa | Roboty | Agnieszk | Uk³ad | PM000 | Zespó³-W | Blok | Normalny | Pakiet | L2 |
| 14WE74-106 |  | Próba ciœnieniowa – Sekcja 16 |  | 3d | 2026-11-11 | 2026-11-13 | 14WE74-105 |  |  |  |  |  | 330.1d | 0d |  |  | HydroIns | 14WE74 | Ruroci¹g | Budowa | Roboty | Agnieszk | Uk³ad | PM000 | Zespó³-W | Blok | Normalny | Pakiet | L2 |
| 14WE74-107 |  | Izolacje – Sekcja 16 |  | 10d | 2026-11-16 | 2026-11-27 | 14WE74-106 |  |  |  |  |  | 330.1d | 0d |  |  | HydroIns | 14WE74 | Ruroci¹g | Budowa | Roboty | Agnieszk | Uk³ad | PM000 | Zespó³-W | Blok | Normalny | Pakiet | L2 |
| 14WE74-108 |  | Malowanie i oznakowanie – Sekcja 16 |  | 3d | 2026-11-27 | 2026-12-01 | 14WE74-107 FF+2d |  |  |  |  |  | 330.1d | 0d |  | Rev C | HydroIns | 14WE74 | Ruroci¹g | Budowa | Roboty | Agnieszk | Uk³ad | PM000 | Zespó³-K | Blok | Wysoki | Pakiet | L2 |
|  | PROJ | **Projektowanie** |  |  | 2025-01-31 | 2025-06-16 |  |  |  |  |  |  |  |  |  |  |  |  |  |  |  |  |  |  |  |  |  |  |  |
|  | DOKUMENTAC | **Dokumentacja** |  |  | 2025-01-31 | 2025-06-16 |  |  |  |  |  |  |  |  |  |  |  |  |  |  |  |  |  |  |  |  |  |  |  |
| 14WE74-001 |  | Projekt wykonawczy – Uk³ady wyprowadzenia mocy |  | 59d | 2025-01-31 A | 2025-04-23 A |  | 100% |  |  | 2025-01-30 | 2025-04-22 |  |  |  |  | HydroIns | 14WE74 | Budowlan | Projekto | Projekt | Agnieszk | Uk³ad | PM000 | Zespó³-W | Blok | Normalny | Pakiet | L2 |
| 14WE74-002 |  | Uzgodnienie dokumentacji z Inwestorem |  | 26d | 2025-04-22 A | 2025-05-30 A | 14WE74-001 | 100% |  |  | 2025-04-23 | 2025-05-28 |  |  |  |  | HydroIns | 14WE74 | Budowlan | Projekto | Projekt | Agnieszk | Uk³ad | PM000 | Zespó³-K | Blok | Normalny | Pakiet | L2 |
| 14WE74-003 |  | Zatwierdzenie dokumentacji do realizacji |  | 10d | 2025-06-03 A | 2025-06-16 A | 14WE74-002 | 100% |  |  | 2025-05-29 | 2025-06-11 |  |  |  |  | HydroIns | 14WE74 | Budowlan | Projekto | Projekt | Agnieszk | Uk³ad | PM300 | Zespó³-E | Blok | Normalny | Pakiet | L2 |
| 14WE74-004 |  | KM: Dokumentacja zatwierdzona – Uk³ady wyprowadzenia mocy | milestone | 0d | 2025-06-11 A | 2025-06-11 | 14WE74-003 | 100% |  | 2025-06-10 | 2025-06-12 | 2025-06-12 |  |  |  | Rev A | HydroIns | 14WE74 | Budowlan | Projekto | Kamieñ | Agnieszk | Uk³ad | PM000 | Zespó³-W | Blok | Wysoki | Pakiet | L1 |
|  | ROZR | **Rozruch** |  |  | 2027-07-27 | 2027-10-05 |  |  |  |  |  |  |  |  |  |  |  |  |  |  |  |  |  |  |  |  |  |  |  |
|  | ROZRUCH | **Rozruch** |  |  | 2027-07-27 | 2027-10-05 |  |  |  |  |  |  |  |  |  |  |  |  |  |  |  |  |  |  |  |  |  |  |  |
| 14WE74-113 |  | Przegl¹d gotowoœci do rozruchu |  | 3d | 2027-07-27 | 2027-07-29 | 14WE74-112, 14WE74-019, 14WE74-024, 14WE74-026 |  |  |  | 2026-12-23 | 2026-12-25 | 160.7d | 0d |  |  | HydroIns | 14WE74 | Rozruch | Rozruch | Rozruch | Agnieszk | Uk³ad | PM000 | Zespó³-K | Blok | Niski | Pakiet | L2 |
| 14WE74-114 |  | Rozruch na zimno |  | 7d | 2027-09-07 | 2027-09-15 | 14WE74-113 |  |  |  | 2026-12-28 | 2027-01-05 | 134.6d | 0d | Uzgodnione na koordynacji |  | HydroIns | 14WE74 | Rozruch | Rozruch | Rozruch | Agnieszk | Uk³ad | PM300 | Zespó³-I | Blok | Krytyczn | Pakiet | L2 |
| 14WE74-115 |  | Rozruch na gor¹co / próby ruchowe |  | 13d | 2027-09-16 | 2027-10-04 | 14WE74-114 |  |  |  | 2027-01-06 | 2027-01-22 | 134.6d | 0d | Do weryfikacji z wykonawc¹ |  | HydroIns | 14WE74 | Rozruch | Rozruch | Rozruch | Agnieszk | Uk³ad | PM000 | Zespó³-K | Blok | Normalny | Pakiet | L2 |
| 14WE74-116 |  | KM: Odbiór koñcowy – Uk³ady wyprowadzenia mocy | milestone | 0d | 2027-10-05 | 2027-10-05 | 14WE74-115 |  |  |  | 2027-01-25 | 2027-01-25 | 134.6d | 0d |  | Rev C | HydroIns | 14WE74 | Rozruch | Rozruch | Kamieñ | Agnieszk | Uk³ad | PM000 | Zespó³-W | Blok | Normalny | Pakiet | L1 |
|  | ZAKU | **Zakupy** |  |  | 2025-02-26 | 2026-10-27 |  |  |  |  |  |  |  |  |  |  |  |  |  |  |  |  |  |  |  |  |  |  |  |
|  | DOSTAWY | **Dostawy** |  |  | 2025-09-19 | 2026-10-27 |  |  |  |  |  |  |  |  |  |  |  |  |  |  |  |  |  |  |  |  |  |  |  |
| 14WE74-008 |  | Produkcja u dostawcy |  | 273d | 2025-09-19 A | 2026-10-06 A | 14WE74-007 | 100% |  |  | 2025-09-16 | 2026-10-01 |  |  |  |  | HydroIns | 14WE74 | Mechanic | Zakupy | Dostawa | Agnieszk | Uk³ad | PM000 | Zespó³-W | Blok | Normalny | Pakiet | L2 |
| 14WE74-009 |  | Testy FAT |  | 4d | 2026-10-06 A | 2026-10-07 | 14WE74-008 | 75% | 1d |  | 2026-10-02 | 2026-10-07 | 312.7d | 0d |  |  | HydroIns | 14WE74 | Mechanic | Zakupy | Dostawa | Agnieszk | Uk³ad | PM000 | Zespó³-W | Blok | Normalny | Pakiet | L2 |
| 14WE74-010 |  | Transport i dostawa na plac budowy |  | 13d | 2026-10-08 | 2026-10-26 | 14WE74-009 |  |  |  |  |  | 314.7d | 0d |  |  | HydroIns | 14WE74 | Mechanic | Zakupy | Dostawa | Agnieszk | Uk³ad | PM000 | Zespó³-W | Blok | Wysoki | Pakiet | L2 |
| 14WE74-011 |  | KM: Dostawa na budowê – Uk³ady wyprowadzenia mocy | milestone | 0d | 2026-10-27 | 2026-10-27 | 14WE74-010 |  |  |  |  |  | 314.7d | 0d |  |  | HydroIns | 14WE74 | Mechanic | Zakupy | Kamieñ | Agnieszk | Uk³ad | PM000 | Zespó³-W | Blok | Normalny | Pakiet | L1 |

| ID | WBS | Activity | Duration | Start | Finish | Predecessors | Complete | Planned start | Planned finish | Calendar | AC_Wykonawca | AC_Obiekt | AC_Dyscyplina | AC_Faza | AC_Zakres | AC_Opiekun | AC_Obszar | AC_PP_PM | AC_Zespol | AC_Blok | AC_Priorytet | AC_Pakiet | AC_Poziom | Rewizja dokumentu | Uwagi harmonogramisty |
| --- | --- | --- | --- | --- | --- | --- | --- | --- | --- | --- | --- | --- | --- | --- | --- | --- | --- | --- | --- | --- | --- | --- | --- | --- | --- |
|  | ZAMÓWIENIA | **Zamówienia** |  | 2025-02-26 | 2025-09-16 |  |  |  |  |  |  |  |  |  |  |  |  |  |  |  |  |  |  |  |  |
| 14WE74-005 |  | Zapytanie ofertowe | 30d | 2025-02-26 A | 2025-04-11 A | 14WE74-001 SS+20d | 100% | 2025-02-27 | 2025-04-09 |  | HydroIns | 14WE74 | Mechanic | Zakupy | Dostawa | Agnieszk | Uk³ad | PM000 | Zespó³-W | Blok | Normalny | Pakiet | L2 |  |  |
| 14WE74-006 |  | Analiza i wybór ofert | 16d | 2025-04-11 A | 2025-05-07 A | 14WE74-005 | 100% | 2025-04-10 | 2025-05-01 | Kalendarz 6-dniowy | HydroIns | 14WE74 | Mechanic | Zakupy | Dostawa | Agnieszk | Uk³ad | PM000 | Zespó³-W | Blok | Normalny | Pakiet | L2 | Rev A |  |
| 14WE74-007 |  | Zawarcie umowy / zamówienie | 9d | 2025-09-02 A | 2025-09-16 A | 14WE74-006, 14WE74-004 SS, 15BP15-004 (other project) FS+5d | 100% | 2025-09-03 | 2025-09-15 |  | HydroIns | 14WE74 | Mechanic | Zakupy | Dostawa | Agnieszk | Uk³ad | PM000 | Zespó³-W | Blok | Normalny | Pakiet | L1 | Rev B |  |
|  | 16TC84 | **16TC84 – Rozdzielnia SN** |  | 2025-01-15 | 2026-10-28 |  |  |  |  |  |  |  |  |  |  |  |  |  |  |  |  |  |  |  |  |
|  | BUDO | **Budowa** |  | 2025-10-20 | 2026-08-26 |  |  |  |  |  |  |  |  |  |  |  |  |  |  |  |  |  |  |  |  |
|  | AKPIA | **AKPiA** |  | 2026-03-04 | 2026-04-16 |  |  |  |  |  |  |  |  |  |  |  |  |  |  |  |  |  |  |  |  |
| 16TC84-159 |  | Monta¿ uk³adów AKPiA | 32d | 2026-03-04 A | 2026-04-16 A | 16TC84-014 SS+5d | 100% | 2026-03-03 | 2026-04-15 | Kalendarz 6-dniowy | Automaty | 16TC84 | AKPiA | Budowa | Roboty | Joanna | Uk³ad | PM000 | Zespó³-W | Blok | Normalny | Pakiet | L2 |  |  |
|  | ELEKTRYKA | **Elektryka** |  | 2026-03-06 | 2026-04-09 |  |  |  |  |  |  |  |  |  |  |  |  |  |  |  |  |  |  |  |  |
| 16TC84-038 |  | Pod³¹czenia i pomiary – trasa 04 | 8d | 2026-03-06 A | 2026-03-19 A | 16TC84-037 FF | 100% | 2026-03-05 | 2026-03-16 |  | Automaty | 16TC84 | Elektryc | Budowa | Roboty | Joanna | Uk³ad | PM000 | Zespó³-W | Blok | Normalny | Pakiet | L2 | Rev A | Bez uwag |
| 16TC84-061 |  | Uk³adanie kabli – trasa 08 | 13d | 2026-03-09 A | 2026-03-25 A | 16TC84-014 SS+10d | 100% | 2026-03-10 | 2026-03-26 |  | Automaty | 16TC84 | Elektryc | Budowa | Roboty | Joanna | Uk³ad | PM000 | Zespó³-W | Blok | Normalny | Pakiet | L2 |  |  |
| 16TC84-085 |  | Uk³adanie kabli – trasa 12 | 15d | 2026-03-09 A | 2026-03-30 A | 16TC84-014 SS+10d | 100% | 2026-03-10 | 2026-03-30 |  | Automaty | 16TC84 | Elektryc | Budowa | Roboty | Joanna | Uk³ad | PM000 | Zespó³-W | Blok | Normalny | Pakiet | L2 |  |  |
| 16TC84-097 |  | Uk³adanie kabli – trasa 14 | 8d | 2026-03-09 A | 2026-03-20 A | 16TC84-014 SS+10d | 100% | 2026-03-10 | 2026-03-19 |  | Automaty | 16TC84 | Elektryc | Budowa | Roboty | Joanna | Uk³ad | PM000 | Zespó³-W | Blok | Normalny | Pakiet | L2 |  | Do weryfikacji z wykonawc¹ |
| 16TC84-110 |  | Pod³¹czenia i pomiary – trasa 16 | 8d | 2026-03-09 A | 2026-03-19 A | 16TC84-109 FF | 100% | 2026-03-05 | 2026-03-16 |  | Automaty | 16TC84 | Elektryc | Budowa | Roboty | Joanna | Uk³ad | PM000 | Zespó³-W | Blok | Normalny | Pakiet | L2 |  | Do weryfikacji z wykonawc¹ |
| 16TC84-121 |  | Uk³adanie kabli – trasa 18 | 12d | 2026-03-09 A | 2026-03-25 A | 16TC84-014 SS+10d | 100% | 2026-03-10 | 2026-03-25 |  | Automaty | 16TC84 | Elektryc | Budowa | Roboty | Joanna | Uk³ad | PM000 | Zespó³-K | Blok | Normalny | Pakiet | L2 |  |  |
| 16TC84-073 |  | Uk³adanie kabli – trasa 10 | 8d | 2026-03-11 A | 2026-03-20 A | 16TC84-014 SS+10d | 100% | 2026-03-10 | 2026-03-19 |  | Automaty | 16TC84 | Elektryc | Budowa | Roboty | Joanna | Uk³ad | PM000 | Zespó³-K | Blok | Normalny | Pakiet | L2 |  |  |
| 16TC84-109 |  | Uk³adanie kabli – trasa 16 | 5d | 2026-03-11 A | 2026-03-18 A | 16TC84-014 SS+10d | 100% | 2026-03-10 | 2026-03-16 |  | Automaty | 16TC84 | Elektryc | Budowa | Roboty | Joanna | Uk³ad | PM000 | Zespó³-W | Blok | Normalny | Pakiet | L2 |  |  |
| 16TC84-133 |  | Uk³adanie kabli – trasa 20 | 17d | 2026-03-11 A | 2026-04-03 A | 16TC84-014 SS+10d | 100% | 2026-03-10 | 2026-04-01 |  | Automaty | 16TC84 | Elektryc | Budowa | Roboty | Joanna | Uk³ad | PM000 | Zespó³-W | Blok | Normalny | Pakiet | L2 | Rev C | Uzgodnione na koordynacji |
| 16TC84-037 |  | Uk³adanie kabli – trasa 04 | 5d | 2026-03-12 A | 2026-03-19 A | 16TC84-014 SS+10d | 100% | 2026-03-10 | 2026-03-16 |  | Automaty | 16TC84 | Elektryc | Budowa | Roboty | Joanna | Uk³ad | PM000 | Zespó³-W | Blok | Wysoki | Pakiet | L2 |  |  |
| 16TC84-049 |  | Uk³adanie kabli – trasa 06 | 5d | 2026-03-12 A | 2026-03-18 A | 16TC84-014 SS+10d | 100% | 2026-03-10 | 2026-03-16 |  | Automaty | 16TC84 | Elektryc | Budowa | Roboty | Joanna | Uk³ad | PM000 | Zespó³-K | Blok | Normalny | Pakiet | L2 |  |  |
| 16TC84-050 |  | Pod³¹czenia i pomiary – trasa 06 | 6d | 2026-03-12 A | 2026-03-20 A | 16TC84-049 FF | 100% | 2026-03-09 | 2026-03-16 |  | Automaty | 16TC84 | Elektryc | Budowa | Roboty | Joanna | Uk³ad | PM000 | Zespó³-W | Blok | Normalny | Pakiet | L2 |  | Czeka na dostawê |
| 16TC84-122 |  | Pod³¹czenia i pomiary – trasa 18 | 9d | 2026-03-12 A | 2026-03-26 A | 16TC84-121 FF | 100% | 2026-03-13 | 2026-03-25 |  | Automaty | 16TC84 | Elektryc | Budowa | Roboty | Joanna | Uk³ad | PM000 | Zespó³-W | Blok | Normalny | Pakiet | L2 | Rev B |  |
| 16TC84-145 |  | Uk³adanie kabli – trasa 22 | 9d | 2026-03-12 A | 2026-03-27 A | 16TC84-014 SS+10d | 100% | 2026-03-10 | 2026-03-20 |  | Automaty | 16TC84 | Elektryc | Budowa | Roboty | Joanna | Uk³ad | PM000 | Zespó³-K | Blok | Niski | Pakiet | L2 |  | Ryzyko opóŸnienia |
| 16TC84-146 |  | Pod³¹czenia i pomiary – trasa 22 | 6d | 2026-03-12 A | 2026-03-19 A | 16TC84-145 FF | 100% | 2026-03-13 | 2026-03-20 |  | Automaty | 16TC84 | Elektryc | Budowa | Roboty | Joanna | Uk³ad | PM000 | Zespó³-K | Blok | Normalny | Pakiet | L2 |  |  |
| 16TC84-157 |  | Uk³adanie kabli – trasa 24 | 20d | 2026-03-12 A | 2026-04-09 A | 16TC84-014 SS+10d | 100% | 2026-03-10 | 2026-04-06 |  | Automaty | 16TC84 | Elektryc | Budowa | Roboty | Joanna | Uk³ad | PM000 | Zespó³-W | Blok | Normalny | Pakiet | L2 |  |  |
| 16TC84-025 |  | Uk³adanie kabli – trasa 02 | 17d | 2026-03-13 A | 2026-04-07 A | 16TC84-014 SS+10d | 100% | 2026-03-10 | 2026-04-01 | Kalendarz 6-dniowy | Automaty | 16TC84 | Elektryc | Budowa | Roboty | Joanna | Uk³ad | PM000 | Zespó³-I | Blok | Normalny | Pakiet | L2 |  |  |
| 16TC84-098 |  | Pod³¹czenia i pomiary – trasa 14 | 5d | 2026-03-17 A | 2026-03-23 A | 16TC84-097 FF | 100% | 2026-03-13 | 2026-03-19 |  | Automaty | 16TC84 | Elektryc | Budowa | Roboty | Joanna | Uk³ad | PM000 | Zespó³-W | Blok | Normalny | Pakiet | L2 |  |  |
| 16TC84-026 |  | Pod³¹czenia i pomiary – trasa 02 | 10d | 2026-03-19 A | 2026-04-06 A | 16TC84-025 FF | 100% | 2026-03-19 | 2026-04-01 |  | Automaty | 16TC84 | Elektryc | Budowa | Roboty | Joanna | Uk³ad | PM000 | Zespó³-K | Blok | Wysoki | Pakiet | L2 |  |  |
| 16TC84-074 |  | Pod³¹czenia i pomiary – trasa 10 | 3d | 2026-03-20 A | 2026-03-27 A | 16TC84-073 FF | 100% | 2026-03-17 | 2026-03-19 |  | Automaty | 16TC84 | Elektryc | Budowa | Roboty | Joanna | Uk³ad | PM000 | Zespó³-K | Blok | Normalny | Pakiet | L2 |  |  |
| 16TC84-086 |  | Pod³¹czenia i pomiary – trasa 12 | 6d | 2026-03-20 A | 2026-03-31 A | 16TC84-085 FF | 100% | 2026-03-23 | 2026-03-30 | Kalendarz 6-dniowy | Automaty | 16TC84 | Elektryc | Budowa | Roboty | Joanna | Uk³ad | PM000 | Zespó³-K | Blok | Normalny | Pakiet | L2 |  |  |
| 16TC84-062 |  | Pod³¹czenia i pomiary – trasa 08 | 4d | 2026-03-26 A | 2026-04-02 A | 16TC84-061 FF | 100% | 2026-03-23 | 2026-03-26 |  | Automaty | 16TC84 | Elektryc | Budowa | Roboty | Joanna | Uk³ad | PM000 | Zespó³-W | Blok | Normalny | Pakiet | L2 |  |  |
| 16TC84-158 |  | Pod³¹czenia i pomiary – trasa 24 | 9d | 2026-03-26 A | 2026-04-08 A | 16TC84-157 FF | 100% | 2026-03-25 | 2026-04-06 |  | Automaty | 16TC84 | Elektryc | Budowa | Roboty | Joanna | Uk³ad | PM000 | Zespó³-W | Blok | Niski | Pakiet | L2 | Rev B | Ryzyko opóŸnienia |
| 16TC84-134 |  | Pod³¹czenia i pomiary – trasa 20 | 4d | 2026-03-30 A | 2026-04-02 A | 16TC84-133 FF | 100% | 2026-03-27 | 2026-04-01 |  | Automaty | 16TC84 | Elektryc | Budowa | Roboty | Joanna | Uk³ad | PM000 | Zespó³-W | Blok | Normalny | Pakiet | L2 |  | Czeka na dostawê |

| ID | WBS | Activity | Type | Duration | Start | Finish | Predecessors | Complete | Actual finish | Planned start | Planned finish | Calendar | AC_Wykonawca | AC_Obiekt | AC_Dyscyplina | AC_Faza | AC_Zakres | AC_Opiekun | AC_Obszar | AC_PP_PM | AC_Zespol | AC_Blok | AC_Priorytet | AC_Pakiet | AC_Poziom | Rewizja dokumentu | Uwagi harmonogramisty |
| --- | --- | --- | --- | --- | --- | --- | --- | --- | --- | --- | --- | --- | --- | --- | --- | --- | --- | --- | --- | --- | --- | --- | --- | --- | --- | --- | --- |
|  | MONTA¯ | **Monta¿** |  |  | 2025-12-31 | 2026-08-25 |  |  |  |  |  |  |  |  |  |  |  |  |  |  |  |  |  |  |  |  |  |
| 16TC84-013 |  | Monta¿ konstrukcji stalowych |  | 27d | 2025-12-31 A | 2026-02-09 A | 16TC84-012 | 100% |  | 2026-01-01 | 2026-02-06 |  | Automaty | 16TC84 | Mechanic | Budowa | Roboty | Joanna | Uk³ad | PM000 | Zespó³-W | Blok | Normalny | Pakiet | L2 |  |  |
| 16TC84-014 |  | Monta¿ urz¹dzeñ g³ównych |  | 70d | 2026-02-27 A | 2026-06-05 A | 16TC84-013, 16TC84-011 | 100% |  | 2026-02-24 | 2026-06-01 |  | Automaty | 16TC84 | Mechanic | Budowa | Roboty | Joanna | Uk³ad | PM000 | Zespó³-K | Blok | Wysoki | Pakiet | L2 | Rev A |  |
| 16TC84-160 |  | KM: Zakoñczenie monta¿u – Rozdzielnia SN | milestone | 0d | 2026-08-25 A | 2026-08-25 | 16TC84-151, 16TC84-156, 16TC84-158, 16TC84-159, 16TC84-014 | 100% | 2026-08-24 |  |  |  | Automaty | 16TC84 | Mechanic | Budowa | Kamieñ | Joanna | Uk³ad | PM000 | Zespó³-K | Blok | Normalny | Pakiet | L2 |  | Czeka na dostawê |
|  | ROBOTY BUD | **Roboty budowlane** |  |  | 2025-10-20 | 2026-01-07 |  |  |  |  |  |  |  |  |  |  |  |  |  |  |  |  |  |  |  |  |  |
| 16TC84-012 |  | Fundamenty i roboty ziemne |  | 56d | 2025-10-20 A | 2026-01-07 A | 16TC84-007 FS+8d | 100% |  | 2025-10-15 | 2025-12-31 |  | Automaty | 16TC84 | Budowlan | Budowa | Roboty | Joanna | Uk³ad | PM000 | Zespó³-K | Blok | Krytyczn | Pakiet | L2 | Rev A |  |
|  | RUROCI¥GI | **Ruroci¹gi** |  |  | 2025-12-31 | 2026-08-26 |  |  |  |  |  |  |  |  |  |  |  |  |  |  |  |  |  |  |  |  |  |
|  | SEKCJA 01 | **Sekcja 01** |  |  | 2025-12-31 | 2026-04-13 |  |  |  |  |  |  |  |  |  |  |  |  |  |  |  |  |  |  |  |  |  |
| 16TC84-015 |  | Prefabrykacja ruroci¹gów – Sekcja 01 |  | 13.6d | 2025-12-31 A | 2026-01-19 A | 16TC84-012 | 100% |  | 2026-01-01 | 2026-01-19 |  | Automaty | 16TC84 | Ruroci¹g | Budowa | Roboty | Joanna | Uk³ad | PM000 | Zespó³-K | Blok | Niski | Pakiet | L2 |  |  |
| 16TC84-016 |  | Monta¿ ruroci¹gów – Sekcja 01 |  | 16.1d | 2026-02-27 A | 2026-03-24 A | 16TC84-015, 16TC84-014 SS+1d | 100% |  | 2026-02-25 | 2026-03-18 |  | Automaty | 16TC84 | Ruroci¹g | Budowa | Roboty | Joanna | Uk³ad | PM000 | Zespó³-K | Blok | Normalny | Pakiet | L2 |  | Ryzyko opóŸnienia |
| 16TC84-017 |  | Próba ciœnieniowa – Sekcja 01 |  | 4d | 2026-03-19 A | 2026-03-25 A | 16TC84-016 | 100% |  | 2026-03-19 | 2026-03-24 |  | Automaty | 16TC84 | Ruroci¹g | Budowa | Roboty | Joanna | Uk³ad | PM100 | Zespó³-I | Blok | Normalny | Pakiet | L2 |  |  |
| 16TC84-018 |  | Izolacje – Sekcja 01 |  | 6d | 2026-03-27 A | 2026-04-07 A | 16TC84-017 | 100% |  | 2026-03-25 | 2026-04-01 |  | Automaty | 16TC84 | Ruroci¹g | Budowa | Roboty | Joanna | Uk³ad | PM000 | Zespó³-K | Blok | Niski | Pakiet | L2 |  | Bez uwag |
| 16TC84-019 |  | Malowanie i oznakowanie – Sekcja 01 |  | 2d | 2026-04-07 A | 2026-04-13 A | 16TC84-018 FF+2d | 100% |  | 2026-04-02 | 2026-04-03 |  | Automaty | 16TC84 | Ruroci¹g | Budowa | Roboty | Joanna | Uk³ad | PM000 | Zespó³-W | Blok | Normalny | Pakiet | L2 | Rev B |  |
|  | SEKCJA 02 | **Sekcja 02** |  |  | 2026-01-07 | 2026-04-17 |  |  |  |  |  |  |  |  |  |  |  |  |  |  |  |  |  |  |  |  |  |
| 16TC84-020 |  | Prefabrykacja ruroci¹gów – Sekcja 02 |  | 13.4d | 2026-01-07 A | 2026-01-23 A | 16TC84-012, 16TC84-015 SS+5d | 100% |  | 2026-01-08 | 2026-01-26 |  | Automaty | 16TC84 | Ruroci¹g | Budowa | Roboty | Joanna | Uk³ad | PM000 | Zespó³-W | Blok | Normalny | Pakiet | L2 |  |  |
| 16TC84-021 |  | Monta¿ ruroci¹gów – Sekcja 02 |  | 17.8d | 2026-03-06 A | 2026-03-31 A | 16TC84-020, 16TC84-014 SS+9d | 100% |  | 2026-03-09 | 2026-03-31 |  | Automaty | 16TC84 | Ruroci¹g | Budowa | Roboty | Joanna | Uk³ad | PM000 | Zespó³-W | Blok | Normalny | Pakiet | L2 | Rev A |  |
| 16TC84-022 |  | Próba ciœnieniowa – Sekcja 02 |  | 4d | 2026-04-06 A | 2026-04-13 A | 16TC84-021 | 100% |  | 2026-04-01 | 2026-04-06 |  | Automaty | 16TC84 | Ruroci¹g | Budowa | Roboty | Joanna | Uk³ad | PM000 | Zespó³-K | Blok | Normalny | Pakiet | L2 |  |  |
| 16TC84-023 |  | Izolacje – Sekcja 02 |  | 6d | 2026-04-09 A | 2026-04-16 A | 16TC84-022 | 100% |  | 2026-04-07 | 2026-04-14 |  | Automaty | 16TC84 | Ruroci¹g | Budowa | Roboty | Joanna | Uk³ad | PM000 | Zespó³-W | Blok | Wysoki | Pakiet | L2 |  | Ryzyko opóŸnienia |
| 16TC84-024 |  | Malowanie i oznakowanie – Sekcja 02 |  | 3d | 2026-04-13 A | 2026-04-17 A | 16TC84-023 FF+2d | 100% |  | 2026-04-14 | 2026-04-16 |  | Automaty | 16TC84 | Ruroci¹g | Budowa | Roboty | Joanna | Uk³ad | PM000 | Zespó³-W | Blok | Wysoki | Pakiet | L2 |  | Do weryfikacji z wykonawc¹ |
|  | SEKCJA 03 | **Sekcja 03** |  |  | 2026-01-19 | 2026-04-09 |  |  |  |  |  |  |  |  |  |  |  |  |  |  |  |  |  |  |  |  |  |
|  | PODSEKCJA | **Podsekcja 03.A** |  |  | 2026-01-19 | 2026-04-09 |  |  |  |  |  |  |  |  |  |  |  |  |  |  |  |  |  |  |  |  |  |
| 16TC84-027 |  | Prefabrykacja ruroci¹gów – Sekcja 03 |  | 4.6d | 2026-01-19 A | 2026-01-27 A | 16TC84-012, 16TC84-020 SS+5d | 100% |  | 2026-01-15 | 2026-01-20 |  | Automaty | 16TC84 | Ruroci¹g | Budowa | Roboty | Joanna | Uk³ad | PM000 | Zespó³-W | Blok | Wysoki | Pakiet | L2 |  | Uzgodnione na koordynacji |
| 16TC84-028 |  | Monta¿ ruroci¹gów – Sekcja 03 |  | 16d | 2026-03-02 A | 2026-03-26 A | 16TC84-027, 16TC84-014 SS+4d | 100% |  | 2026-03-02 | 2026-03-23 |  | Automaty | 16TC84 | Ruroci¹g | Budowa | Roboty | Joanna | Uk³ad | PM000 | Zespó³-W | Blok | Krytyczn | Pakiet | L2 |  |  |
| 16TC84-029 |  | Próba ciœnieniowa – Sekcja 03 |  | 6d | 2026-03-27 A | 2026-04-07 A | 16TC84-028 | 100% |  | 2026-03-24 | 2026-03-31 | Kalendarz 6-dniowy | Automaty | 16TC84 | Ruroci¹g | Budowa | Roboty | Joanna | Uk³ad | PM000 | Zespó³-K | Blok | Wysoki | Pakiet | L2 |  |  |
| 16TC84-031 |  | Malowanie i oznakowanie – Sekcja 03 |  | 4d | 2026-04-02 A | 2026-04-08 A | 16TC84-030 FF+2d | 100% |  | 2026-04-02 | 2026-04-07 |  | Automaty | 16TC84 | Ruroci¹g | Budowa | Roboty | Joanna | Uk³ad | PM000 | Zespó³-W | Blok | Normalny | Pakiet | L2 | Rev A |  |
| 16TC84-030 |  | Izolacje – Sekcja 03 |  | 3d | 2026-04-06 A | 2026-04-09 A | 16TC84-029 | 100% |  | 2026-04-01 | 2026-04-03 |  | Automaty | 16TC84 | Ruroci¹g | Budowa | Roboty | Joanna | Uk³ad | PM000 | Zespó³-W | Blok | Normalny | Pakiet | L2 |  | Uzgodnione na koordynacji |

| ID | WBS | Activity | Duration | Start | Finish | Predecessors | Complete | Planned start | Planned finish | Calendar | AC_Wykonawca | AC_Obiekt | AC_Dyscyplina | AC_Faza | AC_Zakres | AC_Opiekun | AC_Obszar | AC_PP_PM | AC_Zespol | AC_Blok | AC_Priorytet | AC_Pakiet | AC_Poziom | Rewizja dokumentu | Uwagi harmonogramisty |
| --- | --- | --- | --- | --- | --- | --- | --- | --- | --- | --- | --- | --- | --- | --- | --- | --- | --- | --- | --- | --- | --- | --- | --- | --- | --- |
|  | SEKCJA 04 | **Sekcja 04** |  | 2026-01-23 | 2026-04-27 |  |  |  |  |  |  |  |  |  |  |  |  |  |  |  |  |  |  |  |  |
| 16TC84-032 |  | Prefabrykacja ruroci¹gów – Sekcja 04 | 7.2d | 2026-01-23 A | 2026-02-04 A | 16TC84-012, 16TC84-027 SS+5d | 100% | 2026-01-22 | 2026-01-30 |  | Automaty | 16TC84 | Ruroci¹g | Budowa | Roboty | Joanna | Uk³ad | PM000 | Zespó³-W | Blok | Normalny | Pakiet | L2 |  |  |
| 16TC84-033 |  | Monta¿ ruroci¹gów – Sekcja 04 | 11.7d | 2026-03-09 A | 2026-03-23 A | 16TC84-032, 16TC84-014 SS+9d | 100% |  |  |  | Automaty | 16TC84 | Ruroci¹g | Budowa | Roboty | Joanna | Uk³ad | PM000 | Zespó³-K | Blok | Normalny | Pakiet | L2 |  |  |
| 16TC84-034 |  | Próba ciœnieniowa – Sekcja 04 | 6d | 2026-03-23 A | 2026-03-31 A | 16TC84-033 | 100% | 2026-03-24 | 2026-03-31 | Kalendarz 6-dniowy | Automaty | 16TC84 | Ruroci¹g | Budowa | Roboty | Joanna | Uk³ad | PM000 | Zespó³-W | Blok | Normalny | Pakiet | L2 |  |  |
| 16TC84-035 |  | Izolacje – Sekcja 04 | 12d | 2026-03-31 A | 2026-04-15 A | 16TC84-034 | 100% | 2026-04-01 | 2026-04-16 |  | Automaty | 16TC84 | Ruroci¹g | Budowa | Roboty | Joanna | Uk³ad | PM300 | Zespó³-E | Blok | Normalny | Pakiet | L2 | Rev A |  |
| 16TC84-036 |  | Malowanie i oznakowanie – Sekcja 04 | 8d | 2026-04-13 A | 2026-04-27 A | 16TC84-035 FF+2d | 100% | 2026-04-09 | 2026-04-20 |  | Automaty | 16TC84 | Ruroci¹g | Budowa | Roboty | Joanna | Uk³ad | PM000 | Zespó³-K | Blok | Wysoki | Pakiet | L2 | Rev C |  |
|  | SEKCJA 05 | **Sekcja 05** |  | 2026-01-28 | 2026-03-26 |  |  |  |  |  |  |  |  |  |  |  |  |  |  |  |  |  |  |  |  |
| 16TC84-039 |  | Prefabrykacja ruroci¹gów – Sekcja 05 | 11d | 2026-01-28 A | 2026-02-12 A | 16TC84-012, 16TC84-032 SS+5d | 100% | 2026-01-29 | 2026-02-12 |  | Automaty | 16TC84 | Ruroci¹g | Budowa | Roboty | Joanna | Uk³ad | PM000 | Zespó³-K | Blok | Normalny | Pakiet | L2 |  |  |
| 16TC84-040 |  | Monta¿ ruroci¹gów – Sekcja 05 | 5.3d | 2026-03-03 A | 2026-03-11 A | 16TC84-039, 16TC84-014 SS+4d | 100% | 2026-03-02 | 2026-03-06 |  | Automaty | 16TC84 | Ruroci¹g | Budowa | Roboty | Joanna | Uk³ad | PM000 | Zespó³-K | Blok | Normalny | Pakiet | L2 |  |  |
| 16TC84-041 |  | Próba ciœnieniowa – Sekcja 05 | 6d | 2026-03-06 A | 2026-03-13 A | 16TC84-040 | 100% | 2026-03-09 | 2026-03-16 |  | Automaty | 16TC84 | Ruroci¹g | Budowa | Roboty | Joanna | Uk³ad | PM000 | Zespó³-W | Blok | Normalny | Pakiet | L2 | Rev C |  |
| 16TC84-043 |  | Malowanie i oznakowanie – Sekcja 05 | 8d | 2026-03-13 A | 2026-03-26 A | 16TC84-042 FF+2d | 100% | 2026-03-16 | 2026-03-25 |  | Automaty | 16TC84 | Ruroci¹g | Budowa | Roboty | Joanna | Uk³ad | PM100 | Zespó³-E | Blok | Normalny | Pakiet | L2 |  | Do weryfikacji z wykonawc¹ |
| 16TC84-042 |  | Izolacje – Sekcja 05 | 5d | 2026-03-17 A | 2026-03-23 A | 16TC84-041 | 100% |  |  |  | Automaty | 16TC84 | Ruroci¹g | Budowa | Roboty | Joanna | Uk³ad | PM300 | Zespó³-I | Blok | Normalny | Pakiet | L2 |  |  |
|  | SEKCJA 06 | **Sekcja 06** |  | 2026-02-10 | 2026-04-13 |  |  |  |  |  |  |  |  |  |  |  |  |  |  |  |  |  |  |  |  |
|  | PODSEKCJA | **Podsekcja 06.A** |  | 2026-02-10 | 2026-04-13 |  |  |  |  |  |  |  |  |  |  |  |  |  |  |  |  |  |  |  |  |
| 16TC84-044 |  | Prefabrykacja ruroci¹gów – Sekcja 06 | 10d | 2026-02-10 A | 2026-02-25 A | 16TC84-012, 16TC84-039 SS+5d | 100% | 2026-02-05 | 2026-02-18 |  | Automaty | 16TC84 | Ruroci¹g | Budowa | Roboty | Joanna | Uk³ad | PM200 | Zespó³-E | Blok | Normalny | Pakiet | L2 | Rev A |  |
| 16TC84-045 |  | Monta¿ ruroci¹gów – Sekcja 06 | 17.9d | 2026-03-02 A | 2026-03-26 A | 16TC84-044, 16TC84-014 SS+4d | 100% | 2026-03-02 | 2026-03-24 |  | Automaty | 16TC84 | Ruroci¹g | Budowa | Roboty | Joanna | Uk³ad | PM200 | Zespó³-E | Blok | Normalny | Pakiet | L2 |  |  |
| 16TC84-046 |  | Próba ciœnieniowa – Sekcja 06 | 5d | 2026-03-25 A | 2026-04-01 A | 16TC84-045 | 100% | 2026-03-25 | 2026-03-31 |  | Automaty | 16TC84 | Ruroci¹g | Budowa | Roboty | Joanna | Uk³ad | PM000 | Zespó³-K | Blok | Wysoki | Pakiet | L2 |  |  |
| 16TC84-047 |  | Izolacje – Sekcja 06 | 7d | 2026-03-31 A | 2026-04-09 A | 16TC84-046 | 100% | 2026-04-01 | 2026-04-09 |  | Automaty | 16TC84 | Ruroci¹g | Budowa | Roboty | Joanna | Uk³ad | PM000 | Zespó³-W | Blok | Normalny | Pakiet | L2 |  |  |
| 16TC84-048 |  | Malowanie i oznakowanie – Sekcja 06 | 2d | 2026-04-09 A | 2026-04-13 A | 16TC84-047 FF+2d | 100% | 2026-04-10 | 2026-04-13 |  | Automaty | 16TC84 | Ruroci¹g | Budowa | Roboty | Joanna | Uk³ad | PM000 | Zespó³-K | Blok | Wysoki | Pakiet | L2 |  |  |
|  | SEKCJA 07 | **Sekcja 07** |  | 2026-02-13 | 2026-05-04 |  |  |  |  |  |  |  |  |  |  |  |  |  |  |  |  |  |  |  |  |
| 16TC84-051 |  | Prefabrykacja ruroci¹gów – Sekcja 07 | 12.5d | 2026-02-13 A | 2026-03-05 A | 16TC84-012, 16TC84-044 SS+5d | 100% | 2026-02-12 | 2026-02-27 |  | Automaty | 16TC84 | Ruroci¹g | Budowa | Roboty | Joanna | Uk³ad | PM000 | Zespó³-K | Blok | Normalny | Pakiet | L2 |  |  |
| 16TC84-052 |  | Monta¿ ruroci¹gów – Sekcja 07 | 24.6d | 2026-03-02 A | 2026-04-07 A | 16TC84-051, 16TC84-014 SS+4d | 100% | 2026-03-02 | 2026-04-03 |  | Automaty | 16TC84 | Ruroci¹g | Budowa | Roboty | Joanna | Uk³ad | PM000 | Zespó³-K | Blok | Wysoki | Pakiet | L2 |  |  |
| 16TC84-053 |  | Próba ciœnieniowa – Sekcja 07 | 5d | 2026-04-07 A | 2026-04-15 A | 16TC84-052 | 100% | 2026-04-06 | 2026-04-10 |  | Automaty | 16TC84 | Ruroci¹g | Budowa | Roboty | Joanna | Uk³ad | PM000 | Zespó³-K | Blok | Normalny | Pakiet | L2 | Rev C |  |
| 16TC84-054 |  | Izolacje – Sekcja 07 | 12d | 2026-04-16 A | 2026-05-04 A | 16TC84-053 | 100% | 2026-04-13 | 2026-04-28 |  | Automaty | 16TC84 | Ruroci¹g | Budowa | Roboty | Joanna | Uk³ad | PM300 | Zespó³-E | Blok | Normalny | Pakiet | L2 |  |  |
| 16TC84-055 |  | Malowanie i oznakowanie – Sekcja 07 | 4d | 2026-04-29 A | 2026-05-04 A | 16TC84-054 FF+2d | 100% | 2026-04-27 | 2026-04-30 |  | Automaty | 16TC84 | Ruroci¹g | Budowa | Roboty | Joanna | Uk³ad | PM000 | Zespó³-W | Blok | Normalny | Pakiet | L2 |  |  |

| ID | WBS | Activity | Duration | Start | Finish | Predecessors | Complete | Planned start | Planned finish | Rewizja dokumentu | AC_Wykonawca | AC_Obiekt | AC_Dyscyplina | AC_Faza | AC_Zakres | AC_Opiekun | AC_Obszar | AC_PP_PM | AC_Zespol | AC_Blok | AC_Priorytet | AC_Pakiet | AC_Poziom | Uwagi harmonogramisty |
| --- | --- | --- | --- | --- | --- | --- | --- | --- | --- | --- | --- | --- | --- | --- | --- | --- | --- | --- | --- | --- | --- | --- | --- | --- |
|  | SEKCJA 08 | **Sekcja 08** |  | 2026-02-24 | 2026-04-03 |  |  |  |  |  |  |  |  |  |  |  |  |  |  |  |  |  |  |  |
| 16TC84-056 |  | Prefabrykacja ruroci¹gów – Sekcja 08 | 3.4d | 2026-02-24 A | 2026-03-02 A | 16TC84-012, 16TC84-051 SS+5d | 100% | 2026-02-19 | 2026-02-23 | Rev C | Automaty | 16TC84 | Ruroci¹g | Budowa | Roboty | Joanna | Uk³ad | PM000 | Zespó³-I | Blok | Normalny | Pakiet | L2 |  |
| 16TC84-057 |  | Monta¿ ruroci¹gów – Sekcja 08 | 5.5d | 2026-03-06 A | 2026-03-12 A | 16TC84-056, 16TC84-014 SS+7d | 100% | 2026-03-05 | 2026-03-11 | Rev C | Automaty | 16TC84 | Ruroci¹g | Budowa | Roboty | Joanna | Uk³ad | PM000 | Zespó³-K | Blok | Normalny | Pakiet | L2 |  |
| 16TC84-058 |  | Próba ciœnieniowa – Sekcja 08 | 6d | 2026-03-12 A | 2026-03-23 A | 16TC84-057 | 100% | 2026-03-12 | 2026-03-19 |  | Automaty | 16TC84 | Ruroci¹g | Budowa | Roboty | Joanna | Uk³ad | PM000 | Zespó³-W | Blok | Normalny | Pakiet | L2 | Czeka na dostawê |
| 16TC84-059 |  | Izolacje – Sekcja 08 | 7d | 2026-03-23 A | 2026-04-02 A | 16TC84-058 | 100% | 2026-03-20 | 2026-03-30 |  | Automaty | 16TC84 | Ruroci¹g | Budowa | Roboty | Joanna | Uk³ad | PM000 | Zespó³-K | Blok | Wysoki | Pakiet | L2 | Uzgodnione na koordynacji |
| 16TC84-060 |  | Malowanie i oznakowanie – Sekcja 08 | 4d | 2026-03-30 A | 2026-04-03 A | 16TC84-059 FF+2d | 100% | 2026-03-27 | 2026-04-01 | Rev B | Automaty | 16TC84 | Ruroci¹g | Budowa | Roboty | Joanna | Uk³ad | PM200 | Zespó³-E | Blok | Wysoki | Pakiet | L2 | Ryzyko opóŸnienia |
|  | SEKCJA 09 | **Sekcja 09** |  | 2026-02-25 | 2026-04-10 |  |  |  |  |  |  |  |  |  |  |  |  |  |  |  |  |  |  |  |
|  | PODSEKCJA | **Podsekcja 09.A** |  | 2026-02-25 | 2026-04-10 |  |  |  |  |  |  |  |  |  |  |  |  |  |  |  |  |  |  |  |
| 16TC84-063 |  | Prefabrykacja ruroci¹gów – Sekcja 09 | 3.3d | 2026-02-25 A | 2026-02-27 A | 16TC84-012, 16TC84-056 SS+5d | 100% | 2026-02-26 | 2026-03-02 |  | Automaty | 16TC84 | Ruroci¹g | Budowa | Roboty | Joanna | Uk³ad | PM000 | Zespó³-W | Blok | Normalny | Pakiet | L2 |  |
| 16TC84-064 |  | Monta¿ ruroci¹gów – Sekcja 09 | 14.9d | 2026-03-05 A | 2026-03-30 A | 16TC84-063, 16TC84-014 SS+5d | 100% | 2026-03-03 | 2026-03-23 |  | Automaty | 16TC84 | Ruroci¹g | Budowa | Roboty | Joanna | Uk³ad | PM200 | Zespó³-E | Blok | Normalny | Pakiet | L2 |  |
| 16TC84-065 |  | Próba ciœnieniowa – Sekcja 09 | 5d | 2026-03-25 A | 2026-04-02 A | 16TC84-064 | 100% | 2026-03-24 | 2026-03-30 | Rev A | Automaty | 16TC84 | Ruroci¹g | Budowa | Roboty | Joanna | Uk³ad | PM000 | Zespó³-W | Blok | Normalny | Pakiet | L2 |  |
| 16TC84-066 |  | Izolacje – Sekcja 09 | 5d | 2026-04-01 A | 2026-04-10 A | 16TC84-065 | 100% | 2026-03-31 | 2026-04-06 | Rev B | Automaty | 16TC84 | Ruroci¹g | Budowa | Roboty | Joanna | Uk³ad | PM000 | Zespó³-K | Blok | Wysoki | Pakiet | L2 |  |
| 16TC84-067 |  | Malowanie i oznakowanie – Sekcja 09 | 2d | 2026-04-09 A | 2026-04-10 A | 16TC84-066 FF+2d | 100% | 2026-04-07 | 2026-04-08 |  | Automaty | 16TC84 | Ruroci¹g | Budowa | Roboty | Joanna | Uk³ad | PM000 | Zespó³-W | Blok | Normalny | Pakiet | L2 |  |
|  | SEKCJA 10 | **Sekcja 10** |  | 2026-03-04 | 2026-04-29 |  |  |  |  |  |  |  |  |  |  |  |  |  |  |  |  |  |  |  |
| 16TC84-068 |  | Prefabrykacja ruroci¹gów – Sekcja 10 | 7.1d | 2026-03-04 A | 2026-03-13 A | 16TC84-012, 16TC84-063 SS+5d | 100% | 2026-03-05 | 2026-03-13 | Rev B | Automaty | 16TC84 | Ruroci¹g | Budowa | Roboty | Joanna | Uk³ad | PM000 | Zespó³-W | Blok | Normalny | Pakiet | L2 |  |
| 16TC84-069 |  | Monta¿ ruroci¹gów – Sekcja 10 | 19.6d | 2026-03-17 A | 2026-04-14 A | 16TC84-068, 16TC84-014 SS+5d | 100% | 2026-03-16 | 2026-04-09 |  | Automaty | 16TC84 | Ruroci¹g | Budowa | Roboty | Joanna | Uk³ad | PM000 | Zespó³-K | Blok | Niski | Pakiet | L2 |  |
| 16TC84-070 |  | Próba ciœnieniowa – Sekcja 10 | 3d | 2026-04-10 A | 2026-04-17 A | 16TC84-069 | 100% | 2026-04-10 | 2026-04-14 |  | Automaty | 16TC84 | Ruroci¹g | Budowa | Roboty | Joanna | Uk³ad | PM000 | Zespó³-K | Blok | Wysoki | Pakiet | L2 |  |
| 16TC84-071 |  | Izolacje – Sekcja 10 | 3d | 2026-04-15 A | 2026-04-20 A | 16TC84-070 | 100% | 2026-04-15 | 2026-04-17 |  | Automaty | 16TC84 | Ruroci¹g | Budowa | Roboty | Joanna | Uk³ad | PM300 | Zespó³-E | Blok | Normalny | Pakiet | L2 |  |
| 16TC84-072 |  | Malowanie i oznakowanie – Sekcja 10 | 8d | 2026-04-15 A | 2026-04-29 A | 16TC84-071 FF+2d | 100% | 2026-04-10 | 2026-04-21 |  | Automaty | 16TC84 | Ruroci¹g | Budowa | Roboty | Joanna | Uk³ad | PM000 | Zespó³-W | Blok | Wysoki | Pakiet | L2 |  |
|  | SEKCJA 11 | **Sekcja 11** |  | 2026-03-13 | 2026-04-24 |  |  |  |  |  |  |  |  |  |  |  |  |  |  |  |  |  |  |  |
| 16TC84-075 |  | Prefabrykacja ruroci¹gów – Sekcja 11 | 6.4d | 2026-03-13 A | 2026-03-23 A | 16TC84-012, 16TC84-068 SS+5d | 100% | 2026-03-12 | 2026-03-19 | Rev C | Automaty | 16TC84 | Ruroci¹g | Budowa | Roboty | Joanna | Uk³ad | PM000 | Zespó³-K | Blok | Normalny | Pakiet | L2 | Bez uwag |
| 16TC84-076 |  | Monta¿ ruroci¹gów – Sekcja 11 | 10.6d | 2026-03-20 A | 2026-04-07 A | 16TC84-075, 16TC84-014 SS+8d | 100% | 2026-03-20 | 2026-04-03 |  | Automaty | 16TC84 | Ruroci¹g | Budowa | Roboty | Joanna | Uk³ad | PM000 | Zespó³-K | Blok | Normalny | Pakiet | L2 | Do weryfikacji z wykonawc¹ |
| 16TC84-077 |  | Próba ciœnieniowa – Sekcja 11 | 5d | 2026-04-07 A | 2026-04-15 A | 16TC84-076 | 100% | 2026-04-06 | 2026-04-10 | Rev C | Automaty | 16TC84 | Ruroci¹g | Budowa | Roboty | Joanna | Uk³ad | PM000 | Zespó³-K | Blok | Normalny | Pakiet | L2 |  |
| 16TC84-078 |  | Izolacje – Sekcja 11 | 5d | 2026-04-15 A | 2026-04-24 A | 16TC84-077 | 100% | 2026-04-13 | 2026-04-17 |  | Automaty | 16TC84 | Ruroci¹g | Budowa | Roboty | Joanna | Uk³ad | PM000 | Zespó³-W | Blok | Wysoki | Pakiet | L2 |  |
| 16TC84-079 |  | Malowanie i oznakowanie – Sekcja 11 | 2d | 2026-04-21 A | 2026-04-24 A | 16TC84-078 FF+2d | 100% | 2026-04-20 | 2026-04-21 |  | Automaty | 16TC84 | Ruroci¹g | Budowa | Roboty | Joanna | Uk³ad | PM100 | Zespó³-E | Blok | Normalny | Pakiet | L2 |  |

| ID | WBS | Activity | Duration | Start | Finish | Predecessors | Complete | Planned start | Planned finish | Calendar | AC_Wykonawca | AC_Obiekt | AC_Dyscyplina | AC_Faza | AC_Zakres | AC_Opiekun | AC_Obszar | AC_PP_PM | AC_Zespol | AC_Blok | AC_Priorytet | AC_Pakiet | AC_Poziom | Uwagi harmonogramisty | Rewizja dokumentu |
| --- | --- | --- | --- | --- | --- | --- | --- | --- | --- | --- | --- | --- | --- | --- | --- | --- | --- | --- | --- | --- | --- | --- | --- | --- | --- |
|  | SEKCJA 12 | **Sekcja 12** |  | 2026-03-19 | 2026-05-12 |  |  |  |  |  |  |  |  |  |  |  |  |  |  |  |  |  |  |  |  |
|  | PODSEKCJA | **Podsekcja 12.A** |  | 2026-03-19 | 2026-05-12 |  |  |  |  |  |  |  |  |  |  |  |  |  |  |  |  |  |  |  |  |
| 16TC84-080 |  | Prefabrykacja ruroci¹gów – Sekcja 12 | 10.3d | 2026-03-19 A | 2026-04-06 A | 16TC84-012, 16TC84-075 SS+5d | 100% | 2026-03-19 | 2026-04-01 |  | Automaty | 16TC84 | Ruroci¹g | Budowa | Roboty | Joanna | Uk³ad | PM000 | Zespó³-E | Blok | Normalny | Pakiet | L2 |  |  |
| 16TC84-081 |  | Monta¿ ruroci¹gów – Sekcja 12 | 11.3d | 2026-04-01 A | 2026-04-17 A | 16TC84-080, 16TC84-014 SS+6d | 100% | 2026-04-02 | 2026-04-16 |  | Automaty | 16TC84 | Ruroci¹g | Budowa | Roboty | Joanna | Uk³ad | PM000 | Zespó³-K | Blok | Normalny | Pakiet | L2 | Ryzyko opóŸnienia | Rev C |
| 16TC84-082 |  | Próba ciœnieniowa – Sekcja 12 | 2d | 2026-04-17 A | 2026-04-20 A | 16TC84-081 | 100% |  |  |  | Automaty | 16TC84 | Ruroci¹g | Budowa | Roboty | Joanna | Uk³ad | PM000 | Zespó³-E | Blok | Normalny | Pakiet | L2 | Bez uwag | Rev C |
| 16TC84-083 |  | Izolacje – Sekcja 12 | 12d | 2026-04-23 A | 2026-05-12 A | 16TC84-082 | 100% | 2026-04-21 | 2026-05-06 | Kalendarz 6-dniowy | Automaty | 16TC84 | Ruroci¹g | Budowa | Roboty | Joanna | Uk³ad | PM000 | Zespó³-K | Blok | Normalny | Pakiet | L2 |  |  |
| 16TC84-084 |  | Malowanie i oznakowanie – Sekcja 12 | 4d | 2026-05-04 A | 2026-05-08 A | 16TC84-083 FF+2d | 100% | 2026-05-05 | 2026-05-08 | Kalendarz 6-dniowy | Automaty | 16TC84 | Ruroci¹g | Budowa | Roboty | Joanna | Uk³ad | PM000 | Zespó³-K | Blok | Wysoki | Pakiet | L2 | Do weryfikacji z wykonawc¹ | Rev C |
|  | SEKCJA 13 | **Sekcja 13** |  | 2026-03-27 | 2026-06-04 |  |  |  |  |  |  |  |  |  |  |  |  |  |  |  |  |  |  |  |  |
| 16TC84-087 |  | Prefabrykacja ruroci¹gów – Sekcja 13 | 11.3d | 2026-03-27 A | 2026-04-14 A | 16TC84-012, 16TC84-080 SS+5d | 100% | 2026-03-26 | 2026-04-09 |  | Automaty | 16TC84 | Ruroci¹g | Budowa | Roboty | Joanna | Uk³ad | PM000 | Zespó³-K | Blok | Normalny | Pakiet | L2 |  |  |
| 16TC84-088 |  | Monta¿ ruroci¹gów – Sekcja 13 | 22.4d | 2026-04-09 A | 2026-05-13 A | 16TC84-087, 16TC84-014 SS+8d | 100% | 2026-04-10 | 2026-05-11 | Kalendarz 6-dniowy | Automaty | 16TC84 | Ruroci¹g | Budowa | Roboty | Joanna | Uk³ad | PM000 | Zespó³-K | Blok | Normalny | Pakiet | L2 |  | Rev B |
| 16TC84-089 |  | Próba ciœnieniowa – Sekcja 13 | 4d | 2026-05-11 A | 2026-05-14 A | 16TC84-088 | 100% | 2026-05-12 | 2026-05-15 |  | Automaty | 16TC84 | Ruroci¹g | Budowa | Roboty | Joanna | Uk³ad | PM000 | Zespó³-K | Blok | Normalny | Pakiet | L2 | Ryzyko opóŸnienia |  |
| 16TC84-090 |  | Izolacje – Sekcja 13 | 10d | 2026-05-18 A | 2026-05-29 A | 16TC84-089 | 100% |  |  |  | Automaty | 16TC84 | Ruroci¹g | Budowa | Roboty | Joanna | Uk³ad | PM000 | Zespó³-K | Blok | Normalny | Pakiet | L2 |  | Rev B |
| 16TC84-091 |  | Malowanie i oznakowanie – Sekcja 13 | 7d | 2026-05-26 A | 2026-06-04 A | 16TC84-090 FF+2d | 100% | 2026-05-25 | 2026-06-02 | Kalendarz 6-dniowy | Automaty | 16TC84 | Ruroci¹g | Budowa | Roboty | Joanna | Uk³ad | PM000 | Zespó³-W | Blok | Wysoki | Pakiet | L2 | Bez uwag | Rev A |
|  | SEKCJA 14 | **Sekcja 14** |  | 2026-04-03 | 2026-06-12 |  |  |  |  |  |  |  |  |  |  |  |  |  |  |  |  |  |  |  |  |
| 16TC84-092 |  | Prefabrykacja ruroci¹gów – Sekcja 14 | 12.4d | 2026-04-03 A | 2026-04-20 A | 16TC84-012, 16TC84-087 SS+5d | 100% | 2026-04-02 | 2026-04-17 |  | Automaty | 16TC84 | Ruroci¹g | Budowa | Roboty | Joanna | Uk³ad | PM000 | Zespó³-E | Blok | Normalny | Pakiet | L2 |  |  |
| 16TC84-093 |  | Monta¿ ruroci¹gów – Sekcja 14 | 20.6d | 2026-04-22 A | 2026-05-25 A | 16TC84-092, 16TC84-014 SS | 100% | 2026-04-20 | 2026-05-18 |  | Automaty | 16TC84 | Ruroci¹g | Budowa | Roboty | Joanna | Uk³ad | PM000 | Zespó³-W | Blok | Normalny | Pakiet | L2 |  | Rev C |
| 16TC84-094 |  | Próba ciœnieniowa – Sekcja 14 | 2d | 2026-05-19 A | 2026-05-21 A | 16TC84-093 | 100% | 2026-05-19 | 2026-05-20 |  | Automaty | 16TC84 | Ruroci¹g | Budowa | Roboty | Joanna | Uk³ad | PM300 | Zespó³-I | Blok | Normalny | Pakiet | L2 |  |  |
| 16TC84-095 |  | Izolacje – Sekcja 14 | 11d | 2026-05-21 A | 2026-06-05 A | 16TC84-094 | 100% | 2026-05-21 | 2026-06-04 |  | Automaty | 16TC84 | Ruroci¹g | Budowa | Roboty | Joanna | Uk³ad | PM000 | Zespó³-W | Blok | Normalny | Pakiet | L2 |  |  |
| 16TC84-096 |  | Malowanie i oznakowanie – Sekcja 14 | 7d | 2026-06-03 A | 2026-06-12 A | 16TC84-095 FF+2d | 100% | 2026-05-29 | 2026-06-08 |  | Automaty | 16TC84 | Ruroci¹g | Budowa | Roboty | Joanna | Uk³ad | PM000 | Zespó³-W | Blok | Niski | Pakiet | L2 |  |  |
|  | SEKCJA 15 | **Sekcja 15** |  | 2026-04-13 | 2026-05-25 |  |  |  |  |  |  |  |  |  |  |  |  |  |  |  |  |  |  |  |  |
|  | PODSEKCJA | **Podsekcja 15.A** |  | 2026-04-13 | 2026-05-25 |  |  |  |  |  |  |  |  |  |  |  |  |  |  |  |  |  |  |  |  |
| 16TC84-099 |  | Prefabrykacja ruroci¹gów – Sekcja 15 | 12d | 2026-04-13 A | 2026-04-30 A | 16TC84-012, 16TC84-092 SS+5d | 100% | 2026-04-09 | 2026-04-24 |  | Automaty | 16TC84 | Ruroci¹g | Budowa | Roboty | Joanna | Uk³ad | PM000 | Zespó³-W | Blok | Niski | Pakiet | L2 |  | Rev B |
| 16TC84-100 |  | Monta¿ ruroci¹gów – Sekcja 15 | 7.1d | 2026-04-30 A | 2026-05-12 A | 16TC84-099, 16TC84-014 SS+8d | 100% | 2026-04-27 | 2026-05-05 | Kalendarz 6-dniowy | Automaty | 16TC84 | Ruroci¹g | Budowa | Roboty | Joanna | Uk³ad | PM000 | Zespó³-I | Blok | Normalny | Pakiet | L2 |  |  |
| 16TC84-101 |  | Próba ciœnieniowa – Sekcja 15 | 5d | 2026-05-11 A | 2026-05-18 A | 16TC84-100 | 100% | 2026-05-06 | 2026-05-12 |  | Automaty | 16TC84 | Ruroci¹g | Budowa | Roboty | Joanna | Uk³ad | PM000 | Zespó³-W | Blok | Normalny | Pakiet | L2 | Do weryfikacji z wykonawc¹ |  |
| 16TC84-103 |  | Malowanie i oznakowanie – Sekcja 15 | 8d | 2026-05-14 A | 2026-05-25 A | 16TC84-102 FF+2d | 100% | 2026-05-13 | 2026-05-22 | Kalendarz 6-dniowy | Automaty | 16TC84 | Ruroci¹g | Budowa | Roboty | Joanna | Uk³ad | PM000 | Zespó³-W | Blok | Normalny | Pakiet | L2 | Bez uwag | Rev A |
| 16TC84-102 |  | Izolacje – Sekcja 15 | 6d | 2026-05-18 A | 2026-05-25 A | 16TC84-101 | 100% | 2026-05-13 | 2026-05-20 |  | Automaty | 16TC84 | Ruroci¹g | Budowa | Roboty | Joanna | Uk³ad | PM000 | Zespó³-W | Blok | Normalny | Pakiet | L2 |  | Rev C |

| ID | WBS | Activity | Duration | Start | Finish | Predecessors | Complete | Planned start | Planned finish | Calendar | AC_Wykonawca | AC_Obiekt | AC_Dyscyplina | AC_Faza | AC_Zakres | AC_Opiekun | AC_Obszar | AC_PP_PM | AC_Zespol | AC_Blok | AC_Priorytet | AC_Pakiet | AC_Poziom | Uwagi harmonogramisty | Rewizja dokumentu |
| --- | --- | --- | --- | --- | --- | --- | --- | --- | --- | --- | --- | --- | --- | --- | --- | --- | --- | --- | --- | --- | --- | --- | --- | --- | --- |
|  | SEKCJA 16 | **Sekcja 16** |  | 2026-04-21 | 2026-05-28 |  |  |  |  |  |  |  |  |  |  |  |  |  |  |  |  |  |  |  |  |
| 16TC84-104 |  | Prefabrykacja ruroci¹gów – Sekcja 16 | 9.6d | 2026-04-21 A | 2026-05-04 A | 16TC84-012, 16TC84-099 SS+5d | 100% | 2026-04-16 | 2026-04-28 |  | Automaty | 16TC84 | Ruroci¹g | Budowa | Roboty | Joanna | Uk³ad | PM000 | Zespó³-K | Blok | Normalny | Pakiet | L2 |  |  |
| 16TC84-105 |  | Monta¿ ruroci¹gów – Sekcja 16 | 6.9d | 2026-04-29 A | 2026-05-07 A | 16TC84-104, 16TC84-014 SS+3d | 100% |  |  |  | Automaty | 16TC84 | Ruroci¹g | Budowa | Roboty | Joanna | Uk³ad | PM000 | Zespó³-W | Blok | Normalny | Pakiet | L2 |  |  |
| 16TC84-106 |  | Próba ciœnieniowa – Sekcja 16 | 3d | 2026-05-08 A | 2026-05-13 A | 16TC84-105 | 100% | 2026-05-08 | 2026-05-12 |  | Automaty | 16TC84 | Ruroci¹g | Budowa | Roboty | Joanna | Uk³ad | PM000 | Zespó³-W | Blok | Normalny | Pakiet | L2 | Bez uwag |  |
| 16TC84-107 |  | Izolacje – Sekcja 16 | 8d | 2026-05-14 A | 2026-05-26 A | 16TC84-106 | 100% | 2026-05-13 | 2026-05-22 |  | Automaty | 16TC84 | Ruroci¹g | Budowa | Roboty | Joanna | Uk³ad | PM000 | Zespó³-K | Blok | Normalny | Pakiet | L2 | Czeka na dostawê | Rev B |
| 16TC84-108 |  | Malowanie i oznakowanie – Sekcja 16 | 4d | 2026-05-22 A | 2026-05-28 A | 16TC84-107 FF+2d | 100% | 2026-05-21 | 2026-05-26 | Kalendarz 6-dniowy | Automaty | 16TC84 | Ruroci¹g | Budowa | Roboty | Joanna | Uk³ad | PM000 | Zespó³-K | Blok | Niski | Pakiet | L2 |  |  |
|  | SEKCJA 17 | **Sekcja 17** |  | 2026-04-24 | 2026-07-06 |  |  |  |  |  |  |  |  |  |  |  |  |  |  |  |  |  |  |  |  |
| 16TC84-111 |  | Prefabrykacja ruroci¹gów – Sekcja 17 | 13.8d | 2026-04-24 A | 2026-05-13 A | 16TC84-012, 16TC84-104 SS+5d | 100% | 2026-04-23 | 2026-05-11 |  | Automaty | 16TC84 | Ruroci¹g | Budowa | Roboty | Joanna | Uk³ad | PM000 | Zespó³-K | Blok | Normalny | Pakiet | L2 | Bez uwag |  |
| 16TC84-112 |  | Monta¿ ruroci¹gów – Sekcja 17 | 17.7d | 2026-05-11 A | 2026-06-08 A | 16TC84-111, 16TC84-014 SS+9d | 100% | 2026-05-12 | 2026-06-04 |  | Automaty | 16TC84 | Ruroci¹g | Budowa | Roboty | Joanna | Uk³ad | PM000 | Zespó³-W | Blok | Normalny | Pakiet | L2 |  |  |
| 16TC84-113 |  | Próba ciœnieniowa – Sekcja 17 | 6d | 2026-06-10 A | 2026-06-18 A | 16TC84-112 | 100% | 2026-06-05 | 2026-06-12 |  | Automaty | 16TC84 | Ruroci¹g | Budowa | Roboty | Joanna | Uk³ad | PM000 | Zespó³-W | Blok | Normalny | Pakiet | L2 |  |  |
| 16TC84-114 |  | Izolacje – Sekcja 17 | 10d | 2026-06-16 A | 2026-07-02 A | 16TC84-113 | 100% | 2026-06-15 | 2026-06-26 |  | Automaty | 16TC84 | Ruroci¹g | Budowa | Roboty | Joanna | Uk³ad | PM000 | Zespó³-K | Blok | Niski | Pakiet | L2 |  |  |
| 16TC84-115 |  | Malowanie i oznakowanie – Sekcja 17 | 3d | 2026-06-30 A | 2026-07-06 A | 16TC84-114 FF+2d | 100% | 2026-06-26 | 2026-06-30 |  | Automaty | 16TC84 | Ruroci¹g | Budowa | Roboty | Joanna | Uk³ad | PM000 | Zespó³-W | Blok | Wysoki | Pakiet | L2 |  |  |
|  | SEKCJA 18 | **Sekcja 18** |  | 2026-04-30 | 2026-06-19 |  |  |  |  |  |  |  |  |  |  |  |  |  |  |  |  |  |  |  |  |
|  | PODSEKCJA | **Podsekcja 18.A** |  | 2026-04-30 | 2026-06-19 |  |  |  |  |  |  |  |  |  |  |  |  |  |  |  |  |  |  |  |  |
| 16TC84-116 |  | Prefabrykacja ruroci¹gów – Sekcja 18 | 7.1d | 2026-04-30 A | 2026-05-08 A | 16TC84-012, 16TC84-111 SS+5d | 100% |  |  |  | Automaty | 16TC84 | Ruroci¹g | Budowa | Roboty | Joanna | Uk³ad | PM000 | Zespó³-W | Blok | Wysoki | Pakiet | L2 |  |  |
| 16TC84-117 |  | Monta¿ ruroci¹gów – Sekcja 18 | 14.8d | 2026-05-14 A | 2026-06-02 A | 16TC84-116, 16TC84-014 SS+4d | 100% | 2026-05-11 | 2026-05-28 |  | Automaty | 16TC84 | Ruroci¹g | Budowa | Roboty | Joanna | Uk³ad | PM000 | Zespó³-W | Blok | Normalny | Pakiet | L2 |  |  |
| 16TC84-118 |  | Próba ciœnieniowa – Sekcja 18 | 2d | 2026-06-03 A | 2026-06-09 A | 16TC84-117 | 100% | 2026-05-29 | 2026-06-01 |  | Automaty | 16TC84 | Ruroci¹g | Budowa | Roboty | Joanna | Uk³ad | PM000 | Zespó³-K | Blok | Normalny | Pakiet | L2 |  |  |
| 16TC84-119 |  | Izolacje – Sekcja 18 | 8d | 2026-06-03 A | 2026-06-16 A | 16TC84-118 | 100% | 2026-06-02 | 2026-06-11 | Kalendarz 6-dniowy | Automaty | 16TC84 | Ruroci¹g | Budowa | Roboty | Joanna | Uk³ad | PM000 | Zespó³-K | Blok | Normalny | Pakiet | L2 | Do weryfikacji z wykonawc¹ |  |
| 16TC84-120 |  | Malowanie i oznakowanie – Sekcja 18 | 6d | 2026-06-11 A | 2026-06-19 A | 16TC84-119 FF+2d | 100% | 2026-06-08 | 2026-06-15 |  | Automaty | 16TC84 | Ruroci¹g | Budowa | Roboty | Joanna | Uk³ad | PM000 | Zespó³-K | Blok | Normalny | Pakiet | L2 |  |  |
|  | SEKCJA 19 | **Sekcja 19** |  | 2026-05-11 | 2026-06-24 |  |  |  |  |  |  |  |  |  |  |  |  |  |  |  |  |  |  |  |  |
| 16TC84-123 |  | Prefabrykacja ruroci¹gów – Sekcja 19 | 6.3d | 2026-05-11 A | 2026-05-18 A | 16TC84-012, 16TC84-116 SS+5d | 100% | 2026-05-07 | 2026-05-14 |  | Automaty | 16TC84 | Ruroci¹g | Budowa | Roboty | Joanna | Uk³ad | PM000 | Zespó³-W | Blok | Normalny | Pakiet | L2 |  |  |
| 16TC84-124 |  | Monta¿ ruroci¹gów – Sekcja 19 | 14.8d | 2026-05-14 A | 2026-06-04 A | 16TC84-123, 16TC84-014 SS+7d | 100% | 2026-05-15 | 2026-06-04 |  | Automaty | 16TC84 | Ruroci¹g | Budowa | Roboty | Joanna | Uk³ad | PM000 | Zespó³-K | Blok | Niski | Pakiet | L2 | Uzgodnione na koordynacji |  |
| 16TC84-125 |  | Próba ciœnieniowa – Sekcja 19 | 4d | 2026-06-05 A | 2026-06-12 A | 16TC84-124 | 100% | 2026-06-05 | 2026-06-10 |  | Automaty | 16TC84 | Ruroci¹g | Budowa | Roboty | Joanna | Uk³ad | PM000 | Zespó³-K | Blok | Normalny | Pakiet | L2 | Bez uwag |  |
| 16TC84-126 |  | Izolacje – Sekcja 19 | 6d | 2026-06-10 A | 2026-06-22 A | 16TC84-125 | 100% | 2026-06-11 | 2026-06-18 |  | Automaty | 16TC84 | Ruroci¹g | Budowa | Roboty | Joanna | Uk³ad | PM000 | Zespó³-K | Blok | Wysoki | Pakiet | L2 |  |  |
| 16TC84-127 |  | Malowanie i oznakowanie – Sekcja 19 | 8d | 2026-06-11 A | 2026-06-24 A | 16TC84-126 FF+2d | 100% | 2026-06-11 | 2026-06-22 |  | Automaty | 16TC84 | Ruroci¹g | Budowa | Roboty | Joanna | Uk³ad | PM000 | Zespó³-K | Blok | Normalny | Pakiet | L2 |  |  |

| ID | WBS | Activity | Duration | Start | Finish | Predecessors | Complete | Planned start | Planned finish | Calendar | Uwagi harmonogramisty | Rewizja dokumentu | AC_Wykonawca | AC_Obiekt | AC_Dyscyplina | AC_Faza | AC_Zakres | AC_Opiekun | AC_Obszar | AC_PP_PM | AC_Zespol | AC_Blok | AC_Priorytet | AC_Pakiet | AC_Poziom |
| --- | --- | --- | --- | --- | --- | --- | --- | --- | --- | --- | --- | --- | --- | --- | --- | --- | --- | --- | --- | --- | --- | --- | --- | --- | --- |
|  | SEKCJA 20 | **Sekcja 20** |  | 2026-05-19 | 2026-07-16 |  |  |  |  |  |  |  |  |  |  |  |  |  |  |  |  |  |  |  |  |
| 16TC84-128 |  | Prefabrykacja ruroci¹gów – Sekcja 20 | 6.5d | 2026-05-19 A | 2026-05-26 A | 16TC84-012, 16TC84-123 SS+5d | 100% | 2026-05-14 | 2026-05-21 |  | Bez uwag | Rev A | Automaty | 16TC84 | Ruroci¹g | Budowa | Roboty | Joanna | Uk³ad | PM000 | Zespó³-K | Blok | Normalny | Pakiet | L2 |
| 16TC84-129 |  | Monta¿ ruroci¹gów – Sekcja 20 | 22.5d | 2026-05-21 A | 2026-06-23 A | 16TC84-128, 16TC84-014 SS+9d | 100% | 2026-05-22 | 2026-06-23 |  |  |  | Automaty | 16TC84 | Ruroci¹g | Budowa | Roboty | Joanna | Uk³ad | PM000 | Zespó³-W | Blok | Wysoki | Pakiet | L2 |
| 16TC84-130 |  | Próba ciœnieniowa – Sekcja 20 | 6d | 2026-06-29 A | 2026-07-09 A | 16TC84-129 | 100% | 2026-06-24 | 2026-07-01 |  | Do weryfikacji z wykonawc¹ |  | Automaty | 16TC84 | Ruroci¹g | Budowa | Roboty | Joanna | Uk³ad | PM000 | Zespó³-W | Blok | Krytyczn | Pakiet | L2 |
| 16TC84-131 |  | Izolacje – Sekcja 20 | 5d | 2026-07-07 A | 2026-07-16 A | 16TC84-130 | 100% | 2026-07-02 | 2026-07-08 |  |  | Rev B | Automaty | 16TC84 | Ruroci¹g | Budowa | Roboty | Joanna | Uk³ad | PM000 | Zespó³-W | Blok | Niski | Pakiet | L2 |
| 16TC84-132 |  | Malowanie i oznakowanie – Sekcja 20 | 3d | 2026-07-07 A | 2026-07-09 A | 16TC84-131 FF+2d | 100% | 2026-07-08 | 2026-07-10 |  |  |  | Automaty | 16TC84 | Ruroci¹g | Budowa | Roboty | Joanna | Uk³ad | PM000 | Zespó³-K | Blok | Normalny | Pakiet | L2 |
|  | SEKCJA 21 | **Sekcja 21** |  | 2026-05-22 | 2026-07-23 |  |  |  |  |  |  |  |  |  |  |  |  |  |  |  |  |  |  |  |  |
|  | PODSEKCJA | **Podsekcja 21.A** |  | 2026-05-22 | 2026-07-23 |  |  |  |  |  |  |  |  |  |  |  |  |  |  |  |  |  |  |  |  |
| 16TC84-135 |  | Prefabrykacja ruroci¹gów – Sekcja 21 | 6.7d | 2026-05-22 A | 2026-05-29 A | 16TC84-012, 16TC84-128 SS+5d | 100% | 2026-05-21 | 2026-05-28 |  |  | Rev C | Automaty | 16TC84 | Ruroci¹g | Budowa | Roboty | Joanna | Uk³ad | PM000 | Zespó³-W | Blok | Normalny | Pakiet | L2 |
| 16TC84-136 |  | Monta¿ ruroci¹gów – Sekcja 21 | 18.8d | 2026-06-01 A | 2026-06-29 A | 16TC84-135, 16TC84-014 SS | 100% | 2026-05-29 | 2026-06-24 |  |  |  | Automaty | 16TC84 | Ruroci¹g | Budowa | Roboty | Joanna | Uk³ad | PM000 | Zespó³-W | Blok | Normalny | Pakiet | L2 |
| 16TC84-137 |  | Próba ciœnieniowa – Sekcja 21 | 3d | 2026-06-29 A | 2026-07-02 A | 16TC84-136 | 100% | 2026-06-25 | 2026-06-29 |  |  |  | Automaty | 16TC84 | Ruroci¹g | Budowa | Roboty | Joanna | Uk³ad | PM000 | Zespó³-I | Blok | Normalny | Pakiet | L2 |
| 16TC84-138 |  | Izolacje – Sekcja 21 | 10d | 2026-07-02 A | 2026-07-15 A | 16TC84-137 | 100% | 2026-06-30 | 2026-07-13 |  |  |  | Automaty | 16TC84 | Ruroci¹g | Budowa | Roboty | Joanna | Uk³ad | PM000 | Zespó³-W | Blok | Normalny | Pakiet | L2 |
| 16TC84-139 |  | Malowanie i oznakowanie – Sekcja 21 | 8d | 2026-07-09 A | 2026-07-23 A | 16TC84-138 FF+2d | 100% | 2026-07-06 | 2026-07-15 |  |  | Rev C | Automaty | 16TC84 | Ruroci¹g | Budowa | Roboty | Joanna | Uk³ad | PM000 | Zespó³-W | Blok | Normalny | Pakiet | L2 |
|  | SEKCJA 22 | **Sekcja 22** |  | 2026-06-02 | 2026-07-21 |  |  |  |  |  |  |  |  |  |  |  |  |  |  |  |  |  |  |  |  |
| 16TC84-140 |  | Prefabrykacja ruroci¹gów – Sekcja 22 | 13.2d | 2026-06-02 A | 2026-06-19 A | 16TC84-012, 16TC84-135 SS+5d | 100% | 2026-05-28 | 2026-06-15 |  |  | Rev B | Automaty | 16TC84 | Ruroci¹g | Budowa | Roboty | Joanna | Uk³ad | PM000 | Zespó³-W | Blok | Normalny | Pakiet | L2 |
| 16TC84-141 |  | Monta¿ ruroci¹gów – Sekcja 22 | 8.6d | 2026-06-17 A | 2026-06-29 A | 16TC84-140, 16TC84-014 SS | 100% | 2026-06-16 | 2026-06-25 | Kalendarz 6-dniowy | Czeka na dostawê |  | Automaty | 16TC84 | Ruroci¹g | Budowa | Roboty | Joanna | Uk³ad | PM000 | Zespó³-W | Blok | Normalny | Pakiet | L2 |
| 16TC84-142 |  | Próba ciœnieniowa – Sekcja 22 | 3d | 2026-06-26 A | 2026-07-03 A | 16TC84-141 | 100% | 2026-06-26 | 2026-06-30 |  |  |  | Automaty | 16TC84 | Ruroci¹g | Budowa | Roboty | Joanna | Uk³ad | PM000 | Zespó³-K | Blok | Normalny | Pakiet | L2 |
| 16TC84-143 |  | Izolacje – Sekcja 22 | 10d | 2026-07-01 A | 2026-07-14 A | 16TC84-142 | 100% |  |  |  |  |  | Automaty | 16TC84 | Ruroci¹g | Budowa | Roboty | Joanna | Uk³ad | PM000 | Zespó³-W | Blok | Wysoki | Pakiet | L2 |
| 16TC84-144 |  | Malowanie i oznakowanie – Sekcja 22 | 3d | 2026-07-16 A | 2026-07-21 A | 16TC84-143 FF+2d | 100% | 2026-07-14 | 2026-07-16 |  |  |  | Automaty | 16TC84 | Ruroci¹g | Budowa | Roboty | Joanna | Uk³ad | PM000 | Zespó³-K | Blok | Normalny | Pakiet | L2 |
|  | SEKCJA 23 | **Sekcja 23** |  | 2026-06-03 | 2026-07-23 |  |  |  |  |  |  |  |  |  |  |  |  |  |  |  |  |  |  |  |  |
| 16TC84-147 |  | Prefabrykacja ruroci¹gów – Sekcja 23 | 12.4d | 2026-06-03 A | 2026-06-22 A | 16TC84-012, 16TC84-140 SS+5d | 100% | 2026-06-04 | 2026-06-19 |  |  |  | Automaty | 16TC84 | Ruroci¹g | Budowa | Roboty | Joanna | Uk³ad | PM000 | Zespó³-W | Blok | Normalny | Pakiet | L2 |
| 16TC84-148 |  | Monta¿ ruroci¹gów – Sekcja 23 | 8d | 2026-06-19 A | 2026-07-03 A | 16TC84-147, 16TC84-014 SS | 100% | 2026-06-22 | 2026-07-01 |  |  |  | Automaty | 16TC84 | Ruroci¹g | Budowa | Roboty | Joanna | Uk³ad | PM200 | Zespó³-E | Blok | Normalny | Pakiet | L2 |
| 16TC84-149 |  | Próba ciœnieniowa – Sekcja 23 | 5d | 2026-07-01 A | 2026-07-07 A | 16TC84-148 | 100% | 2026-07-02 | 2026-07-08 |  |  |  | Automaty | 16TC84 | Ruroci¹g | Budowa | Roboty | Joanna | Uk³ad | PM000 | Zespó³-K | Blok | Wysoki | Pakiet | L2 |
| 16TC84-150 |  | Izolacje – Sekcja 23 | 4d | 2026-07-10 A | 2026-07-15 A | 16TC84-149 | 100% | 2026-07-09 | 2026-07-14 |  |  |  | Automaty | 16TC84 | Ruroci¹g | Budowa | Roboty | Joanna | Uk³ad | PM000 | Zespó³-K | Blok | Normalny | Pakiet | L2 |
| 16TC84-151 |  | Malowanie i oznakowanie – Sekcja 23 | 7d | 2026-07-13 A | 2026-07-23 A | 16TC84-150 FF+2d | 100% | 2026-07-08 | 2026-07-16 | Kalendarz 6-dniowy |  |  | Automaty | 16TC84 | Ruroci¹g | Budowa | Roboty | Joanna | Uk³ad | PM000 | Zespó³-K | Blok | Normalny | Pakiet | L2 |

| ID | WBS | Activity | Type | Duration | Start | Finish | Predecessors | Complete | Remaining | Actual finish | Planned start | Planned finish | Total float | Free float | Calendar | AC_Wykonawca | AC_Obiekt | AC_Dyscyplina | AC_Faza | AC_Zakres | AC_Opiekun | AC_Obszar | AC_PP_PM | AC_Zespol | AC_Blok | AC_Priorytet | AC_Pakiet | AC_Poziom | Rewizja dokumentu | Uwagi harmonogramisty |
| --- | --- | --- | --- | --- | --- | --- | --- | --- | --- | --- | --- | --- | --- | --- | --- | --- | --- | --- | --- | --- | --- | --- | --- | --- | --- | --- | --- | --- | --- | --- |
|  | SEKCJA 24 | **Sekcja 24** |  |  | 2026-06-12 | 2026-08-26 |  |  |  |  |  |  |  |  |  |  |  |  |  |  |  |  |  |  |  |  |  |  |  |  |
|  | PODSEKCJA | **Podsekcja 24.A** |  |  | 2026-06-12 | 2026-08-26 |  |  |  |  |  |  |  |  |  |  |  |  |  |  |  |  |  |  |  |  |  |  |  |  |
| 16TC84-152 |  | Prefabrykacja ruroci¹gów – Sekcja 24 |  | 8.6d | 2026-06-12 A | 2026-06-23 A | 16TC84-012, 16TC84-147 SS+5d | 100% |  |  | 2026-06-11 | 2026-06-22 |  |  |  | Automaty | 16TC84 | Ruroci¹g | Budowa | Roboty | Joanna | Uk³ad | PM100 | Zespó³-E | Blok | Normalny | Pakiet | L2 |  |  |
| 16TC84-153 |  | Monta¿ ruroci¹gów – Sekcja 24 |  | 24.9d | 2026-06-25 A | 2026-07-31 A | 16TC84-152, 16TC84-014 SS+9d | 100% |  |  | 2026-06-23 | 2026-07-27 |  |  |  | Automaty | 16TC84 | Ruroci¹g | Budowa | Roboty | Joanna | Uk³ad | PM000 | Zespó³-W | Blok | Normalny | Pakiet | L2 | Rev C |  |
| 16TC84-154 |  | Próba ciœnieniowa – Sekcja 24 |  | 6d | 2026-07-27 A | 2026-08-05 A | 16TC84-153 | 100% |  |  | 2026-07-28 | 2026-08-04 |  |  |  | Automaty | 16TC84 | Ruroci¹g | Budowa | Roboty | Joanna | Uk³ad | PM000 | Zespó³-W | Blok | Normalny | Pakiet | L2 |  |  |
| 16TC84-155 |  | Izolacje – Sekcja 24 |  | 12d | 2026-08-05 A | 2026-08-25 A | 16TC84-154 | 100% |  |  | 2026-08-05 | 2026-08-20 |  |  |  | Automaty | 16TC84 | Ruroci¹g | Budowa | Roboty | Joanna | Uk³ad | PM000 | Zespó³-W | Blok | Wysoki | Pakiet | L2 |  |  |
| 16TC84-156 |  | Malowanie i oznakowanie – Sekcja 24 |  | 6d | 2026-08-17 A | 2026-08-26 A | 16TC84-155 FF+2d | 100% |  |  | 2026-08-17 | 2026-08-24 |  |  |  | Automaty | 16TC84 | Ruroci¹g | Budowa | Roboty | Joanna | Uk³ad | PM300 | Zespó³-I | Blok | Wysoki | Pakiet | L2 |  |  |
|  | PROJ | **Projektowanie** |  |  | 2025-01-15 | 2025-05-21 |  |  |  |  |  |  |  |  |  |  |  |  |  |  |  |  |  |  |  |  |  |  |  |  |
|  | DOKUMENTAC | **Dokumentacja** |  |  | 2025-01-15 | 2025-05-21 |  |  |  |  |  |  |  |  |  |  |  |  |  |  |  |  |  |  |  |  |  |  |  |  |
| 16TC84-001 |  | Projekt wykonawczy – Rozdzielnia SN |  | 57d | 2025-01-15 A | 2025-04-03 A |  | 100% |  |  |  |  |  |  |  | Automaty | 16TC84 | Budowlan | Projekto | Projekt | Joanna | Uk³ad | PM000 | Zespó³-W | Blok | Normalny | Pakiet | L2 |  |  |
| 16TC84-002 |  | Uzgodnienie dokumentacji z Inwestorem |  | 21d | 2025-04-09 A | 2025-05-12 A | 16TC84-001 | 100% |  |  | 2025-04-04 | 2025-05-02 |  |  |  | Automaty | 16TC84 | Budowlan | Projekto | Projekt | Joanna | Uk³ad | PM000 | Zespó³-W | Blok | Normalny | Pakiet | L2 | Rev A | Bez uwag |
| 16TC84-003 |  | Zatwierdzenie dokumentacji do realizacji |  | 7d | 2025-05-08 A | 2025-05-21 A | 16TC84-002 | 100% |  |  | 2025-05-05 | 2025-05-13 |  |  |  | Automaty | 16TC84 | Budowlan | Projekto | Projekt | Joanna | Uk³ad | PM000 | Zespó³-W | Blok | Normalny | Pakiet | L2 |  |  |
| 16TC84-004 |  | KM: Dokumentacja zatwierdzona – Rozdzielnia SN | milestone | 0d | 2025-05-15 A | 2025-05-15 | 16TC84-003 | 100% |  | 2025-05-14 | 2025-05-14 | 2025-05-14 |  |  |  | Automaty | 16TC84 | Budowlan | Projekto | Kamieñ | Joanna | Uk³ad | PM000 | Zespó³-K | Blok | Wysoki | Pakiet | L1 |  |  |
|  | ROZR | **Rozruch** |  |  | 2026-08-25 | 2026-10-28 |  |  |  |  |  |  |  |  |  |  |  |  |  |  |  |  |  |  |  |  |  |  |  |  |
|  | ROZRUCH | **Rozruch** |  |  | 2026-08-25 | 2026-10-28 |  |  |  |  |  |  |  |  |  |  |  |  |  |  |  |  |  |  |  |  |  |  |  |  |
| 16TC84-161 |  | Przegl¹d gotowoœci do rozruchu |  | 5d | 2026-08-25 A | 2026-09-01 A | 16TC84-160, 16TC84-019, 16TC84-024, 16TC84-026 | 100% |  |  | 2026-08-25 | 2026-08-31 |  |  | Kalendarz 6-dniowy | Automaty | 16TC84 | Rozruch | Rozruch | Rozruch | Joanna | Uk³ad | PM000 | Zespó³-E | Blok | Normalny | Pakiet | L2 | Rev B |  |
| 16TC84-162 |  | Rozruch na zimno |  | 13d | 2026-09-01 A | 2026-09-22 A | 16TC84-161 | 100% |  |  | 2026-09-01 | 2026-09-17 |  |  |  | Automaty | 16TC84 | Rozruch | Rozruch | Rozruch | Joanna | Uk³ad | PM000 | Zespó³-W | Blok | Normalny | Pakiet | L2 |  |  |
| 16TC84-163 |  | Rozruch na gor¹co / próby ruchowe |  | 22d | 2026-09-22 A | 2026-10-27 | 16TC84-162 | 30% | 15.4d |  | 2026-09-18 | 2026-10-19 | 382.1d | 0d |  | Automaty | 16TC84 | Rozruch | Rozruch | Rozruch | Joanna | Uk³ad | PM000 | Zespó³-K | Blok | Normalny | Pakiet | L2 |  |  |
| 16TC84-164 |  | KM: Odbiór koñcowy – Rozdzielnia SN | milestone | 0d | 2026-10-28 | 2026-10-28 | 16TC84-163 |  |  |  | 2026-10-20 | 2026-10-20 | 378.2d | 0d |  | Automaty | 16TC84 | Rozruch | Rozruch | Kamieñ | Joanna | Uk³ad | PM000 | Zespó³-W | Blok | Normalny | Pakiet | L1 |  |  |
|  | ZAKU | **Zakupy** |  |  | 2025-02-12 | 2026-02-27 |  |  |  |  |  |  |  |  |  |  |  |  |  |  |  |  |  |  |  |  |  |  |  |  |
|  | DOSTAWY | **Dostawy** |  |  | 2025-10-03 | 2026-02-27 |  |  |  |  |  |  |  |  |  |  |  |  |  |  |  |  |  |  |  |  |  |  |  |  |
| 16TC84-008 |  | Produkcja u dostawcy |  | 71d | 2025-10-03 A | 2026-01-09 A | 16TC84-007 | 100% |  |  |  |  |  |  |  | Automaty | 16TC84 | Mechanic | Zakupy | Dostawa | Joanna | Uk³ad | PM000 | Zespó³-K | Blok | Normalny | Pakiet | L2 | Rev C |  |
| 16TC84-009 |  | Testy FAT |  | 3d | 2026-01-15 A | 2026-01-22 A | 16TC84-008 | 100% |  |  | 2026-01-12 | 2026-01-14 |  |  |  | Automaty | 16TC84 | Mechanic | Zakupy | Dostawa | Joanna | Uk³ad | PM000 | Zespó³-K | Blok | Niski | Pakiet | L2 |  |  |
| 16TC84-010 |  | Transport i dostawa na plac budowy |  | 28d | 2026-01-19 A | 2026-02-27 A | 16TC84-009 | 100% |  |  | 2026-01-15 | 2026-02-23 |  |  |  | Automaty | 16TC84 | Mechanic | Zakupy | Dostawa | Joanna | Uk³ad | PM000 | Zespó³-W | Blok | Normalny | Pakiet | L2 | Rev C |  |
| 16TC84-011 |  | KM: Dostawa na budowê – Rozdzielnia SN | milestone | 0d | 2026-02-25 A | 2026-02-25 | 16TC84-010 | 100% |  | 2026-02-24 | 2026-02-24 | 2026-02-24 |  |  | Kalendarz 6-dniowy | Automaty | 16TC84 | Mechanic | Zakupy | Kamieñ | Joanna | Uk³ad | PM000 | Zespó³-W | Blok | Normalny | Pakiet | L1 |  |  |

| ID | WBS | Activity | Duration | Start | Finish | Predecessors | Complete | Remaining | Planned start | Planned finish | Total float | Free float | Calendar | AC_Wykonawca | AC_Obiekt | AC_Dyscyplina | AC_Faza | AC_Zakres | AC_Opiekun | AC_Obszar | AC_PP_PM | AC_Zespol | AC_Blok | AC_Priorytet | AC_Pakiet | AC_Poziom | Uwagi harmonogramisty | Rewizja dokumentu |
| --- | --- | --- | --- | --- | --- | --- | --- | --- | --- | --- | --- | --- | --- | --- | --- | --- | --- | --- | --- | --- | --- | --- | --- | --- | --- | --- | --- | --- |
|  | ZAMÓWIENIA | **Zamówienia** |  | 2025-02-12 | 2025-10-09 |  |  |  |  |  |  |  |  |  |  |  |  |  |  |  |  |  |  |  |  |  |  |  |
| 16TC84-005 |  | Zapytanie ofertowe | 30d | 2025-02-12 A | 2025-03-27 A | 16TC84-001 SS+20d | 100% |  | 2025-02-12 | 2025-03-25 |  |  |  | Automaty | 16TC84 | Mechanic | Zakupy | Dostawa | Joanna | Uk³ad | PM000 | Zespó³-W | Blok | Normalny | Pakiet | L2 |  |  |
| 16TC84-006 |  | Analiza i wybór ofert | 11d | 2025-03-31 A | 2025-04-14 A | 16TC84-005 | 100% |  | 2025-03-26 | 2025-04-09 |  |  |  | Automaty | 16TC84 | Mechanic | Zakupy | Dostawa | Joanna | Uk³ad | PM000 | Zespó³-K | Blok | Normalny | Pakiet | L2 |  |  |
| 16TC84-007 |  | Zawarcie umowy / zamówienie | 5d | 2025-10-01 A | 2025-10-09 A | 16TC84-006, 16TC84-004 SS, 27FW94-004 FS+9d, 28BP20-004 FS+10d | 100% |  | 2025-09-26 | 2025-10-02 |  |  |  | Automaty | 16TC84 | Mechanic | Zakupy | Dostawa | Joanna | Uk³ad | PM000 | Zespó³-W | Blok | Normalny | Pakiet | L1 |  |  |
|  | 17DY74 | **17DY74 – Uziemienia i ochrona odgromowa** |  | 2025-03-05 | 2027-01-13 |  |  |  |  |  |  |  |  |  |  |  |  |  |  |  |  |  |  |  |  |  |  |  |
|  | BUDO | **Budowa** |  | 2025-09-26 | 2026-12-04 |  |  |  |  |  |  |  |  |  |  |  |  |  |  |  |  |  |  |  |  |  |  |  |
|  | AKPIA | **AKPiA** |  | 2026-10-07 | 2026-10-29 |  |  |  |  |  |  |  |  |  |  |  |  |  |  |  |  |  |  |  |  |  |  |  |
| 17DY74-116 |  | Monta¿ uk³adów AKPiA | 17d | 2026-10-07 | 2026-10-29 | 17DY74-014 SS+5d |  |  | 2026-09-24 | 2026-10-16 | 343.6d | 0d |  | Aerother | 17DY74 | AKPiA | Budowa | Roboty | Pawe³ | Uk³ad | PM100 | Zespó³-E | Blok | Wysoki | Pakiet | L2 |  |  |
|  | ELEKTRYKA | **Elektryka** |  | 2026-09-30 | 2026-11-06 |  |  |  |  |  |  |  |  |  |  |  |  |  |  |  |  |  |  |  |  |  |  |  |
| 17DY74-098 |  | Pod³¹czenia i pomiary – trasa 14 | 10d | 2026-09-30 A | 2026-10-08 | 17DY74-097 FF | 72% | 2.8d | 2026-09-29 | 2026-10-12 | 398.6d | 0d |  | Aerother | 17DY74 | Elektryc | Budowa | Roboty | Pawe³ | Uk³ad | PM000 | Zespó³-K | Blok | Normalny | Pakiet | L2 | Bez uwag |  |
| 17DY74-061 |  | Uk³adanie kabli – trasa 08 | 16d | 2026-10-02 A | 2026-10-12 | 17DY74-014 SS+10d | 72% | 4.5d | 2026-10-01 | 2026-10-22 | 390.6d | 0d |  | Aerother | 17DY74 | Elektryc | Budowa | Roboty | Pawe³ | Uk³ad | PM000 | Zespó³-W | Blok | Wysoki | Pakiet | L2 |  |  |
| 17DY74-086 |  | Pod³¹czenia i pomiary – trasa 12 | 8d | 2026-10-02 A | 2026-10-12 | 17DY74-085 FF | 49% | 4.1d | 2026-09-29 | 2026-10-08 | 398.6d | 0d |  | Aerother | 17DY74 | Elektryc | Budowa | Roboty | Pawe³ | Uk³ad | PM200 | Zespó³-E | Blok | Normalny | Pakiet | L2 |  |  |
| 17DY74-097 |  | Uk³adanie kabli – trasa 14 | 8d | 2026-10-02 A | 2026-10-15 | 17DY74-014 SS+10d | 11% | 7.1d | 2026-10-01 | 2026-10-12 | 398.6d | 0d |  | Aerother | 17DY74 | Elektryc | Budowa | Roboty | Pawe³ | Uk³ad | PM000 | Zespó³-K | Blok | Normalny | Pakiet | L2 | Do weryfikacji z wykonawc¹ |  |
| 17DY74-025 |  | Uk³adanie kabli – trasa 02 | 18d | 2026-10-06 A | 2026-10-19 | 17DY74-014 SS+10d | 48% | 9.3d | 2026-10-01 | 2026-10-26 | 343.6d | 0d | Kalendarz 6-dniowy | Aerother | 17DY74 | Elektryc | Budowa | Roboty | Pawe³ | Uk³ad | PM000 | Zespó³-W | Blok | Niski | Pakiet | L2 |  |  |
| 17DY74-085 |  | Uk³adanie kabli – trasa 12 | 6d | 2026-10-06 A | 2026-10-08 | 17DY74-014 SS+10d | 60% | 2.4d | 2026-10-01 | 2026-10-08 | 398.6d | 0d |  | Aerother | 17DY74 | Elektryc | Budowa | Roboty | Pawe³ | Uk³ad | PM200 | Zespó³-E | Blok | Normalny | Pakiet | L2 |  |  |
| 17DY74-037 |  | Uk³adanie kabli – trasa 04 | 14d | 2026-10-07 | 2026-10-26 | 17DY74-014 SS+10d |  |  | 2026-10-01 | 2026-10-20 | 389.6d | 0d |  | Aerother | 17DY74 | Elektryc | Budowa | Roboty | Pawe³ | Uk³ad | PM000 | Zespó³-W | Blok | Normalny | Pakiet | L2 |  |  |
| 17DY74-049 |  | Uk³adanie kabli – trasa 06 | 12d | 2026-10-07 | 2026-10-22 | 17DY74-014 SS+10d |  |  | 2026-10-01 | 2026-10-16 | 391.6d | 0d |  | Aerother | 17DY74 | Elektryc | Budowa | Roboty | Pawe³ | Uk³ad | PM000 | Zespó³-K | Blok | Normalny | Pakiet | L2 |  |  |
| 17DY74-050 |  | Pod³¹czenia i pomiary – trasa 06 | 9d | 2026-10-07 A | 2026-10-09 | 17DY74-049 FF | 59% | 3.7d | 2026-10-06 | 2026-10-16 | 394.6d | 0d |  | Aerother | 17DY74 | Elektryc | Budowa | Roboty | Pawe³ | Uk³ad | PM000 | Zespó³-K | Blok | Wysoki | Pakiet | L2 |  |  |
| 17DY74-073 |  | Uk³adanie kabli – trasa 10 | 16d | 2026-10-07 | 2026-10-28 | 17DY74-014 SS+10d |  |  | 2026-10-01 | 2026-10-22 | 387.6d | 0d |  | Aerother | 17DY74 | Elektryc | Budowa | Roboty | Pawe³ | Uk³ad | PM000 | Zespó³-K | Blok | Normalny | Pakiet | L2 | Uzgodnione na koordynacji |  |
| 17DY74-109 |  | Uk³adanie kabli – trasa 16 | 17d | 2026-10-07 A | 2026-10-12 | 17DY74-014 SS+10d | 72% | 4.7d | 2026-10-01 | 2026-10-23 | 343.6d | 0d |  | Aerother | 17DY74 | Elektryc | Budowa | Roboty | Pawe³ | Uk³ad | PM000 | Zespó³-W | Blok | Normalny | Pakiet | L2 |  | Rev A |
| 17DY74-110 |  | Pod³¹czenia i pomiary – trasa 16 | 8d | 2026-10-07 | 2026-10-16 | 17DY74-109 FF |  |  | 2026-10-14 | 2026-10-23 | 352.6d | 0d |  | Aerother | 17DY74 | Elektryc | Budowa | Roboty | Pawe³ | Uk³ad | PM000 | Zespó³-K | Blok | Normalny | Pakiet | L2 | Czeka na dostawê |  |
| 17DY74-026 |  | Pod³¹czenia i pomiary – trasa 02 | 7d | 2026-10-09 | 2026-10-19 | 17DY74-025 FF |  |  | 2026-10-16 | 2026-10-26 | 351.3d | 0d |  | Aerother | 17DY74 | Elektryc | Budowa | Roboty | Pawe³ | Uk³ad | PM000 | Zespó³-W | Blok | Wysoki | Pakiet | L2 |  | Rev A |
| 17DY74-038 |  | Pod³¹czenia i pomiary – trasa 04 | 6d | 2026-10-19 | 2026-10-26 | 17DY74-037 FF |  |  | 2026-10-13 | 2026-10-20 | 389.6d | 0d |  | Aerother | 17DY74 | Elektryc | Budowa | Roboty | Pawe³ | Uk³ad | PM000 | Zespó³-W | Blok | Wysoki | Pakiet | L2 |  |  |
| 17DY74-074 |  | Pod³¹czenia i pomiary – trasa 10 | 7d | 2026-10-20 | 2026-10-28 | 17DY74-073 FF |  |  | 2026-10-14 | 2026-10-22 | 387.6d | 0d |  | Aerother | 17DY74 | Elektryc | Budowa | Roboty | Pawe³ | Uk³ad | PM000 | Zespó³-W | Blok | Normalny | Pakiet | L2 |  |  |
| 17DY74-062 |  | Pod³¹czenia i pomiary – trasa 08 | 6d | 2026-10-30 | 2026-11-06 | 17DY74-061 FF |  |  | 2026-10-15 | 2026-10-22 | 380.6d | 0d |  | Aerother | 17DY74 | Elektryc | Budowa | Roboty | Pawe³ | Uk³ad | PM000 | Zespó³-W | Blok | Normalny | Pakiet | L2 |  | Rev B |

| ID | WBS | Activity | Type | Duration | Start | Finish | Predecessors | Complete | Remaining | Planned start | Planned finish | Total float | Free float | Calendar | Uwagi harmonogramisty | Rewizja dokumentu | AC_Wykonawca | AC_Obiekt | AC_Dyscyplina | AC_Faza | AC_Zakres | AC_Opiekun | AC_Obszar | AC_PP_PM | AC_Zespol | AC_Blok | AC_Priorytet | AC_Pakiet | AC_Poziom |
| --- | --- | --- | --- | --- | --- | --- | --- | --- | --- | --- | --- | --- | --- | --- | --- | --- | --- | --- | --- | --- | --- | --- | --- | --- | --- | --- | --- | --- | --- |
|  | MONTA¯ | **Monta¿** |  |  | 2025-11-03 | 2026-11-03 |  |  |  |  |  |  |  |  |  |  |  |  |  |  |  |  |  |  |  |  |  |  |  |
| 17DY74-013 |  | Monta¿ konstrukcji stalowych |  | 23d | 2025-11-03 A | 2025-12-05 A | 17DY74-012 | 100% |  | 2025-10-30 | 2025-12-01 |  |  |  | Bez uwag | Rev B | Aerother | 17DY74 | Mechanic | Budowa | Roboty | Pawe³ | Uk³ad | PM000 | Zespó³-W | Blok | Normalny | Pakiet | L2 |
| 17DY74-014 |  | Monta¿ urz¹dzeñ g³ównych |  | 24d | 2026-09-22 A | 2026-10-14 | 17DY74-013, 17DY74-011 | 75% | 6.1d | 2026-09-17 | 2026-10-20 | 320.8d | 0d |  |  | Rev C | Aerother | 17DY74 | Mechanic | Budowa | Roboty | Pawe³ | Uk³ad | PM000 | Zespó³-K | Blok | Normalny | Pakiet | L2 |
| 17DY74-117 |  | KM: Zakoñczenie monta¿u – Uziemienia i ochrona odgromowa | milestone | 0d | 2026-11-03 | 2026-11-03 | 17DY74-108, 17DY74-110, 17DY74-115, 17DY74-116, 17DY74-014 |  |  | 2026-10-29 | 2026-10-29 | 341.1d | 0d |  |  |  | Aerother | 17DY74 | Mechanic | Budowa | Kamieñ | Pawe³ | Uk³ad | PM000 | Zespó³-K | Blok | Normalny | Pakiet | L2 |
|  | ROBOTY BUD | **Roboty budowlane** |  |  | 2025-09-26 | 2025-10-31 |  |  |  |  |  |  |  |  |  |  |  |  |  |  |  |  |  |  |  |  |  |  |  |
| 17DY74-012 |  | Fundamenty i roboty ziemne |  | 23d | 2025-09-26 A | 2025-10-31 A | 17DY74-007 FS+9d | 100% |  | 2025-09-29 | 2025-10-29 |  |  |  |  |  | Aerother | 17DY74 | Budowlan | Budowa | Roboty | Pawe³ | Uk³ad | PM000 | Zespó³-K | Blok | Normalny | Pakiet | L2 |
|  | RUROCI¥GI | **Ruroci¹gi** |  |  | 2025-10-31 | 2026-12-04 |  |  |  |  |  |  |  |  |  |  |  |  |  |  |  |  |  |  |  |  |  |  |  |
|  | SEKCJA 01 | **Sekcja 01** |  |  | 2025-10-31 | 2026-11-26 |  |  |  |  |  |  |  |  |  |  |  |  |  |  |  |  |  |  |  |  |  |  |  |
| 17DY74-015 |  | Prefabrykacja ruroci¹gów – Sekcja 01 |  | 8.6d | 2025-10-31 A | 2025-11-14 A | 17DY74-012 | 100% |  | 2025-10-30 | 2025-11-10 |  |  |  |  |  | Aerother | 17DY74 | Ruroci¹g | Budowa | Roboty | Pawe³ | Uk³ad | PM000 | Zespó³-W | Blok | Wysoki | Pakiet | L2 |
| 17DY74-016 |  | Monta¿ ruroci¹gów – Sekcja 01 |  | 23.8d | 2026-09-30 A | 2026-11-02 | 17DY74-015, 17DY74-014 SS+9d | 18% | 19.5d | 2026-09-30 | 2026-10-30 | 323.8d | 0d |  |  | Rev A | Aerother | 17DY74 | Ruroci¹g | Budowa | Roboty | Pawe³ | Uk³ad | PM000 | Zespó³-K | Blok | Normalny | Pakiet | L2 |
| 17DY74-017 |  | Próba ciœnieniowa – Sekcja 01 |  | 6d | 2026-11-03 | 2026-11-10 | 17DY74-016 |  |  | 2026-11-02 | 2026-11-09 | 323.1d | 0d |  |  |  | Aerother | 17DY74 | Ruroci¹g | Budowa | Roboty | Pawe³ | Uk³ad | PM200 | Zespó³-I | Blok | Normalny | Pakiet | L2 |
| 17DY74-018 |  | Izolacje – Sekcja 01 |  | 10d | 2026-11-11 | 2026-11-24 | 17DY74-017 |  |  | 2026-11-10 | 2026-11-23 | 323.1d | 0d |  | Ryzyko opóŸnienia |  | Aerother | 17DY74 | Ruroci¹g | Budowa | Roboty | Pawe³ | Uk³ad | PM000 | Zespó³-W | Blok | Krytyczn | Pakiet | L2 |
| 17DY74-019 |  | Malowanie i oznakowanie – Sekcja 01 |  | 5d | 2026-11-20 | 2026-11-26 | 17DY74-018 FF+2d |  |  | 2026-11-19 | 2026-11-25 | 323.1d | 0d |  | Bez uwag |  | Aerother | 17DY74 | Ruroci¹g | Budowa | Roboty | Pawe³ | Uk³ad | PM000 | Zespó³-W | Blok | Normalny | Pakiet | L2 |
|  | SEKCJA 02 | **Sekcja 02** |  |  | 2025-11-06 | 2026-11-02 |  |  |  |  |  |  |  |  |  |  |  |  |  |  |  |  |  |  |  |  |  |  |  |
| 17DY74-020 |  | Prefabrykacja ruroci¹gów – Sekcja 02 |  | 9.1d | 2025-11-06 A | 2025-11-20 A | 17DY74-012, 17DY74-015 SS+5d | 100% |  | 2025-11-06 | 2025-11-18 |  |  |  |  |  | Aerother | 17DY74 | Ruroci¹g | Budowa | Roboty | Pawe³ | Uk³ad | PM000 | Zespó³-K | Blok | Wysoki | Pakiet | L2 |
| 17DY74-021 |  | Monta¿ ruroci¹gów – Sekcja 02 |  | 10d | 2026-10-07 A | 2026-10-15 | 17DY74-020, 17DY74-014 SS+10d | 27% | 7.3d | 2026-10-01 | 2026-10-14 | 338.6d | 0d |  | Ryzyko opóŸnienia |  | Aerother | 17DY74 | Ruroci¹g | Budowa | Roboty | Pawe³ | Uk³ad | PM000 | Zespó³-W | Blok | Normalny | Pakiet | L2 |
| 17DY74-022 |  | Próba ciœnieniowa – Sekcja 02 |  | 3d | 2026-10-16 | 2026-10-20 | 17DY74-021 |  |  | 2026-10-15 | 2026-10-19 | 341.3d | 0d |  |  |  | Aerother | 17DY74 | Ruroci¹g | Budowa | Roboty | Pawe³ | Uk³ad | PM000 | Zespó³-K | Blok | Krytyczn | Pakiet | L2 |
| 17DY74-023 |  | Izolacje – Sekcja 02 |  | 7d | 2026-10-21 | 2026-10-29 | 17DY74-022 |  |  | 2026-10-20 | 2026-10-28 | 341.3d | 0d |  | Do weryfikacji z wykonawc¹ |  | Aerother | 17DY74 | Ruroci¹g | Budowa | Roboty | Pawe³ | Uk³ad | PM000 | Zespó³-K | Blok | Normalny | Pakiet | L2 |
| 17DY74-024 |  | Malowanie i oznakowanie – Sekcja 02 |  | 2d | 2026-10-30 | 2026-11-02 | 17DY74-023 FF+2d |  |  | 2026-10-29 | 2026-10-30 | 341.3d | 0d | Kalendarz 6-dniowy | Ryzyko opóŸnienia | Rev A | Aerother | 17DY74 | Ruroci¹g | Budowa | Roboty | Pawe³ | Uk³ad | PM000 | Zespó³-W | Blok | Normalny | Pakiet | L2 |
|  | SEKCJA 03 | **Sekcja 03** |  |  | 2025-11-18 | 2026-10-20 |  |  |  |  |  |  |  |  |  |  |  |  |  |  |  |  |  |  |  |  |  |  |  |
|  | PODSEKCJA | **Podsekcja 03.A** |  |  | 2025-11-18 | 2026-10-20 |  |  |  |  |  |  |  |  |  |  |  |  |  |  |  |  |  |  |  |  |  |  |  |
| 17DY74-027 |  | Prefabrykacja ruroci¹gów – Sekcja 03 |  | 5.5d | 2025-11-18 A | 2025-11-25 A | 17DY74-012, 17DY74-020 SS+5d | 100% |  | 2025-11-13 | 2025-11-19 |  |  |  |  |  | Aerother | 17DY74 | Ruroci¹g | Budowa | Roboty | Pawe³ | Uk³ad | PM000 | Zespó³-K | Blok | Normalny | Pakiet | L2 |
| 17DY74-028 |  | Monta¿ ruroci¹gów – Sekcja 03 |  | 13.8d | 2026-09-21 A | 2026-10-09 | 17DY74-027, 17DY74-014 SS | 78% | 3.1d | 2026-09-17 | 2026-10-05 | 390.8d | 0d |  |  |  | Aerother | 17DY74 | Ruroci¹g | Budowa | Roboty | Pawe³ | Uk³ad | PM000 | Zespó³-K | Blok | Normalny | Pakiet | L2 |
| 17DY74-029 |  | Próba ciœnieniowa – Sekcja 03 |  | 2d | 2026-10-07 A | 2026-10-07 | 17DY74-028 | 50% | 1d | 2026-10-06 | 2026-10-07 | 392.6d | 0d |  |  | Rev A | Aerother | 17DY74 | Ruroci¹g | Budowa | Roboty | Pawe³ | Uk³ad | PM000 | Zespó³-K | Blok | Normalny | Pakiet | L2 |
| 17DY74-030 |  | Izolacje – Sekcja 03 |  | 7d | 2026-10-08 | 2026-10-16 | 17DY74-029 |  |  |  |  | 393.6d | 0d |  |  |  | Aerother | 17DY74 | Ruroci¹g | Budowa | Roboty | Pawe³ | Uk³ad | PM000 | Zespó³-W | Blok | Wysoki | Pakiet | L2 |
| 17DY74-031 |  | Malowanie i oznakowanie – Sekcja 03 |  | 4d | 2026-10-15 | 2026-10-20 | 17DY74-030 FF+2d |  |  |  |  | 393.6d | 0d | Kalendarz 6-dniowy |  | Rev A | Aerother | 17DY74 | Ruroci¹g | Budowa | Roboty | Pawe³ | Uk³ad | PM000 | Zespó³-W | Blok | Wysoki | Pakiet | L2 |

| ID | WBS | Activity | Duration | Start | Finish | Predecessors | Complete | Remaining | Planned start | Planned finish | Total float | Free float | AC_Wykonawca | AC_Obiekt | AC_Dyscyplina | AC_Faza | AC_Zakres | AC_Opiekun | AC_Obszar | AC_PP_PM | AC_Zespol | AC_Blok | AC_Priorytet | AC_Pakiet | AC_Poziom | Uwagi harmonogramisty | Rewizja dokumentu |
| --- | --- | --- | --- | --- | --- | --- | --- | --- | --- | --- | --- | --- | --- | --- | --- | --- | --- | --- | --- | --- | --- | --- | --- | --- | --- | --- | --- |
|  | SEKCJA 04 | **Sekcja 04** |  | 2025-11-25 | 2026-11-17 |  |  |  |  |  |  |  |  |  |  |  |  |  |  |  |  |  |  |  |  |  |  |
| 17DY74-032 |  | Prefabrykacja ruroci¹gów – Sekcja 04 | 8.4d | 2025-11-25 A | 2025-12-05 A | 17DY74-012, 17DY74-027 SS+5d | 100% |  | 2025-11-20 | 2025-12-01 |  |  | Aerother | 17DY74 | Ruroci¹g | Budowa | Roboty | Pawe³ | Uk³ad | PM000 | Zespó³-W | Blok | Normalny | Pakiet | L2 |  |  |
| 17DY74-033 |  | Monta¿ ruroci¹gów – Sekcja 04 | 6.6d | 2026-09-30 A | 2026-10-06 A | 17DY74-032, 17DY74-014 SS+7d | 100% |  | 2026-09-28 | 2026-10-05 |  |  | Aerother | 17DY74 | Ruroci¹g | Budowa | Roboty | Pawe³ | Uk³ad | PM000 | Zespó³-K | Blok | Wysoki | Pakiet | L2 | Do weryfikacji z wykonawc¹ |  |
| 17DY74-034 |  | Próba ciœnieniowa – Sekcja 04 | 2d | 2026-10-07 A | 2026-10-07 | 17DY74-033 | 15% | 1.7d | 2026-10-06 | 2026-10-07 | 388.6d | 0d | Aerother | 17DY74 | Ruroci¹g | Budowa | Roboty | Pawe³ | Uk³ad | PM000 | Zespó³-W | Blok | Niski | Pakiet | L2 |  |  |
| 17DY74-035 |  | Izolacje – Sekcja 04 | 11d | 2026-10-30 | 2026-11-13 | 17DY74-034 |  |  | 2026-10-08 | 2026-10-22 | 373.6d | 0d | Aerother | 17DY74 | Ruroci¹g | Budowa | Roboty | Pawe³ | Uk³ad | PM000 | Zespó³-K | Blok | Normalny | Pakiet | L2 |  |  |
| 17DY74-036 |  | Malowanie i oznakowanie – Sekcja 04 | 7d | 2026-11-09 | 2026-11-17 | 17DY74-035 FF+2d |  |  | 2026-10-16 | 2026-10-26 | 373.6d | 0d | Aerother | 17DY74 | Ruroci¹g | Budowa | Roboty | Pawe³ | Uk³ad | PM000 | Zespó³-K | Blok | Wysoki | Pakiet | L2 |  |  |
|  | SEKCJA 05 | **Sekcja 05** |  | 2025-11-27 | 2026-11-18 |  |  |  |  |  |  |  |  |  |  |  |  |  |  |  |  |  |  |  |  |  |  |
| 17DY74-039 |  | Prefabrykacja ruroci¹gów – Sekcja 05 | 12.6d | 2025-11-27 A | 2025-12-16 A | 17DY74-012, 17DY74-032 SS+5d | 100% |  | 2025-11-27 | 2025-12-12 |  |  | Aerother | 17DY74 | Ruroci¹g | Budowa | Roboty | Pawe³ | Uk³ad | PM000 | Zespó³-K | Blok | Normalny | Pakiet | L2 |  | Rev B |
| 17DY74-040 |  | Monta¿ ruroci¹gów – Sekcja 05 | 19.5d | 2026-09-22 A | 2026-10-27 | 17DY74-039, 17DY74-014 SS | 18% | 15.9d | 2026-09-17 | 2026-10-13 | 379.1d | 0d | Aerother | 17DY74 | Ruroci¹g | Budowa | Roboty | Pawe³ | Uk³ad | PM000 | Zespó³-K | Blok | Wysoki | Pakiet | L2 | Bez uwag |  |
| 17DY74-041 |  | Próba ciœnieniowa – Sekcja 05 | 5d | 2026-10-28 | 2026-11-03 | 17DY74-040 |  |  | 2026-10-14 | 2026-10-20 | 371.7d | 0d | Aerother | 17DY74 | Ruroci¹g | Budowa | Roboty | Pawe³ | Uk³ad | PM000 | Zespó³-W | Blok | Normalny | Pakiet | L2 | Uzgodnione na koordynacji |  |
| 17DY74-042 |  | Izolacje – Sekcja 05 | 9d | 2026-11-04 | 2026-11-16 | 17DY74-041 |  |  | 2026-10-21 | 2026-11-02 | 371.7d | 0d | Aerother | 17DY74 | Ruroci¹g | Budowa | Roboty | Pawe³ | Uk³ad | PM000 | Zespó³-W | Blok | Normalny | Pakiet | L2 |  |  |
| 17DY74-043 |  | Malowanie i oznakowanie – Sekcja 05 | 2d | 2026-11-17 | 2026-11-18 | 17DY74-042 FF+2d |  |  | 2026-11-03 | 2026-11-04 | 371.7d | 0d | Aerother | 17DY74 | Ruroci¹g | Budowa | Roboty | Pawe³ | Uk³ad | PM000 | Zespó³-K | Blok | Wysoki | Pakiet | L2 |  | Rev A |
|  | SEKCJA 06 | **Sekcja 06** |  | 2025-12-08 | 2026-11-09 |  |  |  |  |  |  |  |  |  |  |  |  |  |  |  |  |  |  |  |  |  |  |
|  | PODSEKCJA | **Podsekcja 06.A** |  | 2025-12-08 | 2026-11-09 |  |  |  |  |  |  |  |  |  |  |  |  |  |  |  |  |  |  |  |  |  |  |
| 17DY74-044 |  | Prefabrykacja ruroci¹gów – Sekcja 06 | 5.7d | 2025-12-08 A | 2025-12-17 A | 17DY74-012, 17DY74-039 SS+5d | 100% |  | 2025-12-04 | 2025-12-10 |  |  | Aerother | 17DY74 | Ruroci¹g | Budowa | Roboty | Pawe³ | Uk³ad | PM000 | Zespó³-W | Blok | Normalny | Pakiet | L2 | Czeka na dostawê | Rev C |
| 17DY74-045 |  | Monta¿ ruroci¹gów – Sekcja 06 | 6.6d | 2026-09-21 A | 2026-09-29 A | 17DY74-044, 17DY74-014 SS | 100% |  | 2026-09-17 | 2026-09-24 |  |  | Aerother | 17DY74 | Ruroci¹g | Budowa | Roboty | Pawe³ | Uk³ad | PM000 | Zespó³-W | Blok | Normalny | Pakiet | L2 |  |  |
| 17DY74-046 |  | Próba ciœnieniowa – Sekcja 06 | 5d | 2026-09-29 A | 2026-10-05 A | 17DY74-045 | 100% |  | 2026-09-25 | 2026-10-01 |  |  | Aerother | 17DY74 | Ruroci¹g | Budowa | Roboty | Pawe³ | Uk³ad | PM000 | Zespó³-W | Blok | Wysoki | Pakiet | L2 |  |  |
| 17DY74-047 |  | Izolacje – Sekcja 06 | 10d | 2026-10-06 A | 2026-10-09 | 17DY74-046 | 69% | 3.1d | 2026-10-02 | 2026-10-15 | 392d | 0d | Aerother | 17DY74 | Ruroci¹g | Budowa | Roboty | Pawe³ | Uk³ad | PM000 | Zespó³-K | Blok | Normalny | Pakiet | L2 |  |  |
| 17DY74-048 |  | Malowanie i oznakowanie – Sekcja 06 | 3d | 2026-11-05 | 2026-11-09 | 17DY74-047 FF+2d |  |  | 2026-10-15 | 2026-10-19 | 379.6d | 0d | Aerother | 17DY74 | Ruroci¹g | Budowa | Roboty | Pawe³ | Uk³ad | PM300 | Zespó³-E | Blok | Normalny | Pakiet | L2 |  |  |
|  | SEKCJA 07 | **Sekcja 07** |  | 2025-12-11 | 2026-12-04 |  |  |  |  |  |  |  |  |  |  |  |  |  |  |  |  |  |  |  |  |  |  |
| 17DY74-051 |  | Prefabrykacja ruroci¹gów – Sekcja 07 | 3.2d | 2025-12-11 A | 2025-12-16 A | 17DY74-012, 17DY74-044 SS+5d | 100% |  | 2025-12-11 | 2025-12-15 |  |  | Aerother | 17DY74 | Ruroci¹g | Budowa | Roboty | Pawe³ | Uk³ad | PM000 | Zespó³-W | Blok | Normalny | Pakiet | L2 |  | Rev A |
| 17DY74-052 |  | Monta¿ ruroci¹gów – Sekcja 07 | 7.2d | 2026-10-05 A | 2026-10-12 | 17DY74-051, 17DY74-014 SS+10d | 40% | 4.3d | 2026-10-01 | 2026-10-09 | 381.4d | 0d | Aerother | 17DY74 | Ruroci¹g | Budowa | Roboty | Pawe³ | Uk³ad | PM000 | Zespó³-K | Blok | Normalny | Pakiet | L2 |  | Rev B |
| 17DY74-053 |  | Próba ciœnieniowa – Sekcja 07 | 5d | 2026-10-13 | 2026-10-19 | 17DY74-052 |  |  | 2026-10-12 | 2026-10-16 | 382.3d | 0d | Aerother | 17DY74 | Ruroci¹g | Budowa | Roboty | Pawe³ | Uk³ad | PM000 | Zespó³-K | Blok | Normalny | Pakiet | L2 |  |  |
| 17DY74-054 |  | Izolacje – Sekcja 07 | 10d | 2026-11-19 | 2026-12-02 | 17DY74-053 |  |  | 2026-10-19 | 2026-10-30 | 360.6d | 0d | Aerother | 17DY74 | Ruroci¹g | Budowa | Roboty | Pawe³ | Uk³ad | PM100 | Zespó³-I | Blok | Normalny | Pakiet | L2 | Uzgodnione na koordynacji |  |
| 17DY74-055 |  | Malowanie i oznakowanie – Sekcja 07 | 4d | 2026-12-01 | 2026-12-04 | 17DY74-054 FF+2d |  |  | 2026-10-29 | 2026-11-03 | 360.6d | 0d | Aerother | 17DY74 | Ruroci¹g | Budowa | Roboty | Pawe³ | Uk³ad | PM000 | Zespó³-K | Blok | Normalny | Pakiet | L2 | Czeka na dostawê |  |

| ID | WBS | Activity | Duration | Start | Finish | Predecessors | Complete | Remaining | Planned start | Planned finish | Total float | Free float | Calendar | Uwagi harmonogramisty | Rewizja dokumentu | AC_Wykonawca | AC_Obiekt | AC_Dyscyplina | AC_Faza | AC_Zakres | AC_Opiekun | AC_Obszar | AC_PP_PM | AC_Zespol | AC_Blok | AC_Priorytet | AC_Pakiet | AC_Poziom |
| --- | --- | --- | --- | --- | --- | --- | --- | --- | --- | --- | --- | --- | --- | --- | --- | --- | --- | --- | --- | --- | --- | --- | --- | --- | --- | --- | --- | --- |
|  | SEKCJA 08 | **Sekcja 08** |  | 2025-12-18 | 2026-11-18 |  |  |  |  |  |  |  |  |  |  |  |  |  |  |  |  |  |  |  |  |  |  |  |
| 17DY74-056 |  | Prefabrykacja ruroci¹gów – Sekcja 08 | 5.6d | 2025-12-18 A | 2025-12-25 A | 17DY74-012, 17DY74-051 SS+5d | 100% |  | 2025-12-18 | 2025-12-24 |  |  | Kalendarz 6-dniowy | Ryzyko opóŸnienia | Rev B | Aerother | 17DY74 | Ruroci¹g | Budowa | Roboty | Pawe³ | Uk³ad | PM000 | Zespó³-W | Blok | Wysoki | Pakiet | L2 |
| 17DY74-057 |  | Monta¿ ruroci¹gów – Sekcja 08 | 17.9d | 2026-09-22 A | 2026-10-27 | 17DY74-056, 17DY74-014 SS | 14% | 15.4d | 2026-09-17 | 2026-10-09 | 380.7d | 0d |  |  |  | Aerother | 17DY74 | Ruroci¹g | Budowa | Roboty | Pawe³ | Uk³ad | PM000 | Zespó³-W | Blok | Normalny | Pakiet | L2 |
| 17DY74-058 |  | Próba ciœnieniowa – Sekcja 08 | 5d | 2026-10-28 | 2026-11-03 | 17DY74-057 |  |  | 2026-10-12 | 2026-10-16 | 372.2d | 0d |  |  |  | Aerother | 17DY74 | Ruroci¹g | Budowa | Roboty | Pawe³ | Uk³ad | PM000 | Zespó³-W | Blok | Normalny | Pakiet | L2 |
| 17DY74-059 |  | Izolacje – Sekcja 08 | 9d | 2026-11-04 | 2026-11-16 | 17DY74-058 |  |  | 2026-10-19 | 2026-10-29 | 372.2d | 0d |  |  | Rev A | Aerother | 17DY74 | Ruroci¹g | Budowa | Roboty | Pawe³ | Uk³ad | PM000 | Zespó³-W | Blok | Normalny | Pakiet | L2 |
| 17DY74-060 |  | Malowanie i oznakowanie – Sekcja 08 | 5d | 2026-11-12 | 2026-11-18 | 17DY74-059 FF+2d |  |  | 2026-10-27 | 2026-11-02 | 372.2d | 0d |  | Uzgodnione na koordynacji | Rev B | Aerother | 17DY74 | Ruroci¹g | Budowa | Roboty | Pawe³ | Uk³ad | PM000 | Zespó³-W | Blok | Normalny | Pakiet | L2 |
|  | SEKCJA 09 | **Sekcja 09** |  | 2025-12-25 | 2026-11-02 |  |  |  |  |  |  |  |  |  |  |  |  |  |  |  |  |  |  |  |  |  |  |  |
|  | PODSEKCJA | **Podsekcja 09.A** |  | 2025-12-25 | 2026-11-02 |  |  |  |  |  |  |  |  |  |  |  |  |  |  |  |  |  |  |  |  |  |  |  |
| 17DY74-063 |  | Prefabrykacja ruroci¹gów – Sekcja 09 | 4.8d | 2025-12-25 A | 2025-12-30 A | 17DY74-012, 17DY74-056 SS+5d | 100% |  |  |  |  |  |  |  | Rev B | Aerother | 17DY74 | Ruroci¹g | Budowa | Roboty | Pawe³ | Uk³ad | PM000 | Zespó³-K | Blok | Normalny | Pakiet | L2 |
| 17DY74-064 |  | Monta¿ ruroci¹gów – Sekcja 09 | 9.5d | 2026-09-21 A | 2026-10-05 A | 17DY74-063, 17DY74-014 SS | 100% |  | 2026-09-17 | 2026-09-29 |  |  |  | Do weryfikacji z wykonawc¹ |  | Aerother | 17DY74 | Ruroci¹g | Budowa | Roboty | Pawe³ | Uk³ad | PM000 | Zespó³-K | Blok | Normalny | Pakiet | L2 |
| 17DY74-065 |  | Próba ciœnieniowa – Sekcja 09 | 5d | 2026-09-29 A | 2026-10-06 A | 17DY74-064 | 100% |  | 2026-09-30 | 2026-10-06 |  |  |  |  |  | Aerother | 17DY74 | Ruroci¹g | Budowa | Roboty | Pawe³ | Uk³ad | PM000 | Zespó³-K | Blok | Wysoki | Pakiet | L2 |
| 17DY74-066 |  | Izolacje – Sekcja 09 | 9d | 2026-10-07 | 2026-10-19 | 17DY74-065 |  |  |  |  | 392.6d | 0d | Kalendarz 6-dniowy |  |  | Aerother | 17DY74 | Ruroci¹g | Budowa | Roboty | Pawe³ | Uk³ad | PM300 | Zespó³-I | Blok | Normalny | Pakiet | L2 |
| 17DY74-067 |  | Malowanie i oznakowanie – Sekcja 09 | 3d | 2026-10-29 | 2026-11-02 | 17DY74-066 FF+2d |  |  | 2026-10-19 | 2026-10-21 | 384.6d | 0d |  | Bez uwag |  | Aerother | 17DY74 | Ruroci¹g | Budowa | Roboty | Pawe³ | Uk³ad | PM000 | Zespó³-K | Blok | Niski | Pakiet | L2 |
|  | SEKCJA 10 | **Sekcja 10** |  | 2026-01-01 | 2026-11-11 |  |  |  |  |  |  |  |  |  |  |  |  |  |  |  |  |  |  |  |  |  |  |  |
| 17DY74-068 |  | Prefabrykacja ruroci¹gów – Sekcja 10 | 6.8d | 2026-01-01 A | 2026-01-12 A | 17DY74-012, 17DY74-063 SS+5d | 100% |  | 2026-01-01 | 2026-01-08 |  |  |  |  | Rev A | Aerother | 17DY74 | Ruroci¹g | Budowa | Roboty | Pawe³ | Uk³ad | PM000 | Zespó³-K | Blok | Wysoki | Pakiet | L2 |
| 17DY74-069 |  | Monta¿ ruroci¹gów – Sekcja 10 | 17.2d | 2026-09-24 A | 2026-10-16 | 17DY74-068, 17DY74-014 SS+5d | 48% | 8.9d |  |  | 377.4d | 0d |  |  |  | Aerother | 17DY74 | Ruroci¹g | Budowa | Roboty | Pawe³ | Uk³ad | PM000 | Zespó³-W | Blok | Normalny | Pakiet | L2 |
| 17DY74-070 |  | Próba ciœnieniowa – Sekcja 10 | 6d | 2026-10-19 | 2026-10-26 | 17DY74-069 |  |  |  |  | 376.7d | 0d |  | Uzgodnione na koordynacji | Rev C | Aerother | 17DY74 | Ruroci¹g | Budowa | Roboty | Pawe³ | Uk³ad | PM000 | Zespó³-K | Blok | Normalny | Pakiet | L2 |
| 17DY74-071 |  | Izolacje – Sekcja 10 | 10d | 2026-10-27 | 2026-11-09 | 17DY74-070 |  |  |  |  | 376.7d | 0d |  |  |  | Aerother | 17DY74 | Ruroci¹g | Budowa | Roboty | Pawe³ | Uk³ad | PM000 | Zespó³-W | Blok | Normalny | Pakiet | L2 |
| 17DY74-072 |  | Malowanie i oznakowanie – Sekcja 10 | 8d | 2026-11-02 | 2026-11-11 | 17DY74-071 FF+2d |  |  |  |  | 376.7d | 0d |  |  |  | Aerother | 17DY74 | Ruroci¹g | Budowa | Roboty | Pawe³ | Uk³ad | PM000 | Zespó³-K | Blok | Wysoki | Pakiet | L2 |
|  | SEKCJA 11 | **Sekcja 11** |  | 2026-01-07 | 2026-10-26 |  |  |  |  |  |  |  |  |  |  |  |  |  |  |  |  |  |  |  |  |  |  |  |
| 17DY74-075 |  | Prefabrykacja ruroci¹gów – Sekcja 11 | 3.6d | 2026-01-07 A | 2026-01-14 A | 17DY74-012, 17DY74-068 SS+5d | 100% |  | 2026-01-08 | 2026-01-12 |  |  |  |  |  | Aerother | 17DY74 | Ruroci¹g | Budowa | Roboty | Pawe³ | Uk³ad | PM000 | Zespó³-K | Blok | Normalny | Pakiet | L2 |
| 17DY74-076 |  | Monta¿ ruroci¹gów – Sekcja 11 | 9.9d | 2026-09-30 A | 2026-10-15 | 17DY74-075, 17DY74-014 SS+6d | 20% | 7.9d | 2026-09-25 | 2026-10-07 | 391.7d | 0d |  | Ryzyko opóŸnienia |  | Aerother | 17DY74 | Ruroci¹g | Budowa | Roboty | Pawe³ | Uk³ad | PM000 | Zespó³-W | Blok | Normalny | Pakiet | L2 |
| 17DY74-077 |  | Próba ciœnieniowa – Sekcja 11 | 2d | 2026-10-16 | 2026-10-19 | 17DY74-076 |  |  | 2026-10-08 | 2026-10-09 | 388.7d | 0d |  |  |  | Aerother | 17DY74 | Ruroci¹g | Budowa | Roboty | Pawe³ | Uk³ad | PM000 | Zespó³-E | Blok | Niski | Pakiet | L2 |
| 17DY74-079 |  | Malowanie i oznakowanie – Sekcja 11 | 6d | 2026-10-19 | 2026-10-26 | 17DY74-078 FF+2d |  |  | 2026-10-09 | 2026-10-16 | 388.7d | 0d |  |  |  | Aerother | 17DY74 | Ruroci¹g | Budowa | Roboty | Pawe³ | Uk³ad | PM000 | Zespó³-K | Blok | Normalny | Pakiet | L2 |
| 17DY74-078 |  | Izolacje – Sekcja 11 | 3d | 2026-10-20 | 2026-10-22 | 17DY74-077 |  |  | 2026-10-12 | 2026-10-14 | 388.7d | 0d |  |  |  | Aerother | 17DY74 | Ruroci¹g | Budowa | Roboty | Pawe³ | Uk³ad | PM000 | Zespó³-W | Blok | Wysoki | Pakiet | L2 |

| ID | WBS | Activity | Duration | Start | Finish | Predecessors | Complete | Remaining | Planned start | Planned finish | Total float | Free float | Calendar | AC_Wykonawca | AC_Obiekt | AC_Dyscyplina | AC_Faza | AC_Zakres | AC_Opiekun | AC_Obszar | AC_PP_PM | AC_Zespol | AC_Blok | AC_Priorytet | AC_Pakiet | AC_Poziom | Rewizja dokumentu | Uwagi harmonogramisty |
| --- | --- | --- | --- | --- | --- | --- | --- | --- | --- | --- | --- | --- | --- | --- | --- | --- | --- | --- | --- | --- | --- | --- | --- | --- | --- | --- | --- | --- |
|  | SEKCJA 12 | **Sekcja 12** |  | 2026-01-15 | 2026-10-30 |  |  |  |  |  |  |  |  |  |  |  |  |  |  |  |  |  |  |  |  |  |  |  |
|  | PODSEKCJA | **Podsekcja 12.A** |  | 2026-01-15 | 2026-10-30 |  |  |  |  |  |  |  |  |  |  |  |  |  |  |  |  |  |  |  |  |  |  |  |
| 17DY74-080 |  | Prefabrykacja ruroci¹gów – Sekcja 12 | 11.6d | 2026-01-15 A | 2026-02-02 A | 17DY74-012, 17DY74-075 SS+5d | 100% |  | 2026-01-15 | 2026-01-29 |  |  |  | Aerother | 17DY74 | Ruroci¹g | Budowa | Roboty | Pawe³ | Uk³ad | PM000 | Zespó³-K | Blok | Normalny | Pakiet | L2 |  |  |
| 17DY74-081 |  | Monta¿ ruroci¹gów – Sekcja 12 | 7d | 2026-10-01 A | 2026-10-13 | 17DY74-080, 17DY74-014 SS+10d | 20% | 5.6d | 2026-10-01 | 2026-10-09 | 387.6d | 0d | Kalendarz 6-dniowy | Aerother | 17DY74 | Ruroci¹g | Budowa | Roboty | Pawe³ | Uk³ad | PM000 | Zespó³-K | Blok | Wysoki | Pakiet | L2 |  |  |
| 17DY74-082 |  | Próba ciœnieniowa – Sekcja 12 | 6d | 2026-10-14 | 2026-10-21 | 17DY74-081 |  |  | 2026-10-12 | 2026-10-19 | 385d | 0d |  | Aerother | 17DY74 | Ruroci¹g | Budowa | Roboty | Pawe³ | Uk³ad | PM000 | Zespó³-K | Blok | Wysoki | Pakiet | L2 |  |  |
| 17DY74-083 |  | Izolacje – Sekcja 12 | 5d | 2026-10-22 | 2026-10-28 | 17DY74-082 |  |  | 2026-10-20 | 2026-10-26 | 385d | 0d | Kalendarz 6-dniowy | Aerother | 17DY74 | Ruroci¹g | Budowa | Roboty | Pawe³ | Uk³ad | PM000 | Zespó³-W | Blok | Normalny | Pakiet | L2 | Rev A |  |
| 17DY74-084 |  | Malowanie i oznakowanie – Sekcja 12 | 7d | 2026-10-22 | 2026-10-30 | 17DY74-083 FF+2d |  |  | 2026-10-20 | 2026-10-28 | 385d | 0d |  | Aerother | 17DY74 | Ruroci¹g | Budowa | Roboty | Pawe³ | Uk³ad | PM000 | Zespó³-K | Blok | Normalny | Pakiet | L2 | Rev C | Ryzyko opóŸnienia |
|  | SEKCJA 13 | **Sekcja 13** |  | 2026-01-21 | 2026-11-04 |  |  |  |  |  |  |  |  |  |  |  |  |  |  |  |  |  |  |  |  |  |  |  |
| 17DY74-087 |  | Prefabrykacja ruroci¹gów – Sekcja 13 | 3.3d | 2026-01-21 A | 2026-01-27 A | 17DY74-012, 17DY74-080 SS+5d | 100% |  | 2026-01-22 | 2026-01-26 |  |  |  | Aerother | 17DY74 | Ruroci¹g | Budowa | Roboty | Pawe³ | Uk³ad | PM000 | Zespó³-K | Blok | Normalny | Pakiet | L2 |  |  |
| 17DY74-088 |  | Monta¿ ruroci¹gów – Sekcja 13 | 12.6d | 2026-10-01 A | 2026-10-19 | 17DY74-087, 17DY74-014 SS+8d | 23% | 9.7d | 2026-09-29 | 2026-10-14 | 383d | 0d |  | Aerother | 17DY74 | Ruroci¹g | Budowa | Roboty | Pawe³ | Uk³ad | PM000 | Zespó³-W | Blok | Krytyczn | Pakiet | L2 |  | Ryzyko opóŸnienia |
| 17DY74-089 |  | Próba ciœnieniowa – Sekcja 13 | 4d | 2026-10-20 | 2026-10-23 | 17DY74-088 |  |  | 2026-10-15 | 2026-10-20 | 381.9d | 0d |  | Aerother | 17DY74 | Ruroci¹g | Budowa | Roboty | Pawe³ | Uk³ad | PM000 | Zespó³-W | Blok | Normalny | Pakiet | L2 |  | Bez uwag |
| 17DY74-090 |  | Izolacje – Sekcja 13 | 6d | 2026-10-26 | 2026-11-02 | 17DY74-089 |  |  | 2026-10-21 | 2026-10-28 | 381.9d | 0d |  | Aerother | 17DY74 | Ruroci¹g | Budowa | Roboty | Pawe³ | Uk³ad | PM000 | Zespó³-K | Blok | Normalny | Pakiet | L2 |  |  |
| 17DY74-091 |  | Malowanie i oznakowanie – Sekcja 13 | 6d | 2026-10-28 | 2026-11-04 | 17DY74-090 FF+2d |  |  | 2026-10-23 | 2026-10-30 | 381.9d | 0d | Kalendarz 6-dniowy | Aerother | 17DY74 | Ruroci¹g | Budowa | Roboty | Pawe³ | Uk³ad | PM000 | Zespó³-W | Blok | Normalny | Pakiet | L2 |  |  |
|  | SEKCJA 14 | **Sekcja 14** |  | 2026-02-03 | 2026-11-13 |  |  |  |  |  |  |  |  |  |  |  |  |  |  |  |  |  |  |  |  |  |  |  |
| 17DY74-092 |  | Prefabrykacja ruroci¹gów – Sekcja 14 | 8.4d | 2026-02-03 A | 2026-02-17 A | 17DY74-012, 17DY74-087 SS+5d | 100% |  | 2026-01-29 | 2026-02-09 |  |  |  | Aerother | 17DY74 | Ruroci¹g | Budowa | Roboty | Pawe³ | Uk³ad | PM000 | Zespó³-K | Blok | Normalny | Pakiet | L2 |  |  |
| 17DY74-093 |  | Monta¿ ruroci¹gów – Sekcja 14 | 16.3d | 2026-09-21 A | 2026-10-22 | 17DY74-092, 17DY74-014 SS | 25% | 12.3d | 2026-09-17 | 2026-10-08 | 383.3d | 0d |  | Aerother | 17DY74 | Ruroci¹g | Budowa | Roboty | Pawe³ | Uk³ad | PM000 | Zespó³-K | Blok | Normalny | Pakiet | L2 |  |  |
| 17DY74-094 |  | Próba ciœnieniowa – Sekcja 14 | 2d | 2026-10-23 | 2026-10-26 | 17DY74-093 |  |  | 2026-10-09 | 2026-10-12 | 375.3d | 0d |  | Aerother | 17DY74 | Ruroci¹g | Budowa | Roboty | Pawe³ | Uk³ad | PM000 | Zespó³-W | Blok | Normalny | Pakiet | L2 |  | Do weryfikacji z wykonawc¹ |
| 17DY74-095 |  | Izolacje – Sekcja 14 | 12d | 2026-10-27 | 2026-11-11 | 17DY74-094 |  |  | 2026-10-13 | 2026-10-28 | 375.3d | 0d |  | Aerother | 17DY74 | Ruroci¹g | Budowa | Roboty | Pawe³ | Uk³ad | PM000 | Zespó³-W | Blok | Normalny | Pakiet | L2 |  |  |
| 17DY74-096 |  | Malowanie i oznakowanie – Sekcja 14 | 6d | 2026-11-06 | 2026-11-13 | 17DY74-095 FF+2d |  |  | 2026-10-23 | 2026-10-30 | 375.3d | 0d |  | Aerother | 17DY74 | Ruroci¹g | Budowa | Roboty | Pawe³ | Uk³ad | PM000 | Zespó³-W | Blok | Normalny | Pakiet | L2 |  |  |
|  | SEKCJA 15 | **Sekcja 15** |  | 2026-02-05 | 2026-10-26 |  |  |  |  |  |  |  |  |  |  |  |  |  |  |  |  |  |  |  |  |  |  |  |
|  | PODSEKCJA | **Podsekcja 15.A** |  | 2026-02-05 | 2026-10-26 |  |  |  |  |  |  |  |  |  |  |  |  |  |  |  |  |  |  |  |  |  |  |  |
| 17DY74-099 |  | Prefabrykacja ruroci¹gów – Sekcja 15 | 14d | 2026-02-05 A | 2026-02-24 A | 17DY74-012, 17DY74-092 SS+5d | 100% |  |  |  |  |  | Kalendarz 6-dniowy | Aerother | 17DY74 | Ruroci¹g | Budowa | Roboty | Pawe³ | Uk³ad | PM000 | Zespó³-W | Blok | Normalny | Pakiet | L2 | Rev C |  |
| 17DY74-100 |  | Monta¿ ruroci¹gów – Sekcja 15 | 16.2d | 2026-09-24 A | 2026-10-09 | 17DY74-099, 17DY74-014 SS+2d | 80% | 3.3d | 2026-09-21 | 2026-10-12 | 386.4d | 0d |  | Aerother | 17DY74 | Ruroci¹g | Budowa | Roboty | Pawe³ | Uk³ad | PM000 | Zespó³-W | Blok | Normalny | Pakiet | L2 |  | Ryzyko opóŸnienia |
| 17DY74-101 |  | Próba ciœnieniowa – Sekcja 15 | 3d | 2026-10-12 | 2026-10-14 | 17DY74-100 |  |  | 2026-10-13 | 2026-10-15 | 390.3d | 0d |  | Aerother | 17DY74 | Ruroci¹g | Budowa | Roboty | Pawe³ | Uk³ad | PM000 | Zespó³-W | Blok | Normalny | Pakiet | L2 |  |  |
| 17DY74-102 |  | Izolacje – Sekcja 15 | 5d | 2026-10-16 | 2026-10-22 | 17DY74-101 |  |  |  |  | 389.6d | 0d |  | Aerother | 17DY74 | Ruroci¹g | Budowa | Roboty | Pawe³ | Uk³ad | PM000 | Zespó³-W | Blok | Normalny | Pakiet | L2 | Rev A |  |
| 17DY74-103 |  | Malowanie i oznakowanie – Sekcja 15 | 4d | 2026-10-21 | 2026-10-26 | 17DY74-102 FF+2d |  |  |  |  | 389.6d | 0d |  | Aerother | 17DY74 | Ruroci¹g | Budowa | Roboty | Pawe³ | Uk³ad | PM000 | Zespó³-K | Blok | Normalny | Pakiet | L2 |  |  |

| ID | WBS | Activity | Type | Duration | Start | Finish | Predecessors | Complete | Remaining | Actual finish | Planned start | Planned finish | Total float | Free float | Calendar | Uwagi harmonogramisty | Rewizja dokumentu | AC_Wykonawca | AC_Obiekt | AC_Dyscyplina | AC_Faza | AC_Zakres | AC_Opiekun | AC_Obszar | AC_PP_PM | AC_Zespol | AC_Blok | AC_Priorytet | AC_Pakiet | AC_Poziom |
| --- | --- | --- | --- | --- | --- | --- | --- | --- | --- | --- | --- | --- | --- | --- | --- | --- | --- | --- | --- | --- | --- | --- | --- | --- | --- | --- | --- | --- | --- | --- |
|  | SEKCJA 16 | **Sekcja 16** |  |  | 2026-02-11 | 2026-11-02 |  |  |  |  |  |  |  |  |  |  |  |  |  |  |  |  |  |  |  |  |  |  |  |  |
| 17DY74-104 |  | Prefabrykacja ruroci¹gów – Sekcja 16 |  | 13.9d | 2026-02-11 A | 2026-03-03 A | 17DY74-012, 17DY74-099 SS+5d | 100% |  |  | 2026-02-12 | 2026-03-02 |  |  |  | Czeka na dostawê | Rev C | Aerother | 17DY74 | Ruroci¹g | Budowa | Roboty | Pawe³ | Uk³ad | PM000 | Zespó³-K | Blok | Normalny | Pakiet | L2 |
| 17DY74-105 |  | Monta¿ ruroci¹gów – Sekcja 16 |  | 18.1d | 2026-09-21 A | 2026-10-20 | 17DY74-104, 17DY74-014 SS+2d | 42% | 10.5d |  | 2026-09-21 | 2026-10-14 | 345.5d | 0d |  | Do weryfikacji z wykonawc¹ |  | Aerother | 17DY74 | Ruroci¹g | Budowa | Roboty | Pawe³ | Uk³ad | PM000 | Zespó³-K | Blok | Normalny | Pakiet | L2 |
| 17DY74-106 |  | Próba ciœnieniowa – Sekcja 16 |  | 4d | 2026-10-21 | 2026-10-26 | 17DY74-105 |  |  |  | 2026-10-15 | 2026-10-20 | 341.1d | 0d |  |  |  | Aerother | 17DY74 | Ruroci¹g | Budowa | Roboty | Pawe³ | Uk³ad | PM000 | Zespó³-K | Blok | Normalny | Pakiet | L2 |
| 17DY74-108 |  | Malowanie i oznakowanie – Sekcja 16 |  | 6d | 2026-10-26 | 2026-11-02 | 17DY74-107 FF+2d |  |  |  | 2026-10-20 | 2026-10-27 | 341.1d | 0d |  |  | Rev C | Aerother | 17DY74 | Ruroci¹g | Budowa | Roboty | Pawe³ | Uk³ad | PM000 | Zespó³-K | Blok | Normalny | Pakiet | L2 |
| 17DY74-107 |  | Izolacje – Sekcja 16 |  | 3d | 2026-10-27 | 2026-10-29 | 17DY74-106 |  |  |  | 2026-10-21 | 2026-10-23 | 341.1d | 0d |  |  | Rev A | Aerother | 17DY74 | Ruroci¹g | Budowa | Roboty | Pawe³ | Uk³ad | PM000 | Zespó³-W | Blok | Normalny | Pakiet | L2 |
|  | SEKCJA 17 | **Sekcja 17** |  |  | 2026-02-24 | 2026-10-28 |  |  |  |  |  |  |  |  |  |  |  |  |  |  |  |  |  |  |  |  |  |  |  |  |
| 17DY74-111 |  | Prefabrykacja ruroci¹gów – Sekcja 17 |  | 8.3d | 2026-02-24 A | 2026-03-10 A | 17DY74-012, 17DY74-104 SS+5d | 100% |  |  | 2026-02-19 | 2026-03-02 |  |  |  |  | Rev A | Aerother | 17DY74 | Ruroci¹g | Budowa | Roboty | Pawe³ | Uk³ad | PM000 | Zespó³-K | Blok | Normalny | Pakiet | L2 |
| 17DY74-112 |  | Monta¿ ruroci¹gów – Sekcja 17 |  | 6.4d | 2026-09-30 A | 2026-10-06 A | 17DY74-111, 17DY74-014 SS+8d | 100% |  |  | 2026-09-29 | 2026-10-06 |  |  |  |  |  | Aerother | 17DY74 | Ruroci¹g | Budowa | Roboty | Pawe³ | Uk³ad | PM000 | Zespó³-W | Blok | Normalny | Pakiet | L2 |
| 17DY74-113 |  | Próba ciœnieniowa – Sekcja 17 |  | 6d | 2026-10-07 | 2026-10-14 | 17DY74-112 |  |  |  |  |  | 344.6d | 0d |  |  |  | Aerother | 17DY74 | Ruroci¹g | Budowa | Roboty | Pawe³ | Uk³ad | PM000 | Zespó³-K | Blok | Normalny | Pakiet | L2 |
| 17DY74-114 |  | Izolacje – Sekcja 17 |  | 8d | 2026-10-15 | 2026-10-26 | 17DY74-113 |  |  |  |  |  | 344.6d | 0d |  |  | Rev A | Aerother | 17DY74 | Ruroci¹g | Budowa | Roboty | Pawe³ | Uk³ad | PM000 | Zespó³-K | Blok | Normalny | Pakiet | L2 |
| 17DY74-115 |  | Malowanie i oznakowanie – Sekcja 17 |  | 7d | 2026-10-20 | 2026-10-28 | 17DY74-114 FF+2d |  |  |  |  |  | 344.6d | 0d |  | Uzgodnione na koordynacji | Rev C | Aerother | 17DY74 | Ruroci¹g | Budowa | Roboty | Pawe³ | Uk³ad | PM100 | Zespó³-I | Blok | Niski | Pakiet | L2 |
|  | PROJ | **Projektowanie** |  |  | 2025-03-05 | 2025-09-09 |  |  |  |  |  |  |  |  |  |  |  |  |  |  |  |  |  |  |  |  |  |  |  |  |
|  | DOKUMENTAC | **Dokumentacja** |  |  | 2025-03-05 | 2025-09-09 |  |  |  |  |  |  |  |  |  |  |  |  |  |  |  |  |  |  |  |  |  |  |  |  |
| 17DY74-001 |  | Projekt wykonawczy – Uziemienia i ochrona odgromowa |  | 88d | 2025-03-05 A | 2025-07-04 A |  | 100% |  |  | 2025-03-06 | 2025-07-07 |  |  |  | Bez uwag |  | Aerother | 17DY74 | Budowlan | Projekto | Projekt | Pawe³ | Uk³ad | PM000 | Zespó³-K | Blok | Normalny | Pakiet | L2 |
| 17DY74-002 |  | Uzgodnienie dokumentacji z Inwestorem |  | 30d | 2025-07-07 A | 2025-08-18 A | 17DY74-001 | 100% |  |  | 2025-07-08 | 2025-08-18 |  |  |  |  | Rev A | Aerother | 17DY74 | Budowlan | Projekto | Projekt | Pawe³ | Uk³ad | PM000 | Zespó³-K | Blok | Wysoki | Pakiet | L2 |
| 17DY74-003 |  | Zatwierdzenie dokumentacji do realizacji |  | 12d | 2025-08-20 A | 2025-09-09 A | 17DY74-002 | 100% |  |  | 2025-08-19 | 2025-09-03 |  |  |  |  |  | Aerother | 17DY74 | Budowlan | Projekto | Projekt | Pawe³ | Uk³ad | PM000 | Zespó³-K | Blok | Wysoki | Pakiet | L2 |
| 17DY74-004 |  | KM: Dokumentacja zatwierdzona – Uziemienia i ochrona odgromowa | milestone | 0d | 2025-09-09 A | 2025-09-09 | 17DY74-003 | 100% |  | 2025-09-08 | 2025-09-04 | 2025-09-04 |  |  |  |  |  | Aerother | 17DY74 | Budowlan | Projekto | Kamieñ | Pawe³ | Uk³ad | PM000 | Zespó³-E | Blok | Normalny | Pakiet | L1 |
|  | ROZR | **Rozruch** |  |  | 2026-11-27 | 2027-01-13 |  |  |  |  |  |  |  |  |  |  |  |  |  |  |  |  |  |  |  |  |  |  |  |  |
|  | ROZRUCH | **Rozruch** |  |  | 2026-11-27 | 2027-01-13 |  |  |  |  |  |  |  |  |  |  |  |  |  |  |  |  |  |  |  |  |  |  |  |  |
| 17DY74-118 |  | Przegl¹d gotowoœci do rozruchu |  | 7d | 2026-11-27 | 2026-12-07 | 17DY74-117, 17DY74-019, 17DY74-024, 17DY74-026 |  |  |  | 2026-11-26 | 2026-12-04 | 323.1d | 0d | Kalendarz 6-dniowy |  | Rev C | Aerother | 17DY74 | Rozruch | Rozruch | Rozruch | Pawe³ | Uk³ad | PM000 | Zespó³-W | Blok | Normalny | Pakiet | L2 |
| 17DY74-119 |  | Rozruch na zimno |  | 6d | 2026-12-08 | 2026-12-15 | 17DY74-118 |  |  |  | 2026-12-07 | 2026-12-14 | 323.1d | 0d |  |  |  | Aerother | 17DY74 | Rozruch | Rozruch | Rozruch | Pawe³ | Uk³ad | PM000 | Zespó³-W | Blok | Normalny | Pakiet | L2 |
| 17DY74-120 |  | Rozruch na gor¹co / próby ruchowe |  | 20d | 2026-12-16 | 2027-01-12 | 17DY74-119 |  |  |  | 2026-12-15 | 2027-01-11 | 323.1d | 0d | Kalendarz 6-dniowy | Czeka na dostawê | Rev B | Aerother | 17DY74 | Rozruch | Rozruch | Rozruch | Pawe³ | Uk³ad | PM000 | Zespó³-W | Blok | Normalny | Pakiet | L2 |
| 17DY74-121 |  | KM: Odbiór koñcowy – Uziemienia i ochrona odgromowa | milestone | 0d | 2027-01-13 | 2027-01-13 | 17DY74-120 |  |  |  | 2027-01-12 | 2027-01-12 | 323.1d | 0d |  |  | Rev A | Aerother | 17DY74 | Rozruch | Rozruch | Kamieñ | Pawe³ | Uk³ad | PM000 | Zespó³-K | Blok | Normalny | Pakiet | L1 |

| ID | WBS | Activity | Type | Duration | Start | Finish | Predecessors | Complete | Actual finish | Planned start | Planned finish | Total float | Free float | Calendar | AC_Wykonawca | AC_Obiekt | AC_Dyscyplina | AC_Faza | AC_Zakres | AC_Opiekun | AC_Obszar | AC_PP_PM | AC_Zespol | AC_Blok | AC_Priorytet | AC_Pakiet | AC_Poziom | Uwagi harmonogramisty | Rewizja dokumentu |
| --- | --- | --- | --- | --- | --- | --- | --- | --- | --- | --- | --- | --- | --- | --- | --- | --- | --- | --- | --- | --- | --- | --- | --- | --- | --- | --- | --- | --- | --- |
|  | ZAKU | **Zakupy** |  |  | 2025-04-04 | 2026-09-18 |  |  |  |  |  |  |  |  |  |  |  |  |  |  |  |  |  |  |  |  |  |  |  |
|  | DOSTAWY | **Dostawy** |  |  | 2025-09-18 | 2026-09-18 |  |  |  |  |  |  |  |  |  |  |  |  |  |  |  |  |  |  |  |  |  |  |  |
| 17DY74-008 |  | Produkcja u dostawcy |  | 238d | 2025-09-18 A | 2026-08-18 A | 17DY74-007 | 100% |  | 2025-09-16 | 2026-08-13 |  |  |  | Aerother | 17DY74 | Mechanic | Zakupy | Dostawa | Pawe³ | Uk³ad | PM000 | Zespó³-W | Blok | Normalny | Pakiet | L2 |  |  |
| 17DY74-009 |  | Testy FAT |  | 6d | 2026-08-18 A | 2026-08-27 A | 17DY74-008 | 100% |  | 2026-08-14 | 2026-08-21 |  |  |  | Aerother | 17DY74 | Mechanic | Zakupy | Dostawa | Pawe³ | Uk³ad | PM000 | Zespó³-W | Blok | Normalny | Pakiet | L2 | Ryzyko opóŸnienia |  |
| 17DY74-010 |  | Transport i dostawa na plac budowy |  | 18d | 2026-08-24 A | 2026-09-18 A | 17DY74-009 | 100% |  | 2026-08-24 | 2026-09-16 |  |  |  | Aerother | 17DY74 | Mechanic | Zakupy | Dostawa | Pawe³ | Uk³ad | PM200 | Zespó³-I | Blok | Normalny | Pakiet | L2 |  |  |
| 17DY74-011 |  | KM: Dostawa na budowê – Uziemienia i ochrona odgromowa | milestone | 0d | 2026-09-17 A | 2026-09-17 | 17DY74-010 | 100% | 2026-09-16 |  |  |  |  |  | Aerother | 17DY74 | Mechanic | Zakupy | Kamieñ | Pawe³ | Uk³ad | PM000 | Zespó³-W | Blok | Niski | Pakiet | L1 |  |  |
|  | ZAMÓWIENIA | **Zamówienia** |  |  | 2025-04-04 | 2025-09-16 |  |  |  |  |  |  |  |  |  |  |  |  |  |  |  |  |  |  |  |  |  |  |  |
| 17DY74-005 |  | Zapytanie ofertowe |  | 26d | 2025-04-04 A | 2025-05-14 A | 17DY74-001 SS+20d | 100% |  | 2025-04-03 | 2025-05-08 |  |  |  | Aerother | 17DY74 | Mechanic | Zakupy | Dostawa | Pawe³ | Uk³ad | PM000 | Zespó³-K | Blok | Normalny | Pakiet | L2 | Bez uwag |  |
| 17DY74-006 |  | Analiza i wybór ofert |  | 17d | 2025-05-14 A | 2025-06-10 A | 17DY74-005 | 100% |  | 2025-05-09 | 2025-06-02 |  |  |  | Aerother | 17DY74 | Mechanic | Zakupy | Dostawa | Pawe³ | Uk³ad | PM000 | Zespó³-K | Blok | Normalny | Pakiet | L2 |  | Rev B |
| 17DY74-007 |  | Zawarcie umowy / zamówienie |  | 5d | 2025-09-09 A | 2025-09-16 A | 17DY74-006, 17DY74-004 SS, 10YD43-004 (other project) FS+12d | 100% |  | 2025-09-09 | 2025-09-15 |  |  |  | Aerother | 17DY74 | Mechanic | Zakupy | Dostawa | Pawe³ | Uk³ad | PM000 | Zespó³-E | Blok | Wysoki | Pakiet | L1 |  |  |
|  | 26NP30 | **26NP30 – Rozdzielnia nN** |  |  | 2025-04-01 | 2027-03-09 |  |  |  |  |  |  |  |  |  |  |  |  |  |  |  |  |  |  |  |  |  |  |  |
|  | BUDO | **Budowa** |  |  | 2025-11-07 | 2027-02-18 |  |  |  |  |  |  |  |  |  |  |  |  |  |  |  |  |  |  |  |  |  |  |  |
|  | AKPIA | **AKPiA** |  |  | 2026-10-23 | 2026-11-23 |  |  |  |  |  |  |  |  |  |  |  |  |  |  |  |  |  |  |  |  |  |  |  |
| 26NP30-152 |  | Monta¿ uk³adów AKPiA |  | 22d | 2026-10-23 | 2026-11-23 | 26NP30-014 SS+5d |  |  | 2026-11-17 | 2026-12-16 | 323.3d | 0d |  | Aerother | 26NP30 | AKPiA | Budowa | Roboty | Krzyszto | Uk³ad | PM000 | Zespó³-K | Wspólne | Normalny | Pakiet | L2 | Do weryfikacji z wykonawc¹ | Rev C |
|  | ELEKTRYKA | **Elektryka** |  |  | 2026-10-30 | 2027-01-20 |  |  |  |  |  |  |  |  |  |  |  |  |  |  |  |  |  |  |  |  |  |  |  |
| 26NP30-025 |  | Uk³adanie kabli – trasa 02 |  | 4d | 2026-10-30 | 2026-11-04 | 26NP30-014 SS+10d |  |  | 2026-11-24 | 2026-11-27 | 336.3d | 0d | Kalendarz 6-dniowy | Aerother | 26NP30 | Elektryc | Budowa | Roboty | Krzyszto | Uk³ad | PM000 | Zespó³-W | Wspólne | Niski | Pakiet | L2 |  |  |
| 26NP30-037 |  | Uk³adanie kabli – trasa 04 |  | 6d | 2026-10-30 | 2026-11-06 | 26NP30-014 SS+10d |  |  | 2026-11-24 | 2026-12-01 | 380.3d | 0d | Kalendarz 6-dniowy | Aerother | 26NP30 | Elektryc | Budowa | Roboty | Krzyszto | Uk³ad | PM000 | Zespó³-W | Wspólne | Normalny | Pakiet | L2 |  |  |
| 26NP30-049 |  | Uk³adanie kabli – trasa 06 |  | 19d | 2026-10-30 | 2026-11-25 | 26NP30-014 SS+10d |  |  | 2026-11-24 | 2026-12-18 | 367.3d | 0d |  | Aerother | 26NP30 | Elektryc | Budowa | Roboty | Krzyszto | Uk³ad | PM000 | Zespó³-K | Wspólne | Normalny | Pakiet | L2 |  |  |
| 26NP30-061 |  | Uk³adanie kabli – trasa 08 |  | 13d | 2026-10-30 | 2026-11-17 | 26NP30-014 SS+10d |  |  | 2026-11-24 | 2026-12-10 | 373.3d | 0d |  | Aerother | 26NP30 | Elektryc | Budowa | Roboty | Krzyszto | Uk³ad | PM000 | Zespó³-W | Wspólne | Normalny | Pakiet | L2 |  | Rev C |
| 26NP30-073 |  | Uk³adanie kabli – trasa 10 |  | 16d | 2026-10-30 | 2026-11-20 | 26NP30-014 SS+10d |  |  | 2026-11-24 | 2026-12-15 | 370.3d | 0d |  | Aerother | 26NP30 | Elektryc | Budowa | Roboty | Krzyszto | Uk³ad | PM000 | Zespó³-W | Wspólne | Normalny | Pakiet | L2 | Ryzyko opóŸnienia | Rev B |
| 26NP30-085 |  | Uk³adanie kabli – trasa 12 |  | 14d | 2026-10-30 | 2026-11-18 | 26NP30-014 SS+10d |  |  | 2026-11-24 | 2026-12-11 | 372.3d | 0d |  | Aerother | 26NP30 | Elektryc | Budowa | Roboty | Krzyszto | Uk³ad | PM000 | Zespó³-W | Wspólne | Normalny | Pakiet | L2 |  |  |
| 26NP30-097 |  | Uk³adanie kabli – trasa 14 |  | 15d | 2026-10-30 | 2026-11-19 | 26NP30-014 SS+10d |  |  | 2026-11-24 | 2026-12-14 | 371.3d | 0d |  | Aerother | 26NP30 | Elektryc | Budowa | Roboty | Krzyszto | Uk³ad | PM000 | Zespó³-W | Wspólne | Normalny | Pakiet | L2 |  |  |
| 26NP30-109 |  | Uk³adanie kabli – trasa 16 |  | 20d | 2026-10-30 | 2026-11-26 | 26NP30-014 SS+10d |  |  | 2026-11-24 | 2026-12-21 | 366.3d | 0d |  | Aerother | 26NP30 | Elektryc | Budowa | Roboty | Krzyszto | Uk³ad | PM000 | Zespó³-W | Wspólne | Normalny | Pakiet | L2 |  |  |
| 26NP30-122 |  | Pod³¹czenia i pomiary – trasa 18 |  | 6d | 2026-10-30 | 2026-11-06 | 26NP30-121 FF |  |  | 2026-11-20 | 2026-11-27 | 380.6d | 0d |  | Aerother | 26NP30 | Elektryc | Budowa | Roboty | Krzyszto | Uk³ad | PM000 | Zespó³-W | Wspólne | Normalny | Pakiet | L2 |  |  |
| 26NP30-133 |  | Uk³adanie kabli – trasa 20 |  | 13d | 2026-10-30 | 2026-11-17 | 26NP30-014 SS+10d |  |  | 2026-11-24 | 2026-12-10 | 373.3d | 0d |  | Aerother | 26NP30 | Elektryc | Budowa | Roboty | Krzyszto | Uk³ad | PM000 | Zespó³-K | Wspólne | Normalny | Pakiet | L2 | Bez uwag |  |
| 26NP30-145 |  | Uk³adanie kabli – trasa 22 |  | 17d | 2026-10-30 | 2026-11-23 | 26NP30-014 SS+10d |  |  | 2026-11-24 | 2026-12-16 | 323.3d | 0d |  | Aerother | 26NP30 | Elektryc | Budowa | Roboty | Krzyszto | Uk³ad | PM000 | Zespó³-K | Wspólne | Normalny | Pakiet | L2 |  |  |
| 26NP30-121 |  | Uk³adanie kabli – trasa 18 |  | 4d | 2026-11-03 | 2026-11-06 | 26NP30-014 SS+10d |  |  | 2026-11-24 | 2026-11-27 | 380.6d | 0d |  | Aerother | 26NP30 | Elektryc | Budowa | Roboty | Krzyszto | Uk³ad | PM000 | Zespó³-W | Wspólne | Normalny | Pakiet | L2 |  |  |
| 26NP30-062 |  | Pod³¹czenia i pomiary – trasa 08 |  | 9d | 2026-11-05 | 2026-11-17 | 26NP30-061 FF |  |  | 2026-11-30 | 2026-12-10 | 373.3d | 0d |  | Aerother | 26NP30 | Elektryc | Budowa | Roboty | Krzyszto | Uk³ad | PM000 | Zespó³-K | Wspólne | Normalny | Pakiet | L2 | Do weryfikacji z wykonawc¹ |  |
| 26NP30-134 |  | Pod³¹czenia i pomiary – trasa 20 |  | 8d | 2026-11-06 | 2026-11-17 | 26NP30-133 FF |  |  | 2026-12-01 | 2026-12-10 | 373.3d | 0d |  | Aerother | 26NP30 | Elektryc | Budowa | Roboty | Krzyszto | Uk³ad | PM000 | Zespó³-K | Wspólne | Niski | Pakiet | L2 |  |  |
| 26NP30-086 |  | Pod³¹czenia i pomiary – trasa 12 |  | 7d | 2026-11-10 | 2026-11-18 | 26NP30-085 FF |  |  | 2026-12-03 | 2026-12-11 | 372.3d | 0d |  | Aerother | 26NP30 | Elektryc | Budowa | Roboty | Krzyszto | Uk³ad | PM000 | Zespó³-E | Wspólne | Normalny | Pakiet | L2 |  |  |
| 26NP30-074 |  | Pod³¹czenia i pomiary – trasa 10 |  | 7d | 2026-11-12 | 2026-11-20 | 26NP30-073 FF |  |  | 2026-12-07 | 2026-12-15 | 370.3d | 0d |  | Aerother | 26NP30 | Elektryc | Budowa | Roboty | Krzyszto | Uk³ad | PM000 | Zespó³-W | Wspólne | Normalny | Pakiet | L2 |  |  |
| 26NP30-146 |  | Pod³¹czenia i pomiary – trasa 22 |  | 8d | 2026-11-12 | 2026-11-23 | 26NP30-145 FF |  |  | 2026-12-07 | 2026-12-16 | 323.3d | 0d |  | Aerother | 26NP30 | Elektryc | Budowa | Roboty | Krzyszto | Uk³ad | PM000 | Zespó³-W | Wspólne | Normalny | Pakiet | L2 |  | Rev A |
| 26NP30-098 |  | Pod³¹czenia i pomiary – trasa 14 |  | 5d | 2026-11-13 | 2026-11-19 | 26NP30-097 FF |  |  | 2026-12-08 | 2026-12-14 | 371.3d | 0d |  | Aerother | 26NP30 | Elektryc | Budowa | Roboty | Krzyszto | Uk³ad | PM000 | Zespó³-K | Wspólne | Niski | Pakiet | L2 |  | Rev B |
| 26NP30-050 |  | Pod³¹czenia i pomiary – trasa 06 |  | 3d | 2026-11-23 | 2026-11-25 | 26NP30-049 FF |  |  | 2026-12-16 | 2026-12-18 | 367.3d | 0d | Kalendarz 6-dniowy | Aerother | 26NP30 | Elektryc | Budowa | Roboty | Krzyszto | Uk³ad | PM000 | Zespó³-W | Wspólne | Wysoki | Pakiet | L2 |  |  |
| 26NP30-110 |  | Pod³¹czenia i pomiary – trasa 16 |  | 3d | 2026-11-24 | 2026-11-26 | 26NP30-109 FF |  |  | 2026-12-17 | 2026-12-21 | 366.3d | 0d | Kalendarz 6-dniowy | Aerother | 26NP30 | Elektryc | Budowa | Roboty | Krzyszto | Uk³ad | PM000 | Zespó³-K | Wspólne | Normalny | Pakiet | L2 |  | Rev C |
| 26NP30-026 |  | Pod³¹czenia i pomiary – trasa 02 |  | 5d | 2027-01-07 | 2027-01-13 | 26NP30-025 FF |  |  | 2026-11-23 | 2026-11-27 | 286.6d | 0d |  | Aerother | 26NP30 | Elektryc | Budowa | Roboty | Krzyszto | Uk³ad | PM000 | Zespó³-I | Wspólne | Wysoki | Pakiet | L2 |  | Rev B |
| 26NP30-038 |  | Pod³¹czenia i pomiary – trasa 04 |  | 6d | 2027-01-13 | 2027-01-20 | 26NP30-037 FF |  |  | 2026-11-24 | 2026-12-01 | 327.6d | 0d |  | Aerother | 26NP30 | Elektryc | Budowa | Roboty | Krzyszto | Uk³ad | PM100 | Zespó³-I | Wspólne | Krytyczn | Pakiet | L2 | Czeka na dostawê | Rev A |

| ID | WBS | Activity | Type | Duration | Start | Finish | Predecessors | Complete | Planned start | Planned finish | Total float | Free float | Calendar | AC_Wykonawca | AC_Obiekt | AC_Dyscyplina | AC_Faza | AC_Zakres | AC_Opiekun | AC_Obszar | AC_PP_PM | AC_Zespol | AC_Blok | AC_Priorytet | AC_Pakiet | AC_Poziom | Uwagi harmonogramisty | Rewizja dokumentu |
| --- | --- | --- | --- | --- | --- | --- | --- | --- | --- | --- | --- | --- | --- | --- | --- | --- | --- | --- | --- | --- | --- | --- | --- | --- | --- | --- | --- | --- |
|  | MONTA¯ | **Monta¿** |  |  | 2026-02-02 | 2027-01-18 |  |  |  |  |  |  |  |  |  |  |  |  |  |  |  |  |  |  |  |  |  |  |
| 26NP30-013 |  | Monta¿ konstrukcji stalowych |  | 49d | 2026-02-02 A | 2026-04-13 A | 26NP30-012 | 100% | 2026-01-28 | 2026-04-06 |  |  |  | Aerother | 26NP30 | Mechanic | Budowa | Roboty | Krzyszto | Uk³ad | PM100 | Zespó³-I | Wspólne | Normalny | Pakiet | L2 |  |  |
| 26NP30-014 |  | Monta¿ urz¹dzeñ g³ównych |  | 66d | 2026-10-16 | 2027-01-15 | 26NP30-013, 26NP30-011 |  | 2026-11-10 | 2027-02-09 | 284.3d | 0d |  | Aerother | 26NP30 | Mechanic | Budowa | Roboty | Krzyszto | Uk³ad | PM000 | Zespó³-W | Wspólne | Normalny | Pakiet | L2 |  |  |
| 26NP30-153 |  | KM: Zakoñczenie monta¿u – Rozdzielnia nN | milestone | 0d | 2027-01-18 | 2027-01-18 | 26NP30-144, 26NP30-146, 26NP30-151, 26NP30-152, 26NP30-014 |  | 2027-02-10 | 2027-02-10 | 284.3d | 0d |  | Aerother | 26NP30 | Mechanic | Budowa | Kamieñ | Krzyszto | Uk³ad | PM000 | Zespó³-W | Wspólne | Normalny | Pakiet | L2 | Ryzyko opóŸnienia |  |
|  | ROBOTY BUD | **Roboty budowlane** |  |  | 2025-11-07 | 2026-01-27 |  |  |  |  |  |  |  |  |  |  |  |  |  |  |  |  |  |  |  |  |  |  |
| 26NP30-012 |  | Fundamenty i roboty ziemne |  | 58d | 2025-11-07 A | 2026-01-27 A | 26NP30-007 FS+10d | 100% |  |  |  |  | Kalendarz 6-dniowy | Aerother | 26NP30 | Budowlan | Budowa | Roboty | Krzyszto | Uk³ad | PM000 | Zespó³-K | Wspólne | Normalny | Pakiet | L2 |  |  |
|  | RUROCI¥GI | **Ruroci¹gi** |  |  | 2026-02-02 | 2027-02-18 |  |  |  |  |  |  |  |  |  |  |  |  |  |  |  |  |  |  |  |  |  |  |
|  | SEKCJA 01 | **Sekcja 01** |  |  | 2026-02-02 | 2026-11-25 |  |  |  |  |  |  |  |  |  |  |  |  |  |  |  |  |  |  |  |  |  |  |
| 26NP30-015 |  | Prefabrykacja ruroci¹gów – Sekcja 01 |  | 13.9d | 2026-02-02 A | 2026-02-18 A | 26NP30-012 | 100% | 2026-01-28 | 2026-02-13 |  |  |  | Aerother | 26NP30 | Ruroci¹g | Budowa | Roboty | Krzyszto | Uk³ad | PM000 | Zespó³-W | Wspólne | Normalny | Pakiet | L2 |  |  |
| 26NP30-016 |  | Monta¿ ruroci¹gów – Sekcja 01 |  | 7.6d | 2026-10-26 | 2026-11-03 | 26NP30-015, 26NP30-014 SS+6d |  | 2026-11-18 | 2026-11-26 | 320.7d | 0d |  | Aerother | 26NP30 | Ruroci¹g | Budowa | Roboty | Krzyszto | Uk³ad | PM000 | Zespó³-W | Wspólne | Normalny | Pakiet | L2 | Do weryfikacji z wykonawc¹ | Rev A |
| 26NP30-017 |  | Próba ciœnieniowa – Sekcja 01 |  | 2d | 2026-11-04 | 2026-11-05 | 26NP30-016 |  | 2026-11-27 | 2026-11-30 | 320.7d | 0d |  | Aerother | 26NP30 | Ruroci¹g | Budowa | Roboty | Krzyszto | Uk³ad | PM000 | Zespó³-W | Wspólne | Niski | Pakiet | L2 |  |  |
| 26NP30-018 |  | Izolacje – Sekcja 01 |  | 12d | 2026-11-06 | 2026-11-23 | 26NP30-017 |  | 2026-12-01 | 2026-12-16 | 320.7d | 0d |  | Aerother | 26NP30 | Ruroci¹g | Budowa | Roboty | Krzyszto | Uk³ad | PM000 | Zespó³-W | Wspólne | Normalny | Pakiet | L2 |  | Rev A |
| 26NP30-019 |  | Malowanie i oznakowanie – Sekcja 01 |  | 4d | 2026-11-20 | 2026-11-25 | 26NP30-018 FF+2d |  | 2026-12-15 | 2026-12-18 | 320.7d | 0d |  | Aerother | 26NP30 | Ruroci¹g | Budowa | Roboty | Krzyszto | Uk³ad | PM000 | Zespó³-K | Wspólne | Normalny | Pakiet | L2 | Czeka na dostawê |  |
|  | SEKCJA 02 | **Sekcja 02** |  |  | 2026-02-09 | 2026-12-22 |  |  |  |  |  |  |  |  |  |  |  |  |  |  |  |  |  |  |  |  |  |  |
| 26NP30-020 |  | Prefabrykacja ruroci¹gów – Sekcja 02 |  | 12.6d | 2026-02-09 A | 2026-02-26 A | 26NP30-012, 26NP30-015 SS+5d | 100% | 2026-02-04 | 2026-02-19 |  |  |  | Aerother | 26NP30 | Ruroci¹g | Budowa | Roboty | Krzyszto | Uk³ad | PM000 | Zespó³-W | Wspólne | Normalny | Pakiet | L2 |  |  |
| 26NP30-021 |  | Monta¿ ruroci¹gów – Sekcja 02 |  | 22.6d | 2026-10-28 | 2026-11-26 | 26NP30-020, 26NP30-014 SS+8d |  | 2026-11-20 | 2026-12-21 | 301.7d | 0d |  | Aerother | 26NP30 | Ruroci¹g | Budowa | Roboty | Krzyszto | Uk³ad | PM000 | Zespó³-K | Wspólne | Normalny | Pakiet | L2 |  | Rev A |
| 26NP30-022 |  | Próba ciœnieniowa – Sekcja 02 |  | 4d | 2026-11-27 | 2026-12-02 | 26NP30-021 |  | 2026-12-22 | 2026-12-25 | 301.7d | 0d |  | Aerother | 26NP30 | Ruroci¹g | Budowa | Roboty | Krzyszto | Uk³ad | PM000 | Zespó³-W | Wspólne | Normalny | Pakiet | L2 | Uzgodnione na koordynacji |  |
| 26NP30-023 |  | Izolacje – Sekcja 02 |  | 12d | 2026-12-03 | 2026-12-18 | 26NP30-022 |  | 2026-12-28 | 2027-01-12 | 301.7d | 0d |  | Aerother | 26NP30 | Ruroci¹g | Budowa | Roboty | Krzyszto | Uk³ad | PM000 | Zespó³-W | Wspólne | Normalny | Pakiet | L2 | Bez uwag |  |
| 26NP30-024 |  | Malowanie i oznakowanie – Sekcja 02 |  | 6d | 2026-12-15 | 2026-12-22 | 26NP30-023 FF+2d |  | 2027-01-07 | 2027-01-14 | 301.7d | 0d |  | Aerother | 26NP30 | Ruroci¹g | Budowa | Roboty | Krzyszto | Uk³ad | PM000 | Zespó³-W | Wspólne | Normalny | Pakiet | L2 |  |  |
|  | SEKCJA 03 | **Sekcja 03** |  |  | 2026-02-11 | 2026-11-25 |  |  |  |  |  |  |  |  |  |  |  |  |  |  |  |  |  |  |  |  |  |  |
|  | PODSEKCJA | **Podsekcja 03.A** |  |  | 2026-02-11 | 2026-11-25 |  |  |  |  |  |  |  |  |  |  |  |  |  |  |  |  |  |  |  |  |  |  |
| 26NP30-027 |  | Prefabrykacja ruroci¹gów – Sekcja 03 |  | 12.8d | 2026-02-11 A | 2026-03-02 A | 26NP30-012, 26NP30-020 SS+5d | 100% | 2026-02-11 | 2026-02-26 |  |  |  | Aerother | 26NP30 | Ruroci¹g | Budowa | Roboty | Krzyszto | Uk³ad | PM000 | Zespó³-W | Wspólne | Wysoki | Pakiet | L2 | Czeka na dostawê | Rev A |
| 26NP30-028 |  | Monta¿ ruroci¹gów – Sekcja 03 |  | 13d | 2026-10-21 | 2026-11-06 | 26NP30-027, 26NP30-014 SS+3d |  | 2026-11-13 | 2026-12-01 | 367.3d | 0d |  | Aerother | 26NP30 | Ruroci¹g | Budowa | Roboty | Krzyszto | Uk³ad | PM000 | Zespó³-W | Wspólne | Wysoki | Pakiet | L2 | Uzgodnione na koordynacji |  |
| 26NP30-029 |  | Próba ciœnieniowa – Sekcja 03 |  | 4d | 2026-11-09 | 2026-11-12 | 26NP30-028 |  | 2026-12-02 | 2026-12-07 | 367.3d | 0d |  | Aerother | 26NP30 | Ruroci¹g | Budowa | Roboty | Krzyszto | Uk³ad | PM000 | Zespó³-W | Wspólne | Normalny | Pakiet | L2 | Do weryfikacji z wykonawc¹ |  |
| 26NP30-030 |  | Izolacje – Sekcja 03 |  | 7d | 2026-11-13 | 2026-11-23 | 26NP30-029 |  | 2026-12-08 | 2026-12-16 | 367.3d | 0d |  | Aerother | 26NP30 | Ruroci¹g | Budowa | Roboty | Krzyszto | Uk³ad | PM000 | Zespó³-W | Wspólne | Krytyczn | Pakiet | L2 | Bez uwag |  |
| 26NP30-031 |  | Malowanie i oznakowanie – Sekcja 03 |  | 6d | 2026-11-18 | 2026-11-25 | 26NP30-030 FF+2d |  | 2026-12-11 | 2026-12-18 | 367.3d | 0d |  | Aerother | 26NP30 | Ruroci¹g | Budowa | Roboty | Krzyszto | Uk³ad | PM000 | Zespó³-W | Wspólne | Normalny | Pakiet | L2 |  |  |

| ID | WBS | Activity | Duration | Start | Finish | Predecessors | Complete | Planned start | Planned finish | Total float | Free float | Calendar | Rewizja dokumentu | AC_Wykonawca | AC_Obiekt | AC_Dyscyplina | AC_Faza | AC_Zakres | AC_Opiekun | AC_Obszar | AC_PP_PM | AC_Zespol | AC_Blok | AC_Priorytet | AC_Pakiet | AC_Poziom | Uwagi harmonogramisty |
| --- | --- | --- | --- | --- | --- | --- | --- | --- | --- | --- | --- | --- | --- | --- | --- | --- | --- | --- | --- | --- | --- | --- | --- | --- | --- | --- | --- |
|  | SEKCJA 04 | **Sekcja 04** |  | 2026-02-23 | 2026-12-10 |  |  |  |  |  |  |  |  |  |  |  |  |  |  |  |  |  |  |  |  |  |  |
| 26NP30-032 |  | Prefabrykacja ruroci¹gów – Sekcja 04 | 13.7d | 2026-02-23 A | 2026-03-11 A | 26NP30-012, 26NP30-027 SS+5d | 100% | 2026-02-18 | 2026-03-06 |  |  |  | Rev C | Aerother | 26NP30 | Ruroci¹g | Budowa | Roboty | Krzyszto | Uk³ad | PM000 | Zespó³-K | Wspólne | Normalny | Pakiet | L2 |  |
| 26NP30-033 |  | Monta¿ ruroci¹gów – Sekcja 04 | 23.4d | 2026-10-20 | 2026-11-19 | 26NP30-032, 26NP30-014 SS+2d |  | 2026-11-12 | 2026-12-14 | 355.9d | 0d |  | Rev C | Aerother | 26NP30 | Ruroci¹g | Budowa | Roboty | Krzyszto | Uk³ad | PM000 | Zespó³-K | Wspólne | Niski | Pakiet | L2 |  |
| 26NP30-034 |  | Próba ciœnieniowa – Sekcja 04 | 4d | 2026-11-20 | 2026-11-25 | 26NP30-033 |  | 2026-12-15 | 2026-12-18 | 355.9d | 0d |  |  | Aerother | 26NP30 | Ruroci¹g | Budowa | Roboty | Krzyszto | Uk³ad | PM000 | Zespó³-E | Wspólne | Niski | Pakiet | L2 |  |
| 26NP30-035 |  | Izolacje – Sekcja 04 | 9d | 2026-11-26 | 2026-12-08 | 26NP30-034 |  | 2026-12-21 | 2026-12-31 | 355.9d | 0d |  | Rev A | Aerother | 26NP30 | Ruroci¹g | Budowa | Roboty | Krzyszto | Uk³ad | PM000 | Zespó³-K | Wspólne | Niski | Pakiet | L2 |  |
| 26NP30-036 |  | Malowanie i oznakowanie – Sekcja 04 | 3d | 2026-12-08 | 2026-12-10 | 26NP30-035 FF+2d |  | 2026-12-31 | 2027-01-04 | 355.9d | 0d | Kalendarz 6-dniowy | Rev C | Aerother | 26NP30 | Ruroci¹g | Budowa | Roboty | Krzyszto | Uk³ad | PM000 | Zespó³-K | Wspólne | Wysoki | Pakiet | L2 |  |
|  | SEKCJA 05 | **Sekcja 05** |  | 2026-03-02 | 2026-11-19 |  |  |  |  |  |  |  |  |  |  |  |  |  |  |  |  |  |  |  |  |  |  |
| 26NP30-039 |  | Prefabrykacja ruroci¹gów – Sekcja 05 | 9.4d | 2026-03-02 A | 2026-03-13 A | 26NP30-012, 26NP30-032 SS+5d | 100% | 2026-02-25 | 2026-03-09 |  |  |  | Rev B | Aerother | 26NP30 | Ruroci¹g | Budowa | Roboty | Krzyszto | Uk³ad | PM000 | Zespó³-W | Wspólne | Normalny | Pakiet | L2 |  |
| 26NP30-040 |  | Monta¿ ruroci¹gów – Sekcja 05 | 5.5d | 2026-10-27 | 2026-11-02 | 26NP30-039, 26NP30-014 SS+7d |  | 2026-11-19 | 2026-11-25 | 370.8d | 0d |  |  | Aerother | 26NP30 | Ruroci¹g | Budowa | Roboty | Krzyszto | Uk³ad | PM000 | Zespó³-W | Wspólne | Normalny | Pakiet | L2 |  |
| 26NP30-041 |  | Próba ciœnieniowa – Sekcja 05 | 3d | 2026-11-03 | 2026-11-05 | 26NP30-040 |  | 2026-11-26 | 2026-11-30 | 370.8d | 0d |  |  | Aerother | 26NP30 | Ruroci¹g | Budowa | Roboty | Krzyszto | Uk³ad | PM000 | Zespó³-K | Wspólne | Normalny | Pakiet | L2 |  |
| 26NP30-042 |  | Izolacje – Sekcja 05 | 8d | 2026-11-06 | 2026-11-17 | 26NP30-041 |  | 2026-12-01 | 2026-12-10 | 370.8d | 0d |  |  | Aerother | 26NP30 | Ruroci¹g | Budowa | Roboty | Krzyszto | Uk³ad | PM000 | Zespó³-W | Wspólne | Normalny | Pakiet | L2 |  |
| 26NP30-043 |  | Malowanie i oznakowanie – Sekcja 05 | 3d | 2026-11-17 | 2026-11-19 | 26NP30-042 FF+2d |  | 2026-12-10 | 2026-12-14 | 370.8d | 0d |  | Rev C | Aerother | 26NP30 | Ruroci¹g | Budowa | Roboty | Krzyszto | Uk³ad | PM000 | Zespó³-K | Wspólne | Normalny | Pakiet | L2 |  |
|  | SEKCJA 06 | **Sekcja 06** |  | 2026-03-04 | 2026-11-18 |  |  |  |  |  |  |  |  |  |  |  |  |  |  |  |  |  |  |  |  |  |  |
|  | PODSEKCJA | **Podsekcja 06.A** |  | 2026-03-04 | 2026-11-18 |  |  |  |  |  |  |  |  |  |  |  |  |  |  |  |  |  |  |  |  |  |  |
| 26NP30-044 |  | Prefabrykacja ruroci¹gów – Sekcja 06 | 5d | 2026-03-04 A | 2026-03-10 A | 26NP30-012, 26NP30-039 SS+5d | 100% |  |  |  |  |  |  | Aerother | 26NP30 | Ruroci¹g | Budowa | Roboty | Krzyszto | Uk³ad | PM000 | Zespó³-W | Wspólne | Normalny | Pakiet | L2 |  |
| 26NP30-045 |  | Monta¿ ruroci¹gów – Sekcja 06 | 5.3d | 2026-10-22 | 2026-10-28 | 26NP30-044, 26NP30-014 SS+4d |  | 2026-11-16 | 2026-11-20 | 372d | 0d |  |  | Aerother | 26NP30 | Ruroci¹g | Budowa | Roboty | Krzyszto | Uk³ad | PM000 | Zespó³-W | Wspólne | Normalny | Pakiet | L2 |  |
| 26NP30-046 |  | Próba ciœnieniowa – Sekcja 06 | 3d | 2026-10-29 | 2026-11-02 | 26NP30-045 |  | 2026-11-23 | 2026-11-25 | 372d | 0d |  |  | Aerother | 26NP30 | Ruroci¹g | Budowa | Roboty | Krzyszto | Uk³ad | PM000 | Zespó³-K | Wspólne | Normalny | Pakiet | L2 |  |
| 26NP30-047 |  | Izolacje – Sekcja 06 | 10d | 2026-11-03 | 2026-11-16 | 26NP30-046 |  | 2026-11-26 | 2026-12-09 | 372d | 0d |  |  | Aerother | 26NP30 | Ruroci¹g | Budowa | Roboty | Krzyszto | Uk³ad | PM000 | Zespó³-W | Wspólne | Wysoki | Pakiet | L2 | Ryzyko opóŸnienia |
| 26NP30-048 |  | Malowanie i oznakowanie – Sekcja 06 | 3d | 2026-11-16 | 2026-11-18 | 26NP30-047 FF+2d |  | 2026-12-09 | 2026-12-11 | 372d | 0d |  |  | Aerother | 26NP30 | Ruroci¹g | Budowa | Roboty | Krzyszto | Uk³ad | PM000 | Zespó³-W | Wspólne | Normalny | Pakiet | L2 |  |
|  | SEKCJA 07 | **Sekcja 07** |  | 2026-03-13 | 2026-12-10 |  |  |  |  |  |  |  |  |  |  |  |  |  |  |  |  |  |  |  |  |  |  |
| 26NP30-051 |  | Prefabrykacja ruroci¹gów – Sekcja 07 | 8.4d | 2026-03-13 A | 2026-03-24 A | 26NP30-012, 26NP30-044 SS+5d | 100% | 2026-03-11 | 2026-03-20 |  |  |  | Rev B | Aerother | 26NP30 | Ruroci¹g | Budowa | Roboty | Krzyszto | Uk³ad | PM000 | Zespó³-I | Wspólne | Wysoki | Pakiet | L2 |  |
| 26NP30-052 |  | Monta¿ ruroci¹gów – Sekcja 07 | 24.9d | 2026-10-22 | 2026-11-25 | 26NP30-051, 26NP30-014 SS+4d |  | 2026-11-16 | 2026-12-17 | 356.4d | 0d |  |  | Aerother | 26NP30 | Ruroci¹g | Budowa | Roboty | Krzyszto | Uk³ad | PM000 | Zespó³-K | Wspólne | Normalny | Pakiet | L2 |  |
| 26NP30-053 |  | Próba ciœnieniowa – Sekcja 07 | 5d | 2026-11-26 | 2026-12-02 | 26NP30-052 |  | 2026-12-18 | 2026-12-24 | 356.4d | 0d |  |  | Aerother | 26NP30 | Ruroci¹g | Budowa | Roboty | Krzyszto | Uk³ad | PM000 | Zespó³-K | Wspólne | Normalny | Pakiet | L2 |  |
| 26NP30-054 |  | Izolacje – Sekcja 07 | 4d | 2026-12-03 | 2026-12-08 | 26NP30-053 |  | 2026-12-25 | 2026-12-30 | 356.4d | 0d |  |  | Aerother | 26NP30 | Ruroci¹g | Budowa | Roboty | Krzyszto | Uk³ad | PM000 | Zespó³-W | Wspólne | Normalny | Pakiet | L2 |  |
| 26NP30-055 |  | Malowanie i oznakowanie – Sekcja 07 | 4d | 2026-12-07 | 2026-12-10 | 26NP30-054 FF+2d |  | 2026-12-29 | 2027-01-01 | 356.4d | 0d |  |  | Aerother | 26NP30 | Ruroci¹g | Budowa | Roboty | Krzyszto | Uk³ad | PM000 | Zespó³-K | Wspólne | Normalny | Pakiet | L2 |  |

| ID | WBS | Activity | Duration | Start | Finish | Predecessors | Complete | Planned start | Planned finish | Total float | Free float | AC_Wykonawca | AC_Obiekt | AC_Dyscyplina | AC_Faza | AC_Zakres | AC_Opiekun | AC_Obszar | AC_PP_PM | AC_Zespol | AC_Blok | AC_Priorytet | AC_Pakiet | AC_Poziom | Rewizja dokumentu | Uwagi harmonogramisty |
| --- | --- | --- | --- | --- | --- | --- | --- | --- | --- | --- | --- | --- | --- | --- | --- | --- | --- | --- | --- | --- | --- | --- | --- | --- | --- | --- |
|  | SEKCJA 08 | **Sekcja 08** |  | 2026-03-20 | 2026-11-24 |  |  |  |  |  |  |  |  |  |  |  |  |  |  |  |  |  |  |  |  |  |
| 26NP30-056 |  | Prefabrykacja ruroci¹gów – Sekcja 08 | 10.6d | 2026-03-20 A | 2026-04-07 A | 26NP30-012, 26NP30-051 SS+5d | 100% | 2026-03-18 | 2026-03-31 |  |  | Aerother | 26NP30 | Ruroci¹g | Budowa | Roboty | Krzyszto | Uk³ad | PM000 | Zespó³-W | Wspólne | Normalny | Pakiet | L2 |  |  |
| 26NP30-057 |  | Monta¿ ruroci¹gów – Sekcja 08 | 13.8d | 2026-10-21 | 2026-11-09 | 26NP30-056, 26NP30-014 SS+3d |  | 2026-11-13 | 2026-12-01 | 368.5d | 0d | Aerother | 26NP30 | Ruroci¹g | Budowa | Roboty | Krzyszto | Uk³ad | PM000 | Zespó³-K | Wspólne | Normalny | Pakiet | L2 |  |  |
| 26NP30-058 |  | Próba ciœnieniowa – Sekcja 08 | 3d | 2026-11-10 | 2026-11-12 | 26NP30-057 |  | 2026-12-02 | 2026-12-04 | 368.5d | 0d | Aerother | 26NP30 | Ruroci¹g | Budowa | Roboty | Krzyszto | Uk³ad | PM000 | Zespó³-W | Wspólne | Normalny | Pakiet | L2 | Rev C |  |
| 26NP30-059 |  | Izolacje – Sekcja 08 | 6d | 2026-11-13 | 2026-11-20 | 26NP30-058 |  | 2026-12-07 | 2026-12-14 | 368.5d | 0d | Aerother | 26NP30 | Ruroci¹g | Budowa | Roboty | Krzyszto | Uk³ad | PM000 | Zespó³-K | Wspólne | Niski | Pakiet | L2 |  |  |
| 26NP30-060 |  | Malowanie i oznakowanie – Sekcja 08 | 7d | 2026-11-16 | 2026-11-24 | 26NP30-059 FF+2d |  | 2026-12-08 | 2026-12-16 | 368.5d | 0d | Aerother | 26NP30 | Ruroci¹g | Budowa | Roboty | Krzyszto | Uk³ad | PM000 | Zespó³-W | Wspólne | Wysoki | Pakiet | L2 | Rev A | Ryzyko opóŸnienia |
|  | SEKCJA 09 | **Sekcja 09** |  | 2026-03-24 | 2026-11-23 |  |  |  |  |  |  |  |  |  |  |  |  |  |  |  |  |  |  |  |  |  |
|  | PODSEKCJA | **Podsekcja 09.A** |  | 2026-03-24 | 2026-11-23 |  |  |  |  |  |  |  |  |  |  |  |  |  |  |  |  |  |  |  |  |  |
| 26NP30-063 |  | Prefabrykacja ruroci¹gów – Sekcja 09 | 14.6d | 2026-03-24 A | 2026-04-10 A | 26NP30-012, 26NP30-056 SS+5d | 100% | 2026-03-25 | 2026-04-13 |  |  | Aerother | 26NP30 | Ruroci¹g | Budowa | Roboty | Krzyszto | Uk³ad | PM000 | Zespó³-W | Wspólne | Normalny | Pakiet | L2 | Rev C |  |
| 26NP30-064 |  | Monta¿ ruroci¹gów – Sekcja 09 | 12.2d | 2026-10-19 | 2026-11-03 | 26NP30-063, 26NP30-014 SS+1d |  | 2026-11-11 | 2026-11-26 | 369.1d | 0d | Aerother | 26NP30 | Ruroci¹g | Budowa | Roboty | Krzyszto | Uk³ad | PM000 | Zespó³-K | Wspólne | Wysoki | Pakiet | L2 |  |  |
| 26NP30-065 |  | Próba ciœnieniowa – Sekcja 09 | 3d | 2026-11-04 | 2026-11-06 | 26NP30-064 |  | 2026-11-27 | 2026-12-01 | 369.1d | 0d | Aerother | 26NP30 | Ruroci¹g | Budowa | Roboty | Krzyszto | Uk³ad | PM000 | Zespó³-W | Wspólne | Wysoki | Pakiet | L2 |  |  |
| 26NP30-066 |  | Izolacje – Sekcja 09 | 9d | 2026-11-09 | 2026-11-19 | 26NP30-065 |  | 2026-12-02 | 2026-12-14 | 369.1d | 0d | Aerother | 26NP30 | Ruroci¹g | Budowa | Roboty | Krzyszto | Uk³ad | PM000 | Zespó³-K | Wspólne | Niski | Pakiet | L2 |  |  |
| 26NP30-067 |  | Malowanie i oznakowanie – Sekcja 09 | 6d | 2026-11-16 | 2026-11-23 | 26NP30-066 FF+2d |  | 2026-12-09 | 2026-12-16 | 369.1d | 0d | Aerother | 26NP30 | Ruroci¹g | Budowa | Roboty | Krzyszto | Uk³ad | PM000 | Zespó³-K | Wspólne | Normalny | Pakiet | L2 |  |  |
|  | SEKCJA 10 | **Sekcja 10** |  | 2026-04-03 | 2026-12-04 |  |  |  |  |  |  |  |  |  |  |  |  |  |  |  |  |  |  |  |  |  |
| 26NP30-068 |  | Prefabrykacja ruroci¹gów – Sekcja 10 | 12.7d | 2026-04-03 A | 2026-04-23 A | 26NP30-012, 26NP30-063 SS+5d | 100% | 2026-04-01 | 2026-04-16 |  |  | Aerother | 26NP30 | Ruroci¹g | Budowa | Roboty | Krzyszto | Uk³ad | PM000 | Zespó³-K | Wspólne | Normalny | Pakiet | L2 |  |  |
| 26NP30-069 |  | Monta¿ ruroci¹gów – Sekcja 10 | 22.2d | 2026-10-20 | 2026-11-18 | 26NP30-068, 26NP30-014 SS+2d |  | 2026-11-12 | 2026-12-11 | 360.1d | 0d | Aerother | 26NP30 | Ruroci¹g | Budowa | Roboty | Krzyszto | Uk³ad | PM000 | Zespó³-K | Wspólne | Normalny | Pakiet | L2 |  | Ryzyko opóŸnienia |
| 26NP30-070 |  | Próba ciœnieniowa – Sekcja 10 | 5d | 2026-11-19 | 2026-11-25 | 26NP30-069 |  | 2026-12-14 | 2026-12-18 | 360.1d | 0d | Aerother | 26NP30 | Ruroci¹g | Budowa | Roboty | Krzyszto | Uk³ad | PM000 | Zespó³-W | Wspólne | Wysoki | Pakiet | L2 |  | Ryzyko opóŸnienia |
| 26NP30-071 |  | Izolacje – Sekcja 10 | 5d | 2026-11-26 | 2026-12-02 | 26NP30-070 |  | 2026-12-21 | 2026-12-25 | 360.1d | 0d | Aerother | 26NP30 | Ruroci¹g | Budowa | Roboty | Krzyszto | Uk³ad | PM000 | Zespó³-W | Wspólne | Niski | Pakiet | L2 | Rev C |  |
| 26NP30-072 |  | Malowanie i oznakowanie – Sekcja 10 | 6d | 2026-11-27 | 2026-12-04 | 26NP30-071 FF+2d |  | 2026-12-22 | 2026-12-29 | 360.1d | 0d | Aerother | 26NP30 | Ruroci¹g | Budowa | Roboty | Krzyszto | Uk³ad | PM000 | Zespó³-E | Wspólne | Normalny | Pakiet | L2 |  |  |
|  | SEKCJA 11 | **Sekcja 11** |  | 2026-04-09 | 2027-02-09 |  |  |  |  |  |  |  |  |  |  |  |  |  |  |  |  |  |  |  |  |  |
| 26NP30-075 |  | Prefabrykacja ruroci¹gów – Sekcja 11 | 12.5d | 2026-04-09 A | 2026-04-29 A | 26NP30-012, 26NP30-068 SS+5d | 100% | 2026-04-08 | 2026-04-23 |  |  | Aerother | 26NP30 | Ruroci¹g | Budowa | Roboty | Krzyszto | Uk³ad | PM000 | Zespó³-K | Wspólne | Normalny | Pakiet | L2 | Rev C |  |
| 26NP30-076 |  | Monta¿ ruroci¹gów – Sekcja 11 | 16.6d | 2026-10-16 | 2026-11-06 | 26NP30-075, 26NP30-014 SS |  | 2026-11-10 | 2026-12-01 | 363.7d | 0d | Aerother | 26NP30 | Ruroci¹g | Budowa | Roboty | Krzyszto | Uk³ad | PM100 | Zespó³-I | Wspólne | Normalny | Pakiet | L2 | Rev B | Czeka na dostawê |
| 26NP30-077 |  | Próba ciœnieniowa – Sekcja 11 | 6d | 2027-01-19 | 2027-01-26 | 26NP30-076 |  | 2026-12-02 | 2026-12-09 | 313.6d | 0d | Aerother | 26NP30 | Ruroci¹g | Budowa | Roboty | Krzyszto | Uk³ad | PM000 | Zespó³-E | Wspólne | Normalny | Pakiet | L2 |  |  |
| 26NP30-078 |  | Izolacje – Sekcja 11 | 8d | 2027-01-27 | 2027-02-05 | 26NP30-077 |  | 2026-12-10 | 2026-12-21 | 313.6d | 0d | Aerother | 26NP30 | Ruroci¹g | Budowa | Roboty | Krzyszto | Uk³ad | PM000 | Zespó³-K | Wspólne | Normalny | Pakiet | L2 | Rev C | Ryzyko opóŸnienia |
| 26NP30-079 |  | Malowanie i oznakowanie – Sekcja 11 | 4d | 2027-02-04 | 2027-02-09 | 26NP30-078 FF+2d |  | 2026-12-18 | 2026-12-23 | 313.6d | 0d | Aerother | 26NP30 | Ruroci¹g | Budowa | Roboty | Krzyszto | Uk³ad | PM000 | Zespó³-K | Wspólne | Normalny | Pakiet | L2 |  |  |

| ID | WBS | Activity | Duration | Start | Finish | Predecessors | Complete | Planned start | Planned finish | Total float | Free float | Calendar | Rewizja dokumentu | AC_Wykonawca | AC_Obiekt | AC_Dyscyplina | AC_Faza | AC_Zakres | AC_Opiekun | AC_Obszar | AC_PP_PM | AC_Zespol | AC_Blok | AC_Priorytet | AC_Pakiet | AC_Poziom | Uwagi harmonogramisty |
| --- | --- | --- | --- | --- | --- | --- | --- | --- | --- | --- | --- | --- | --- | --- | --- | --- | --- | --- | --- | --- | --- | --- | --- | --- | --- | --- | --- |
|  | SEKCJA 12 | **Sekcja 12** |  | 2026-04-15 | 2026-11-03 |  |  |  |  |  |  |  |  |  |  |  |  |  |  |  |  |  |  |  |  |  |  |
|  | PODSEKCJA | **Podsekcja 12.A** |  | 2026-04-15 | 2026-11-03 |  |  |  |  |  |  |  |  |  |  |  |  |  |  |  |  |  |  |  |  |  |  |
| 26NP30-080 |  | Prefabrykacja ruroci¹gów – Sekcja 12 | 4.7d | 2026-04-15 A | 2026-04-21 A | 26NP30-012, 26NP30-075 SS+5d | 100% | 2026-04-15 | 2026-04-20 |  |  |  | Rev B | Aerother | 26NP30 | Ruroci¹g | Budowa | Roboty | Krzyszto | Uk³ad | PM300 | Zespó³-E | Wspólne | Normalny | Pakiet | L2 |  |
| 26NP30-081 |  | Monta¿ ruroci¹gów – Sekcja 12 | 5.4d | 2026-10-16 | 2026-10-22 | 26NP30-080, 26NP30-014 SS |  | 2026-11-10 | 2026-11-16 | 382.9d | 0d |  | Rev B | Aerother | 26NP30 | Ruroci¹g | Budowa | Roboty | Krzyszto | Uk³ad | PM000 | Zespó³-W | Wspólne | Niski | Pakiet | L2 | Czeka na dostawê |
| 26NP30-082 |  | Próba ciœnieniowa – Sekcja 12 | 2d | 2026-10-23 | 2026-10-26 | 26NP30-081 |  | 2026-11-17 | 2026-11-18 | 382.9d | 0d |  |  | Aerother | 26NP30 | Ruroci¹g | Budowa | Roboty | Krzyszto | Uk³ad | PM000 | Zespó³-W | Wspólne | Normalny | Pakiet | L2 | Do weryfikacji z wykonawc¹ |
| 26NP30-084 |  | Malowanie i oznakowanie – Sekcja 12 | 7d | 2026-10-26 | 2026-11-03 | 26NP30-083 FF+2d |  | 2026-11-18 | 2026-11-26 | 382.9d | 0d |  | Rev B | Aerother | 26NP30 | Ruroci¹g | Budowa | Roboty | Krzyszto | Uk³ad | PM000 | Zespó³-W | Wspólne | Normalny | Pakiet | L2 |  |
| 26NP30-083 |  | Izolacje – Sekcja 12 | 4d | 2026-10-27 | 2026-10-30 | 26NP30-082 |  | 2026-11-19 | 2026-11-24 | 382.9d | 0d |  |  | Aerother | 26NP30 | Ruroci¹g | Budowa | Roboty | Krzyszto | Uk³ad | PM000 | Zespó³-K | Wspólne | Normalny | Pakiet | L2 | Uzgodnione na koordynacji |
|  | SEKCJA 13 | **Sekcja 13** |  | 2026-04-21 | 2026-12-01 |  |  |  |  |  |  |  |  |  |  |  |  |  |  |  |  |  |  |  |  |  |  |
| 26NP30-087 |  | Prefabrykacja ruroci¹gów – Sekcja 13 | 12.9d | 2026-04-21 A | 2026-05-08 A | 26NP30-012, 26NP30-080 SS+5d | 100% | 2026-04-22 | 2026-05-07 |  |  |  |  | Aerother | 26NP30 | Ruroci¹g | Budowa | Roboty | Krzyszto | Uk³ad | PM000 | Zespó³-K | Wspólne | Wysoki | Pakiet | L2 |  |
| 26NP30-088 |  | Monta¿ ruroci¹gów – Sekcja 13 | 9.6d | 2026-10-29 | 2026-11-10 | 26NP30-087, 26NP30-014 SS+9d |  | 2026-11-23 | 2026-12-03 | 362.7d | 0d |  |  | Aerother | 26NP30 | Ruroci¹g | Budowa | Roboty | Krzyszto | Uk³ad | PM000 | Zespó³-W | Wspólne | Normalny | Pakiet | L2 |  |
| 26NP30-089 |  | Próba ciœnieniowa – Sekcja 13 | 6d | 2026-11-11 | 2026-11-18 | 26NP30-088 |  | 2026-12-04 | 2026-12-11 | 362.7d | 0d |  | Rev C | Aerother | 26NP30 | Ruroci¹g | Budowa | Roboty | Krzyszto | Uk³ad | PM000 | Zespó³-W | Wspólne | Wysoki | Pakiet | L2 |  |
| 26NP30-090 |  | Izolacje – Sekcja 13 | 7d | 2026-11-19 | 2026-11-27 | 26NP30-089 |  | 2026-12-14 | 2026-12-22 | 362.7d | 0d |  |  | Aerother | 26NP30 | Ruroci¹g | Budowa | Roboty | Krzyszto | Uk³ad | PM000 | Zespó³-W | Wspólne | Normalny | Pakiet | L2 |  |
| 26NP30-091 |  | Malowanie i oznakowanie – Sekcja 13 | 5d | 2026-11-25 | 2026-12-01 | 26NP30-090 FF+2d |  | 2026-12-18 | 2026-12-24 | 362.7d | 0d |  |  | Aerother | 26NP30 | Ruroci¹g | Budowa | Roboty | Krzyszto | Uk³ad | PM000 | Zespó³-K | Wspólne | Normalny | Pakiet | L2 |  |
|  | SEKCJA 14 | **Sekcja 14** |  | 2026-05-01 | 2026-11-30 |  |  |  |  |  |  |  |  |  |  |  |  |  |  |  |  |  |  |  |  |  |  |
| 26NP30-092 |  | Prefabrykacja ruroci¹gów – Sekcja 14 | 5.5d | 2026-05-01 A | 2026-05-08 A | 26NP30-012, 26NP30-087 SS+5d | 100% | 2026-04-29 | 2026-05-05 |  |  |  |  | Aerother | 26NP30 | Ruroci¹g | Budowa | Roboty | Krzyszto | Uk³ad | PM000 | Zespó³-W | Wspólne | Normalny | Pakiet | L2 |  |
| 26NP30-093 |  | Monta¿ ruroci¹gów – Sekcja 14 | 19.2d | 2026-10-16 | 2026-11-11 | 26NP30-092, 26NP30-014 SS |  | 2026-11-10 | 2026-12-04 | 364.1d | 0d |  |  | Aerother | 26NP30 | Ruroci¹g | Budowa | Roboty | Krzyszto | Uk³ad | PM000 | Zespó³-W | Wspólne | Normalny | Pakiet | L2 |  |
| 26NP30-094 |  | Próba ciœnieniowa – Sekcja 14 | 4d | 2026-11-12 | 2026-11-17 | 26NP30-093 |  | 2026-12-07 | 2026-12-10 | 364.1d | 0d |  | Rev B | Aerother | 26NP30 | Ruroci¹g | Budowa | Roboty | Krzyszto | Uk³ad | PM000 | Zespó³-W | Wspólne | Wysoki | Pakiet | L2 |  |
| 26NP30-095 |  | Izolacje – Sekcja 14 | 7d | 2026-11-18 | 2026-11-26 | 26NP30-094 |  | 2026-12-11 | 2026-12-21 | 364.1d | 0d |  |  | Aerother | 26NP30 | Ruroci¹g | Budowa | Roboty | Krzyszto | Uk³ad | PM000 | Zespó³-W | Wspólne | Normalny | Pakiet | L2 | Bez uwag |
| 26NP30-096 |  | Malowanie i oznakowanie – Sekcja 14 | 7d | 2026-11-20 | 2026-11-30 | 26NP30-095 FF+2d |  | 2026-12-15 | 2026-12-23 | 364.1d | 0d |  | Rev C | Aerother | 26NP30 | Ruroci¹g | Budowa | Roboty | Krzyszto | Uk³ad | PM000 | Zespó³-K | Wspólne | Krytyczn | Pakiet | L2 | Ryzyko opóŸnienia |
|  | SEKCJA 15 | **Sekcja 15** |  | 2026-05-05 | 2026-12-07 |  |  |  |  |  |  |  |  |  |  |  |  |  |  |  |  |  |  |  |  |  |  |
|  | PODSEKCJA | **Podsekcja 15.A** |  | 2026-05-05 | 2026-12-07 |  |  |  |  |  |  |  |  |  |  |  |  |  |  |  |  |  |  |  |  |  |  |
| 26NP30-099 |  | Prefabrykacja ruroci¹gów – Sekcja 15 | 3.6d | 2026-05-05 A | 2026-05-07 A | 26NP30-012, 26NP30-092 SS+5d | 100% | 2026-05-06 | 2026-05-08 |  |  |  |  | Aerother | 26NP30 | Ruroci¹g | Budowa | Roboty | Krzyszto | Uk³ad | PM000 | Zespó³-W | Wspólne | Normalny | Pakiet | L2 |  |
| 26NP30-100 |  | Monta¿ ruroci¹gów – Sekcja 15 | 11.1d | 2026-10-30 | 2026-11-13 | 26NP30-099, 26NP30-014 SS+10d |  | 2026-11-24 | 2026-12-08 | 359.2d | 0d |  | Rev C | Aerother | 26NP30 | Ruroci¹g | Budowa | Roboty | Krzyszto | Uk³ad | PM000 | Zespó³-W | Wspólne | Normalny | Pakiet | L2 | Bez uwag |
| 26NP30-101 |  | Próba ciœnieniowa – Sekcja 15 | 3d | 2026-11-16 | 2026-11-18 | 26NP30-100 |  | 2026-12-09 | 2026-12-11 | 359.2d | 0d |  |  | Aerother | 26NP30 | Ruroci¹g | Budowa | Roboty | Krzyszto | Uk³ad | PM000 | Zespó³-W | Wspólne | Wysoki | Pakiet | L2 |  |
| 26NP30-102 |  | Izolacje – Sekcja 15 | 11d | 2026-11-19 | 2026-12-03 | 26NP30-101 |  | 2026-12-14 | 2026-12-28 | 359.2d | 0d |  | Rev B | Aerother | 26NP30 | Ruroci¹g | Budowa | Roboty | Krzyszto | Uk³ad | PM000 | Zespó³-W | Wspólne | Krytyczn | Pakiet | L2 |  |
| 26NP30-103 |  | Malowanie i oznakowanie – Sekcja 15 | 8d | 2026-11-26 | 2026-12-07 | 26NP30-102 FF+2d |  | 2026-12-21 | 2026-12-30 | 359.2d | 0d | Kalendarz 6-dniowy |  | Aerother | 26NP30 | Ruroci¹g | Budowa | Roboty | Krzyszto | Uk³ad | PM000 | Zespó³-K | Wspólne | Niski | Pakiet | L2 |  |

| ID | WBS | Activity | Duration | Start | Finish | Predecessors | Complete | Planned start | Planned finish | Total float | Free float | Calendar | AC_Wykonawca | AC_Obiekt | AC_Dyscyplina | AC_Faza | AC_Zakres | AC_Opiekun | AC_Obszar | AC_PP_PM | AC_Zespol | AC_Blok | AC_Priorytet | AC_Pakiet | AC_Poziom | Rewizja dokumentu | Uwagi harmonogramisty |
| --- | --- | --- | --- | --- | --- | --- | --- | --- | --- | --- | --- | --- | --- | --- | --- | --- | --- | --- | --- | --- | --- | --- | --- | --- | --- | --- | --- |
|  | SEKCJA 16 | **Sekcja 16** |  | 2026-05-12 | 2026-12-07 |  |  |  |  |  |  |  |  |  |  |  |  |  |  |  |  |  |  |  |  |  |  |
| 26NP30-104 |  | Prefabrykacja ruroci¹gów – Sekcja 16 | 8.7d | 2026-05-12 A | 2026-05-21 A | 26NP30-012, 26NP30-099 SS+5d | 100% | 2026-05-13 | 2026-05-22 |  |  |  | Aerother | 26NP30 | Ruroci¹g | Budowa | Roboty | Krzyszto | Uk³ad | PM000 | Zespó³-K | Wspólne | Wysoki | Pakiet | L2 |  |  |
| 26NP30-105 |  | Monta¿ ruroci¹gów – Sekcja 16 | 17.5d | 2026-10-28 | 2026-11-19 | 26NP30-104, 26NP30-014 SS+8d |  | 2026-11-20 | 2026-12-14 | 358.8d | 0d |  | Aerother | 26NP30 | Ruroci¹g | Budowa | Roboty | Krzyszto | Uk³ad | PM000 | Zespó³-K | Wspólne | Normalny | Pakiet | L2 |  |  |
| 26NP30-106 |  | Próba ciœnieniowa – Sekcja 16 | 4d | 2026-11-20 | 2026-11-25 | 26NP30-105 |  | 2026-12-15 | 2026-12-18 | 358.8d | 0d |  | Aerother | 26NP30 | Ruroci¹g | Budowa | Roboty | Krzyszto | Uk³ad | PM000 | Zespó³-K | Wspólne | Normalny | Pakiet | L2 | Rev B |  |
| 26NP30-107 |  | Izolacje – Sekcja 16 | 6d | 2026-11-26 | 2026-12-03 | 26NP30-106 |  | 2026-12-21 | 2026-12-28 | 358.8d | 0d |  | Aerother | 26NP30 | Ruroci¹g | Budowa | Roboty | Krzyszto | Uk³ad | PM000 | Zespó³-W | Wspólne | Normalny | Pakiet | L2 |  |  |
| 26NP30-108 |  | Malowanie i oznakowanie – Sekcja 16 | 5d | 2026-12-01 | 2026-12-07 | 26NP30-107 FF+2d |  | 2026-12-24 | 2026-12-30 | 358.8d | 0d |  | Aerother | 26NP30 | Ruroci¹g | Budowa | Roboty | Krzyszto | Uk³ad | PM000 | Zespó³-K | Wspólne | Niski | Pakiet | L2 | Rev B | Ryzyko opóŸnienia |
|  | SEKCJA 17 | **Sekcja 17** |  | 2026-05-20 | 2027-02-18 |  |  |  |  |  |  |  |  |  |  |  |  |  |  |  |  |  |  |  |  |  |  |
| 26NP30-111 |  | Prefabrykacja ruroci¹gów – Sekcja 17 | 6.8d | 2026-05-20 A | 2026-06-01 A | 26NP30-012, 26NP30-104 SS+5d | 100% | 2026-05-20 | 2026-05-27 |  |  |  | Aerother | 26NP30 | Ruroci¹g | Budowa | Roboty | Krzyszto | Uk³ad | PM000 | Zespó³-W | Wspólne | Normalny | Pakiet | L2 |  |  |
| 26NP30-112 |  | Monta¿ ruroci¹gów – Sekcja 17 | 12.5d | 2027-01-11 | 2027-01-26 | 26NP30-111, 26NP30-014 SS+8d |  | 2026-11-20 | 2026-12-07 | 306.1d | 0d |  | Aerother | 26NP30 | Ruroci¹g | Budowa | Roboty | Krzyszto | Uk³ad | PM100 | Zespó³-I | Wspólne | Normalny | Pakiet | L2 | Rev C |  |
| 26NP30-113 |  | Próba ciœnieniowa – Sekcja 17 | 3d | 2027-01-27 | 2027-01-29 | 26NP30-112 |  | 2026-12-08 | 2026-12-10 | 306.1d | 0d | Kalendarz 6-dniowy | Aerother | 26NP30 | Ruroci¹g | Budowa | Roboty | Krzyszto | Uk³ad | PM000 | Zespó³-K | Wspólne | Normalny | Pakiet | L2 |  |  |
| 26NP30-114 |  | Izolacje – Sekcja 17 | 12d | 2027-02-01 | 2027-02-16 | 26NP30-113 |  | 2026-12-11 | 2026-12-28 | 306.1d | 0d |  | Aerother | 26NP30 | Ruroci¹g | Budowa | Roboty | Krzyszto | Uk³ad | PM000 | Zespó³-W | Wspólne | Normalny | Pakiet | L2 | Rev C |  |
| 26NP30-115 |  | Malowanie i oznakowanie – Sekcja 17 | 7d | 2027-02-10 | 2027-02-18 | 26NP30-114 FF+2d |  | 2026-12-22 | 2026-12-30 | 306.1d | 0d |  | Aerother | 26NP30 | Ruroci¹g | Budowa | Roboty | Krzyszto | Uk³ad | PM000 | Zespó³-K | Wspólne | Wysoki | Pakiet | L2 | Rev B | Ryzyko opóŸnienia |
|  | SEKCJA 18 | **Sekcja 18** |  | 2026-05-27 | 2026-12-15 |  |  |  |  |  |  |  |  |  |  |  |  |  |  |  |  |  |  |  |  |  |  |
|  | PODSEKCJA | **Podsekcja 18.A** |  | 2026-05-27 | 2026-12-15 |  |  |  |  |  |  |  |  |  |  |  |  |  |  |  |  |  |  |  |  |  |  |
| 26NP30-116 |  | Prefabrykacja ruroci¹gów – Sekcja 18 | 6.2d | 2026-05-27 A | 2026-06-05 A | 26NP30-012, 26NP30-111 SS+5d | 100% | 2026-05-27 | 2026-06-03 |  |  |  | Aerother | 26NP30 | Ruroci¹g | Budowa | Roboty | Krzyszto | Uk³ad | PM000 | Zespó³-K | Wspólne | Normalny | Pakiet | L2 | Rev A | Do weryfikacji z wykonawc¹ |
| 26NP30-117 |  | Monta¿ ruroci¹gów – Sekcja 18 | 21.4d | 2026-10-21 | 2026-11-18 | 26NP30-116, 26NP30-014 SS+3d |  | 2026-11-13 | 2026-12-11 | 352.9d | 0d | Kalendarz 6-dniowy | Aerother | 26NP30 | Ruroci¹g | Budowa | Roboty | Krzyszto | Uk³ad | PM000 | Zespó³-K | Wspólne | Niski | Pakiet | L2 |  |  |
| 26NP30-118 |  | Próba ciœnieniowa – Sekcja 18 | 5d | 2026-11-19 | 2026-11-25 | 26NP30-117 |  | 2026-12-14 | 2026-12-18 | 352.9d | 0d |  | Aerother | 26NP30 | Ruroci¹g | Budowa | Roboty | Krzyszto | Uk³ad | PM000 | Zespó³-K | Wspólne | Niski | Pakiet | L2 | Rev A | Do weryfikacji z wykonawc¹ |
| 26NP30-119 |  | Izolacje – Sekcja 18 | 12d | 2026-11-26 | 2026-12-11 | 26NP30-118 |  | 2026-12-21 | 2027-01-05 | 352.9d | 0d |  | Aerother | 26NP30 | Ruroci¹g | Budowa | Roboty | Krzyszto | Uk³ad | PM000 | Zespó³-K | Wspólne | Normalny | Pakiet | L2 | Rev B |  |
| 26NP30-120 |  | Malowanie i oznakowanie – Sekcja 18 | 6d | 2026-12-08 | 2026-12-15 | 26NP30-119 FF+2d |  | 2026-12-31 | 2027-01-07 | 352.9d | 0d | Kalendarz 6-dniowy | Aerother | 26NP30 | Ruroci¹g | Budowa | Roboty | Krzyszto | Uk³ad | PM000 | Zespó³-W | Wspólne | Niski | Pakiet | L2 | Rev B |  |
|  | SEKCJA 19 | **Sekcja 19** |  | 2026-06-02 | 2026-12-04 |  |  |  |  |  |  |  |  |  |  |  |  |  |  |  |  |  |  |  |  |  |  |
| 26NP30-123 |  | Prefabrykacja ruroci¹gów – Sekcja 19 | 13.2d | 2026-06-02 A | 2026-06-18 A | 26NP30-012, 26NP30-116 SS+5d | 100% | 2026-06-03 | 2026-06-19 |  |  |  | Aerother | 26NP30 | Ruroci¹g | Budowa | Roboty | Krzyszto | Uk³ad | PM000 | Zespó³-W | Wspólne | Normalny | Pakiet | L2 | Rev A |  |
| 26NP30-124 |  | Monta¿ ruroci¹gów – Sekcja 19 | 20.9d | 2026-10-26 | 2026-11-23 | 26NP30-123, 26NP30-014 SS+6d |  | 2026-11-18 | 2026-12-15 | 360.4d | 0d |  | Aerother | 26NP30 | Ruroci¹g | Budowa | Roboty | Krzyszto | Uk³ad | PM200 | Zespó³-I | Wspólne | Normalny | Pakiet | L2 |  | Ryzyko opóŸnienia |
| 26NP30-125 |  | Próba ciœnieniowa – Sekcja 19 | 2d | 2026-11-24 | 2026-11-25 | 26NP30-124 |  | 2026-12-16 | 2026-12-17 | 360.4d | 0d |  | Aerother | 26NP30 | Ruroci¹g | Budowa | Roboty | Krzyszto | Uk³ad | PM000 | Zespó³-W | Wspólne | Normalny | Pakiet | L2 |  |  |
| 26NP30-126 |  | Izolacje – Sekcja 19 | 5d | 2026-11-26 | 2026-12-02 | 26NP30-125 |  | 2026-12-18 | 2026-12-24 | 360.4d | 0d |  | Aerother | 26NP30 | Ruroci¹g | Budowa | Roboty | Krzyszto | Uk³ad | PM000 | Zespó³-K | Wspólne | Normalny | Pakiet | L2 |  | Bez uwag |
| 26NP30-127 |  | Malowanie i oznakowanie – Sekcja 19 | 7d | 2026-11-26 | 2026-12-04 | 26NP30-126 FF+2d |  | 2026-12-18 | 2026-12-28 | 360.4d | 0d |  | Aerother | 26NP30 | Ruroci¹g | Budowa | Roboty | Krzyszto | Uk³ad | PM000 | Zespó³-K | Wspólne | Niski | Pakiet | L2 |  |  |

| ID | WBS | Activity | Duration | Start | Finish | Predecessors | Complete | Planned start | Planned finish | Total float | Free float | Calendar | Uwagi harmonogramisty | Rewizja dokumentu | AC_Wykonawca | AC_Obiekt | AC_Dyscyplina | AC_Faza | AC_Zakres | AC_Opiekun | AC_Obszar | AC_PP_PM | AC_Zespol | AC_Blok | AC_Priorytet | AC_Pakiet | AC_Poziom |
| --- | --- | --- | --- | --- | --- | --- | --- | --- | --- | --- | --- | --- | --- | --- | --- | --- | --- | --- | --- | --- | --- | --- | --- | --- | --- | --- | --- |
|  | SEKCJA 20 | **Sekcja 20** |  | 2026-06-09 | 2026-11-30 |  |  |  |  |  |  |  |  |  |  |  |  |  |  |  |  |  |  |  |  |  |  |
| 26NP30-128 |  | Prefabrykacja ruroci¹gów – Sekcja 20 | 14.8d | 2026-06-09 A | 2026-07-01 A | 26NP30-012, 26NP30-123 SS+5d | 100% | 2026-06-10 | 2026-06-29 |  |  |  | Czeka na dostawê | Rev A | Aerother | 26NP30 | Ruroci¹g | Budowa | Roboty | Krzyszto | Uk³ad | PM000 | Zespó³-K | Wspólne | Wysoki | Pakiet | L2 |
| 26NP30-129 |  | Monta¿ ruroci¹gów – Sekcja 20 | 9.9d | 2026-10-26 | 2026-11-06 | 26NP30-128, 26NP30-014 SS+6d |  | 2026-11-18 | 2026-11-30 | 364.4d | 0d |  |  |  | Aerother | 26NP30 | Ruroci¹g | Budowa | Roboty | Krzyszto | Uk³ad | PM000 | Zespó³-W | Wspólne | Normalny | Pakiet | L2 |
| 26NP30-130 |  | Próba ciœnieniowa – Sekcja 20 | 4d | 2026-11-09 | 2026-11-12 | 26NP30-129 |  | 2026-12-01 | 2026-12-04 | 364.4d | 0d |  |  |  | Aerother | 26NP30 | Ruroci¹g | Budowa | Roboty | Krzyszto | Uk³ad | PM000 | Zespó³-W | Wspólne | Normalny | Pakiet | L2 |
| 26NP30-131 |  | Izolacje – Sekcja 20 | 10d | 2026-11-13 | 2026-11-26 | 26NP30-130 |  | 2026-12-07 | 2026-12-18 | 364.4d | 0d | Kalendarz 6-dniowy |  |  | Aerother | 26NP30 | Ruroci¹g | Budowa | Roboty | Krzyszto | Uk³ad | PM000 | Zespó³-W | Wspólne | Niski | Pakiet | L2 |
| 26NP30-132 |  | Malowanie i oznakowanie – Sekcja 20 | 8d | 2026-11-19 | 2026-11-30 | 26NP30-131 FF+2d |  | 2026-12-11 | 2026-12-22 | 364.4d | 0d |  |  | Rev B | Aerother | 26NP30 | Ruroci¹g | Budowa | Roboty | Krzyszto | Uk³ad | PM000 | Zespó³-W | Wspólne | Normalny | Pakiet | L2 |
|  | SEKCJA 21 | **Sekcja 21** |  | 2026-06-16 | 2026-11-30 |  |  |  |  |  |  |  |  |  |  |  |  |  |  |  |  |  |  |  |  |  |  |
|  | PODSEKCJA | **Podsekcja 21.A** |  | 2026-06-16 | 2026-11-30 |  |  |  |  |  |  |  |  |  |  |  |  |  |  |  |  |  |  |  |  |  |  |
| 26NP30-135 |  | Prefabrykacja ruroci¹gów – Sekcja 21 | 9.3d | 2026-06-16 A | 2026-06-30 A | 26NP30-012, 26NP30-128 SS+5d | 100% | 2026-06-17 | 2026-06-29 |  |  |  |  | Rev A | Aerother | 26NP30 | Ruroci¹g | Budowa | Roboty | Krzyszto | Uk³ad | PM000 | Zespó³-W | Wspólne | Normalny | Pakiet | L2 |
| 26NP30-136 |  | Monta¿ ruroci¹gów – Sekcja 21 | 11.6d | 2026-10-28 | 2026-11-11 | 26NP30-135, 26NP30-014 SS+8d |  | 2026-11-20 | 2026-12-04 | 363.7d | 0d |  | Ryzyko opóŸnienia | Rev B | Aerother | 26NP30 | Ruroci¹g | Budowa | Roboty | Krzyszto | Uk³ad | PM000 | Zespó³-W | Wspólne | Normalny | Pakiet | L2 |
| 26NP30-137 |  | Próba ciœnieniowa – Sekcja 21 | 6d | 2026-11-12 | 2026-11-19 | 26NP30-136 |  | 2026-12-07 | 2026-12-14 | 363.7d | 0d |  |  | Rev B | Aerother | 26NP30 | Ruroci¹g | Budowa | Roboty | Krzyszto | Uk³ad | PM000 | Zespó³-W | Wspólne | Niski | Pakiet | L2 |
| 26NP30-138 |  | Izolacje – Sekcja 21 | 5d | 2026-11-20 | 2026-11-26 | 26NP30-137 |  | 2026-12-15 | 2026-12-21 | 363.7d | 0d |  | Uzgodnione na koordynacji |  | Aerother | 26NP30 | Ruroci¹g | Budowa | Roboty | Krzyszto | Uk³ad | PM000 | Zespó³-W | Wspólne | Normalny | Pakiet | L2 |
| 26NP30-139 |  | Malowanie i oznakowanie – Sekcja 21 | 3d | 2026-11-26 | 2026-11-30 | 26NP30-138 FF+2d |  | 2026-12-21 | 2026-12-23 | 363.7d | 0d |  |  |  | Aerother | 26NP30 | Ruroci¹g | Budowa | Roboty | Krzyszto | Uk³ad | PM200 | Zespó³-I | Wspólne | Normalny | Pakiet | L2 |
|  | SEKCJA 22 | **Sekcja 22** |  | 2026-06-29 | 2026-12-08 |  |  |  |  |  |  |  |  |  |  |  |  |  |  |  |  |  |  |  |  |  |  |
| 26NP30-140 |  | Prefabrykacja ruroci¹gów – Sekcja 22 | 13.7d | 2026-06-29 A | 2026-07-20 A | 26NP30-012, 26NP30-135 SS+5d | 100% | 2026-06-24 | 2026-07-10 |  |  |  | Bez uwag | Rev B | Aerother | 26NP30 | Ruroci¹g | Budowa | Roboty | Krzyszto | Uk³ad | PM000 | Zespó³-K | Wspólne | Normalny | Pakiet | L2 |
| 26NP30-141 |  | Monta¿ ruroci¹gów – Sekcja 22 | 19.9d | 2026-10-21 | 2026-11-17 | 26NP30-140, 26NP30-014 SS+3d |  | 2026-11-13 | 2026-12-09 | 312.4d | 0d |  |  |  | Aerother | 26NP30 | Ruroci¹g | Budowa | Roboty | Krzyszto | Uk³ad | PM000 | Zespó³-W | Wspólne | Normalny | Pakiet | L2 |
| 26NP30-142 |  | Próba ciœnieniowa – Sekcja 22 | 4d | 2026-11-18 | 2026-11-23 | 26NP30-141 |  | 2026-12-10 | 2026-12-15 | 312.4d | 0d |  |  |  | Aerother | 26NP30 | Ruroci¹g | Budowa | Roboty | Krzyszto | Uk³ad | PM000 | Zespó³-W | Wspólne | Normalny | Pakiet | L2 |
| 26NP30-143 |  | Izolacje – Sekcja 22 | 9d | 2026-11-24 | 2026-12-04 | 26NP30-142 |  | 2026-12-16 | 2026-12-28 | 312.4d | 0d |  | Uzgodnione na koordynacji |  | Aerother | 26NP30 | Ruroci¹g | Budowa | Roboty | Krzyszto | Uk³ad | PM000 | Zespó³-W | Wspólne | Normalny | Pakiet | L2 |
| 26NP30-144 |  | Malowanie i oznakowanie – Sekcja 22 | 7d | 2026-11-30 | 2026-12-08 | 26NP30-143 FF+2d |  | 2026-12-22 | 2026-12-30 | 312.4d | 0d |  |  |  | Aerother | 26NP30 | Ruroci¹g | Budowa | Roboty | Krzyszto | Uk³ad | PM000 | Zespó³-W | Wspólne | Normalny | Pakiet | L2 |
|  | SEKCJA 23 | **Sekcja 23** |  | 2026-06-30 | 2026-11-19 |  |  |  |  |  |  |  |  |  |  |  |  |  |  |  |  |  |  |  |  |  |  |
| 26NP30-147 |  | Prefabrykacja ruroci¹gów – Sekcja 23 | 8.3d | 2026-06-30 A | 2026-07-13 A | 26NP30-012, 26NP30-140 SS+5d | 100% | 2026-07-01 | 2026-07-10 |  |  |  |  |  | Aerother | 26NP30 | Ruroci¹g | Budowa | Roboty | Krzyszto | Uk³ad | PM200 | Zespó³-E | Wspólne | Normalny | Pakiet | L2 |
| 26NP30-148 |  | Monta¿ ruroci¹gów – Sekcja 23 | 7.9d | 2026-10-28 | 2026-11-06 | 26NP30-147, 26NP30-014 SS+8d |  | 2026-11-20 | 2026-11-30 | 325.4d | 0d |  | Bez uwag | Rev A | Aerother | 26NP30 | Ruroci¹g | Budowa | Roboty | Krzyszto | Uk³ad | PM000 | Zespó³-W | Wspólne | Normalny | Pakiet | L2 |
| 26NP30-149 |  | Próba ciœnieniowa – Sekcja 23 | 4d | 2026-11-09 | 2026-11-12 | 26NP30-148 |  | 2026-12-01 | 2026-12-04 | 325.4d | 0d |  |  | Rev B | Aerother | 26NP30 | Ruroci¹g | Budowa | Roboty | Krzyszto | Uk³ad | PM000 | Zespó³-W | Wspólne | Normalny | Pakiet | L2 |
| 26NP30-150 |  | Izolacje – Sekcja 23 | 3d | 2026-11-13 | 2026-11-17 | 26NP30-149 |  | 2026-12-07 | 2026-12-09 | 325.4d | 0d |  |  |  | Aerother | 26NP30 | Ruroci¹g | Budowa | Roboty | Krzyszto | Uk³ad | PM000 | Zespó³-W | Wspólne | Normalny | Pakiet | L2 |
| 26NP30-151 |  | Malowanie i oznakowanie – Sekcja 23 | 5d | 2026-11-13 | 2026-11-19 | 26NP30-150 FF+2d |  | 2026-12-07 | 2026-12-11 | 325.4d | 0d |  |  |  | Aerother | 26NP30 | Ruroci¹g | Budowa | Roboty | Krzyszto | Uk³ad | PM000 | Zespó³-W | Wspólne | Wysoki | Pakiet | L2 |

| ID | WBS | Activity | Type | Duration | Start | Finish | Predecessors | Complete | Remaining | Actual finish | Planned start | Planned finish | Total float | Free float | Calendar | Uwagi harmonogramisty | AC_Wykonawca | AC_Obiekt | AC_Dyscyplina | AC_Faza | AC_Zakres | AC_Opiekun | AC_Obszar | AC_PP_PM | AC_Zespol | AC_Blok | AC_Priorytet | AC_Pakiet | AC_Poziom | Rewizja dokumentu |
| --- | --- | --- | --- | --- | --- | --- | --- | --- | --- | --- | --- | --- | --- | --- | --- | --- | --- | --- | --- | --- | --- | --- | --- | --- | --- | --- | --- | --- | --- | --- |
|  | PROJ | **Projektowanie** |  |  | 2025-04-01 | 2025-10-13 |  |  |  |  |  |  |  |  |  |  |  |  |  |  |  |  |  |  |  |  |  |  |  |  |
|  | DOKUMENTAC | **Dokumentacja** |  |  | 2025-04-01 | 2025-10-13 |  |  |  |  |  |  |  |  |  |  |  |  |  |  |  |  |  |  |  |  |  |  |  |  |
| 26NP30-001 |  | Projekt wykonawczy – Rozdzielnia nN |  | 119d | 2025-04-01 A | 2025-09-17 A |  | 100% |  |  | 2025-04-01 | 2025-09-12 |  |  |  | Uzgodnione na koordynacji | Aerother | 26NP30 | Budowlan | Projekto | Projekt | Krzyszto | Uk³ad | PM000 | Zespó³-K | Wspólne | Normalny | Pakiet | L2 |  |
| 26NP30-002 |  | Uzgodnienie dokumentacji z Inwestorem |  | 12d | 2025-09-15 A | 2025-10-03 A | 26NP30-001 | 100% |  |  | 2025-09-15 | 2025-09-30 |  |  |  |  | Aerother | 26NP30 | Budowlan | Projekto | Projekt | Krzyszto | Uk³ad | PM000 | Zespó³-I | Wspólne | Wysoki | Pakiet | L2 |  |
| 26NP30-003 |  | Zatwierdzenie dokumentacji do realizacji |  | 7d | 2025-09-30 A | 2025-10-13 A | 26NP30-002 | 100% |  |  | 2025-10-01 | 2025-10-09 |  |  |  | Bez uwag | Aerother | 26NP30 | Budowlan | Projekto | Projekt | Krzyszto | Uk³ad | PM000 | Zespó³-K | Wspólne | Normalny | Pakiet | L2 |  |
| 26NP30-004 |  | KM: Dokumentacja zatwierdzona – Rozdzielnia nN | milestone | 0d | 2025-10-13 A | 2025-10-13 | 26NP30-003 | 100% |  | 2025-10-10 | 2025-10-10 | 2025-10-10 |  |  |  |  | Aerother | 26NP30 | Budowlan | Projekto | Kamieñ | Krzyszto | Uk³ad | PM000 | Zespó³-W | Wspólne | Normalny | Pakiet | L1 |  |
|  | ROZR | **Rozruch** |  |  | 2027-01-18 | 2027-03-09 |  |  |  |  |  |  |  |  |  |  |  |  |  |  |  |  |  |  |  |  |  |  |  |  |
|  | ROZRUCH | **Rozruch** |  |  | 2027-01-18 | 2027-03-09 |  |  |  |  |  |  |  |  |  |  |  |  |  |  |  |  |  |  |  |  |  |  |  |  |
| 26NP30-154 |  | Przegl¹d gotowoœci do rozruchu |  | 3d | 2027-01-18 | 2027-01-20 | 26NP30-153, 26NP30-019, 26NP30-024, 26NP30-026 |  |  |  | 2027-02-10 | 2027-02-12 | 284.3d | 0d |  |  | Aerother | 26NP30 | Rozruch | Rozruch | Rozruch | Krzyszto | Uk³ad | PM000 | Zespó³-K | Wspólne | Normalny | Pakiet | L2 |  |
| 26NP30-155 |  | Rozruch na zimno |  | 13d | 2027-01-21 | 2027-02-08 | 26NP30-154 |  |  |  | 2027-02-15 | 2027-03-03 | 284.3d | 0d |  |  | Aerother | 26NP30 | Rozruch | Rozruch | Rozruch | Krzyszto | Uk³ad | PM000 | Zespó³-W | Wspólne | Normalny | Pakiet | L2 | Rev B |
| 26NP30-156 |  | Rozruch na gor¹co / próby ruchowe |  | 20d | 2027-02-09 | 2027-03-08 | 26NP30-155 |  |  |  | 2027-03-04 | 2027-03-31 | 284.3d | 0d |  | Bez uwag | Aerother | 26NP30 | Rozruch | Rozruch | Rozruch | Krzyszto | Uk³ad | PM000 | Zespó³-W | Wspólne | Normalny | Pakiet | L2 |  |
| 26NP30-157 |  | KM: Odbiór koñcowy – Rozdzielnia nN | milestone | 0d | 2027-03-09 | 2027-03-09 | 26NP30-156 |  |  |  | 2027-04-01 | 2027-04-01 | 284.3d | 0d |  | Uzgodnione na koordynacji | Aerother | 26NP30 | Rozruch | Rozruch | Kamieñ | Krzyszto | Uk³ad | PM000 | Zespó³-K | Wspólne | Wysoki | Pakiet | L1 |  |
|  | ZAKU | **Zakupy** |  |  | 2025-04-28 | 2026-10-16 |  |  |  |  |  |  |  |  |  |  |  |  |  |  |  |  |  |  |  |  |  |  |  |  |
|  | DOSTAWY | **Dostawy** |  |  | 2025-10-28 | 2026-10-16 |  |  |  |  |  |  |  |  |  |  |  |  |  |  |  |  |  |  |  |  |  |  |  |  |
| 26NP30-008 |  | Produkcja u dostawcy |  | 239d | 2025-10-28 A | 2026-09-29 A | 26NP30-007 | 100% |  |  | 2025-10-24 | 2026-09-23 |  |  |  |  | Aerother | 26NP30 | Mechanic | Zakupy | Dostawa | Krzyszto | Uk³ad | PM000 | Zespó³-W | Wspólne | Normalny | Pakiet | L2 |  |
| 26NP30-009 |  | Testy FAT |  | 9d | 2026-09-23 A | 2026-10-05 A | 26NP30-008 | 100% |  |  | 2026-09-24 | 2026-10-06 |  |  |  | Do weryfikacji z wykonawc¹ | Aerother | 26NP30 | Mechanic | Zakupy | Dostawa | Krzyszto | Uk³ad | PM000 | Zespó³-W | Wspólne | Normalny | Pakiet | L2 |  |
| 26NP30-010 |  | Transport i dostawa na plac budowy |  | 24d | 2026-10-07 A | 2026-10-15 | 26NP30-009 | 70% | 7.3d |  | 2026-10-07 | 2026-11-09 | 267.6d | 0d |  |  | Aerother | 26NP30 | Mechanic | Zakupy | Dostawa | Krzyszto | Uk³ad | PM000 | Zespó³-W | Wspólne | Normalny | Pakiet | L2 |  |
| 26NP30-011 |  | KM: Dostawa na budowê – Rozdzielnia nN | milestone | 0d | 2026-10-16 | 2026-10-16 | 26NP30-010 |  |  |  | 2026-11-10 | 2026-11-10 | 284.3d | 0d |  |  | Aerother | 26NP30 | Mechanic | Zakupy | Kamieñ | Krzyszto | Uk³ad | PM000 | Zespó³-W | Wspólne | Normalny | Pakiet | L1 |  |
|  | ZAMÓWIENIA | **Zamówienia** |  |  | 2025-04-28 | 2025-10-31 |  |  |  |  |  |  |  |  |  |  |  |  |  |  |  |  |  |  |  |  |  |  |  |  |
| 26NP30-005 |  | Zapytanie ofertowe |  | 18d | 2025-04-28 A | 2025-05-21 A | 26NP30-001 SS+20d | 100% |  |  | 2025-04-29 | 2025-05-22 |  |  | Kalendarz 6-dniowy | Do weryfikacji z wykonawc¹ | Aerother | 26NP30 | Mechanic | Zakupy | Dostawa | Krzyszto | Uk³ad | PM000 | Zespó³-W | Wspólne | Normalny | Pakiet | L2 |  |
| 26NP30-006 |  | Analiza i wybór ofert |  | 19d | 2025-05-28 A | 2025-06-23 A | 26NP30-005 | 100% |  |  | 2025-05-23 | 2025-06-18 |  |  |  |  | Aerother | 26NP30 | Mechanic | Zakupy | Dostawa | Krzyszto | Uk³ad | PM000 | Zespó³-I | Wspólne | Normalny | Pakiet | L2 |  |
| 26NP30-007 |  | Zawarcie umowy / zamówienie |  | 10d | 2025-10-15 A | 2025-10-31 A | 26NP30-006, 26NP30-004 SS, 15BP15-004 (other project) FS+11d, 10YD43-004 (other project) SS+5d | 100% |  |  | 2025-10-10 | 2025-10-23 |  |  |  |  | Aerother | 26NP30 | Mechanic | Zakupy | Dostawa | Krzyszto | Uk³ad | PM000 | Zespó³-K | Wspólne | Normalny | Pakiet | L1 |  |
|  | 27FW94 | **27FW94 – Transformator blokowy** |  |  | 2025-04-04 | 2026-08-12 |  |  |  |  |  |  |  |  |  |  |  |  |  |  |  |  |  |  |  |  |  |  |  |  |
|  | BUDO | **Budowa** |  |  | 2025-10-15 | 2026-07-08 |  |  |  |  |  |  |  |  |  |  |  |  |  |  |  |  |  |  |  |  |  |  |  |  |
|  | AKPIA | **AKPiA** |  |  | 2026-04-27 | 2026-05-12 |  |  |  |  |  |  |  |  |  |  |  |  |  |  |  |  |  |  |  |  |  |  |  |  |
| 27FW94-159 |  | Monta¿ uk³adów AKPiA |  | 10d | 2026-04-27 A | 2026-05-12 A | 27FW94-014 SS+5d | 100% |  |  | 2026-04-24 | 2026-05-07 |  |  |  |  | ElektroP | 27FW94 | AKPiA | Budowa | Roboty | Magdalen | Uk³ad | PM000 | Zespó³-W | Blok | Wysoki | Pakiet | L2 | Rev A |

| ID | WBS | Activity | Duration | Start | Finish | Predecessors | Complete | Planned start | Planned finish | Calendar | Uwagi harmonogramisty | AC_Wykonawca | AC_Obiekt | AC_Dyscyplina | AC_Faza | AC_Zakres | AC_Opiekun | AC_Obszar | AC_PP_PM | AC_Zespol | AC_Blok | AC_Priorytet | AC_Pakiet | AC_Poziom | Rewizja dokumentu |
| --- | --- | --- | --- | --- | --- | --- | --- | --- | --- | --- | --- | --- | --- | --- | --- | --- | --- | --- | --- | --- | --- | --- | --- | --- | --- |
|  | ELEKTRYKA | **Elektryka** |  | 2026-04-28 | 2026-06-02 |  |  |  |  |  |  |  |  |  |  |  |  |  |  |  |  |  |  |  |  |
| 27FW94-050 |  | Pod³¹czenia i pomiary – trasa 06 | 10d | 2026-04-28 A | 2026-05-14 A | 27FW94-049 FF | 100% | 2026-04-24 | 2026-05-07 |  | Do weryfikacji z wykonawc¹ | ElektroP | 27FW94 | Elektryc | Budowa | Roboty | Magdalen | Uk³ad | PM000 | Zespó³-K | Blok | Normalny | Pakiet | L2 |  |
| 27FW94-062 |  | Pod³¹czenia i pomiary – trasa 08 | 10d | 2026-04-29 A | 2026-05-13 A | 27FW94-061 FF | 100% | 2026-04-29 | 2026-05-12 |  |  | ElektroP | 27FW94 | Elektryc | Budowa | Roboty | Magdalen | Uk³ad | PM000 | Zespó³-K | Blok | Normalny | Pakiet | L2 |  |
| 27FW94-037 |  | Uk³adanie kabli – trasa 04 | 20d | 2026-04-30 A | 2026-05-29 A | 27FW94-014 SS+10d | 100% | 2026-05-01 | 2026-05-28 | Kalendarz 6-dniowy |  | ElektroP | 27FW94 | Elektryc | Budowa | Roboty | Magdalen | Uk³ad | PM000 | Zespó³-K | Blok | Normalny | Pakiet | L2 |  |
| 27FW94-061 |  | Uk³adanie kabli – trasa 08 | 8d | 2026-04-30 A | 2026-05-13 A | 27FW94-014 SS+10d | 100% | 2026-05-01 | 2026-05-12 |  |  | ElektroP | 27FW94 | Elektryc | Budowa | Roboty | Magdalen | Uk³ad | PM000 | Zespó³-W | Blok | Normalny | Pakiet | L2 | Rev A |
| 27FW94-133 |  | Uk³adanie kabli – trasa 20 | 20d | 2026-04-30 A | 2026-05-28 A | 27FW94-014 SS+10d | 100% | 2026-05-01 | 2026-05-28 |  | Ryzyko opóŸnienia | ElektroP | 27FW94 | Elektryc | Budowa | Roboty | Magdalen | Uk³ad | PM000 | Zespó³-W | Blok | Wysoki | Pakiet | L2 |  |
| 27FW94-025 |  | Uk³adanie kabli – trasa 02 | 15d | 2026-05-01 A | 2026-05-26 A | 27FW94-014 SS+10d | 100% | 2026-05-01 | 2026-05-21 |  |  | ElektroP | 27FW94 | Elektryc | Budowa | Roboty | Magdalen | Uk³ad | PM000 | Zespó³-K | Blok | Normalny | Pakiet | L2 |  |
| 27FW94-097 |  | Uk³adanie kabli – trasa 14 | 13d | 2026-05-01 A | 2026-05-22 A | 27FW94-014 SS+10d | 100% | 2026-05-01 | 2026-05-19 |  |  | ElektroP | 27FW94 | Elektryc | Budowa | Roboty | Magdalen | Uk³ad | PM000 | Zespó³-W | Blok | Normalny | Pakiet | L2 |  |
| 27FW94-121 |  | Uk³adanie kabli – trasa 18 | 6d | 2026-05-01 A | 2026-05-11 A | 27FW94-014 SS+10d | 100% | 2026-05-01 | 2026-05-08 |  |  | ElektroP | 27FW94 | Elektryc | Budowa | Roboty | Magdalen | Uk³ad | PM000 | Zespó³-W | Blok | Normalny | Pakiet | L2 |  |
| 27FW94-122 |  | Pod³¹czenia i pomiary – trasa 18 | 8d | 2026-05-01 A | 2026-05-14 A | 27FW94-121 FF | 100% | 2026-04-29 | 2026-05-08 |  |  | ElektroP | 27FW94 | Elektryc | Budowa | Roboty | Magdalen | Uk³ad | PM100 | Zespó³-I | Blok | Normalny | Pakiet | L2 |  |
| 27FW94-049 |  | Uk³adanie kabli – trasa 06 | 5d | 2026-05-04 A | 2026-05-12 A | 27FW94-014 SS+10d | 100% | 2026-05-01 | 2026-05-07 |  |  | ElektroP | 27FW94 | Elektryc | Budowa | Roboty | Magdalen | Uk³ad | PM000 | Zespó³-W | Blok | Krytyczn | Pakiet | L2 | Rev C |
| 27FW94-109 |  | Uk³adanie kabli – trasa 16 | 10d | 2026-05-04 A | 2026-05-20 A | 27FW94-014 SS+10d | 100% | 2026-05-01 | 2026-05-14 |  | Uzgodnione na koordynacji | ElektroP | 27FW94 | Elektryc | Budowa | Roboty | Magdalen | Uk³ad | PM000 | Zespó³-W | Blok | Wysoki | Pakiet | L2 |  |
| 27FW94-073 |  | Uk³adanie kabli – trasa 10 | 15d | 2026-05-05 A | 2026-05-25 A | 27FW94-014 SS+10d | 100% | 2026-05-01 | 2026-05-21 |  |  | ElektroP | 27FW94 | Elektryc | Budowa | Roboty | Magdalen | Uk³ad | PM000 | Zespó³-W | Blok | Normalny | Pakiet | L2 | Rev C |
| 27FW94-157 |  | Uk³adanie kabli – trasa 24 | 11d | 2026-05-05 A | 2026-05-19 A | 27FW94-014 SS+10d | 100% | 2026-05-01 | 2026-05-15 |  | Czeka na dostawê | ElektroP | 27FW94 | Elektryc | Budowa | Roboty | Magdalen | Uk³ad | PM000 | Zespó³-K | Blok | Normalny | Pakiet | L2 |  |
| 27FW94-085 |  | Uk³adanie kabli – trasa 12 | 13d | 2026-05-06 A | 2026-05-27 A | 27FW94-014 SS+10d | 100% | 2026-05-01 | 2026-05-19 |  | Bez uwag | ElektroP | 27FW94 | Elektryc | Budowa | Roboty | Magdalen | Uk³ad | PM000 | Zespó³-E | Blok | Wysoki | Pakiet | L2 |  |
| 27FW94-145 |  | Uk³adanie kabli – trasa 22 | 12d | 2026-05-06 A | 2026-05-22 A | 27FW94-014 SS+10d | 100% | 2026-05-01 | 2026-05-18 |  | Ryzyko opóŸnienia | ElektroP | 27FW94 | Elektryc | Budowa | Roboty | Magdalen | Uk³ad | PM000 | Zespó³-I | Blok | Krytyczn | Pakiet | L2 |  |
| 27FW94-098 |  | Pod³¹czenia i pomiary – trasa 14 | 10d | 2026-05-11 A | 2026-05-25 A | 27FW94-097 FF | 100% | 2026-05-06 | 2026-05-19 |  |  | ElektroP | 27FW94 | Elektryc | Budowa | Roboty | Magdalen | Uk³ad | PM000 | Zespó³-E | Blok | Normalny | Pakiet | L2 |  |
| 27FW94-110 |  | Pod³¹czenia i pomiary – trasa 16 | 4d | 2026-05-11 A | 2026-05-15 A | 27FW94-109 FF | 100% | 2026-05-11 | 2026-05-14 |  |  | ElektroP | 27FW94 | Elektryc | Budowa | Roboty | Magdalen | Uk³ad | PM000 | Zespó³-W | Blok | Normalny | Pakiet | L2 |  |
| 27FW94-158 |  | Pod³¹czenia i pomiary – trasa 24 | 3d | 2026-05-13 A | 2026-05-19 A | 27FW94-157 FF | 100% | 2026-05-13 | 2026-05-15 |  |  | ElektroP | 27FW94 | Elektryc | Budowa | Roboty | Magdalen | Uk³ad | PM000 | Zespó³-E | Blok | Wysoki | Pakiet | L2 |  |
| 27FW94-074 |  | Pod³¹czenia i pomiary – trasa 10 | 6d | 2026-05-14 A | 2026-05-21 A | 27FW94-073 FF | 100% |  |  |  | Ryzyko opóŸnienia | ElektroP | 27FW94 | Elektryc | Budowa | Roboty | Magdalen | Uk³ad | PM000 | Zespó³-E | Blok | Normalny | Pakiet | L2 |  |
| 27FW94-146 |  | Pod³¹czenia i pomiary – trasa 22 | 6d | 2026-05-14 A | 2026-05-26 A | 27FW94-145 FF | 100% | 2026-05-11 | 2026-05-18 |  |  | ElektroP | 27FW94 | Elektryc | Budowa | Roboty | Magdalen | Uk³ad | PM000 | Zespó³-K | Blok | Normalny | Pakiet | L2 | Rev A |
| 27FW94-086 |  | Pod³¹czenia i pomiary – trasa 12 | 3d | 2026-05-18 A | 2026-05-22 A | 27FW94-085 FF | 100% | 2026-05-15 | 2026-05-19 |  |  | ElektroP | 27FW94 | Elektryc | Budowa | Roboty | Magdalen | Uk³ad | PM000 | Zespó³-K | Blok | Normalny | Pakiet | L2 | Rev A |
| 27FW94-038 |  | Pod³¹czenia i pomiary – trasa 04 | 8d | 2026-05-20 A | 2026-06-02 A | 27FW94-037 FF | 100% | 2026-05-19 | 2026-05-28 |  |  | ElektroP | 27FW94 | Elektryc | Budowa | Roboty | Magdalen | Uk³ad | PM000 | Zespó³-I | Blok | Normalny | Pakiet | L2 | Rev A |
| 27FW94-026 |  | Pod³¹czenia i pomiary – trasa 02 | 3d | 2026-05-22 A | 2026-05-26 A | 27FW94-025 FF | 100% | 2026-05-19 | 2026-05-21 |  |  | ElektroP | 27FW94 | Elektryc | Budowa | Roboty | Magdalen | Uk³ad | PM000 | Zespó³-K | Blok | Normalny | Pakiet | L2 | Rev A |
| 27FW94-134 |  | Pod³¹czenia i pomiary – trasa 20 | 4d | 2026-05-25 A | 2026-05-28 A | 27FW94-133 FF | 100% |  |  | Kalendarz 6-dniowy | Czeka na dostawê | ElektroP | 27FW94 | Elektryc | Budowa | Roboty | Magdalen | Uk³ad | PM000 | Zespó³-W | Blok | Wysoki | Pakiet | L2 | Rev C |

| ID | WBS | Activity | Type | Duration | Start | Finish | Predecessors | Complete | Actual finish | Planned start | Planned finish | Calendar | Uwagi harmonogramisty | AC_Wykonawca | AC_Obiekt | AC_Dyscyplina | AC_Faza | AC_Zakres | AC_Opiekun | AC_Obszar | AC_PP_PM | AC_Zespol | AC_Blok | AC_Priorytet | AC_Pakiet | AC_Poziom | Rewizja dokumentu |
| --- | --- | --- | --- | --- | --- | --- | --- | --- | --- | --- | --- | --- | --- | --- | --- | --- | --- | --- | --- | --- | --- | --- | --- | --- | --- | --- | --- |
|  | MONTA¯ | **Monta¿** |  |  | 2025-11-24 | 2026-07-08 |  |  |  |  |  |  |  |  |  |  |  |  |  |  |  |  |  |  |  |  |  |
| 27FW94-013 |  | Monta¿ konstrukcji stalowych |  | 46d | 2025-11-24 A | 2026-01-29 A | 27FW94-012 | 100% |  | 2025-11-19 | 2026-01-21 |  | Uzgodnione na koordynacji | ElektroP | 27FW94 | Mechanic | Budowa | Roboty | Magdalen | Uk³ad | PM000 | Zespó³-I | Blok | Niski | Pakiet | L2 |  |
| 27FW94-014 |  | Monta¿ urz¹dzeñ g³ównych |  | 57d | 2026-04-21 A | 2026-07-08 A | 27FW94-013, 27FW94-011 | 100% |  | 2026-04-17 | 2026-07-06 |  |  | ElektroP | 27FW94 | Mechanic | Budowa | Roboty | Magdalen | Uk³ad | PM000 | Zespó³-W | Blok | Wysoki | Pakiet | L2 |  |
| 27FW94-160 |  | KM: Zakoñczenie monta¿u – Transformator blokowy | milestone | 0d | 2026-07-07 A | 2026-07-07 | 27FW94-151, 27FW94-156, 27FW94-158, 27FW94-159, 27FW94-014 | 100% | 2026-07-06 |  |  |  |  | ElektroP | 27FW94 | Mechanic | Budowa | Kamieñ | Magdalen | Uk³ad | PM000 | Zespó³-W | Blok | Wysoki | Pakiet | L2 |  |
|  | ROBOTY BUD | **Roboty budowlane** |  |  | 2025-10-15 | 2025-11-19 |  |  |  |  |  |  |  |  |  |  |  |  |  |  |  |  |  |  |  |  |  |
| 27FW94-012 |  | Fundamenty i roboty ziemne |  | 26d | 2025-10-15 A | 2025-11-19 A | 27FW94-007 FS+15d | 100% |  | 2025-10-14 | 2025-11-18 |  | Uzgodnione na koordynacji | ElektroP | 27FW94 | Budowlan | Budowa | Roboty | Magdalen | Uk³ad | PM000 | Zespó³-W | Blok | Normalny | Pakiet | L2 |  |
|  | RUROCI¥GI | **Ruroci¹gi** |  |  | 2025-11-20 | 2026-07-02 |  |  |  |  |  |  |  |  |  |  |  |  |  |  |  |  |  |  |  |  |  |
|  | SEKCJA 01 | **Sekcja 01** |  |  | 2025-11-20 | 2026-05-21 |  |  |  |  |  |  |  |  |  |  |  |  |  |  |  |  |  |  |  |  |  |
| 27FW94-015 |  | Prefabrykacja ruroci¹gów – Sekcja 01 |  | 8.1d | 2025-11-20 A | 2025-12-01 A | 27FW94-012 | 100% |  | 2025-11-19 | 2025-11-28 |  | Do weryfikacji z wykonawc¹ | ElektroP | 27FW94 | Ruroci¹g | Budowa | Roboty | Magdalen | Uk³ad | PM000 | Zespó³-W | Blok | Normalny | Pakiet | L2 |  |
| 27FW94-016 |  | Monta¿ ruroci¹gów – Sekcja 01 |  | 5.6d | 2026-04-28 A | 2026-05-04 A | 27FW94-015, 27FW94-014 SS+5d | 100% |  | 2026-04-24 | 2026-04-30 |  |  | ElektroP | 27FW94 | Ruroci¹g | Budowa | Roboty | Magdalen | Uk³ad | PM000 | Zespó³-W | Blok | Niski | Pakiet | L2 |  |
| 27FW94-017 |  | Próba ciœnieniowa – Sekcja 01 |  | 3d | 2026-04-30 A | 2026-05-04 A | 27FW94-016 | 100% |  | 2026-05-01 | 2026-05-05 |  |  | ElektroP | 27FW94 | Ruroci¹g | Budowa | Roboty | Magdalen | Uk³ad | PM300 | Zespó³-I | Blok | Normalny | Pakiet | L2 |  |
| 27FW94-018 |  | Izolacje – Sekcja 01 |  | 9d | 2026-05-05 A | 2026-05-18 A | 27FW94-017 | 100% |  | 2026-05-06 | 2026-05-18 |  |  | ElektroP | 27FW94 | Ruroci¹g | Budowa | Roboty | Magdalen | Uk³ad | PM000 | Zespó³-K | Blok | Wysoki | Pakiet | L2 |  |
| 27FW94-019 |  | Malowanie i oznakowanie – Sekcja 01 |  | 5d | 2026-05-13 A | 2026-05-21 A | 27FW94-018 FF+2d | 100% |  | 2026-05-14 | 2026-05-20 |  | Ryzyko opóŸnienia | ElektroP | 27FW94 | Ruroci¹g | Budowa | Roboty | Magdalen | Uk³ad | PM000 | Zespó³-E | Blok | Normalny | Pakiet | L2 |  |
|  | SEKCJA 02 | **Sekcja 02** |  |  | 2025-11-27 | 2026-05-12 |  |  |  |  |  |  |  |  |  |  |  |  |  |  |  |  |  |  |  |  |  |
| 27FW94-020 |  | Prefabrykacja ruroci¹gów – Sekcja 02 |  | 3d | 2025-11-27 A | 2025-12-03 A | 27FW94-012, 27FW94-015 SS+5d | 100% |  | 2025-11-26 | 2025-11-28 |  | Czeka na dostawê | ElektroP | 27FW94 | Ruroci¹g | Budowa | Roboty | Magdalen | Uk³ad | PM000 | Zespó³-W | Blok | Wysoki | Pakiet | L2 |  |
| 27FW94-021 |  | Monta¿ ruroci¹gów – Sekcja 02 |  | 7.5d | 2026-04-21 A | 2026-04-30 A | 27FW94-020, 27FW94-014 SS | 100% |  | 2026-04-17 | 2026-04-27 |  |  | ElektroP | 27FW94 | Ruroci¹g | Budowa | Roboty | Magdalen | Uk³ad | PM000 | Zespó³-K | Blok | Wysoki | Pakiet | L2 |  |
| 27FW94-022 |  | Próba ciœnieniowa – Sekcja 02 |  | 5d | 2026-04-28 A | 2026-05-07 A | 27FW94-021 | 100% |  | 2026-04-28 | 2026-05-04 |  | Do weryfikacji z wykonawc¹ | ElektroP | 27FW94 | Ruroci¹g | Budowa | Roboty | Magdalen | Uk³ad | PM000 | Zespó³-W | Blok | Normalny | Pakiet | L2 | Rev A |
| 27FW94-024 |  | Malowanie i oznakowanie – Sekcja 02 |  | 3d | 2026-05-06 A | 2026-05-08 A | 27FW94-023 FF+2d | 100% |  | 2026-05-07 | 2026-05-11 |  |  | ElektroP | 27FW94 | Ruroci¹g | Budowa | Roboty | Magdalen | Uk³ad | PM000 | Zespó³-W | Blok | Normalny | Pakiet | L2 |  |
| 27FW94-023 |  | Izolacje – Sekcja 02 |  | 3d | 2026-05-08 A | 2026-05-12 A | 27FW94-022 | 100% |  | 2026-05-05 | 2026-05-07 |  |  | ElektroP | 27FW94 | Ruroci¹g | Budowa | Roboty | Magdalen | Uk³ad | PM000 | Zespó³-K | Blok | Krytyczn | Pakiet | L2 |  |
|  | SEKCJA 03 | **Sekcja 03** |  |  | 2025-12-03 | 2026-05-29 |  |  |  |  |  |  |  |  |  |  |  |  |  |  |  |  |  |  |  |  |  |
|  | PODSEKCJA | **Podsekcja 03.A** |  |  | 2025-12-03 | 2026-05-29 |  |  |  |  |  |  |  |  |  |  |  |  |  |  |  |  |  |  |  |  |  |
| 27FW94-027 |  | Prefabrykacja ruroci¹gów – Sekcja 03 |  | 14.4d | 2025-12-03 A | 2025-12-23 A | 27FW94-012, 27FW94-020 SS+5d | 100% |  | 2025-12-03 | 2025-12-22 |  |  | ElektroP | 27FW94 | Ruroci¹g | Budowa | Roboty | Magdalen | Uk³ad | PM000 | Zespó³-W | Blok | Normalny | Pakiet | L2 |  |
| 27FW94-028 |  | Monta¿ ruroci¹gów – Sekcja 03 |  | 10.4d | 2026-05-01 A | 2026-05-14 A | 27FW94-027, 27FW94-014 SS+7d | 100% |  | 2026-04-28 | 2026-05-11 | Kalendarz 6-dniowy |  | ElektroP | 27FW94 | Ruroci¹g | Budowa | Roboty | Magdalen | Uk³ad | PM000 | Zespó³-K | Blok | Normalny | Pakiet | L2 |  |
| 27FW94-029 |  | Próba ciœnieniowa – Sekcja 03 |  | 5d | 2026-05-12 A | 2026-05-18 A | 27FW94-028 | 100% |  |  |  |  |  | ElektroP | 27FW94 | Ruroci¹g | Budowa | Roboty | Magdalen | Uk³ad | PM000 | Zespó³-W | Blok | Normalny | Pakiet | L2 | Rev A |
| 27FW94-030 |  | Izolacje – Sekcja 03 |  | 6d | 2026-05-19 A | 2026-05-28 A | 27FW94-029 | 100% |  | 2026-05-19 | 2026-05-26 |  |  | ElektroP | 27FW94 | Ruroci¹g | Budowa | Roboty | Magdalen | Uk³ad | PM000 | Zespó³-W | Blok | Normalny | Pakiet | L2 |  |
| 27FW94-031 |  | Malowanie i oznakowanie – Sekcja 03 |  | 7d | 2026-05-21 A | 2026-05-29 A | 27FW94-030 FF+2d | 100% |  | 2026-05-20 | 2026-05-28 |  |  | ElektroP | 27FW94 | Ruroci¹g | Budowa | Roboty | Magdalen | Uk³ad | PM000 | Zespó³-K | Blok | Niski | Pakiet | L2 | Rev B |

| ID | WBS | Activity | Duration | Start | Finish | Predecessors | Complete | Planned start | Planned finish | Calendar | AC_Wykonawca | AC_Obiekt | AC_Dyscyplina | AC_Faza | AC_Zakres | AC_Opiekun | AC_Obszar | AC_PP_PM | AC_Zespol | AC_Blok | AC_Priorytet | AC_Pakiet | AC_Poziom | Rewizja dokumentu | Uwagi harmonogramisty |
| --- | --- | --- | --- | --- | --- | --- | --- | --- | --- | --- | --- | --- | --- | --- | --- | --- | --- | --- | --- | --- | --- | --- | --- | --- | --- |
|  | SEKCJA 04 | **Sekcja 04** |  | 2025-12-10 | 2026-05-25 |  |  |  |  |  |  |  |  |  |  |  |  |  |  |  |  |  |  |  |  |
| 27FW94-032 |  | Prefabrykacja ruroci¹gów – Sekcja 04 | 9.1d | 2025-12-10 A | 2025-12-24 A | 27FW94-012, 27FW94-027 SS+5d | 100% | 2025-12-10 | 2025-12-22 |  | ElektroP | 27FW94 | Ruroci¹g | Budowa | Roboty | Magdalen | Uk³ad | PM000 | Zespó³-K | Blok | Normalny | Pakiet | L2 |  |  |
| 27FW94-033 |  | Monta¿ ruroci¹gów – Sekcja 04 | 6.4d | 2026-04-30 A | 2026-05-12 A | 27FW94-032, 27FW94-014 SS+9d | 100% | 2026-04-30 | 2026-05-07 |  | ElektroP | 27FW94 | Ruroci¹g | Budowa | Roboty | Magdalen | Uk³ad | PM000 | Zespó³-K | Blok | Wysoki | Pakiet | L2 |  |  |
| 27FW94-034 |  | Próba ciœnieniowa – Sekcja 04 | 3d | 2026-05-08 A | 2026-05-14 A | 27FW94-033 | 100% | 2026-05-08 | 2026-05-12 |  | ElektroP | 27FW94 | Ruroci¹g | Budowa | Roboty | Magdalen | Uk³ad | PM000 | Zespó³-K | Blok | Normalny | Pakiet | L2 |  |  |
| 27FW94-035 |  | Izolacje – Sekcja 04 | 5d | 2026-05-15 A | 2026-05-21 A | 27FW94-034 | 100% | 2026-05-13 | 2026-05-19 |  | ElektroP | 27FW94 | Ruroci¹g | Budowa | Roboty | Magdalen | Uk³ad | PM000 | Zespó³-W | Blok | Normalny | Pakiet | L2 | Rev B |  |
| 27FW94-036 |  | Malowanie i oznakowanie – Sekcja 04 | 2d | 2026-05-21 A | 2026-05-25 A | 27FW94-035 FF+2d | 100% | 2026-05-20 | 2026-05-21 |  | ElektroP | 27FW94 | Ruroci¹g | Budowa | Roboty | Magdalen | Uk³ad | PM000 | Zespó³-W | Blok | Normalny | Pakiet | L2 |  |  |
|  | SEKCJA 05 | **Sekcja 05** |  | 2025-12-19 | 2026-06-09 |  |  |  |  |  |  |  |  |  |  |  |  |  |  |  |  |  |  |  |  |
| 27FW94-039 |  | Prefabrykacja ruroci¹gów – Sekcja 05 | 6.8d | 2025-12-19 A | 2025-12-29 A | 27FW94-012, 27FW94-032 SS+5d | 100% | 2025-12-17 | 2025-12-24 |  | ElektroP | 27FW94 | Ruroci¹g | Budowa | Roboty | Magdalen | Uk³ad | PM000 | Zespó³-K | Blok | Normalny | Pakiet | L2 | Rev C |  |
| 27FW94-040 |  | Monta¿ ruroci¹gów – Sekcja 05 | 17.2d | 2026-05-05 A | 2026-05-29 A | 27FW94-039, 27FW94-014 SS+9d | 100% | 2026-04-30 | 2026-05-22 |  | ElektroP | 27FW94 | Ruroci¹g | Budowa | Roboty | Magdalen | Uk³ad | PM000 | Zespó³-W | Blok | Wysoki | Pakiet | L2 |  | Do weryfikacji z wykonawc¹ |
| 27FW94-041 |  | Próba ciœnieniowa – Sekcja 05 | 3d | 2026-05-28 A | 2026-06-03 A | 27FW94-040 | 100% | 2026-05-25 | 2026-05-27 |  | ElektroP | 27FW94 | Ruroci¹g | Budowa | Roboty | Magdalen | Uk³ad | PM000 | Zespó³-W | Blok | Normalny | Pakiet | L2 |  | Ryzyko opóŸnienia |
| 27FW94-042 |  | Izolacje – Sekcja 05 | 7d | 2026-05-28 A | 2026-06-05 A | 27FW94-041 | 100% |  |  |  | ElektroP | 27FW94 | Ruroci¹g | Budowa | Roboty | Magdalen | Uk³ad | PM000 | Zespó³-W | Blok | Normalny | Pakiet | L2 | Rev C |  |
| 27FW94-043 |  | Malowanie i oznakowanie – Sekcja 05 | 6d | 2026-06-01 A | 2026-06-09 A | 27FW94-042 FF+2d | 100% | 2026-06-02 | 2026-06-09 |  | ElektroP | 27FW94 | Ruroci¹g | Budowa | Roboty | Magdalen | Uk³ad | PM000 | Zespó³-W | Blok | Normalny | Pakiet | L2 | Rev B |  |
|  | SEKCJA 06 | **Sekcja 06** |  | 2025-12-29 | 2026-06-02 |  |  |  |  |  |  |  |  |  |  |  |  |  |  |  |  |  |  |  |  |
|  | PODSEKCJA | **Podsekcja 06.A** |  | 2025-12-29 | 2026-06-02 |  |  |  |  |  |  |  |  |  |  |  |  |  |  |  |  |  |  |  |  |
| 27FW94-044 |  | Prefabrykacja ruroci¹gów – Sekcja 06 | 14.5d | 2025-12-29 A | 2026-01-19 A | 27FW94-012, 27FW94-039 SS+5d | 100% | 2025-12-24 | 2026-01-12 |  | ElektroP | 27FW94 | Ruroci¹g | Budowa | Roboty | Magdalen | Uk³ad | PM000 | Zespó³-K | Blok | Normalny | Pakiet | L2 | Rev C | Bez uwag |
| 27FW94-045 |  | Monta¿ ruroci¹gów – Sekcja 06 | 13.3d | 2026-04-20 A | 2026-05-06 A | 27FW94-044, 27FW94-014 SS+2d | 100% | 2026-04-21 | 2026-05-07 |  | ElektroP | 27FW94 | Ruroci¹g | Budowa | Roboty | Magdalen | Uk³ad | PM000 | Zespó³-W | Blok | Normalny | Pakiet | L2 | Rev C |  |
| 27FW94-046 |  | Próba ciœnieniowa – Sekcja 06 | 6d | 2026-05-07 A | 2026-05-15 A | 27FW94-045 | 100% | 2026-05-08 | 2026-05-15 |  | ElektroP | 27FW94 | Ruroci¹g | Budowa | Roboty | Magdalen | Uk³ad | PM000 | Zespó³-W | Blok | Normalny | Pakiet | L2 |  | Ryzyko opóŸnienia |
| 27FW94-047 |  | Izolacje – Sekcja 06 | 5d | 2026-05-20 A | 2026-05-28 A | 27FW94-046 | 100% | 2026-05-18 | 2026-05-22 | Kalendarz 6-dniowy | ElektroP | 27FW94 | Ruroci¹g | Budowa | Roboty | Magdalen | Uk³ad | PM000 | Zespó³-W | Blok | Normalny | Pakiet | L2 |  | Ryzyko opóŸnienia |
| 27FW94-048 |  | Malowanie i oznakowanie – Sekcja 06 | 4d | 2026-05-25 A | 2026-06-02 A | 27FW94-047 FF+2d | 100% | 2026-05-21 | 2026-05-26 |  | ElektroP | 27FW94 | Ruroci¹g | Budowa | Roboty | Magdalen | Uk³ad | PM000 | Zespó³-W | Blok | Normalny | Pakiet | L2 |  |  |
|  | SEKCJA 07 | **Sekcja 07** |  | 2025-12-30 | 2026-05-28 |  |  |  |  |  |  |  |  |  |  |  |  |  |  |  |  |  |  |  |  |
| 27FW94-051 |  | Prefabrykacja ruroci¹gów – Sekcja 07 | 4.3d | 2025-12-30 A | 2026-01-06 A | 27FW94-012, 27FW94-044 SS+5d | 100% | 2025-12-31 | 2026-01-05 |  | ElektroP | 27FW94 | Ruroci¹g | Budowa | Roboty | Magdalen | Uk³ad | PM000 | Zespó³-K | Blok | Normalny | Pakiet | L2 |  |  |
| 27FW94-052 |  | Monta¿ ruroci¹gów – Sekcja 07 | 10.7d | 2026-05-04 A | 2026-05-19 A | 27FW94-051, 27FW94-014 SS+10d | 100% | 2026-05-01 | 2026-05-14 |  | ElektroP | 27FW94 | Ruroci¹g | Budowa | Roboty | Magdalen | Uk³ad | PM000 | Zespó³-W | Blok | Normalny | Pakiet | L2 | Rev C | Ryzyko opóŸnienia |
| 27FW94-055 |  | Malowanie i oznakowanie – Sekcja 07 | 7d | 2026-05-19 A | 2026-05-28 A | 27FW94-054 FF+2d | 100% | 2026-05-19 | 2026-05-27 |  | ElektroP | 27FW94 | Ruroci¹g | Budowa | Roboty | Magdalen | Uk³ad | PM000 | Zespó³-E | Blok | Normalny | Pakiet | L2 | Rev C |  |
| 27FW94-053 |  | Próba ciœnieniowa – Sekcja 07 | 3d | 2026-05-20 A | 2026-05-22 A | 27FW94-052 | 100% | 2026-05-15 | 2026-05-19 |  | ElektroP | 27FW94 | Ruroci¹g | Budowa | Roboty | Magdalen | Uk³ad | PM000 | Zespó³-W | Blok | Normalny | Pakiet | L2 |  |  |
| 27FW94-054 |  | Izolacje – Sekcja 07 | 4d | 2026-05-25 A | 2026-05-28 A | 27FW94-053 | 100% | 2026-05-20 | 2026-05-25 |  | ElektroP | 27FW94 | Ruroci¹g | Budowa | Roboty | Magdalen | Uk³ad | PM000 | Zespó³-E | Blok | Niski | Pakiet | L2 | Rev C |  |

| ID | WBS | Activity | Duration | Start | Finish | Predecessors | Complete | Planned start | Planned finish | Calendar | Uwagi harmonogramisty | AC_Wykonawca | AC_Obiekt | AC_Dyscyplina | AC_Faza | AC_Zakres | AC_Opiekun | AC_Obszar | AC_PP_PM | AC_Zespol | AC_Blok | AC_Priorytet | AC_Pakiet | AC_Poziom | Rewizja dokumentu |
| --- | --- | --- | --- | --- | --- | --- | --- | --- | --- | --- | --- | --- | --- | --- | --- | --- | --- | --- | --- | --- | --- | --- | --- | --- | --- |
|  | SEKCJA 08 | **Sekcja 08** |  | 2026-01-06 | 2026-06-08 |  |  |  |  |  |  |  |  |  |  |  |  |  |  |  |  |  |  |  |  |
| 27FW94-056 |  | Prefabrykacja ruroci¹gów – Sekcja 08 | 7d | 2026-01-06 A | 2026-01-16 A | 27FW94-012, 27FW94-051 SS+5d | 100% | 2026-01-07 | 2026-01-15 |  | Bez uwag | ElektroP | 27FW94 | Ruroci¹g | Budowa | Roboty | Magdalen | Uk³ad | PM300 | Zespó³-E | Blok | Normalny | Pakiet | L2 |  |
| 27FW94-057 |  | Monta¿ ruroci¹gów – Sekcja 08 | 12.3d | 2026-04-16 A | 2026-05-01 A | 27FW94-056, 27FW94-014 SS | 100% | 2026-04-17 | 2026-05-04 |  | Czeka na dostawê | ElektroP | 27FW94 | Ruroci¹g | Budowa | Roboty | Magdalen | Uk³ad | PM000 | Zespó³-W | Blok | Normalny | Pakiet | L2 |  |
| 27FW94-058 |  | Próba ciœnieniowa – Sekcja 08 | 6d | 2026-05-07 A | 2026-05-19 A | 27FW94-057 | 100% | 2026-05-05 | 2026-05-12 |  |  | ElektroP | 27FW94 | Ruroci¹g | Budowa | Roboty | Magdalen | Uk³ad | PM000 | Zespó³-W | Blok | Normalny | Pakiet | L2 | Rev B |
| 27FW94-059 |  | Izolacje – Sekcja 08 | 11d | 2026-05-15 A | 2026-06-02 A | 27FW94-058 | 100% | 2026-05-13 | 2026-05-27 |  |  | ElektroP | 27FW94 | Ruroci¹g | Budowa | Roboty | Magdalen | Uk³ad | PM000 | Zespó³-K | Blok | Normalny | Pakiet | L2 | Rev A |
| 27FW94-060 |  | Malowanie i oznakowanie – Sekcja 08 | 7d | 2026-05-26 A | 2026-06-08 A | 27FW94-059 FF+2d | 100% | 2026-05-21 | 2026-05-29 |  |  | ElektroP | 27FW94 | Ruroci¹g | Budowa | Roboty | Magdalen | Uk³ad | PM000 | Zespó³-K | Blok | Wysoki | Pakiet | L2 |  |
|  | SEKCJA 09 | **Sekcja 09** |  | 2026-01-19 | 2026-06-17 |  |  |  |  |  |  |  |  |  |  |  |  |  |  |  |  |  |  |  |  |
|  | PODSEKCJA | **Podsekcja 09.A** |  | 2026-01-19 | 2026-06-17 |  |  |  |  |  |  |  |  |  |  |  |  |  |  |  |  |  |  |  |  |
| 27FW94-063 |  | Prefabrykacja ruroci¹gów – Sekcja 09 | 9.8d | 2026-01-19 A | 2026-02-02 A | 27FW94-012, 27FW94-056 SS+5d | 100% | 2026-01-14 | 2026-01-26 |  |  | ElektroP | 27FW94 | Ruroci¹g | Budowa | Roboty | Magdalen | Uk³ad | PM000 | Zespó³-W | Blok | Normalny | Pakiet | L2 |  |
| 27FW94-064 |  | Monta¿ ruroci¹gów – Sekcja 09 | 15.8d | 2026-05-01 A | 2026-05-22 A | 27FW94-063, 27FW94-014 SS+9d | 100% | 2026-04-30 | 2026-05-20 |  |  | ElektroP | 27FW94 | Ruroci¹g | Budowa | Roboty | Magdalen | Uk³ad | PM000 | Zespó³-W | Blok | Normalny | Pakiet | L2 | Rev A |
| 27FW94-065 |  | Próba ciœnieniowa – Sekcja 09 | 6d | 2026-05-22 A | 2026-06-01 A | 27FW94-064 | 100% | 2026-05-21 | 2026-05-28 | Kalendarz 6-dniowy |  | ElektroP | 27FW94 | Ruroci¹g | Budowa | Roboty | Magdalen | Uk³ad | PM000 | Zespó³-W | Blok | Normalny | Pakiet | L2 |  |
| 27FW94-066 |  | Izolacje – Sekcja 09 | 10d | 2026-06-02 A | 2026-06-17 A | 27FW94-065 | 100% | 2026-05-29 | 2026-06-11 |  |  | ElektroP | 27FW94 | Ruroci¹g | Budowa | Roboty | Magdalen | Uk³ad | PM000 | Zespó³-W | Blok | Normalny | Pakiet | L2 | Rev C |
| 27FW94-067 |  | Malowanie i oznakowanie – Sekcja 09 | 6d | 2026-06-08 A | 2026-06-15 A | 27FW94-066 FF+2d | 100% |  |  |  |  | ElektroP | 27FW94 | Ruroci¹g | Budowa | Roboty | Magdalen | Uk³ad | PM000 | Zespó³-W | Blok | Niski | Pakiet | L2 |  |
|  | SEKCJA 10 | **Sekcja 10** |  | 2026-01-20 | 2026-06-16 |  |  |  |  |  |  |  |  |  |  |  |  |  |  |  |  |  |  |  |  |
| 27FW94-068 |  | Prefabrykacja ruroci¹gów – Sekcja 10 | 9.7d | 2026-01-20 A | 2026-02-02 A | 27FW94-012, 27FW94-063 SS+5d | 100% | 2026-01-21 | 2026-02-02 | Kalendarz 6-dniowy |  | ElektroP | 27FW94 | Ruroci¹g | Budowa | Roboty | Magdalen | Uk³ad | PM000 | Zespó³-K | Blok | Normalny | Pakiet | L2 |  |
| 27FW94-069 |  | Monta¿ ruroci¹gów – Sekcja 10 | 21.8d | 2026-04-30 A | 2026-06-01 A | 27FW94-068, 27FW94-014 SS+6d | 100% | 2026-04-27 | 2026-05-25 |  |  | ElektroP | 27FW94 | Ruroci¹g | Budowa | Roboty | Magdalen | Uk³ad | PM000 | Zespó³-W | Blok | Normalny | Pakiet | L2 |  |
| 27FW94-070 |  | Próba ciœnieniowa – Sekcja 10 | 2d | 2026-05-25 A | 2026-05-28 A | 27FW94-069 | 100% | 2026-05-26 | 2026-05-27 |  | Bez uwag | ElektroP | 27FW94 | Ruroci¹g | Budowa | Roboty | Magdalen | Uk³ad | PM000 | Zespó³-K | Blok | Normalny | Pakiet | L2 |  |
| 27FW94-071 |  | Izolacje – Sekcja 10 | 8d | 2026-05-27 A | 2026-06-09 A | 27FW94-070 | 100% | 2026-05-28 | 2026-06-08 |  | Do weryfikacji z wykonawc¹ | ElektroP | 27FW94 | Ruroci¹g | Budowa | Roboty | Magdalen | Uk³ad | PM000 | Zespó³-W | Blok | Normalny | Pakiet | L2 |  |
| 27FW94-072 |  | Malowanie i oznakowanie – Sekcja 10 | 7d | 2026-06-05 A | 2026-06-16 A | 27FW94-071 FF+2d | 100% | 2026-06-02 | 2026-06-10 |  |  | ElektroP | 27FW94 | Ruroci¹g | Budowa | Roboty | Magdalen | Uk³ad | PM000 | Zespó³-W | Blok | Normalny | Pakiet | L2 |  |
|  | SEKCJA 11 | **Sekcja 11** |  | 2026-01-28 | 2026-06-04 |  |  |  |  |  |  |  |  |  |  |  |  |  |  |  |  |  |  |  |  |
| 27FW94-075 |  | Prefabrykacja ruroci¹gów – Sekcja 11 | 9.5d | 2026-01-28 A | 2026-02-12 A | 27FW94-012, 27FW94-068 SS+5d | 100% | 2026-01-28 | 2026-02-09 |  |  | ElektroP | 27FW94 | Ruroci¹g | Budowa | Roboty | Magdalen | Uk³ad | PM000 | Zespó³-K | Blok | Normalny | Pakiet | L2 | Rev B |
| 27FW94-076 |  | Monta¿ ruroci¹gów – Sekcja 11 | 9.7d | 2026-04-27 A | 2026-05-12 A | 27FW94-075, 27FW94-014 SS+6d | 100% | 2026-04-27 | 2026-05-07 |  | Bez uwag | ElektroP | 27FW94 | Ruroci¹g | Budowa | Roboty | Magdalen | Uk³ad | PM000 | Zespó³-W | Blok | Normalny | Pakiet | L2 |  |
| 27FW94-077 |  | Próba ciœnieniowa – Sekcja 11 | 4d | 2026-05-13 A | 2026-05-21 A | 27FW94-076 | 100% | 2026-05-08 | 2026-05-13 |  |  | ElektroP | 27FW94 | Ruroci¹g | Budowa | Roboty | Magdalen | Uk³ad | PM000 | Zespó³-K | Blok | Normalny | Pakiet | L2 |  |
| 27FW94-078 |  | Izolacje – Sekcja 11 | 10d | 2026-05-13 A | 2026-05-29 A | 27FW94-077 | 100% | 2026-05-14 | 2026-05-27 |  |  | ElektroP | 27FW94 | Ruroci¹g | Budowa | Roboty | Magdalen | Uk³ad | PM000 | Zespó³-K | Blok | Normalny | Pakiet | L2 |  |
| 27FW94-079 |  | Malowanie i oznakowanie – Sekcja 11 | 6d | 2026-05-25 A | 2026-06-04 A | 27FW94-078 FF+2d | 100% | 2026-05-22 | 2026-05-29 |  | Bez uwag | ElektroP | 27FW94 | Ruroci¹g | Budowa | Roboty | Magdalen | Uk³ad | PM000 | Zespó³-K | Blok | Krytyczn | Pakiet | L2 |  |

| ID | WBS | Activity | Duration | Start | Finish | Predecessors | Complete | Planned start | Planned finish | Calendar | AC_Wykonawca | AC_Obiekt | AC_Dyscyplina | AC_Faza | AC_Zakres | AC_Opiekun | AC_Obszar | AC_PP_PM | AC_Zespol | AC_Blok | AC_Priorytet | AC_Pakiet | AC_Poziom | Rewizja dokumentu | Uwagi harmonogramisty |
| --- | --- | --- | --- | --- | --- | --- | --- | --- | --- | --- | --- | --- | --- | --- | --- | --- | --- | --- | --- | --- | --- | --- | --- | --- | --- |
|  | SEKCJA 12 | **Sekcja 12** |  | 2026-02-04 | 2026-06-09 |  |  |  |  |  |  |  |  |  |  |  |  |  |  |  |  |  |  |  |  |
|  | PODSEKCJA | **Podsekcja 12.A** |  | 2026-02-04 | 2026-06-09 |  |  |  |  |  |  |  |  |  |  |  |  |  |  |  |  |  |  |  |  |
| 27FW94-080 |  | Prefabrykacja ruroci¹gów – Sekcja 12 | 3.9d | 2026-02-04 A | 2026-02-06 A | 27FW94-012, 27FW94-075 SS+5d | 100% |  |  |  | ElektroP | 27FW94 | Ruroci¹g | Budowa | Roboty | Magdalen | Uk³ad | PM000 | Zespó³-W | Blok | Normalny | Pakiet | L2 |  |  |
| 27FW94-081 |  | Monta¿ ruroci¹gów – Sekcja 12 | 18.6d | 2026-04-29 A | 2026-05-22 A | 27FW94-080, 27FW94-014 SS+7d | 100% | 2026-04-28 | 2026-05-21 |  | ElektroP | 27FW94 | Ruroci¹g | Budowa | Roboty | Magdalen | Uk³ad | PM000 | Zespó³-W | Blok | Normalny | Pakiet | L2 |  |  |
| 27FW94-082 |  | Próba ciœnieniowa – Sekcja 12 | 3d | 2026-05-22 A | 2026-05-26 A | 27FW94-081 | 100% |  |  |  | ElektroP | 27FW94 | Ruroci¹g | Budowa | Roboty | Magdalen | Uk³ad | PM000 | Zespó³-K | Blok | Wysoki | Pakiet | L2 |  |  |
| 27FW94-083 |  | Izolacje – Sekcja 12 | 5d | 2026-05-28 A | 2026-06-08 A | 27FW94-082 | 100% | 2026-05-27 | 2026-06-02 |  | ElektroP | 27FW94 | Ruroci¹g | Budowa | Roboty | Magdalen | Uk³ad | PM200 | Zespó³-I | Blok | Normalny | Pakiet | L2 | Rev A |  |
| 27FW94-084 |  | Malowanie i oznakowanie – Sekcja 12 | 4d | 2026-06-01 A | 2026-06-09 A | 27FW94-083 FF+2d | 100% | 2026-06-01 | 2026-06-04 |  | ElektroP | 27FW94 | Ruroci¹g | Budowa | Roboty | Magdalen | Uk³ad | PM000 | Zespó³-W | Blok | Normalny | Pakiet | L2 |  |  |
|  | SEKCJA 13 | **Sekcja 13** |  | 2026-02-10 | 2026-06-04 |  |  |  |  |  |  |  |  |  |  |  |  |  |  |  |  |  |  |  |  |
| 27FW94-087 |  | Prefabrykacja ruroci¹gów – Sekcja 13 | 14.3d | 2026-02-10 A | 2026-03-03 A | 27FW94-012, 27FW94-080 SS+5d | 100% | 2026-02-11 | 2026-03-02 |  | ElektroP | 27FW94 | Ruroci¹g | Budowa | Roboty | Magdalen | Uk³ad | PM000 | Zespó³-K | Blok | Normalny | Pakiet | L2 |  |  |
| 27FW94-088 |  | Monta¿ ruroci¹gów – Sekcja 13 | 14d | 2026-04-16 A | 2026-05-07 A | 27FW94-087, 27FW94-014 SS | 100% | 2026-04-17 | 2026-05-06 |  | ElektroP | 27FW94 | Ruroci¹g | Budowa | Roboty | Magdalen | Uk³ad | PM000 | Zespó³-K | Blok | Normalny | Pakiet | L2 |  |  |
| 27FW94-089 |  | Próba ciœnieniowa – Sekcja 13 | 6d | 2026-05-06 A | 2026-05-18 A | 27FW94-088 | 100% | 2026-05-07 | 2026-05-14 | Kalendarz 6-dniowy | ElektroP | 27FW94 | Ruroci¹g | Budowa | Roboty | Magdalen | Uk³ad | PM000 | Zespó³-K | Blok | Normalny | Pakiet | L2 |  |  |
| 27FW94-090 |  | Izolacje – Sekcja 13 | 12d | 2026-05-14 A | 2026-06-03 A | 27FW94-089 | 100% | 2026-05-15 | 2026-06-01 |  | ElektroP | 27FW94 | Ruroci¹g | Budowa | Roboty | Magdalen | Uk³ad | PM000 | Zespó³-K | Blok | Wysoki | Pakiet | L2 |  |  |
| 27FW94-091 |  | Malowanie i oznakowanie – Sekcja 13 | 2d | 2026-06-03 A | 2026-06-04 A | 27FW94-090 FF+2d | 100% | 2026-06-02 | 2026-06-03 |  | ElektroP | 27FW94 | Ruroci¹g | Budowa | Roboty | Magdalen | Uk³ad | PM000 | Zespó³-K | Blok | Normalny | Pakiet | L2 |  |  |
|  | SEKCJA 14 | **Sekcja 14** |  | 2026-02-23 | 2026-06-03 |  |  |  |  |  |  |  |  |  |  |  |  |  |  |  |  |  |  |  |  |
| 27FW94-092 |  | Prefabrykacja ruroci¹gów – Sekcja 14 | 3.7d | 2026-02-23 A | 2026-02-25 A | 27FW94-012, 27FW94-087 SS+5d | 100% | 2026-02-18 | 2026-02-20 |  | ElektroP | 27FW94 | Ruroci¹g | Budowa | Roboty | Magdalen | Uk³ad | PM000 | Zespó³-W | Blok | Normalny | Pakiet | L2 |  |  |
| 27FW94-093 |  | Monta¿ ruroci¹gów – Sekcja 14 | 13.4d | 2026-04-23 A | 2026-05-12 A | 27FW94-092, 27FW94-014 SS+2d | 100% | 2026-04-21 | 2026-05-07 |  | ElektroP | 27FW94 | Ruroci¹g | Budowa | Roboty | Magdalen | Uk³ad | PM000 | Zespó³-K | Blok | Niski | Pakiet | L2 | Rev B |  |
| 27FW94-094 |  | Próba ciœnieniowa – Sekcja 14 | 3d | 2026-05-12 A | 2026-05-15 A | 27FW94-093 | 100% | 2026-05-08 | 2026-05-12 |  | ElektroP | 27FW94 | Ruroci¹g | Budowa | Roboty | Magdalen | Uk³ad | PM000 | Zespó³-W | Blok | Wysoki | Pakiet | L2 |  |  |
| 27FW94-095 |  | Izolacje – Sekcja 14 | 12d | 2026-05-14 A | 2026-06-01 A | 27FW94-094 | 100% | 2026-05-13 | 2026-05-28 |  | ElektroP | 27FW94 | Ruroci¹g | Budowa | Roboty | Magdalen | Uk³ad | PM000 | Zespó³-K | Blok | Normalny | Pakiet | L2 | Rev A | Do weryfikacji z wykonawc¹ |
| 27FW94-096 |  | Malowanie i oznakowanie – Sekcja 14 | 2d | 2026-05-28 A | 2026-06-03 A | 27FW94-095 FF+2d | 100% | 2026-05-29 | 2026-06-01 |  | ElektroP | 27FW94 | Ruroci¹g | Budowa | Roboty | Magdalen | Uk³ad | PM000 | Zespó³-W | Blok | Normalny | Pakiet | L2 | Rev A |  |
|  | SEKCJA 15 | **Sekcja 15** |  | 2026-02-24 | 2026-06-12 |  |  |  |  |  |  |  |  |  |  |  |  |  |  |  |  |  |  |  |  |
|  | PODSEKCJA | **Podsekcja 15.A** |  | 2026-02-24 | 2026-06-12 |  |  |  |  |  |  |  |  |  |  |  |  |  |  |  |  |  |  |  |  |
| 27FW94-099 |  | Prefabrykacja ruroci¹gów – Sekcja 15 | 7.6d | 2026-02-24 A | 2026-03-09 A | 27FW94-012, 27FW94-092 SS+5d | 100% | 2026-02-25 | 2026-03-05 |  | ElektroP | 27FW94 | Ruroci¹g | Budowa | Roboty | Magdalen | Uk³ad | PM000 | Zespó³-W | Blok | Normalny | Pakiet | L2 |  |  |
| 27FW94-100 |  | Monta¿ ruroci¹gów – Sekcja 15 | 20.9d | 2026-04-23 A | 2026-05-22 A | 27FW94-099, 27FW94-014 SS+4d | 100% | 2026-04-23 | 2026-05-20 |  | ElektroP | 27FW94 | Ruroci¹g | Budowa | Roboty | Magdalen | Uk³ad | PM000 | Zespó³-K | Blok | Normalny | Pakiet | L2 |  |  |
| 27FW94-101 |  | Próba ciœnieniowa – Sekcja 15 | 6d | 2026-05-26 A | 2026-06-04 A | 27FW94-100 | 100% | 2026-05-21 | 2026-05-28 |  | ElektroP | 27FW94 | Ruroci¹g | Budowa | Roboty | Magdalen | Uk³ad | PM000 | Zespó³-W | Blok | Normalny | Pakiet | L2 | Rev A | Do weryfikacji z wykonawc¹ |
| 27FW94-102 |  | Izolacje – Sekcja 15 | 7d | 2026-05-29 A | 2026-06-10 A | 27FW94-101 | 100% | 2026-05-29 | 2026-06-08 |  | ElektroP | 27FW94 | Ruroci¹g | Budowa | Roboty | Magdalen | Uk³ad | PM000 | Zespó³-W | Blok | Normalny | Pakiet | L2 |  |  |
| 27FW94-103 |  | Malowanie i oznakowanie – Sekcja 15 | 2d | 2026-06-10 A | 2026-06-12 A | 27FW94-102 FF+2d | 100% | 2026-06-09 | 2026-06-10 |  | ElektroP | 27FW94 | Ruroci¹g | Budowa | Roboty | Magdalen | Uk³ad | PM000 | Zespó³-W | Blok | Normalny | Pakiet | L2 |  |  |

| ID | WBS | Activity | Duration | Start | Finish | Predecessors | Complete | Planned start | Planned finish | AC_Wykonawca | AC_Obiekt | AC_Dyscyplina | AC_Faza | AC_Zakres | AC_Opiekun | AC_Obszar | AC_PP_PM | AC_Zespol | AC_Blok | AC_Priorytet | AC_Pakiet | AC_Poziom | Uwagi harmonogramisty | Rewizja dokumentu |
| --- | --- | --- | --- | --- | --- | --- | --- | --- | --- | --- | --- | --- | --- | --- | --- | --- | --- | --- | --- | --- | --- | --- | --- | --- |
|  | SEKCJA 16 | **Sekcja 16** |  | 2026-03-05 | 2026-06-05 |  |  |  |  |  |  |  |  |  |  |  |  |  |  |  |  |  |  |  |
| 27FW94-104 |  | Prefabrykacja ruroci¹gów – Sekcja 16 | 14.2d | 2026-03-05 A | 2026-03-25 A | 27FW94-012, 27FW94-099 SS+5d | 100% | 2026-03-04 | 2026-03-23 | ElektroP | 27FW94 | Ruroci¹g | Budowa | Roboty | Magdalen | Uk³ad | PM000 | Zespó³-W | Blok | Wysoki | Pakiet | L2 |  |  |
| 27FW94-105 |  | Monta¿ ruroci¹gów – Sekcja 16 | 18.2d | 2026-04-24 A | 2026-05-19 A | 27FW94-104, 27FW94-014 SS+5d | 100% |  |  | ElektroP | 27FW94 | Ruroci¹g | Budowa | Roboty | Magdalen | Uk³ad | PM200 | Zespó³-E | Blok | Normalny | Pakiet | L2 |  |  |
| 27FW94-106 |  | Próba ciœnieniowa – Sekcja 16 | 2d | 2026-05-22 A | 2026-05-25 A | 27FW94-105 | 100% | 2026-05-20 | 2026-05-21 | ElektroP | 27FW94 | Ruroci¹g | Budowa | Roboty | Magdalen | Uk³ad | PM000 | Zespó³-W | Blok | Normalny | Pakiet | L2 | Do weryfikacji z wykonawc¹ |  |
| 27FW94-107 |  | Izolacje – Sekcja 16 | 5d | 2026-05-25 A | 2026-05-29 A | 27FW94-106 | 100% | 2026-05-22 | 2026-05-28 | ElektroP | 27FW94 | Ruroci¹g | Budowa | Roboty | Magdalen | Uk³ad | PM300 | Zespó³-E | Blok | Wysoki | Pakiet | L2 |  | Rev C |
| 27FW94-108 |  | Malowanie i oznakowanie – Sekcja 16 | 6d | 2026-05-26 A | 2026-06-05 A | 27FW94-107 FF+2d | 100% | 2026-05-25 | 2026-06-01 | ElektroP | 27FW94 | Ruroci¹g | Budowa | Roboty | Magdalen | Uk³ad | PM000 | Zespó³-K | Blok | Normalny | Pakiet | L2 |  | Rev A |
|  | SEKCJA 17 | **Sekcja 17** |  | 2026-03-16 | 2026-05-15 |  |  |  |  |  |  |  |  |  |  |  |  |  |  |  |  |  |  |  |
| 27FW94-111 |  | Prefabrykacja ruroci¹gów – Sekcja 17 | 10.7d | 2026-03-16 A | 2026-03-27 A | 27FW94-012, 27FW94-104 SS+5d | 100% | 2026-03-11 | 2026-03-24 | ElektroP | 27FW94 | Ruroci¹g | Budowa | Roboty | Magdalen | Uk³ad | PM000 | Zespó³-W | Blok | Normalny | Pakiet | L2 |  |  |
| 27FW94-112 |  | Monta¿ ruroci¹gów – Sekcja 17 | 8.3d | 2026-04-23 A | 2026-05-06 A | 27FW94-111, 27FW94-014 SS+2d | 100% | 2026-04-21 | 2026-04-30 | ElektroP | 27FW94 | Ruroci¹g | Budowa | Roboty | Magdalen | Uk³ad | PM000 | Zespó³-W | Blok | Normalny | Pakiet | L2 |  | Rev B |
| 27FW94-113 |  | Próba ciœnieniowa – Sekcja 17 | 2d | 2026-05-04 A | 2026-05-08 A | 27FW94-112 | 100% | 2026-05-01 | 2026-05-04 | ElektroP | 27FW94 | Ruroci¹g | Budowa | Roboty | Magdalen | Uk³ad | PM000 | Zespó³-W | Blok | Normalny | Pakiet | L2 |  | Rev A |
| 27FW94-115 |  | Malowanie i oznakowanie – Sekcja 17 | 6d | 2026-05-05 A | 2026-05-15 A | 27FW94-114 FF+2d | 100% | 2026-05-04 | 2026-05-11 | ElektroP | 27FW94 | Ruroci¹g | Budowa | Roboty | Magdalen | Uk³ad | PM000 | Zespó³-W | Blok | Wysoki | Pakiet | L2 |  | Rev A |
| 27FW94-114 |  | Izolacje – Sekcja 17 | 3d | 2026-05-08 A | 2026-05-14 A | 27FW94-113 | 100% | 2026-05-05 | 2026-05-07 | ElektroP | 27FW94 | Ruroci¹g | Budowa | Roboty | Magdalen | Uk³ad | PM000 | Zespó³-K | Blok | Wysoki | Pakiet | L2 |  |  |
|  | SEKCJA 18 | **Sekcja 18** |  | 2026-03-18 | 2026-06-08 |  |  |  |  |  |  |  |  |  |  |  |  |  |  |  |  |  |  |  |
|  | PODSEKCJA | **Podsekcja 18.A** |  | 2026-03-18 | 2026-06-08 |  |  |  |  |  |  |  |  |  |  |  |  |  |  |  |  |  |  |  |
| 27FW94-116 |  | Prefabrykacja ruroci¹gów – Sekcja 18 | 8.9d | 2026-03-18 A | 2026-03-30 A | 27FW94-012, 27FW94-111 SS+5d | 100% | 2026-03-18 | 2026-03-27 | ElektroP | 27FW94 | Ruroci¹g | Budowa | Roboty | Magdalen | Uk³ad | PM000 | Zespó³-W | Blok | Krytyczn | Pakiet | L2 |  | Rev A |
| 27FW94-117 |  | Monta¿ ruroci¹gów – Sekcja 18 | 17.1d | 2026-04-23 A | 2026-05-19 A | 27FW94-116, 27FW94-014 SS+3d | 100% | 2026-04-22 | 2026-05-14 | ElektroP | 27FW94 | Ruroci¹g | Budowa | Roboty | Magdalen | Uk³ad | PM300 | Zespó³-I | Blok | Normalny | Pakiet | L2 |  |  |
| 27FW94-118 |  | Próba ciœnieniowa – Sekcja 18 | 2d | 2026-05-14 A | 2026-05-15 A | 27FW94-117 | 100% | 2026-05-15 | 2026-05-18 | ElektroP | 27FW94 | Ruroci¹g | Budowa | Roboty | Magdalen | Uk³ad | PM000 | Zespó³-W | Blok | Normalny | Pakiet | L2 |  | Rev C |
| 27FW94-119 |  | Izolacje – Sekcja 18 | 11d | 2026-05-22 A | 2026-06-08 A | 27FW94-118 | 100% | 2026-05-19 | 2026-06-02 | ElektroP | 27FW94 | Ruroci¹g | Budowa | Roboty | Magdalen | Uk³ad | PM000 | Zespó³-K | Blok | Normalny | Pakiet | L2 | Bez uwag | Rev A |
| 27FW94-120 |  | Malowanie i oznakowanie – Sekcja 18 | 7d | 2026-05-26 A | 2026-06-08 A | 27FW94-119 FF+2d | 100% | 2026-05-27 | 2026-06-04 | ElektroP | 27FW94 | Ruroci¹g | Budowa | Roboty | Magdalen | Uk³ad | PM000 | Zespó³-K | Blok | Wysoki | Pakiet | L2 |  | Rev B |
|  | SEKCJA 19 | **Sekcja 19** |  | 2026-03-27 | 2026-05-26 |  |  |  |  |  |  |  |  |  |  |  |  |  |  |  |  |  |  |  |
| 27FW94-123 |  | Prefabrykacja ruroci¹gów – Sekcja 19 | 6d | 2026-03-27 A | 2026-04-03 A | 27FW94-012, 27FW94-116 SS+5d | 100% | 2026-03-25 | 2026-04-01 | ElektroP | 27FW94 | Ruroci¹g | Budowa | Roboty | Magdalen | Uk³ad | PM000 | Zespó³-W | Blok | Normalny | Pakiet | L2 |  |  |
| 27FW94-124 |  | Monta¿ ruroci¹gów – Sekcja 19 | 10.3d | 2026-04-21 A | 2026-05-04 A | 27FW94-123, 27FW94-014 SS+2d | 100% |  |  | ElektroP | 27FW94 | Ruroci¹g | Budowa | Roboty | Magdalen | Uk³ad | PM000 | Zespó³-K | Blok | Normalny | Pakiet | L2 | Bez uwag |  |
| 27FW94-125 |  | Próba ciœnieniowa – Sekcja 19 | 2d | 2026-05-07 A | 2026-05-13 A | 27FW94-124 | 100% | 2026-05-05 | 2026-05-06 | ElektroP | 27FW94 | Ruroci¹g | Budowa | Roboty | Magdalen | Uk³ad | PM000 | Zespó³-W | Blok | Normalny | Pakiet | L2 |  |  |
| 27FW94-126 |  | Izolacje – Sekcja 19 | 10d | 2026-05-07 A | 2026-05-20 A | 27FW94-125 | 100% |  |  | ElektroP | 27FW94 | Ruroci¹g | Budowa | Roboty | Magdalen | Uk³ad | PM000 | Zespó³-K | Blok | Normalny | Pakiet | L2 |  |  |
| 27FW94-127 |  | Malowanie i oznakowanie – Sekcja 19 | 4d | 2026-05-21 A | 2026-05-26 A | 27FW94-126 FF+2d | 100% | 2026-05-19 | 2026-05-22 | ElektroP | 27FW94 | Ruroci¹g | Budowa | Roboty | Magdalen | Uk³ad | PM000 | Zespó³-K | Blok | Normalny | Pakiet | L2 | Ryzyko opóŸnienia | Rev B |

| ID | WBS | Activity | Duration | Start | Finish | Predecessors | Complete | Planned start | Planned finish | Calendar | AC_Wykonawca | AC_Obiekt | AC_Dyscyplina | AC_Faza | AC_Zakres | AC_Opiekun | AC_Obszar | AC_PP_PM | AC_Zespol | AC_Blok | AC_Priorytet | AC_Pakiet | AC_Poziom | Uwagi harmonogramisty | Rewizja dokumentu |
| --- | --- | --- | --- | --- | --- | --- | --- | --- | --- | --- | --- | --- | --- | --- | --- | --- | --- | --- | --- | --- | --- | --- | --- | --- | --- |
|  | SEKCJA 20 | **Sekcja 20** |  | 2026-04-02 | 2026-06-04 |  |  |  |  |  |  |  |  |  |  |  |  |  |  |  |  |  |  |  |  |
| 27FW94-128 |  | Prefabrykacja ruroci¹gów – Sekcja 20 | 3.1d | 2026-04-02 A | 2026-04-07 A | 27FW94-012, 27FW94-123 SS+5d | 100% | 2026-04-01 | 2026-04-03 |  | ElektroP | 27FW94 | Ruroci¹g | Budowa | Roboty | Magdalen | Uk³ad | PM000 | Zespó³-W | Blok | Niski | Pakiet | L2 |  |  |
| 27FW94-129 |  | Monta¿ ruroci¹gów – Sekcja 20 | 18.8d | 2026-04-29 A | 2026-05-25 A | 27FW94-128, 27FW94-014 SS+5d | 100% | 2026-04-24 | 2026-05-19 |  | ElektroP | 27FW94 | Ruroci¹g | Budowa | Roboty | Magdalen | Uk³ad | PM000 | Zespó³-W | Blok | Wysoki | Pakiet | L2 | Do weryfikacji z wykonawc¹ | Rev A |
| 27FW94-130 |  | Próba ciœnieniowa – Sekcja 20 | 4d | 2026-05-19 A | 2026-05-27 A | 27FW94-129 | 100% | 2026-05-20 | 2026-05-25 |  | ElektroP | 27FW94 | Ruroci¹g | Budowa | Roboty | Magdalen | Uk³ad | PM000 | Zespó³-W | Blok | Normalny | Pakiet | L2 |  |  |
| 27FW94-131 |  | Izolacje – Sekcja 20 | 5d | 2026-05-27 A | 2026-06-03 A | 27FW94-130 | 100% | 2026-05-26 | 2026-06-01 |  | ElektroP | 27FW94 | Ruroci¹g | Budowa | Roboty | Magdalen | Uk³ad | PM000 | Zespó³-K | Blok | Niski | Pakiet | L2 | Do weryfikacji z wykonawc¹ |  |
| 27FW94-132 |  | Malowanie i oznakowanie – Sekcja 20 | 7d | 2026-05-27 A | 2026-06-04 A | 27FW94-131 FF+2d | 100% | 2026-05-26 | 2026-06-03 |  | ElektroP | 27FW94 | Ruroci¹g | Budowa | Roboty | Magdalen | Uk³ad | PM100 | Zespó³-E | Blok | Normalny | Pakiet | L2 |  | Rev C |
|  | SEKCJA 21 | **Sekcja 21** |  | 2026-04-09 | 2026-05-25 |  |  |  |  |  |  |  |  |  |  |  |  |  |  |  |  |  |  |  |  |
|  | PODSEKCJA | **Podsekcja 21.A** |  | 2026-04-09 | 2026-05-25 |  |  |  |  |  |  |  |  |  |  |  |  |  |  |  |  |  |  |  |  |
| 27FW94-135 |  | Prefabrykacja ruroci¹gów – Sekcja 21 | 7.4d | 2026-04-09 A | 2026-04-20 A | 27FW94-012, 27FW94-128 SS+5d | 100% | 2026-04-08 | 2026-04-16 | Kalendarz 6-dniowy | ElektroP | 27FW94 | Ruroci¹g | Budowa | Roboty | Magdalen | Uk³ad | PM000 | Zespó³-I | Blok | Normalny | Pakiet | L2 |  |  |
| 27FW94-136 |  | Monta¿ ruroci¹gów – Sekcja 21 | 7.4d | 2026-05-05 A | 2026-05-15 A | 27FW94-135, 27FW94-014 SS+9d | 100% | 2026-04-30 | 2026-05-08 |  | ElektroP | 27FW94 | Ruroci¹g | Budowa | Roboty | Magdalen | Uk³ad | PM000 | Zespó³-W | Blok | Normalny | Pakiet | L2 |  |  |
| 27FW94-137 |  | Próba ciœnieniowa – Sekcja 21 | 3d | 2026-05-12 A | 2026-05-18 A | 27FW94-136 | 100% | 2026-05-11 | 2026-05-13 |  | ElektroP | 27FW94 | Ruroci¹g | Budowa | Roboty | Magdalen | Uk³ad | PM000 | Zespó³-K | Blok | Normalny | Pakiet | L2 |  |  |
| 27FW94-138 |  | Izolacje – Sekcja 21 | 4d | 2026-05-13 A | 2026-05-21 A | 27FW94-137 | 100% | 2026-05-14 | 2026-05-19 |  | ElektroP | 27FW94 | Ruroci¹g | Budowa | Roboty | Magdalen | Uk³ad | PM300 | Zespó³-E | Blok | Normalny | Pakiet | L2 | Do weryfikacji z wykonawc¹ |  |
| 27FW94-139 |  | Malowanie i oznakowanie – Sekcja 21 | 7d | 2026-05-13 A | 2026-05-25 A | 27FW94-138 FF+2d | 100% | 2026-05-13 | 2026-05-21 |  | ElektroP | 27FW94 | Ruroci¹g | Budowa | Roboty | Magdalen | Uk³ad | PM000 | Zespó³-W | Blok | Wysoki | Pakiet | L2 |  | Rev C |
|  | SEKCJA 22 | **Sekcja 22** |  | 2026-04-20 | 2026-06-26 |  |  |  |  |  |  |  |  |  |  |  |  |  |  |  |  |  |  |  |  |
| 27FW94-140 |  | Prefabrykacja ruroci¹gów – Sekcja 22 | 5.5d | 2026-04-20 A | 2026-04-28 A | 27FW94-012, 27FW94-135 SS+5d | 100% | 2026-04-15 | 2026-04-21 |  | ElektroP | 27FW94 | Ruroci¹g | Budowa | Roboty | Magdalen | Uk³ad | PM000 | Zespó³-W | Blok | Normalny | Pakiet | L2 |  |  |
| 27FW94-141 |  | Monta¿ ruroci¹gów – Sekcja 22 | 24.7d | 2026-04-29 A | 2026-06-01 A | 27FW94-140, 27FW94-014 SS+6d | 100% | 2026-04-27 | 2026-05-28 |  | ElektroP | 27FW94 | Ruroci¹g | Budowa | Roboty | Magdalen | Uk³ad | PM000 | Zespó³-W | Blok | Normalny | Pakiet | L2 |  |  |
| 27FW94-142 |  | Próba ciœnieniowa – Sekcja 22 | 4d | 2026-05-29 A | 2026-06-03 A | 27FW94-141 | 100% |  |  |  | ElektroP | 27FW94 | Ruroci¹g | Budowa | Roboty | Magdalen | Uk³ad | PM000 | Zespó³-K | Blok | Normalny | Pakiet | L2 | Uzgodnione na koordynacji |  |
| 27FW94-143 |  | Izolacje – Sekcja 22 | 9d | 2026-06-08 A | 2026-06-18 A | 27FW94-142 | 100% | 2026-06-04 | 2026-06-16 |  | ElektroP | 27FW94 | Ruroci¹g | Budowa | Roboty | Magdalen | Uk³ad | PM000 | Zespó³-W | Blok | Normalny | Pakiet | L2 |  |  |
| 27FW94-144 |  | Malowanie i oznakowanie – Sekcja 22 | 3d | 2026-06-19 A | 2026-06-26 A | 27FW94-143 FF+2d | 100% | 2026-06-16 | 2026-06-18 |  | ElektroP | 27FW94 | Ruroci¹g | Budowa | Roboty | Magdalen | Uk³ad | PM100 | Zespó³-E | Blok | Niski | Pakiet | L2 |  |  |
|  | SEKCJA 23 | **Sekcja 23** |  | 2026-04-22 | 2026-06-08 |  |  |  |  |  |  |  |  |  |  |  |  |  |  |  |  |  |  |  |  |
| 27FW94-147 |  | Prefabrykacja ruroci¹gów – Sekcja 23 | 6.5d | 2026-04-22 A | 2026-05-04 A | 27FW94-012, 27FW94-140 SS+5d | 100% | 2026-04-22 | 2026-04-29 |  | ElektroP | 27FW94 | Ruroci¹g | Budowa | Roboty | Magdalen | Uk³ad | PM000 | Zespó³-K | Blok | Normalny | Pakiet | L2 |  |  |
| 27FW94-148 |  | Monta¿ ruroci¹gów – Sekcja 23 | 5.8d | 2026-05-04 A | 2026-05-14 A | 27FW94-147, 27FW94-014 SS+5d | 100% | 2026-04-30 | 2026-05-07 |  | ElektroP | 27FW94 | Ruroci¹g | Budowa | Roboty | Magdalen | Uk³ad | PM000 | Zespó³-K | Blok | Normalny | Pakiet | L2 |  |  |
| 27FW94-149 |  | Próba ciœnieniowa – Sekcja 23 | 3d | 2026-05-07 A | 2026-05-13 A | 27FW94-148 | 100% | 2026-05-08 | 2026-05-12 |  | ElektroP | 27FW94 | Ruroci¹g | Budowa | Roboty | Magdalen | Uk³ad | PM000 | Zespó³-K | Blok | Niski | Pakiet | L2 |  |  |
| 27FW94-150 |  | Izolacje – Sekcja 23 | 12d | 2026-05-18 A | 2026-06-04 A | 27FW94-149 | 100% | 2026-05-13 | 2026-05-28 | Kalendarz 6-dniowy | ElektroP | 27FW94 | Ruroci¹g | Budowa | Roboty | Magdalen | Uk³ad | PM000 | Zespó³-W | Blok | Normalny | Pakiet | L2 |  |  |
| 27FW94-151 |  | Malowanie i oznakowanie – Sekcja 23 | 4d | 2026-06-01 A | 2026-06-08 A | 27FW94-150 FF+2d | 100% | 2026-05-27 | 2026-06-01 |  | ElektroP | 27FW94 | Ruroci¹g | Budowa | Roboty | Magdalen | Uk³ad | PM100 | Zespó³-I | Blok | Normalny | Pakiet | L2 |  |  |

| ID | WBS | Activity | Type | Duration | Start | Finish | Predecessors | Complete | Actual start | Actual finish | Planned start | Planned finish | Uwagi harmonogramisty | AC_Wykonawca | AC_Obiekt | AC_Dyscyplina | AC_Faza | AC_Zakres | AC_Opiekun | AC_Obszar | AC_PP_PM | AC_Zespol | AC_Blok | AC_Priorytet | AC_Pakiet | AC_Poziom | Rewizja dokumentu |
| --- | --- | --- | --- | --- | --- | --- | --- | --- | --- | --- | --- | --- | --- | --- | --- | --- | --- | --- | --- | --- | --- | --- | --- | --- | --- | --- | --- |
|  | SEKCJA 24 | **Sekcja 24** |  |  | 2026-05-01 | 2026-07-02 |  |  |  |  |  |  |  |  |  |  |  |  |  |  |  |  |  |  |  |  |  |
|  | PODSEKCJA | **Podsekcja 24.A** |  |  | 2026-05-01 | 2026-07-02 |  |  |  |  |  |  |  |  |  |  |  |  |  |  |  |  |  |  |  |  |  |
| 27FW94-152 |  | Prefabrykacja ruroci¹gów – Sekcja 24 |  | 13d | 2026-05-01 A | 2026-05-21 A | 27FW94-012, 27FW94-147 SS+5d | 100% |  |  | 2026-04-29 | 2026-05-15 | Bez uwag | ElektroP | 27FW94 | Ruroci¹g | Budowa | Roboty | Magdalen | Uk³ad | PM000 | Zespó³-W | Blok | Niski | Pakiet | L2 |  |
| 27FW94-153 |  | Monta¿ ruroci¹gów – Sekcja 24 |  | 17.6d | 2026-05-19 A | 2026-06-11 A | 27FW94-152, 27FW94-014 SS+1d | 100% |  |  | 2026-05-18 | 2026-06-09 |  | ElektroP | 27FW94 | Ruroci¹g | Budowa | Roboty | Magdalen | Uk³ad | PM300 | Zespó³-E | Blok | Normalny | Pakiet | L2 |  |
| 27FW94-154 |  | Próba ciœnieniowa – Sekcja 24 |  | 5d | 2026-06-10 A | 2026-06-19 A | 27FW94-153 | 100% |  |  | 2026-06-10 | 2026-06-16 |  | ElektroP | 27FW94 | Ruroci¹g | Budowa | Roboty | Magdalen | Uk³ad | PM000 | Zespó³-W | Blok | Normalny | Pakiet | L2 |  |
| 27FW94-155 |  | Izolacje – Sekcja 24 |  | 7d | 2026-06-19 A | 2026-07-01 A | 27FW94-154 | 100% |  |  | 2026-06-17 | 2026-06-25 |  | ElektroP | 27FW94 | Ruroci¹g | Budowa | Roboty | Magdalen | Uk³ad | PM000 | Zespó³-E | Blok | Normalny | Pakiet | L2 |  |
| 27FW94-156 |  | Malowanie i oznakowanie – Sekcja 24 |  | 5d | 2026-06-25 A | 2026-07-02 A | 27FW94-155 FF+2d | 100% |  |  | 2026-06-23 | 2026-06-29 | Czeka na dostawê | ElektroP | 27FW94 | Ruroci¹g | Budowa | Roboty | Magdalen | Uk³ad | PM000 | Zespó³-E | Blok | Normalny | Pakiet | L2 |  |
|  | PROJ | **Projektowanie** |  |  | 2025-04-04 | 2025-09-17 |  |  |  |  |  |  |  |  |  |  |  |  |  |  |  |  |  |  |  |  |  |
|  | DOKUMENTAC | **Dokumentacja** |  |  | 2025-04-04 | 2025-09-17 |  |  |  |  |  |  |  |  |  |  |  |  |  |  |  |  |  |  |  |  |  |
| 27FW94-001 |  | Projekt wykonawczy – Transformator blokowy |  | 83d | 2025-04-04 A | 2025-08-01 A |  | 100% |  |  | 2025-04-01 | 2025-07-24 |  | ElektroP | 27FW94 | Budowlan | Projekto | Projekt | Magdalen | Uk³ad | PM000 | Zespó³-E | Blok | Normalny | Pakiet | L2 | Rev C |
| 27FW94-002 |  | Uzgodnienie dokumentacji z Inwestorem |  | 30d | 2025-07-30 A | 2025-09-11 A | 27FW94-001 | 100% |  |  | 2025-07-25 | 2025-09-04 |  | ElektroP | 27FW94 | Budowlan | Projekto | Projekt | Magdalen | Uk³ad | PM000 | Zespó³-W | Blok | Normalny | Pakiet | L2 | Rev A |
| 27FW94-003 |  | Zatwierdzenie dokumentacji do realizacji |  | 6d | 2025-09-09 A | 2025-09-17 A | 27FW94-002 | 100% |  |  | 2025-09-05 | 2025-09-12 |  | ElektroP | 27FW94 | Budowlan | Projekto | Projekt | Magdalen | Uk³ad | PM000 | Zespó³-K | Blok | Wysoki | Pakiet | L2 |  |
| 27FW94-004 |  | KM: Dokumentacja zatwierdzona – Transformator blokowy | milestone | 0d | 2025-09-16 A | 2025-09-16 | 27FW94-003 | 100% |  | 2025-09-15 | 2025-09-15 | 2025-09-15 | Ryzyko opóŸnienia | ElektroP | 27FW94 | Budowlan | Projekto | Kamieñ | Magdalen | Uk³ad | PM000 | Zespó³-W | Blok | Wysoki | Pakiet | L1 |  |
|  | ROZR | **Rozruch** |  |  | 2026-07-07 | 2026-08-12 |  |  |  |  |  |  |  |  |  |  |  |  |  |  |  |  |  |  |  |  |  |
|  | ROZRUCH | **Rozruch** |  |  | 2026-07-07 | 2026-08-12 |  |  |  |  |  |  |  |  |  |  |  |  |  |  |  |  |  |  |  |  |  |
| 27FW94-161 |  | Przegl¹d gotowoœci do rozruchu |  | 5d | 2026-07-07 A | 2026-07-13 A | 27FW94-160, 27FW94-019, 27FW94-024, 27FW94-026 | 100% |  |  |  |  |  | ElektroP | 27FW94 | Rozruch | Rozruch | Rozruch | Magdalen | Uk³ad | PM000 | Zespó³-W | Blok | Niski | Pakiet | L2 |  |
| 27FW94-162 |  | Rozruch na zimno |  | 9d | 2026-07-16 A | 2026-07-28 A | 27FW94-161 | 100% |  |  | 2026-07-14 | 2026-07-24 |  | ElektroP | 27FW94 | Rozruch | Rozruch | Rozruch | Magdalen | Uk³ad | PM000 | Zespó³-K | Blok | Normalny | Pakiet | L2 | Rev B |
| 27FW94-163 |  | Rozruch na gor¹co / próby ruchowe |  | 11d | 2026-07-24 A | 2026-08-12 A | 27FW94-162 | 100% |  |  | 2026-07-27 | 2026-08-10 |  | ElektroP | 27FW94 | Rozruch | Rozruch | Rozruch | Magdalen | Uk³ad | PM000 | Zespó³-K | Blok | Normalny | Pakiet | L2 |  |
| 27FW94-164 |  | KM: Odbiór koñcowy – Transformator blokowy | milestone | 0d | 2026-08-11 | 2026-08-11 A | 27FW94-163 | 100% | 2026-08-12 |  |  |  | Bez uwag | ElektroP | 27FW94 | Rozruch | Rozruch | Kamieñ | Magdalen | Uk³ad | PM100 | Zespó³-I | Blok | Normalny | Pakiet | L1 |  |
|  | ZAKU | **Zakupy** |  |  | 2025-04-29 | 2026-04-24 |  |  |  |  |  |  |  |  |  |  |  |  |  |  |  |  |  |  |  |  |  |
|  | DOSTAWY | **Dostawy** |  |  | 2025-09-26 | 2026-04-24 |  |  |  |  |  |  |  |  |  |  |  |  |  |  |  |  |  |  |  |  |  |
| 27FW94-008 |  | Produkcja u dostawcy |  | 102d | 2025-09-26 A | 2026-02-18 A | 27FW94-007 | 100% |  |  | 2025-09-23 | 2026-02-11 |  | ElektroP | 27FW94 | Mechanic | Zakupy | Dostawa | Magdalen | Uk³ad | PM000 | Zespó³-W | Blok | Normalny | Pakiet | L2 | Rev A |
| 27FW94-009 |  | Testy FAT |  | 9d | 2026-02-11 A | 2026-02-23 A | 27FW94-008 | 100% |  |  | 2026-02-12 | 2026-02-24 |  | ElektroP | 27FW94 | Mechanic | Zakupy | Dostawa | Magdalen | Uk³ad | PM000 | Zespó³-K | Blok | Normalny | Pakiet | L2 |  |
| 27FW94-010 |  | Transport i dostawa na plac budowy |  | 37d | 2026-03-02 A | 2026-04-24 A | 27FW94-009 | 100% |  |  | 2026-02-25 | 2026-04-16 |  | ElektroP | 27FW94 | Mechanic | Zakupy | Dostawa | Magdalen | Uk³ad | PM200 | Zespó³-E | Blok | Normalny | Pakiet | L2 | Rev B |
| 27FW94-011 |  | KM: Dostawa na budowê – Transformator blokowy | milestone | 0d | 2026-04-16 A | 2026-04-16 | 27FW94-010 | 100% |  | 2026-04-15 | 2026-04-17 | 2026-04-17 | Uzgodnione na koordynacji | ElektroP | 27FW94 | Mechanic | Zakupy | Kamieñ | Magdalen | Uk³ad | PM000 | Zespó³-W | Blok | Normalny | Pakiet | L1 |  |

| ID | WBS | Activity | Duration | Start | Finish | Predecessors | Complete | Planned start | Planned finish | AC_Wykonawca | AC_Obiekt | AC_Dyscyplina | AC_Faza | AC_Zakres | AC_Opiekun | AC_Obszar | AC_PP_PM | AC_Zespol | AC_Blok | AC_Priorytet | AC_Pakiet | AC_Poziom | Rewizja dokumentu |
| --- | --- | --- | --- | --- | --- | --- | --- | --- | --- | --- | --- | --- | --- | --- | --- | --- | --- | --- | --- | --- | --- | --- | --- |
|  | ZAMÓWIENIA | **Zamówienia** |  | 2025-04-29 | 2025-09-26 |  |  |  |  |  |  |  |  |  |  |  |  |  |  |  |  |  |  |
| 27FW94-005 |  | Zapytanie ofertowe | 30d | 2025-04-29 A | 2025-06-10 A | 27FW94-001 SS+20d | 100% | 2025-04-29 | 2025-06-09 | ElektroP | 27FW94 | Mechanic | Zakupy | Dostawa | Magdalen | Uk³ad | PM000 | Zespó³-W | Blok | Wysoki | Pakiet | L2 |  |
| 27FW94-006 |  | Analiza i wybór ofert | 19d | 2025-06-13 A | 2025-07-10 A | 27FW94-005 | 100% | 2025-06-10 | 2025-07-04 | ElektroP | 27FW94 | Mechanic | Zakupy | Dostawa | Magdalen | Uk³ad | PM000 | Zespó³-W | Blok | Normalny | Pakiet | L2 |  |
| 27FW94-007 |  | Zawarcie umowy / zamówienie | 6d | 2025-09-18 A | 2025-09-26 A | 27FW94-006, 27FW94-004 SS, 12PB41-004 (other project) SS+6d, 10TM34-004 (other project) SS+1d | 100% | 2025-09-15 | 2025-09-22 | ElektroP | 27FW94 | Mechanic | Zakupy | Dostawa | Magdalen | Uk³ad | PM000 | Zespó³-K | Blok | Normalny | Pakiet | L1 | Rev A |

## Activity codes

| Code | Value | Meaning |
| --- | --- | --- |
| AC_Blok | Blok | Blok 2 |
| AC_Dyscyplina | Budowlan | Budowlana |
| AC_Dyscyplina | Elektryc | Elektryczna |
| AC_Dyscyplina | Mechanic | Mechaniczna |
| AC_Dyscyplina | Ruroci¹g | Ruroci¹gi |
| AC_Faza | Projekto | Projektowanie |
| AC_Obiekt | 10SN54 | 10SN54 Rozdzielnia 110 kV |
| AC_Obiekt | 11TM31 | 11TM31 Uk³ad chemicznego uzdatniania |
| AC_Obiekt | 11XQ69 | 11XQ69 Zasilanie awaryjne |
| AC_Obiekt | 12NW18 | 12NW18 Ujêcie wody |
| AC_Obiekt | 13RW88 | 13RW88 Oczyszczalnia œcieków technologicznych |
| AC_Obiekt | 14WE74 | 14WE74 Uk³ady wyprowadzenia mocy |
| AC_Obiekt | 16TC84 | 16TC84 Rozdzielnia SN |
| AC_Obiekt | 17DY74 | 17DY74 Uziemienia i ochrona odgromowa |
| AC_Obiekt | 18TY85 | 18TY85 Wie¿a ch³odnicza |
| AC_Obiekt | 23QX91 | 23QX91 Stacja demineralizacji |
| AC_Obiekt | 26NP30 | 26NP30 Rozdzielnia nN |
| AC_Obiekt | 27FW94 | 27FW94 Transformator blokowy |
| AC_Obiekt | 28BP20 | 28BP20 Pompy wody ch³odz¹cej |
| AC_Obszar | Uk³ad | Uk³ad ch³odzenia |
| AC_Opiekun | Agnieszk | Agnieszka WoŸniak |
| AC_Opiekun | Anna | Anna Wiœniewska |
| AC_Opiekun | Joanna | Joanna Kamiñska |
| AC_Opiekun | Krzyszto | Krzysztof Koz³owski |
| AC_Opiekun | Magdalen | Magdalena Jankowska |
| AC_Opiekun | Pawe³ | Pawe³ Wójcik |
| AC_Opiekun | Piotr | Piotr Mazur |
| AC_Opiekun | Tomasz | Tomasz Lewandowski |
| AC_Pakiet | Pakiet | Pakiet C |
| AC_Poziom | L1 | L1 – kamieñ milowy kontraktowy |
| AC_Poziom | L2 | L2 – kamieñ milowy obiektowy |
| AC_Priorytet | Krytyczn | Krytyczny |
| AC_Wykonawca | Aerother | Aerotherm Polska |
| AC_Wykonawca | Automaty | AutomatykaPlus |
| AC_Wykonawca | ElektroP | ElektroPro Sp. z o.o. |
| AC_Wykonawca | HydroIns | HydroInstal |
| AC_Wykonawca | Izoterm | Izoterm Serwis |
| AC_Wykonawca | Kablex | Kablex Energo |
| AC_Wykonawca | Pomorski | Pomorskie Roboty In¿ynieryjne |
| AC_Wykonawca | TurboSys | TurboSystem S.A. |
| AC_Zakres | Kamieñ | Kamieñ milowy |
| AC_Zespol | Zespó³-E | Zespó³-E (Eksploatacja) |
| AC_Zespol | Zespó³-I | Zespó³-I (Inwestor) |
| AC_Zespol | Zespó³-K | Zespó³-K (Kontrakt) |
| AC_Zespol | Zespó³-W | Zespó³-W (Wykonawca) |
